# EIT 2 : Schedule Level 4 : Clean Fuel Project (CFP)

Schedule from Primavera P6, 2025-11-11 to 2027-05-29, data date 2025-11-11.

## Calendars

- 6days10hours: Mon-Sat 07:00-12:00, 13:00-18:00; Sun off. Exceptions (off unless hours are given): 2026-01-31 07:00-12:00, 13:00-18:00.
- 7 - Day Workweek (No Holidays): Mon-Fri 08:00-12:00, 13:00-18:00; Sat-Sun 08:00-12:00, 13:00-17:00.

## Resources

| Resource | Group |
| --- | --- |
| LABOUR | labor |

## Schedule

| ID | WBS | Activity | Type | Duration | Start | Finish | Predecessors | Total float | Free float | Constraint | Resources | Disciplines | WBS | Types | EIT WBS | EIT PKG | Main Activity |
| --- | --- | --- | --- | --- | --- | --- | --- | --- | --- | --- | --- | --- | --- | --- | --- | --- | --- |
|  | 3 | **EIT 2.1 : Schedule Level 4 : Clean Fuel Project (CFP)** |  |  | 2025-11-11 | 2026-03-31 |  |  |  |  |  |  |  |  |  |  |  |
|  | 1 | **Submission of Document for Approval** |  |  | 2025-11-11 | 2026-01-19 |  |  |  |  |  |  |  |  |  |  |  |
| COM1010 |  | HSE Plan |  | 32d | 2025-11-11 | 2025-12-17 |  | 453d |  |  |  | CO | Com1 | TY10 | X01 | EIT02.1 |  |
| COM1020 |  | Quality Plan |  | 32d | 2025-11-11 | 2025-12-17 |  | 453d |  |  |  | CO | Com1 | TY10 | X01 | EIT02.1 |  |
| COM1030 |  | Inspection and Test Plan |  | 32d | 2025-11-11 | 2025-12-17 |  | 453d |  |  |  | CO | Com1 | TY10 | X01 | EIT02.1 |  |
| COM1040 |  | Method Statement and JSEA (i.e.) |  | 60d | 2025-11-11 | 2026-01-19 |  | 425d |  |  |  | CO | Com1 | TY10 | X01 | EIT02.1 |  |
| COM1050 |  | Material Approve |  | 30d | 2025-11-11 | 2025-12-15 |  | 455d |  |  |  | CO | Com1 | TY10 | X01 | EIT02.1 |  |
| COM1060 |  | Construction Measurements Report System (CMS) |  | 42.4d | 2025-11-11 | 2025-12-30 |  | 442.6d |  |  |  | CO | Com1 | TY10 | X01 | EIT02.1 |  |
| COM1070 |  | Project Schedule L4 |  | 42d | 2025-11-11 | 2025-12-29 |  | 443d |  |  |  | CO | Com1 | TY10 | X01 | EIT02.1 |  |
| COM1080 |  | Manpower Loading |  | 4d | 2025-11-11 | 2025-11-14 |  | 481d |  |  |  | CO | Com1 | TY10 | X01 | EIT02.1 |  |
|  | 9 | **EIT-2.1 :Key Milestones** |  |  | 2025-11-11 | 2026-03-31 |  |  |  |  |  |  |  |  |  |  |  |
| MI1010 |  | Contract Award | milestone | 0d | 2025-11-11 | 2025-11-11 |  | 485d |  |  |  | CO | Com | TY10 | X01 | EIT02.1 |  |
| MI1030 |  | Mobilization Key Person |  | 29d | 2025-11-11 | 2025-12-13 |  | 456d |  |  |  | CO | Com | TY10 | X01 | EIT02.1 |  |
| MI1040 |  | Site Mobilization (i.e. Site office, IT System, Fabrication, Store) |  | 36d | 2025-11-11 | 2025-12-22 |  | 449d |  |  |  | CO | Com | TY10 | X01 | EIT02.1 |  |
| MI1060 |  | EIT2.1 : WBS C05 : Verify Damaged System Cable Substation No. SS-098 (FAR-013) | milestone | 0d | 2026-01-31 | 2026-01-31 | 2.1-SS098INV-1020 FF | 414d |  |  |  | CO | Com | TY10 | C05 | EIT02.1 |  |
| MI1080 |  | EIT2.1 : WBS C05 : Substation No. SS-098 (FAR-013) Completed | milestone | 0d | 2026-02-28 | 2026-02-28 | 2.1-SS098P-1000 FF | 390d |  |  |  | CO | Com | TY10 | C05 | EIT02.1 |  |
| MI1090 |  | EIT2.1 : WBS C05 : Substation No. SS-097 Completed | milestone | 0d | 2026-02-28 | 2026-02-28 | 2.1-SS098P-1000 FF | 390d |  |  |  | CO | Com | TY10 | C05 | EIT02.1 |  |
| MI1100 |  | EIT2.1 : WBS E06 :Substation No. SS-077 Completed | milestone | 0d | 2026-02-28 | 2026-02-28 | 2.1-SS077EE04-1610 FF | 390d |  |  |  | CO | Com | TY10 | E06 | EIT02.1 |  |
| MI1110 |  | EIT2.1 : WBS B04 : Substation No. SS-118 Completed | milestone | 0d | 2026-02-28 | 2026-02-28 | 2.1-SS118EE04-1240 FF | 390d |  |  |  | CO | Com | TY10 | B04 | EIT02.1 |  |
| MI1120 |  | EIT2.1 : WBS B07 : MCB-3 Completed | milestone | 0d | 2026-02-28 | 2026-02-28 | 2.1-MCB3EE05-1030 FF | 390d |  |  |  | CO | Com | TY10 | C07 | EIT02.1 |  |
| MI1130 |  | EIT2.1 : WBS C03a : HCU-3 (Hydrocracking Unit) | milestone | 0d | 2026-03-31 | 2026-03-31 | 2.1-HCUTE01.1-1020 FF | 364d |  |  |  | CO | Com | TY10 | C03a | EIT02.1 |  |
| MI1140 |  | EIT2.1 : WBS C03b : RHCU (Residue Hydrocracking Unit) | milestone | 0d | 2026-03-31 | 2026-03-31 | 2.1-RHCUTE01.1-1020 FF | 364d |  |  |  | CO | Com | TY10 | C03b | EIT02.1 |  |
| MI1150 |  | EIT2.1 : WBS C03c : SDA (Solvent De-Asphalting Unit) | milestone | 0d | 2026-03-31 | 2026-03-31 | 2.1-SDATE01.1-1020 FF | 364d |  |  |  | CO | Com | TY10 | C03c | EIT02.1 |  |
|  | 2 | **EIT2.1: : Construction Work** |  |  | 2025-12-15 | 2026-03-31 |  |  |  |  |  |  |  |  |  |  |  |
|  | 10 | **WBS : C03** |  |  | 2025-12-23 | 2026-03-31 |  |  |  |  |  |  |  |  |  |  |  |
|  | 2 | **WBS : C03a HCU-3 (Hydrocracking Unit)** |  |  | 2026-01-23 | 2026-03-31 |  |  |  |  |  |  |  |  |  |  |  |
|  | 6 | **Electrical** |  |  | 2026-01-23 | 2026-03-31 |  |  |  |  |  |  |  |  |  |  |  |
|  | 3 | **Electrical Cable Tray/Ladder Installation** |  |  | 2026-01-23 | 2026-03-31 |  |  |  |  |  |  |  |  |  |  |  |
|  | 1 | **Air Fin Cooler - EM-10629-1** |  |  | 2026-01-23 | 2026-03-20 |  |  |  |  |  |  |  |  |  |  |  |
| 2.1-HCUEE03-1000 |  | Install support / bracket |  | 20d | 2026-01-23 | 2026-02-14 |  | 364.4d | 0d | start on or after 2026-01-23 | LABOUR [15 h] | EE | C03a | TY1 | C03a | EIT02.1 | 1 |
| 2.1-HCUEE03-1090 |  | Install Ladder / Tray |  | 20d | 2026-02-16 | 2026-03-10 | 2.1-HCUEE03-1000 | 373d | 0d |  | LABOUR [30 h] | EE | C03a | TY1 | C03a | EIT02.1 | 1 |
| 2.1-HCUEE03-1100 |  | Install Conduits |  | 20d | 2026-02-16 | 2026-03-10 | 2.1-HCUEE03-1090 SS | 373d | 0d |  | LABOUR [20 h] | EE | C03a | TY1 | C03a | EIT02.1 | 1 |
| 2.1-HCUEE03-1270 |  | Clear punch |  | 6d | 2026-03-11 | 2026-03-17 | 2.1-HCUEE03-1100, 2.1-HCUEE03-1090 | 373d | 0d |  | LABOUR [10 h] | EE | C03a | TY1 | C03a | EIT02.1 | 1 |
| 2.1-HCUEE03-1360 |  | Complete QA/QC document |  | 3d | 2026-03-18 | 2026-03-20 | 2.1-HCUEE03-1270 | 373d | 0d |  | LABOUR [7 h] | EE | C03a | TY1 | C03a | EIT02.1 | 1 |

| ID | WBS | Activity | Duration | Start | Finish | Predecessors | Total float | Free float | Resources | Disciplines | Main Activity | WBS | Types | EIT WBS | EIT PKG |
| --- | --- | --- | --- | --- | --- | --- | --- | --- | --- | --- | --- | --- | --- | --- | --- |
|  | 2 | **Air Fin Cooler - EM-10726-1** |  | 2026-01-23 | 2026-03-20 |  |  |  |  |  |  |  |  |  |  |
| 2.1-HCUEE03-1010 |  | Install support / bracket | 20d | 2026-01-23 | 2026-02-14 | 2.1-HCUEE03-1000 SS | 364.4d | 0d | LABOUR [15 h] | EE | 1 | C03a | TY1 | C03a | EIT02.1 |
| 2.1-HCUEE03-1110 |  | Install Ladder / Tray | 20d | 2026-02-16 | 2026-03-10 | 2.1-HCUEE03-1010 | 373d | 0d | LABOUR [30 h] | EE | 1 | C03a | TY1 | C03a | EIT02.1 |
| 2.1-HCUEE03-1120 |  | Install Conduits | 20d | 2026-02-16 | 2026-03-10 | 2.1-HCUEE03-1110 SS | 373d | 0d | LABOUR [20 h] | EE | 1 | C03a | TY1 | C03a | EIT02.1 |
| 2.1-HCUEE03-1280 |  | Clear punch | 6d | 2026-03-11 | 2026-03-17 | 2.1-HCUEE03-1120, 2.1-HCUEE03-1110 | 373d | 0d | LABOUR [10 h] | EE | 1 | C03a | TY1 | C03a | EIT02.1 |
| 2.1-HCUEE03-1370 |  | Complete QA/QC document | 3d | 2026-03-18 | 2026-03-20 | 2.1-HCUEE03-1280, 2.1-HCUEE03-1360 FF | 373d | 0d | LABOUR [7 h] | EE | 1 | C03a | TY1 | C03a | EIT02.1 |
|  | 3 | **Air Fin Cooler - EM-10726-5** |  | 2026-01-23 | 2026-03-20 |  |  |  |  |  |  |  |  |  |  |
| 2.1-HCUEE03-1020 |  | Install support / bracket | 20d | 2026-01-23 | 2026-02-14 | 2.1-HCUEE03-1010 SS | 364.4d | 0d | LABOUR [15 h] | EE | 1 | C03a | TY1 | C03a | EIT02.1 |
| 2.1-HCUEE03-1130 |  | Install Ladder / Tray | 20d | 2026-02-16 | 2026-03-10 | 2.1-HCUEE03-1020 | 373d | 0d | LABOUR [30 h] | EE | 1 | C03a | TY1 | C03a | EIT02.1 |
| 2.1-HCUEE03-1140 |  | Install Conduits | 20d | 2026-02-16 | 2026-03-10 | 2.1-HCUEE03-1130 SS | 373d | 0d | LABOUR [20 h] | EE | 1 | C03a | TY1 | C03a | EIT02.1 |
| 2.1-HCUEE03-1290 |  | Clear punch | 6d | 2026-03-11 | 2026-03-17 | 2.1-HCUEE03-1140, 2.1-HCUEE03-1130 | 373d | 0d | LABOUR [10 h] | EE | 1 | C03a | TY1 | C03a | EIT02.1 |
| 2.1-HCUEE03-1380 |  | Complete QA/QC document | 3d | 2026-03-18 | 2026-03-20 | 2.1-HCUEE03-1290, 2.1-HCUEE03-1370 FF | 373d | 0d | LABOUR [7 h] | EE | 1 | C03a | TY1 | C03a | EIT02.1 |
|  | 4 | **Air Fin Cooler - EM-10643-1** |  | 2026-01-23 | 2026-03-20 |  |  |  |  |  |  |  |  |  |  |
| 2.1-HCUEE03-1030 |  | Install support / bracket | 20d | 2026-01-23 | 2026-02-14 | 2.1-HCUEE03-1020 SS | 364.4d | 0d | LABOUR [15 h] | EE | 1 | C03a | TY1 | C03a | EIT02.1 |
| 2.1-HCUEE03-1150 |  | Install Ladder / Tray | 20d | 2026-02-16 | 2026-03-10 | 2.1-HCUEE03-1030 | 373d | 0d | LABOUR [30 h] | EE | 1 | C03a | TY1 | C03a | EIT02.1 |
| 2.1-HCUEE03-1160 |  | Install Conduits | 20d | 2026-02-16 | 2026-03-10 | 2.1-HCUEE03-1150 SS | 373d | 0d | LABOUR [20 h] | EE | 1 | C03a | TY1 | C03a | EIT02.1 |
| 2.1-HCUEE03-1300 |  | Clear punch | 6d | 2026-03-11 | 2026-03-17 | 2.1-HCUEE03-1160, 2.1-HCUEE03-1150 | 373d | 0d | LABOUR [10 h] | EE | 1 | C03a | TY1 | C03a | EIT02.1 |
| 2.1-HCUEE03-1390 |  | Complete QA/QC document | 3d | 2026-03-18 | 2026-03-20 | 2.1-HCUEE03-1300, 2.1-HCUEE03-1380 FF | 373d | 0d | LABOUR [7 h] | EE | 1 | C03a | TY1 | C03a | EIT02.1 |
|  | 5 | **Air Fin Cooler - EM-10643-7** |  | 2026-01-23 | 2026-03-20 |  |  |  |  |  |  |  |  |  |  |
| 2.1-HCUEE03-1040 |  | Install support / bracket | 20d | 2026-01-23 | 2026-02-14 | 2.1-HCUEE03-1030 SS | 364.4d | 0d | LABOUR [15 h] | EE | 1 | C03a | TY1 | C03a | EIT02.1 |
| 2.1-HCUEE03-1170 |  | Install Ladder / Tray | 20d | 2026-02-16 | 2026-03-10 | 2.1-HCUEE03-1040 | 373d | 0d | LABOUR [30 h] | EE | 1 | C03a | TY1 | C03a | EIT02.1 |
| 2.1-HCUEE03-1180 |  | Install Conduits | 20d | 2026-02-16 | 2026-03-10 | 2.1-HCUEE03-1170 SS | 373d | 0d | LABOUR [20 h] | EE | 1 | C03a | TY1 | C03a | EIT02.1 |
| 2.1-HCUEE03-1310 |  | Clear punch | 6d | 2026-03-11 | 2026-03-17 | 2.1-HCUEE03-1180, 2.1-HCUEE03-1170 | 373d | 0d |  | EE | 1 | C03a | TY1 | C03a | EIT02.1 |
| 2.1-HCUEE03-1400 |  | Complete QA/QC document | 3d | 2026-03-18 | 2026-03-20 | 2.1-HCUEE03-1310, 2.1-HCUEE03-1390 FF | 373d | 0d |  | EE | 1 | C03a | TY1 | C03a | EIT02.1 |

| ID | WBS | Activity | Duration | Start | Finish | Predecessors | Total float | Free float | Resources | Disciplines | Main Activity | WBS | Types | EIT WBS | EIT PKG |
| --- | --- | --- | --- | --- | --- | --- | --- | --- | --- | --- | --- | --- | --- | --- | --- |
|  | 6 | **Air Fin Cooler - EM-10624-1** |  | 2026-01-23 | 2026-03-20 |  |  |  |  |  |  |  |  |  |  |
| 2.1-HCUEE03-1050 |  | Install support / bracket | 20d | 2026-01-23 | 2026-02-14 | 2.1-HCUEE03-1040 SS | 364.4d | 0d |  | EE | 1 | C03a | TY1 | C03a | EIT02.1 |
| 2.1-HCUEE03-1190 |  | Install Ladder / Tray | 20d | 2026-02-16 | 2026-03-10 | 2.1-HCUEE03-1050 | 373d | 0d |  | EE | 1 | C03a | TY1 | C03a | EIT02.1 |
| 2.1-HCUEE03-1200 |  | Install Conduits | 20d | 2026-02-16 | 2026-03-10 | 2.1-HCUEE03-1190 SS | 373d | 0d |  | EE | 1 | C03a | TY1 | C03a | EIT02.1 |
| 2.1-HCUEE03-1320 |  | Clear punch | 6d | 2026-03-11 | 2026-03-17 | 2.1-HCUEE03-1200, 2.1-HCUEE03-1190 | 373d | 0d |  | EE | 1 | C03a | TY1 | C03a | EIT02.1 |
| 2.1-HCUEE03-1410 |  | Complete QA/QC document | 3d | 2026-03-18 | 2026-03-20 | 2.1-HCUEE03-1320, 2.1-HCUEE03-1400 FF | 373d | 0d |  | EE | 1 | C03a | TY1 | C03a | EIT02.1 |
|  | 7 | **Air Fin Cooler - EM-10639-1** |  | 2026-01-23 | 2026-03-20 |  |  |  |  |  |  |  |  |  |  |
| 2.1-HCUEE03-1060 |  | Install support / bracket | 20d | 2026-01-23 | 2026-02-14 | 2.1-HCUEE03-1050 SS | 364.4d | 0d | LABOUR [15 h] | EE | 1 | C03a | TY1 | C03a | EIT02.1 |
| 2.1-HCUEE03-1210 |  | Install Ladder / Tray | 20d | 2026-02-16 | 2026-03-10 | 2.1-HCUEE03-1060 | 373d | 0d | LABOUR [30 h] | EE | 1 | C03a | TY1 | C03a | EIT02.1 |
| 2.1-HCUEE03-1220 |  | Install Conduits | 20d | 2026-02-16 | 2026-03-10 | 2.1-HCUEE03-1210 SS | 373d | 0d | LABOUR [20 h] | EE | 1 | C03a | TY1 | C03a | EIT02.1 |
| 2.1-HCUEE03-1330 |  | Clear punch | 6d | 2026-03-11 | 2026-03-17 | 2.1-HCUEE03-1220, 2.1-HCUEE03-1210 | 373d | 0d | LABOUR [10 h] | EE | 1 | C03a | TY1 | C03a | EIT02.1 |
| 2.1-HCUEE03-1420 |  | Complete QA/QC document | 3d | 2026-03-18 | 2026-03-20 | 2.1-HCUEE03-1330, 2.1-HCUEE03-1410 FF | 373d | 0d | LABOUR [7 h] | EE | 1 | C03a | TY1 | C03a | EIT02.1 |
|  | 8 | **Air Fin Cooler - EM-10636-1** |  | 2026-01-23 | 2026-03-20 |  |  |  |  |  |  |  |  |  |  |
| 2.1-HCUEE03-1070 |  | Install support / bracket | 20d | 2026-01-23 | 2026-02-14 | 2.1-HCUEE03-1060 SS | 364.4d | 0d | LABOUR [15 h] | EE | 1 | C03a | TY1 | C03a | EIT02.1 |
| 2.1-HCUEE03-1230 |  | Install Ladder / Tray | 20d | 2026-02-16 | 2026-03-10 | 2.1-HCUEE03-1070 | 373d | 0d | LABOUR [30 h] | EE | 1 | C03a | TY1 | C03a | EIT02.1 |
| 2.1-HCUEE03-1240 |  | Install Conduits | 20d | 2026-02-16 | 2026-03-10 | 2.1-HCUEE03-1230 SS | 373d | 0d | LABOUR [20 h] | EE | 1 | C03a | TY1 | C03a | EIT02.1 |
| 2.1-HCUEE03-1340 |  | Clear punch | 6d | 2026-03-11 | 2026-03-17 | 2.1-HCUEE03-1240, 2.1-HCUEE03-1230 | 373d | 0d | LABOUR [10 h] | EE | 1 | C03a | TY1 | C03a | EIT02.1 |
| 2.1-HCUEE03-1430 |  | Complete QA/QC document | 3d | 2026-03-18 | 2026-03-20 | 2.1-HCUEE03-1340, 2.1-HCUEE03-1420 FF | 373d | 8.6d | LABOUR [7 h] | EE | 1 | C03a | TY1 | C03a | EIT02.1 |
|  | 9 | **Air Fin Cooler - EM-10714-1** |  | 2026-01-23 | 2026-03-31 |  |  |  |  |  |  |  |  |  |  |
| 2.1-HCUEE03-1080 |  | Install support / bracket | 29d | 2026-01-23 | 2026-02-25 | 2.1-HCUEE03-1070 SS | 364.4d | 0d | LABOUR [15 h] | EE | 1 | C03a | TY1 | C03a | EIT02.1 |
| 2.1-HCUEE03-1250 |  | Install Ladder / Tray | 20d | 2026-02-26 | 2026-03-20 | 2.1-HCUEE03-1080 | 364.4d | 0d | LABOUR [30 h] | EE | 1 | C03a | TY1 | C03a | EIT02.1 |
| 2.1-HCUEE03-1260 |  | Install Conduits | 20d | 2026-02-26 | 2026-03-20 | 2.1-HCUEE03-1250 SS | 364.4d | 0d | LABOUR [20 h] | EE | 1 | C03a | TY1 | C03a | EIT02.1 |
| 2.1-HCUEE03-1350 |  | Clear punch | 5.6d | 2026-03-21 | 2026-03-27 | 2.1-HCUEE03-1260, 2.1-HCUEE03-1250 | 364.4d | 0d | LABOUR [10 h] | EE | 1 | C03a | TY1 | C03a | EIT02.1 |
| 2.1-HCUEE03-1440 |  | Complete QA/QC document | 3d | 2026-03-27 | 2026-03-31 | 2.1-HCUEE03-1350, 2.1-HCUEE03-1430 FF | 364.4d | 0d | LABOUR [7 h] | EE | 1 | C03a | TY1 | C03a | EIT02.1 |

| ID | WBS | Activity | Duration | Start | Finish | Predecessors | Total float | Free float | Constraint | Resources | Disciplines | Main Activity | WBS | Types | EIT WBS | EIT PKG |
| --- | --- | --- | --- | --- | --- | --- | --- | --- | --- | --- | --- | --- | --- | --- | --- | --- |
|  | 2 | **Electrical Cable Installation** |  | 2026-02-23 | 2026-03-31 |  |  |  |  |  |  |  |  |  |  |  |
|  | 1 | **Cable Pull MV Cable** |  | 2026-02-23 | 2026-03-31 |  |  |  |  |  |  |  |  |  |  |  |
| 2.1-HCUEE01-1000 |  | Pull Cable | 20d | 2026-02-23 | 2026-03-17 |  | 364d | 0d | start on or after 2026-02-23 | LABOUR [4000 h] | EE | 1 | C03a | TY1 | C03a | EIT02.1 |
| 2.1-HCUEE01-1090 |  | Megger & Continuity test | 4d | 2026-03-18 | 2026-03-21 | 2.1-HCUEE01-1000 | 369d | 4.6d |  | LABOUR [1000 h] | EE | 1 | C03a | TY1 | C03a | EIT02.1 |
| 2.1-HCUEE01-1120 |  | Complete QA/QC document | 3d | 2026-03-27 | 2026-03-31 | 2.1-HCUEE01-1090, 2.1-HCUEE03-1440 FF | 364.4d |  |  | LABOUR [1148.34 h] | EE | 1 | C03a | TY1 | C03a | EIT02.1 |
|  | 2 | **Cable Pull LV Cable** |  | 2026-02-23 | 2026-03-25 |  |  |  |  |  |  |  |  |  |  |  |
| 2.1-HCUEE01-1010 |  | Pull Cable | 20d | 2026-02-23 | 2026-03-17 | 2.1-HCUEE01-1000 SS | 364d | 0d | start on or after 2026-01-30 | LABOUR [4000 h] | EE | 1 | C03a | TY1 | C03a | EIT02.1 |
| 2.1-HCUEE01-1100 |  | Megger & Continuity test | 4d | 2026-03-18 | 2026-03-21 | 2.1-HCUEE01-1010 | 369d | 0d |  | LABOUR [1000 h] | EE | 1 | C03a | TY1 | C03a | EIT02.1 |
| 2.1-HCUEE01-1130 |  | Complete QA/QC document | 3d | 2026-03-23 | 2026-03-25 | 2.1-HCUEE01-1100 | 369d |  |  | LABOUR [1148.34 h] | EE | 1 | C03a | TY1 | C03a | EIT02.1 |
|  | 3 | **Cable Pull Control Cable** |  | 2026-02-23 | 2026-03-25 |  |  |  |  |  |  |  |  |  |  |  |
| 2.1-HCUEE01-1020 |  | Pull Cable | 20d | 2026-02-23 | 2026-03-17 | 2.1-HCUEE01-1010 SS | 364d | 0d | start on or after 2026-01-30 | LABOUR [4000 h] | EE | 1 | C03a | TY1 | C03a | EIT02.1 |
| 2.1-HCUEE01-1110 |  | Megger & Continuity test | 4d | 2026-03-18 | 2026-03-21 | 2.1-HCUEE01-1020 | 369d | 0d |  | LABOUR [1000 h] | EE | 1 | C03a | TY1 | C03a | EIT02.1 |
| 2.1-HCUEE01-1140 |  | Complete QA/QC document | 3d | 2026-03-23 | 2026-03-25 | 2.1-HCUEE01-1110 | 369d |  |  | LABOUR [1148.34 h] | EE | 1 | C03a | TY1 | C03a | EIT02.1 |
|  | 4 | **Serial Communication Cable** |  | 2026-02-23 | 2026-03-25 |  |  |  |  |  |  |  |  |  |  |  |
| 2.1-HCUEE01-1030 |  | Pull Cable | 20d | 2026-02-23 | 2026-03-17 | 2.1-HCUEE01-1020 SS | 364d | 0d | start on or after 2026-01-30 | LABOUR [4000 h] | EE | 1 | C03a | TY1 | C03a | EIT02.1 |
| 2.1-HCUEE01-1050 |  | Megger & Continuity test | 4d | 2026-03-18 | 2026-03-21 | 2.1-HCUEE01-1030 | 369d | 0d |  | LABOUR [1000 h] | EE | 1 | C03a | TY1 | C03a | EIT02.1 |
| 2.1-HCUEE01-1070 |  | Complete QA/QC document | 3d | 2026-03-23 | 2026-03-25 | 2.1-HCUEE01-1050 | 369d |  |  | LABOUR [1148.34 h] | EE | 1 | C03a | TY1 | C03a | EIT02.1 |
|  | 5 | **Cable Pull Instrument Cable** |  | 2026-02-23 | 2026-03-25 |  |  |  |  |  |  |  |  |  |  |  |
| 2.1-HCUEE01-1040 |  | Pull Cable | 20d | 2026-02-23 | 2026-03-17 | 2.1-HCUEE01-1030 SS | 364d | 0d | start on or after 2026-01-30 | LABOUR [4000 h] | EE | 1 | C03a | TY1 | C03a | EIT02.1 |
| 2.1-HCUEE01-1060 |  | Megger & Continuity test | 4d | 2026-03-18 | 2026-03-21 | 2.1-HCUEE01-1040 | 369d | 0d |  | LABOUR [1000 h] | EE | 1 | C03a | TY1 | C03a | EIT02.1 |
| 2.1-HCUEE01-1080 |  | Complete QA/QC document | 3d | 2026-03-23 | 2026-03-25 | 2.1-HCUEE01-1060 | 369d |  |  | LABOUR [1148.34 h] | EE | 1 | C03a | TY1 | C03a | EIT02.1 |
|  | 4 | **Electrical Cable Termination / Glanding** |  | 2026-03-18 | 2026-03-31 |  |  |  |  |  |  |  |  |  |  |  |
|  | 1 | **Termination MV Cable** |  | 2026-03-18 | 2026-03-31 |  |  |  |  |  |  |  |  |  |  |  |
| 2.1-HCUEE02-1000 |  | Cable Termination/Glanding | 5d | 2026-03-18 | 2026-03-23 | 2.1-HCUEE01-1000 | 364d | 0d |  | LABOUR [90 h] | EE | 1 | C03a | TY1 | C03a | EIT02.1 |
| 2.1-HCUEE02-1050 |  | Clear punch | 4d | 2026-03-24 | 2026-03-27 | 2.1-HCUEE02-1000 | 364d | 0d |  | LABOUR [20 h] | EE | 1 | C03a | TY1 | C03a | EIT02.1 |
| 2.1-HCUEE02-1100 |  | Complete QA/QC document | 3d | 2026-03-28 | 2026-03-31 | 2.1-HCUEE02-1050 | 364d |  |  | LABOUR [29.78 h] | EE | 1 | C03a | TY1 | C03a | EIT02.1 |

| ID | WBS | Activity | Duration | Start | Finish | Predecessors | Total float | Free float | Constraint | Resources | Disciplines | Main Activity | WBS | Types | EIT WBS | EIT PKG |
| --- | --- | --- | --- | --- | --- | --- | --- | --- | --- | --- | --- | --- | --- | --- | --- | --- |
|  | 2 | **Termination LV Cable** |  | 2026-03-18 | 2026-03-31 |  |  |  |  |  |  |  |  |  |  |  |
| 2.1-HCUEE02-1010 |  | Cable Termination/Glanding | 5d | 2026-03-18 | 2026-03-23 | 2.1-HCUEE01-1010 | 364d | 0d |  | LABOUR [90 h] | EE | 1 | C03a | TY1 | C03a | EIT02.1 |
| 2.1-HCUEE02-1060 |  | Clear punch | 4d | 2026-03-24 | 2026-03-27 | 2.1-HCUEE02-1010 | 364d | 0d |  | LABOUR [20 h] | EE | 1 | C03a | TY1 | C03a | EIT02.1 |
| 2.1-HCUEE02-1110 |  | Complete QA/QC document | 3d | 2026-03-28 | 2026-03-31 | 2.1-HCUEE02-1060 | 364d |  |  | LABOUR [20.78 h] | EE | 1 | C03a | TY1 | C03a | EIT02.1 |
|  | 3 | **Termination Control Cable** |  | 2026-03-18 | 2026-03-31 |  |  |  |  |  |  |  |  |  |  |  |
| 2.1-HCUEE02-1020 |  | Cable Termination/Glanding | 5d | 2026-03-18 | 2026-03-23 | 2.1-HCUEE01-1020 | 364d | 0d |  | LABOUR [90 h] | EE | 1 | C03a | TY1 | C03a | EIT02.1 |
| 2.1-HCUEE02-1070 |  | Clear punch | 4d | 2026-03-24 | 2026-03-27 | 2.1-HCUEE02-1020 | 364d | 0d |  | LABOUR [20 h] | EE | 1 | C03a | TY1 | C03a | EIT02.1 |
| 2.1-HCUEE02-1120 |  | Complete QA/QC document | 3d | 2026-03-28 | 2026-03-31 | 2.1-HCUEE02-1070 | 364d |  |  | LABOUR [20.78 h] | EE | 1 | C03a | TY1 | C03a | EIT02.1 |
|  | 4 | **Termination Serial Communication Cable** |  | 2026-03-18 | 2026-03-31 |  |  |  |  |  |  |  |  |  |  |  |
| 2.1-HCUEE02-1030 |  | Cable Termination/Glanding | 5d | 2026-03-18 | 2026-03-23 | 2.1-HCUEE01-1030 | 364d | 0d |  | LABOUR [90 h] | EE | 1 | C03a | TY1 | C03a | EIT02.1 |
| 2.1-HCUEE02-1080 |  | Clear punch | 4d | 2026-03-24 | 2026-03-27 | 2.1-HCUEE02-1030 | 364d | 0d |  | LABOUR [20 h] | EE | 1 | C03a | TY1 | C03a | EIT02.1 |
| 2.1-HCUEE02-1130 |  | Complete QA/QC document | 3d | 2026-03-28 | 2026-03-31 | 2.1-HCUEE02-1080 | 364d |  |  | LABOUR [20.78 h] | EE | 1 | C03a | TY1 | C03a | EIT02.1 |
|  | 5 | **Termination Instrument Cable** |  | 2026-03-18 | 2026-03-31 |  |  |  |  |  |  |  |  |  |  |  |
| 2.1-HCUEE02-1040 |  | Cable Termination/Glanding | 5d | 2026-03-18 | 2026-03-23 | 2.1-HCUEE01-1040 | 364d | 0d |  | LABOUR [90 h] | EE | 1 | C03a | TY1 | C03a | EIT02.1 |
| 2.1-HCUEE02-1090 |  | Clear punch | 4d | 2026-03-24 | 2026-03-27 | 2.1-HCUEE02-1040 | 364d | 0d |  | LABOUR [20 h] | EE | 1 | C03a | TY1 | C03a | EIT02.1 |
| 2.1-HCUEE02-1140 |  | Complete QA/QC document | 3d | 2026-03-28 | 2026-03-31 | 2.1-HCUEE02-1090 | 364d |  |  | LABOUR [20.78 h] | EE | 1 | C03a | TY1 | C03a | EIT02.1 |
|  | 5 | **Lighting & Small Power Equipment Installation** |  | 2026-01-26 | 2026-03-10 |  |  |  |  |  |  |  |  |  |  |  |
| 2.1-HCUEE05-1000 |  | Install support / bracket / Pole | 10d | 2026-01-26 | 2026-02-05 |  | 364d | 0d | start on or after 2026-01-26 | LABOUR [5 h] | EE | 1 | C03a | TY1 | C03a | EIT02.1 |
| 2.1-HCUEE05-1020 |  | Install Distribution panel, lighting fitting ,convenience outlet | 20d | 2026-02-06 | 2026-02-28 | 2.1-HCUEE05-1000 | 382d | 0d |  | LABOUR [15 h] | EE | 1 | C03a | TY1 | C03a | EIT02.1 |
| 2.1-HCUEE05-1030 |  | Clear punch | 5d | 2026-03-02 | 2026-03-06 | 2.1-HCUEE05-1020 | 382d | 0d |  | LABOUR [5 h] | EE | 1 | C03a | TY1 | C03a | EIT02.1 |
| 2.1-HCUEE05-1040 |  | Complete QA/QC document | 3d | 2026-03-07 | 2026-03-10 | 2.1-HCUEE05-1030 | 382d |  |  | LABOUR [8.89 h] | EE | 1 | C03a | TY1 | C03a | EIT02.1 |
|  | 9 | **Electrical Earthing / Lightning Installation** |  | 2026-02-02 | 2026-03-19 |  |  |  |  |  |  |  |  |  |  |  |
| 2.1-HCUEE05-1010 |  | Install Equipment Earthing / Inspection PIT / Install earthing pull and Connecttion | 30d | 2026-02-02 | 2026-03-07 | 2.1-HCUEE05-1000 SS | 374d | 0d | start on or after 2026-02-02 | LABOUR [3000 h] | EE | 1 | C03a | TY1 | C03a | EIT02.1 |
| 2.1-HCUEE05-1050 |  | Punch listing | 5d | 2026-03-09 | 2026-03-13 | 2.1-HCUEE05-1010 | 374d | 0d |  | LABOUR [500 h] | EE | 1 | C03a | TY1 | C03a | EIT02.1 |
| 2.1-HCUEE05-1060 |  | Complete QA/QC document | 5d | 2026-03-14 | 2026-03-19 | 2.1-HCUEE05-1050 | 374d |  |  | LABOUR [980.58 h] | EE | 1 | C03a | TY1 | C03a | EIT02.1 |

| ID | WBS | Activity | Duration | Start | Finish | Predecessors | Total float | Free float | Constraint | Resources | Disciplines | Main Activity | WBS | Types | EIT WBS | EIT PKG |
| --- | --- | --- | --- | --- | --- | --- | --- | --- | --- | --- | --- | --- | --- | --- | --- | --- |
|  | 2 | **Instrument** |  | 2026-01-26 | 2026-03-31 |  |  |  |  |  |  |  |  |  |  |  |
|  | 3 | **Instrument Cable Tray/Ladder Installation** |  | 2026-01-26 | 2026-03-11 |  |  |  |  |  |  |  |  |  |  |  |
| 2.1-HCUIN03-1000 |  | Install support / bracket | 10d | 2026-01-26 | 2026-02-05 | 2.1-HCUEE05-1000 SS | 364d | 0d | start on or after 2026-01-26 | LABOUR [982 h] | EE | 1 | C03a | TY1 | C03a | EIT02.1 |
| 2.1-HCUIN03-1010 |  | Install Ladder / Tray | 20d | 2026-02-06 | 2026-02-28 | 2.1-HCUIN03-1020 SS | 364d | 0d |  | LABOUR [400 h] | EE | 1 | C03a | TY1 | C03a | EIT02.1 |
| 2.1-HCUIN03-1020 |  | Steel Conduits for Cable tray | 20d | 2026-02-06 | 2026-02-28 | 2.1-HCUIN03-1000 | 364d | 0d |  | LABOUR [100 h] | EE | 1 | C03a | TY1 | C03a | EIT02.1 |
| 2.1-HCUIN03-1030 |  | Clear punch | 6d | 2026-03-02 | 2026-03-07 | 2.1-HCUIN03-1010, 2.1-HCUIN03-1020 | 381d | 0d |  | LABOUR [50 h] | EE | 1 | C03a | TY1 | C03a | EIT02.1 |
| 2.1-HCUIN03-1040 |  | Complete QA/QC document | 3d | 2026-03-09 | 2026-03-11 | 2.1-HCUIN03-1030 | 381d |  |  | LABOUR [101.05 h] | EE | 1 | C03a | TY1 | C03a | EIT02.1 |
|  | 1 | **Instrument Cable Installation** |  | 2026-03-02 | 2026-03-26 |  |  |  |  |  |  |  |  |  |  |  |
|  | 8 | **Cable Pull Primary Cable** |  | 2026-03-02 | 2026-03-26 |  |  |  |  |  |  |  |  |  |  |  |
| 2.1-HCUIN01-1000 |  | Pull Cable | 15d | 2026-03-02 | 2026-03-18 | 2.1-HCUIN03-1010 | 364d | 0d |  | LABOUR [2000 h] | EE | 1 | C03a | TY1 | C03a | EIT02.1 |
| 2.1-HCUIN01-1050 |  | Megger & Continuity test | 4d | 2026-03-19 | 2026-03-23 | 2.1-HCUIN01-1000 | 368d | 0d |  | LABOUR [500 h] | EE | 1 | C03a | TY1 | C03a | EIT02.1 |
| 2.1-HCUIN01-1100 |  | Complete QA/QC document | 3d | 2026-03-24 | 2026-03-26 | 2.1-HCUIN01-1050 | 368d |  |  | LABOUR [620.17 h] | EE | 1 | C03a | TY1 | C03a | EIT02.1 |
|  | 5 | **Cable Pull Power Cable** |  | 2026-03-02 | 2026-03-26 |  |  |  |  |  |  |  |  |  |  |  |
| 2.1-HCUIN01-1010 |  | Pull Cable | 15d | 2026-03-02 | 2026-03-18 | 2.1-HCUIN01-1000 SS | 364d | 0d |  | LABOUR [2000 h] | EE | 1 | C03a | TY1 | C03a | EIT02.1 |
| 2.1-HCUIN01-1060 |  | Megger & Continuity test | 4d | 2026-03-19 | 2026-03-23 | 2.1-HCUIN01-1010 | 368d | 0d |  | LABOUR [500 h] | EE | 1 | C03a | TY1 | C03a | EIT02.1 |
| 2.1-HCUIN01-1110 |  | Complete QA/QC document | 3d | 2026-03-24 | 2026-03-26 | 2.1-HCUIN01-1060 | 368d |  |  | LABOUR [620.17 h] | EE | 1 | C03a | TY1 | C03a | EIT02.1 |
|  | 9 | **Cable Pull Secondary Cable** |  | 2026-03-02 | 2026-03-26 |  |  |  |  |  |  |  |  |  |  |  |
| 2.1-HCUIN01-1020 |  | Pull Cable | 15d | 2026-03-02 | 2026-03-18 | 2.1-HCUIN01-1010 SS | 364d | 0d |  | LABOUR [2000 h] | EE | 1 | C03a | TY1 | C03a | EIT02.1 |
| 2.1-HCUIN01-1070 |  | Megger & Continuity test | 4d | 2026-03-19 | 2026-03-23 | 2.1-HCUIN01-1020 | 368d | 0d |  | LABOUR [500 h] | EE | 1 | C03a | TY1 | C03a | EIT02.1 |
| 2.1-HCUIN01-1120 |  | Complete QA/QC document | 3d | 2026-03-24 | 2026-03-26 | 2.1-HCUIN01-1070 | 368d |  |  | LABOUR [620.17 h] | EE | 1 | C03a | TY1 | C03a | EIT02.1 |
|  | 2 | **Cable Pull Thermocouple Cable** |  | 2026-03-02 | 2026-03-26 |  |  |  |  |  |  |  |  |  |  |  |
| 2.1-HCUIN01-1040 |  | Pull Cable | 15d | 2026-03-02 | 2026-03-18 | 2.1-HCUIN01-1020 SS | 364d | 0d |  | LABOUR [2000 h] | EE | 1 | C03a | TY1 | C03a | EIT02.1 |
| 2.1-HCUIN01-1090 |  | Megger & Continuity test | 4d | 2026-03-19 | 2026-03-23 | 2.1-HCUIN01-1040 | 368d | 0d |  | LABOUR [500 h] | EE | 1 | C03a | TY1 | C03a | EIT02.1 |
| 2.1-HCUIN01-1140 |  | Complete QA/QC document | 3d | 2026-03-24 | 2026-03-26 | 2.1-HCUIN01-1090 | 368d |  |  | LABOUR [620.17 h] | EE | 1 | C03a | TY1 | C03a | EIT02.1 |

| ID | WBS | Activity | Duration | Start | Finish | Predecessors | Total float | Free float | Resources | Disciplines | Main Activity | WBS | Types | EIT WBS | EIT PKG |
| --- | --- | --- | --- | --- | --- | --- | --- | --- | --- | --- | --- | --- | --- | --- | --- |
|  | 1 | **Cable Pull LAN Cable** |  | 2026-03-02 | 2026-03-26 |  |  |  |  |  |  |  |  |  |  |
| 2.1-HCUIN01-1030 |  | Pull Cable | 15d | 2026-03-02 | 2026-03-18 | 2.1-HCUIN01-1040 SS | 364d | 0d | LABOUR [2000 h] | EE | 1 | C03a | TY1 | C03a | EIT02.1 |
| 2.1-HCUIN01-1080 |  | Megger & Continuity test | 4d | 2026-03-19 | 2026-03-23 | 2.1-HCUIN01-1030 | 368d | 0d | LABOUR [500 h] | EE | 1 | C03a | TY1 | C03a | EIT02.1 |
| 2.1-HCUIN01-1130 |  | Complete QA/QC document | 3d | 2026-03-24 | 2026-03-26 | 2.1-HCUIN01-1080 | 368d |  | LABOUR [620.17 h] | EE | 1 | C03a | TY1 | C03a | EIT02.1 |
|  | 2 | **Instrument Cable Termination / Glanding** |  | 2026-03-19 | 2026-03-31 |  |  |  |  |  |  |  |  |  |  |
|  | 8 | **Cable Termination Primary Cable** |  | 2026-03-19 | 2026-03-31 |  |  |  |  |  |  |  |  |  |  |
| 2.1-HCUIN02-1000 |  | Cable Termination/Glanding | 5d | 2026-03-19 | 2026-03-24 | 2.1-HCUIN01-1000 | 364d | 0d | LABOUR [400 h] | EE | 1 | C03a | TY1 | C03a | EIT02.1 |
| 2.1-HCUIN02-1050 |  | Clear punch | 4d | 2026-03-25 | 2026-03-28 | 2.1-HCUIN02-1000 | 364d | 0d | LABOUR [100 h] | EE | 1 | C03a | TY1 | C03a | EIT02.1 |
| 2.1-HCUIN02-1100 |  | Complete QA/QC document | 2d | 2026-03-30 | 2026-03-31 | 2.1-HCUIN02-1050 | 364d |  | LABOUR [117.26 h] | EE | 1 | C03a | TY1 | C03a | EIT02.1 |
|  | 5 | **Cable Termination Power Cable** |  | 2026-03-19 | 2026-03-31 |  |  |  |  |  |  |  |  |  |  |
| 2.1-HCUIN02-1010 |  | Cable Termination/Glanding | 5d | 2026-03-19 | 2026-03-24 | 2.1-HCUIN01-1010 | 364d | 0d | LABOUR [400 h] | EE | 1 | C03a | TY1 | C03a | EIT02.1 |
| 2.1-HCUIN02-1060 |  | Clear punch | 4d | 2026-03-25 | 2026-03-28 | 2.1-HCUIN02-1010 | 364d | 0d | LABOUR [100 h] | EE | 1 | C03a | TY1 | C03a | EIT02.1 |
| 2.1-HCUIN02-1110 |  | Complete QA/QC document | 2d | 2026-03-30 | 2026-03-31 | 2.1-HCUIN02-1060 | 364d |  | LABOUR [117.26 h] | EE | 1 | C03a | TY1 | C03a | EIT02.1 |
|  | 9 | **Cable Termination Secondary Cable** |  | 2026-03-19 | 2026-03-31 |  |  |  |  |  |  |  |  |  |  |
| 2.1-HCUIN02-1020 |  | Cable Termination/Glanding | 5d | 2026-03-19 | 2026-03-24 | 2.1-HCUIN01-1020 | 364d | 0d | LABOUR [400 h] | EE | 1 | C03a | TY1 | C03a | EIT02.1 |
| 2.1-HCUIN02-1070 |  | Clear punch | 4d | 2026-03-25 | 2026-03-28 | 2.1-HCUIN02-1020 | 364d | 0d | LABOUR [100 h] | EE | 1 | C03a | TY1 | C03a | EIT02.1 |
| 2.1-HCUIN02-1120 |  | Complete QA/QC document | 2d | 2026-03-30 | 2026-03-31 | 2.1-HCUIN02-1070 | 364d |  | LABOUR [117.26 h] | EE | 1 | C03a | TY1 | C03a | EIT02.1 |
|  | 2 | **Cable Termination Thermocouple Cable** |  | 2026-03-19 | 2026-03-31 |  |  |  |  |  |  |  |  |  |  |
| 2.1-HCUIN02-1030 |  | Cable Termination/Glanding | 5d | 2026-03-19 | 2026-03-24 | 2.1-HCUIN01-1040 | 364d | 0d | LABOUR [400 h] | EE | 1 | C03a | TY1 | C03a | EIT02.1 |
| 2.1-HCUIN02-1080 |  | Clear punch | 4d | 2026-03-25 | 2026-03-28 | 2.1-HCUIN02-1030 | 364d | 0d | LABOUR [100 h] | EE | 1 | C03a | TY1 | C03a | EIT02.1 |
| 2.1-HCUIN02-1130 |  | Complete QA/QC document | 2d | 2026-03-30 | 2026-03-31 | 2.1-HCUIN02-1080 | 364d |  | LABOUR [117.26 h] | EE | 1 | C03a | TY1 | C03a | EIT02.1 |
|  | 1 | **Cable Termination LAN Cable** |  | 2026-03-19 | 2026-03-31 |  |  |  |  |  |  |  |  |  |  |
| 2.1-HCUIN02-1040 |  | Cable Termination/Glanding | 5d | 2026-03-19 | 2026-03-24 | 2.1-HCUIN01-1030 | 364d | 0d | LABOUR [400 h] | EE | 1 | C03a | TY1 | C03a | EIT02.1 |
| 2.1-HCUIN02-1090 |  | Clear punch | 4d | 2026-03-25 | 2026-03-28 | 2.1-HCUIN02-1040 | 364d | 0d | LABOUR [100 h] | EE | 1 | C03a | TY1 | C03a | EIT02.1 |
| 2.1-HCUIN02-1140 |  | Complete QA/QC document | 2d | 2026-03-30 | 2026-03-31 | 2.1-HCUIN02-1090 | 364d |  | LABOUR [117.26 h] | EE | 1 | C03a | TY1 | C03a | EIT02.1 |

| ID | WBS | Activity | Duration | Start | Finish | Predecessors | Total float | Free float | Resources | Disciplines | Main Activity | WBS | Types | EIT WBS | EIT PKG |
| --- | --- | --- | --- | --- | --- | --- | --- | --- | --- | --- | --- | --- | --- | --- | --- |
|  | 6 | **Instrument Equipment Installation** |  | 2026-01-26 | 2026-03-09 |  |  |  |  |  |  |  |  |  |  |
|  | 1 | **Analyser Instruments** |  | 2026-01-26 | 2026-03-09 |  |  |  |  |  |  |  |  |  |  |
| 2.1-HCUIN04-1000 |  | Install support / bracket | 10d | 2026-01-26 | 2026-02-05 | 2.1-HCUIN03-1000 SS | 383d | 0d | LABOUR [10 h] | EE | 1 | C03a | TY1 | C03a | EIT02.1 |
| 2.1-HCUIN04-1010 |  | Install Equipment | 20d | 2026-02-06 | 2026-02-28 | 2.1-HCUIN04-1000 | 383d | 0d | LABOUR [60 h] | EE | 1 | C03a | TY1 | C03a | EIT02.1 |
| 2.1-HCUIN04-1020 |  | Clear punch | 4d | 2026-03-02 | 2026-03-05 | 2.1-HCUIN04-1010 | 383d | 0d | LABOUR [5 h] | EE | 1 | C03a | TY1 | C03a | EIT02.1 |
| 2.1-HCUIN04-1030 |  | Complete QA/QC document | 3d | 2026-03-06 | 2026-03-09 | 2.1-HCUIN04-1020 | 383d |  | LABOUR [5.88 h] | EE | 1 | C03a | TY1 | C03a | EIT02.1 |
|  | 4 | **Instrument Calibration** |  | 2026-01-26 | 2026-03-07 |  |  |  |  |  |  |  |  |  |  |
| 2.1-HCUIN05-1000 |  | Calibration Equipment | 30d | 2026-01-26 | 2026-02-28 | 2.1-HCUIN04-1000 SS | 384d | 0d | LABOUR [1800 h] | EE | 1 | C03a | TY1 | C03a | EIT02.1 |
| 2.1-HCUIN05-1010 |  | Complete QA/QC document | 6d | 2026-03-02 | 2026-03-07 | 2.1-HCUIN05-1000 | 384d |  | LABOUR [512.28 h] | EE | 1 | C03a | TY1 | C03a | EIT02.1 |
|  | 5 | **Telecommunication** |  | 2026-03-02 | 2026-03-31 |  |  |  |  |  |  |  |  |  |  |
|  | 3 | **Telecom** |  | 2026-03-02 | 2026-03-30 |  |  |  |  |  |  |  |  |  |  |
|  | 1 | **Telecommunication Cable Installation** |  | 2026-03-02 | 2026-03-26 |  |  |  |  |  |  |  |  |  |  |
| 2.1-HCUTE01-1000 |  | Pull Cable | 15d | 2026-03-02 | 2026-03-18 | 2.1-HCUIN01-1000 SS | 364d | 0d | LABOUR [900 h] | EE | 1 | C03a | TY1 | C03a | EIT02.1 |
| 2.1-HCUTE01-1010 |  | Megger & Continuity test | 4d | 2026-03-19 | 2026-03-23 | 2.1-HCUTE01-1000 | 368d | 0d | LABOUR [50 h] | EE | 1 | C03a | TY1 | C03a | EIT02.1 |
| 2.1-HCUTE01-1020 |  | Complete QA/QC document | 3d | 2026-03-24 | 2026-03-26 | 2.1-HCUTE01-1010 | 368d |  | LABOUR [95.15 h] | EE | 1 | C03a | TY1 | C03a | EIT02.1 |
|  | 4 | **Telecommunication Termination / Glanding** |  | 2026-03-19 | 2026-03-30 |  |  |  |  |  |  |  |  |  |  |
| 2.1-HCUTE02-1000 |  | Cable Termination/Glanding | 5d | 2026-03-19 | 2026-03-24 | 2.1-HCUTE01-1000 | 365d | 0d | LABOUR [100 h] | EE | 1 | C03a | TY1 | C03a | EIT02.1 |
| 2.1-HCUTE02-1010 |  | Clear punch | 3d | 2026-03-25 | 2026-03-27 | 2.1-HCUTE02-1000 | 365d | 0d | LABOUR [10 h] | EE | 1 | C03a | TY1 | C03a | EIT02.1 |
| 2.1-HCUTE02-1020 |  | Complete QA/QC document | 2d | 2026-03-28 | 2026-03-30 | 2.1-HCUTE02-1010 | 365d |  | LABOUR [10 h] | EE | 1 | C03a | TY1 | C03a | EIT02.1 |
|  | 2 | **CCTV System** |  | 2026-03-02 | 2026-03-31 |  |  |  |  |  |  |  |  |  |  |
|  | 1 | **CCTV Cable Installation** |  | 2026-03-02 | 2026-03-31 |  |  |  |  |  |  |  |  |  |  |
| 2.1-HCUTE01.1-1000 |  | Pull Cable | 19d | 2026-03-02 | 2026-03-23 | 2.1-HCUTE01-1000 SS | 364d | 0d | LABOUR [190 h] | EE | 1 | C03a | TY1 | C03a | EIT02.1 |
| 2.1-HCUTE01.1-1010 |  | Megger & Continuity test | 4d | 2026-03-24 | 2026-03-27 | 2.1-HCUTE01.1-1000 | 364d | 0d | LABOUR [40 h] | EE | 1 | C03a | TY1 | C03a | EIT02.1 |
| 2.1-HCUTE01.1-1020 |  | Complete QA/QC document | 3d | 2026-03-28 | 2026-03-31 | 2.1-HCUTE01.1-1010 | 364d | 0d | LABOUR [30 h] | EE | 1 | C03a | TY1 | C03a | EIT02.1 |

| ID | WBS | Activity | Duration | Start | Finish | Predecessors | Total float | Free float | Constraint | Resources | Disciplines | Main Activity | WBS | Types | EIT WBS | EIT PKG |
| --- | --- | --- | --- | --- | --- | --- | --- | --- | --- | --- | --- | --- | --- | --- | --- | --- |
|  | 3 | **WBS : C03b RHCU (Residue Hydrocracking Unit)** |  | 2026-01-19 | 2026-03-31 |  |  |  |  |  |  |  |  |  |  |  |
|  | 6 | **Electrical** |  | 2026-01-26 | 2026-03-23 |  |  |  |  |  |  |  |  |  |  |  |
|  | 3 | **Electrical Cable Tray/Ladder Installation** |  | 2026-01-26 | 2026-03-23 |  |  |  |  |  |  |  |  |  |  |  |
|  | 2 | **Air Fin Cooler - EM-10701-1** |  | 2026-01-26 | 2026-03-23 |  |  |  |  |  |  |  |  |  |  |  |
| 2.1-RHCUEE03-1000 |  | Install support / bracket | 20d | 2026-01-26 | 2026-02-17 |  | 371d | 0d | start on or after 2026-01-26 | LABOUR [3 h] | EE | 1 | C03a | TY1 | C03b | EIT02.1 |
| 2.1-RHCUEE03-1550 |  | Install Ladder / Tray | 20d | 2026-02-18 | 2026-03-12 | 2.1-RHCUEE03-1000 | 371d | 0d |  | LABOUR [10 h] | EE | 1 | C03a | TY1 | C03b | EIT02.1 |
| 2.1-RHCUEE03-1560 |  | Install Conduits | 20d | 2026-02-18 | 2026-03-12 | 2.1-RHCUEE03-1550 SS | 371d | 0d |  | LABOUR [3 h] | EE | 1 | C03a | TY1 | C03b | EIT02.1 |
| 2.1-RHCUEE03-2650 |  | Clear punch | 6d | 2026-03-13 | 2026-03-19 | 2.1-RHCUEE03-1560, 2.1-RHCUEE03-1550 | 371d | 0d |  | LABOUR [3 h] | EE | 1 | C03a | TY1 | C03b | EIT02.1 |
| 2.1-RHCUEE03-3200 |  | Complete QA/QC document | 3d | 2026-03-20 | 2026-03-23 | 2.1-RHCUEE03-2650 | 371d |  |  | LABOUR [3.29 h] | EE | 1 | C03a | TY1 | C03b | EIT02.1 |
|  | 1 | **Air Fin Cooler - EM-10701-2** |  | 2026-01-26 | 2026-03-23 |  |  |  |  |  |  |  |  |  |  |  |
| 2.1-RHCUEE03-1010 |  | Install support / bracket | 20d | 2026-01-26 | 2026-02-17 | 2.1-RHCUEE03-1000 SS | 371d | 0d |  | LABOUR [3 h] | EE | 1 | C03a | TY1 | C03b | EIT02.1 |
| 2.1-RHCUEE03-1570 |  | Install Ladder / Tray | 20d | 2026-02-18 | 2026-03-12 | 2.1-RHCUEE03-1010 | 371d | 0d |  | LABOUR [10 h] | EE | 1 | C03a | TY1 | C03b | EIT02.1 |
| 2.1-RHCUEE03-1580 |  | Install Conduits | 20d | 2026-02-18 | 2026-03-12 | 2.1-RHCUEE03-1570 SS | 371d | 0d |  | LABOUR [3 h] | EE | 1 | C03a | TY1 | C03b | EIT02.1 |
| 2.1-RHCUEE03-2660 |  | Clear punch | 6d | 2026-03-13 | 2026-03-19 | 2.1-RHCUEE03-1580, 2.1-RHCUEE03-1570 | 371d | 0d |  | LABOUR [3 h] | EE | 1 | C03a | TY1 | C03b | EIT02.1 |
| 2.1-RHCUEE03-3210 |  | Complete QA/QC document | 3d | 2026-03-20 | 2026-03-23 | 2.1-RHCUEE03-2660 | 371d |  |  | LABOUR [3.29 h] | EE | 1 | C03a | TY1 | C03b | EIT02.1 |
|  | 3 | **Air Fin Cooler - EM-10711-1** |  | 2026-01-26 | 2026-03-23 |  |  |  |  |  |  |  |  |  |  |  |
| 2.1-RHCUEE03-1020 |  | Install support / bracket | 20d | 2026-01-26 | 2026-02-17 | 2.1-RHCUEE03-1010 SS | 371d | 0d |  | LABOUR [3 h] | EE | 1 | C03a | TY1 | C03b | EIT02.1 |
| 2.1-RHCUEE03-1590 |  | Install Ladder / Tray | 20d | 2026-02-18 | 2026-03-12 | 2.1-RHCUEE03-1020 | 371d | 0d |  | LABOUR [10 h] | EE | 1 | C03a | TY1 | C03b | EIT02.1 |
| 2.1-RHCUEE03-1600 |  | Install Conduits | 20d | 2026-02-18 | 2026-03-12 | 2.1-RHCUEE03-1590 SS | 371d | 0d |  | LABOUR [3 h] | EE | 1 | C03a | TY1 | C03b | EIT02.1 |
| 2.1-RHCUEE03-2670 |  | Clear punch | 6d | 2026-03-13 | 2026-03-19 | 2.1-RHCUEE03-1600, 2.1-RHCUEE03-1590 | 371d | 0d |  | LABOUR [3 h] | EE | 1 | C03a | TY1 | C03b | EIT02.1 |
| 2.1-RHCUEE03-3220 |  | Complete QA/QC document | 3d | 2026-03-20 | 2026-03-23 | 2.1-RHCUEE03-2670 | 371d |  |  | LABOUR [3.29 h] | EE | 1 | C03a | TY1 | C03b | EIT02.1 |
|  | 10 | **Air Fin Cooler - EM-10711-2** |  | 2026-01-26 | 2026-03-23 |  |  |  |  |  |  |  |  |  |  |  |
| 2.1-RHCUEE03-1030 |  | Install support / bracket | 20d | 2026-01-26 | 2026-02-17 | 2.1-RHCUEE03-1020 SS | 371d | 0d |  | LABOUR [3 h] | EE | 1 | C03a | TY1 | C03b | EIT02.1 |
| 2.1-RHCUEE03-1610 |  | Install Ladder / Tray | 20d | 2026-02-18 | 2026-03-12 | 2.1-RHCUEE03-1030 | 371d | 0d |  | LABOUR [10 h] | EE | 1 | C03a | TY1 | C03b | EIT02.1 |
| 2.1-RHCUEE03-1620 |  | Install Conduits | 20d | 2026-02-18 | 2026-03-12 | 2.1-RHCUEE03-1610 SS | 371d | 0d |  | LABOUR [3 h] | EE | 1 | C03a | TY1 | C03b | EIT02.1 |
| 2.1-RHCUEE03-2680 |  | Clear punch | 6d | 2026-03-13 | 2026-03-19 | 2.1-RHCUEE03-1620, 2.1-RHCUEE03-1610 | 371d | 0d |  | LABOUR [3 h] | EE | 1 | C03a | TY1 | C03b | EIT02.1 |
| 2.1-RHCUEE03-3230 |  | Complete QA/QC document | 3d | 2026-03-20 | 2026-03-23 | 2.1-RHCUEE03-2680 | 371d |  |  | LABOUR [3.29 h] | EE | 1 | C03a | TY1 | C03b | EIT02.1 |

| ID | WBS | Activity | Duration | Start | Finish | Predecessors | Total float | Free float | Resources | Disciplines | Main Activity | WBS | Types | EIT WBS | EIT PKG |
| --- | --- | --- | --- | --- | --- | --- | --- | --- | --- | --- | --- | --- | --- | --- | --- |
|  | 4 | **Air Fin Cooler - EM-10729-1** |  | 2026-01-26 | 2026-03-23 |  |  |  |  |  |  |  |  |  |  |
| 2.1-RHCUEE03-1040 |  | Install support / bracket | 20d | 2026-01-26 | 2026-02-17 | 2.1-RHCUEE03-1030 SS | 371d | 0d | LABOUR [3 h] | EE | 1 | C03a | TY1 | C03b | EIT02.1 |
| 2.1-RHCUEE03-1630 |  | Install Ladder / Tray | 20d | 2026-02-18 | 2026-03-12 | 2.1-RHCUEE03-1040 | 371d | 0d | LABOUR [10 h] | EE | 1 | C03a | TY1 | C03b | EIT02.1 |
| 2.1-RHCUEE03-1640 |  | Install Conduits | 20d | 2026-02-18 | 2026-03-12 | 2.1-RHCUEE03-1630 SS | 371d | 0d | LABOUR [3 h] | EE | 1 | C03a | TY1 | C03b | EIT02.1 |
| 2.1-RHCUEE03-2690 |  | Clear punch | 6d | 2026-03-13 | 2026-03-19 | 2.1-RHCUEE03-1640, 2.1-RHCUEE03-1630 | 371d | 0d | LABOUR [3 h] | EE | 1 | C03a | TY1 | C03b | EIT02.1 |
| 2.1-RHCUEE03-3240 |  | Complete QA/QC document | 3d | 2026-03-20 | 2026-03-23 | 2.1-RHCUEE03-2690 | 371d |  | LABOUR [3.29 h] | EE | 1 | C03a | TY1 | C03b | EIT02.1 |
|  | 6 | **Air Fin Cooler - EM-10729-2** |  | 2026-01-26 | 2026-03-23 |  |  |  |  |  |  |  |  |  |  |
| 2.1-RHCUEE03-1050 |  | Install support / bracket | 20d | 2026-01-26 | 2026-02-17 | 2.1-RHCUEE03-1040 SS | 371d | 0d | LABOUR [3 h] | EE | 1 | C03a | TY1 | C03b | EIT02.1 |
| 2.1-RHCUEE03-1650 |  | Install Ladder / Tray | 20d | 2026-02-18 | 2026-03-12 | 2.1-RHCUEE03-1050 | 371d | 0d | LABOUR [10 h] | EE | 1 | C03a | TY1 | C03b | EIT02.1 |
| 2.1-RHCUEE03-1660 |  | Install Conduits | 20d | 2026-02-18 | 2026-03-12 | 2.1-RHCUEE03-1650 SS | 371d | 0d | LABOUR [3 h] | EE | 1 | C03a | TY1 | C03b | EIT02.1 |
| 2.1-RHCUEE03-2700 |  | Clear punch | 6d | 2026-03-13 | 2026-03-19 | 2.1-RHCUEE03-1660, 2.1-RHCUEE03-1650 | 371d | 0d | LABOUR [3 h] | EE | 1 | C03a | TY1 | C03b | EIT02.1 |
| 2.1-RHCUEE03-3250 |  | Complete QA/QC document | 3d | 2026-03-20 | 2026-03-23 | 2.1-RHCUEE03-2700 | 371d |  | LABOUR [3.29 h] | EE | 1 | C03a | TY1 | C03b | EIT02.1 |
|  | 12 | **Air Fin Cooler - EM-10606-1** |  | 2026-01-26 | 2026-03-23 |  |  |  |  |  |  |  |  |  |  |
| 2.1-RHCUEE03-1060 |  | Install support / bracket | 20d | 2026-01-26 | 2026-02-17 | 2.1-RHCUEE03-1050 SS | 371d | 0d | LABOUR [3 h] | EE | 1 | C03a | TY1 | C03b | EIT02.1 |
| 2.1-RHCUEE03-1670 |  | Install Ladder / Tray | 20d | 2026-02-18 | 2026-03-12 | 2.1-RHCUEE03-1060 | 371d | 0d | LABOUR [10 h] | EE | 1 | C03a | TY1 | C03b | EIT02.1 |
| 2.1-RHCUEE03-1680 |  | Install Conduits | 20d | 2026-02-18 | 2026-03-12 | 2.1-RHCUEE03-1670 SS | 371d | 0d | LABOUR [3 h] | EE | 1 | C03a | TY1 | C03b | EIT02.1 |
| 2.1-RHCUEE03-2710 |  | Clear punch | 6d | 2026-03-13 | 2026-03-19 | 2.1-RHCUEE03-1680, 2.1-RHCUEE03-1670 | 371d | 0d | LABOUR [3 h] | EE | 1 | C03a | TY1 | C03b | EIT02.1 |
| 2.1-RHCUEE03-3260 |  | Complete QA/QC document | 3d | 2026-03-20 | 2026-03-23 | 2.1-RHCUEE03-2710 | 371d |  | LABOUR [3.29 h] | EE | 1 | C03a | TY1 | C03b | EIT02.1 |
|  | 11 | **Air Fin Cooler - EM-10606-2** |  | 2026-01-26 | 2026-03-23 |  |  |  |  |  |  |  |  |  |  |
| 2.1-RHCUEE03-1070 |  | Install support / bracket | 20d | 2026-01-26 | 2026-02-17 | 2.1-RHCUEE03-1060 SS | 371d | 0d | LABOUR [3 h] | EE | 1 | C03a | TY1 | C03b | EIT02.1 |
| 2.1-RHCUEE03-1690 |  | Install Ladder / Tray | 20d | 2026-02-18 | 2026-03-12 | 2.1-RHCUEE03-1070 | 371d | 0d | LABOUR [10 h] | EE | 1 | C03a | TY1 | C03b | EIT02.1 |
| 2.1-RHCUEE03-1700 |  | Install Conduits | 20d | 2026-02-18 | 2026-03-12 | 2.1-RHCUEE03-1690 SS | 371d | 0d | LABOUR [3 h] | EE | 1 | C03a | TY1 | C03b | EIT02.1 |
| 2.1-RHCUEE03-2720 |  | Clear punch | 6d | 2026-03-13 | 2026-03-19 | 2.1-RHCUEE03-1700, 2.1-RHCUEE03-1690 | 371d | 0d | LABOUR [3 h] | EE | 1 | C03a | TY1 | C03b | EIT02.1 |
| 2.1-RHCUEE03-3270 |  | Complete QA/QC document | 3d | 2026-03-20 | 2026-03-23 | 2.1-RHCUEE03-2720 | 371d |  | LABOUR [3.29 h] | EE | 1 | C03a | TY1 | C03b | EIT02.1 |

| ID | WBS | Activity | Duration | Start | Finish | Predecessors | Total float | Free float | Resources | Disciplines | Main Activity | WBS | Types | EIT WBS | EIT PKG |
| --- | --- | --- | --- | --- | --- | --- | --- | --- | --- | --- | --- | --- | --- | --- | --- |
|  | 42 | **Air Fin Cooler - EM-10606-3** |  | 2026-01-26 | 2026-03-23 |  |  |  |  |  |  |  |  |  |  |
| 2.1-RHCUEE03-1080 |  | Install support / bracket | 20d | 2026-01-26 | 2026-02-17 | 2.1-RHCUEE03-1070 SS | 371d | 0d | LABOUR [3 h] | EE | 1 | C03a | TY1 | C03b | EIT02.1 |
| 2.1-RHCUEE03-1710 |  | Install Ladder / Tray | 20d | 2026-02-18 | 2026-03-12 | 2.1-RHCUEE03-1080 | 371d | 0d | LABOUR [10 h] | EE | 1 | C03a | TY1 | C03b | EIT02.1 |
| 2.1-RHCUEE03-1720 |  | Install Conduits | 20d | 2026-02-18 | 2026-03-12 | 2.1-RHCUEE03-1710 SS | 371d | 0d | LABOUR [3 h] | EE | 1 | C03a | TY1 | C03b | EIT02.1 |
| 2.1-RHCUEE03-2730 |  | Clear punch | 6d | 2026-03-13 | 2026-03-19 | 2.1-RHCUEE03-1720, 2.1-RHCUEE03-1710 | 371d | 0d | LABOUR [3 h] | EE | 1 | C03a | TY1 | C03b | EIT02.1 |
| 2.1-RHCUEE03-3280 |  | Complete QA/QC document | 3d | 2026-03-20 | 2026-03-23 | 2.1-RHCUEE03-2730 | 371d |  | LABOUR [3.29 h] | EE | 1 | C03a | TY1 | C03b | EIT02.1 |
|  | 55 | **Air Fin Cooler - EM-10606-4** |  | 2026-01-26 | 2026-03-23 |  |  |  |  |  |  |  |  |  |  |
| 2.1-RHCUEE03-1090 |  | Install support / bracket | 20d | 2026-01-26 | 2026-02-17 | 2.1-RHCUEE03-1080 SS | 371d | 0d | LABOUR [3 h] | EE | 1 | C03a | TY1 | C03b | EIT02.1 |
| 2.1-RHCUEE03-1730 |  | Install Ladder / Tray | 20d | 2026-02-18 | 2026-03-12 | 2.1-RHCUEE03-1090 | 371d | 0d | LABOUR [10 h] | EE | 1 | C03a | TY1 | C03b | EIT02.1 |
| 2.1-RHCUEE03-1740 |  | Install Conduits | 20d | 2026-02-18 | 2026-03-12 | 2.1-RHCUEE03-1730 SS | 371d | 0d | LABOUR [3 h] | EE | 1 | C03a | TY1 | C03b | EIT02.1 |
| 2.1-RHCUEE03-2740 |  | Clear punch | 6d | 2026-03-13 | 2026-03-19 | 2.1-RHCUEE03-1740, 2.1-RHCUEE03-1730 | 371d | 0d | LABOUR [3 h] | EE | 1 | C03a | TY1 | C03b | EIT02.1 |
| 2.1-RHCUEE03-3290 |  | Complete QA/QC document | 3d | 2026-03-20 | 2026-03-23 | 2.1-RHCUEE03-2740 | 371d |  | LABOUR [3.29 h] | EE | 1 | C03a | TY1 | C03b | EIT02.1 |
|  | 43 | **Air Fin Cooler - EM-10610-25** |  | 2026-01-26 | 2026-03-23 |  |  |  |  |  |  |  |  |  |  |
| 2.1-RHCUEE03-1100 |  | Install support / bracket | 20d | 2026-01-26 | 2026-02-17 | 2.1-RHCUEE03-1090 SS | 371d | 0d | LABOUR [3 h] | EE | 1 | C03a | TY1 | C03b | EIT02.1 |
| 2.1-RHCUEE03-1750 |  | Install Ladder / Tray | 20d | 2026-02-18 | 2026-03-12 | 2.1-RHCUEE03-1100 | 371d | 0d | LABOUR [10 h] | EE | 1 | C03a | TY1 | C03b | EIT02.1 |
| 2.1-RHCUEE03-1760 |  | Install Conduits | 20d | 2026-02-18 | 2026-03-12 | 2.1-RHCUEE03-1750 SS | 371d | 0d | LABOUR [3 h] | EE | 1 | C03a | TY1 | C03b | EIT02.1 |
| 2.1-RHCUEE03-2750 |  | Clear punch | 6d | 2026-03-13 | 2026-03-19 | 2.1-RHCUEE03-1760, 2.1-RHCUEE03-1750 | 371d | 0d | LABOUR [3 h] | EE | 1 | C03a | TY1 | C03b | EIT02.1 |
| 2.1-RHCUEE03-3300 |  | Complete QA/QC document | 3d | 2026-03-20 | 2026-03-23 | 2.1-RHCUEE03-2750 | 371d |  | LABOUR [3.29 h] | EE | 1 | C03a | TY1 | C03b | EIT02.1 |
|  | 56 | **Air Fin Cooler - EM-10610-26** |  | 2026-01-26 | 2026-03-23 |  |  |  |  |  |  |  |  |  |  |
| 2.1-RHCUEE03-1110 |  | Install support / bracket | 20d | 2026-01-26 | 2026-02-17 | 2.1-RHCUEE03-1100 SS | 371d | 0d | LABOUR [3 h] | EE | 1 | C03a | TY1 | C03b | EIT02.1 |
| 2.1-RHCUEE03-1770 |  | Install Ladder / Tray | 20d | 2026-02-18 | 2026-03-12 | 2.1-RHCUEE03-1110 | 371d | 0d | LABOUR [10 h] | EE | 1 | C03a | TY1 | C03b | EIT02.1 |
| 2.1-RHCUEE03-1780 |  | Install Conduits | 20d | 2026-02-18 | 2026-03-12 | 2.1-RHCUEE03-1770 SS | 371d | 0d | LABOUR [3 h] | EE | 1 | C03a | TY1 | C03b | EIT02.1 |
| 2.1-RHCUEE03-2760 |  | Clear punch | 6d | 2026-03-13 | 2026-03-19 | 2.1-RHCUEE03-1780, 2.1-RHCUEE03-1770 | 371d | 0d | LABOUR [3 h] | EE | 1 | C03a | TY1 | C03b | EIT02.1 |
| 2.1-RHCUEE03-3310 |  | Complete QA/QC document | 3d | 2026-03-20 | 2026-03-23 | 2.1-RHCUEE03-2760 | 371d |  | LABOUR [3.29 h] | EE | 1 | C03a | TY1 | C03b | EIT02.1 |

| ID | WBS | Activity | Duration | Start | Finish | Predecessors | Total float | Free float | Resources | Disciplines | Main Activity | WBS | Types | EIT WBS | EIT PKG |
| --- | --- | --- | --- | --- | --- | --- | --- | --- | --- | --- | --- | --- | --- | --- | --- |
|  | 44 | **Air Fin Cooler - EM-10610-27** |  | 2026-01-26 | 2026-03-23 |  |  |  |  |  |  |  |  |  |  |
| 2.1-RHCUEE03-1120 |  | Install support / bracket | 20d | 2026-01-26 | 2026-02-17 | 2.1-RHCUEE03-1110 SS | 371d | 0d | LABOUR [3 h] | EE | 1 | C03a | TY1 | C03b | EIT02.1 |
| 2.1-RHCUEE03-1790 |  | Install Ladder / Tray | 20d | 2026-02-18 | 2026-03-12 | 2.1-RHCUEE03-1120 | 371d | 0d | LABOUR [10 h] | EE | 1 | C03a | TY1 | C03b | EIT02.1 |
| 2.1-RHCUEE03-1800 |  | Install Conduits | 20d | 2026-02-18 | 2026-03-12 | 2.1-RHCUEE03-1790 SS | 371d | 0d | LABOUR [3 h] | EE | 1 | C03a | TY1 | C03b | EIT02.1 |
| 2.1-RHCUEE03-2770 |  | Clear punch | 6d | 2026-03-13 | 2026-03-19 | 2.1-RHCUEE03-1800, 2.1-RHCUEE03-1790 | 371d | 0d | LABOUR [3 h] | EE | 1 | C03a | TY1 | C03b | EIT02.1 |
| 2.1-RHCUEE03-3320 |  | Complete QA/QC document | 3d | 2026-03-20 | 2026-03-23 | 2.1-RHCUEE03-2770 | 371d |  |  | EE | 1 | C03a | TY1 | C03b | EIT02.1 |
|  | 57 | **Air Fin Cooler - EM-10610-28** |  | 2026-01-26 | 2026-03-23 |  |  |  |  |  |  |  |  |  |  |
| 2.1-RHCUEE03-1130 |  | Install support / bracket | 20d | 2026-01-26 | 2026-02-17 | 2.1-RHCUEE03-1120 SS | 371d | 0d | LABOUR [3 h] | EE | 1 | C03a | TY1 | C03b | EIT02.1 |
| 2.1-RHCUEE03-1810 |  | Install Ladder / Tray | 20d | 2026-02-18 | 2026-03-12 | 2.1-RHCUEE03-1130 | 371d | 0d | LABOUR [10 h] | EE | 1 | C03a | TY1 | C03b | EIT02.1 |
| 2.1-RHCUEE03-1820 |  | Install Conduits | 20d | 2026-02-18 | 2026-03-12 | 2.1-RHCUEE03-1810 SS | 371d | 0d | LABOUR [3 h] | EE | 1 | C03a | TY1 | C03b | EIT02.1 |
| 2.1-RHCUEE03-2780 |  | Clear punch | 6d | 2026-03-13 | 2026-03-19 | 2.1-RHCUEE03-1820, 2.1-RHCUEE03-1810 | 371d | 0d | LABOUR [3 h] | EE | 1 | C03a | TY1 | C03b | EIT02.1 |
| 2.1-RHCUEE03-3330 |  | Complete QA/QC document | 3d | 2026-03-20 | 2026-03-23 | 2.1-RHCUEE03-2780 | 371d |  | LABOUR [3.29 h] | EE | 1 | C03a | TY1 | C03b | EIT02.1 |
|  | 45 | **Air Fin Cooler - EM-10610-29** |  | 2026-01-26 | 2026-03-23 |  |  |  |  |  |  |  |  |  |  |
| 2.1-RHCUEE03-1140 |  | Install support / bracket | 20d | 2026-01-26 | 2026-02-17 | 2.1-RHCUEE03-1130 SS | 371d | 0d | LABOUR [3 h] | EE | 1 | C03a | TY1 | C03b | EIT02.1 |
| 2.1-RHCUEE03-1830 |  | Install Ladder / Tray | 20d | 2026-02-18 | 2026-03-12 | 2.1-RHCUEE03-1140 | 371d | 0d | LABOUR [10 h] | EE | 1 | C03a | TY1 | C03b | EIT02.1 |
| 2.1-RHCUEE03-1840 |  | Install Conduits | 20d | 2026-02-18 | 2026-03-12 | 2.1-RHCUEE03-1830 SS | 371d | 0d | LABOUR [3 h] | EE | 1 | C03a | TY1 | C03b | EIT02.1 |
| 2.1-RHCUEE03-2790 |  | Clear punch | 6d | 2026-03-13 | 2026-03-19 | 2.1-RHCUEE03-1840, 2.1-RHCUEE03-1830 | 371d | 0d | LABOUR [3 h] | EE | 1 | C03a | TY1 | C03b | EIT02.1 |
| 2.1-RHCUEE03-3340 |  | Complete QA/QC document | 3d | 2026-03-20 | 2026-03-23 | 2.1-RHCUEE03-2790 | 371d |  |  | EE | 1 | C03a | TY1 | C03b | EIT02.1 |
|  | 54 | **Air Fin Cooler - EM-10610-30** |  | 2026-01-26 | 2026-03-23 |  |  |  |  |  |  |  |  |  |  |
| 2.1-RHCUEE03-1150 |  | Install support / bracket | 20d | 2026-01-26 | 2026-02-17 | 2.1-RHCUEE03-1140 SS | 371d | 0d | LABOUR [3 h] | EE | 1 | C03a | TY1 | C03b | EIT02.1 |
| 2.1-RHCUEE03-1850 |  | Install Ladder / Tray | 20d | 2026-02-18 | 2026-03-12 | 2.1-RHCUEE03-1150 | 371d | 0d | LABOUR [10 h] | EE | 1 | C03a | TY1 | C03b | EIT02.1 |
| 2.1-RHCUEE03-1860 |  | Install Conduits | 20d | 2026-02-18 | 2026-03-12 | 2.1-RHCUEE03-1850 SS | 371d | 0d | LABOUR [3 h] | EE | 1 | C03a | TY1 | C03b | EIT02.1 |
| 2.1-RHCUEE03-2800 |  | Clear punch | 6d | 2026-03-13 | 2026-03-19 | 2.1-RHCUEE03-1860, 2.1-RHCUEE03-1850 | 371d | 0d | LABOUR [3 h] | EE | 1 | C03a | TY1 | C03b | EIT02.1 |
| 2.1-RHCUEE03-3350 |  | Complete QA/QC document | 3d | 2026-03-20 | 2026-03-23 | 2.1-RHCUEE03-2800 | 371d |  |  | EE | 1 | C03a | TY1 | C03b | EIT02.1 |

| ID | WBS | Activity | Duration | Start | Finish | Predecessors | Total float | Free float | Resources | Disciplines | Main Activity | WBS | Types | EIT WBS | EIT PKG |
| --- | --- | --- | --- | --- | --- | --- | --- | --- | --- | --- | --- | --- | --- | --- | --- |
|  | 58 | **Air Fin Cooler - EM-10610-31** |  | 2026-01-26 | 2026-03-23 |  |  |  |  |  |  |  |  |  |  |
| 2.1-RHCUEE03-1160 |  | Install support / bracket | 20d | 2026-01-26 | 2026-02-17 | 2.1-RHCUEE03-1150 SS | 371d | 0d | LABOUR [3 h] | EE | 1 | C03a | TY1 | C03b | EIT02.1 |
| 2.1-RHCUEE03-1870 |  | Install Ladder / Tray | 20d | 2026-02-18 | 2026-03-12 | 2.1-RHCUEE03-1160 | 371d | 0d | LABOUR [10 h] | EE | 1 | C03a | TY1 | C03b | EIT02.1 |
| 2.1-RHCUEE03-1880 |  | Install Conduits | 20d | 2026-02-18 | 2026-03-12 | 2.1-RHCUEE03-1870 SS | 371d | 0d | LABOUR [3 h] | EE | 1 | C03a | TY1 | C03b | EIT02.1 |
| 2.1-RHCUEE03-2810 |  | Clear punch | 6d | 2026-03-13 | 2026-03-19 | 2.1-RHCUEE03-1880, 2.1-RHCUEE03-1870 | 371d | 0d | LABOUR [3 h] | EE | 1 | C03a | TY1 | C03b | EIT02.1 |
| 2.1-RHCUEE03-3360 |  | Complete QA/QC document | 3d | 2026-03-20 | 2026-03-23 | 2.1-RHCUEE03-2810 | 371d |  | LABOUR [3.29 h] | EE | 1 | C03a | TY1 | C03b | EIT02.1 |
|  | 46 | **Air Fin Cooler - EM-10610-32** |  | 2026-01-26 | 2026-03-23 |  |  |  |  |  |  |  |  |  |  |
| 2.1-RHCUEE03-1170 |  | Install support / bracket | 20d | 2026-01-26 | 2026-02-17 | 2.1-RHCUEE03-1160 SS | 371d | 0d | LABOUR [3 h] | EE | 1 | C03a | TY1 | C03b | EIT02.1 |
| 2.1-RHCUEE03-1890 |  | Install Ladder / Tray | 20d | 2026-02-18 | 2026-03-12 | 2.1-RHCUEE03-1170 | 371d | 0d | LABOUR [10 h] | EE | 1 | C03a | TY1 | C03b | EIT02.1 |
| 2.1-RHCUEE03-1900 |  | Install Conduits | 20d | 2026-02-18 | 2026-03-12 | 2.1-RHCUEE03-1890 SS | 371d | 0d | LABOUR [3 h] | EE | 1 | C03a | TY1 | C03b | EIT02.1 |
| 2.1-RHCUEE03-2820 |  | Clear punch | 6d | 2026-03-13 | 2026-03-19 | 2.1-RHCUEE03-1900, 2.1-RHCUEE03-1890 | 371d | 0d | LABOUR [3 h] | EE | 1 | C03a | TY1 | C03b | EIT02.1 |
| 2.1-RHCUEE03-3370 |  | Complete QA/QC document | 3d | 2026-03-20 | 2026-03-23 | 2.1-RHCUEE03-2820 | 371d |  | LABOUR [3.29 h] | EE | 1 | C03a | TY1 | C03b | EIT02.1 |
|  | 7 | **Air Fin Cooler - EM-10610-13** |  | 2026-01-26 | 2026-03-23 |  |  |  |  |  |  |  |  |  |  |
| 2.1-RHCUEE03-1180 |  | Install support / bracket | 20d | 2026-01-26 | 2026-02-17 | 2.1-RHCUEE03-1170 SS | 371d | 0d | LABOUR [3 h] | EE | 1 | C03a | TY1 | C03b | EIT02.1 |
| 2.1-RHCUEE03-1910 |  | Install Ladder / Tray | 20d | 2026-02-18 | 2026-03-12 | 2.1-RHCUEE03-1180 | 371d | 0d | LABOUR [10 h] | EE | 1 | C03a | TY1 | C03b | EIT02.1 |
| 2.1-RHCUEE03-1920 |  | Install Conduits | 20d | 2026-02-18 | 2026-03-12 | 2.1-RHCUEE03-1910 SS | 371d | 0d | LABOUR [3 h] | EE | 1 | C03a | TY1 | C03b | EIT02.1 |
| 2.1-RHCUEE03-2830 |  | Clear punch | 6d | 2026-03-13 | 2026-03-19 | 2.1-RHCUEE03-1920, 2.1-RHCUEE03-1910 | 371d | 0d | LABOUR [3 h] | EE | 1 | C03a | TY1 | C03b | EIT02.1 |
| 2.1-RHCUEE03-3380 |  | Complete QA/QC document | 3d | 2026-03-20 | 2026-03-23 | 2.1-RHCUEE03-2830 | 371d |  | LABOUR [3.29 h] | EE | 1 | C03a | TY1 | C03b | EIT02.1 |
|  | 59 | **Air Fin Cooler - EM-10610-14** |  | 2026-01-26 | 2026-03-23 |  |  |  |  |  |  |  |  |  |  |
| 2.1-RHCUEE03-1190 |  | Install support / bracket | 20d | 2026-01-26 | 2026-02-17 | 2.1-RHCUEE03-1180 SS | 371d | 0d | LABOUR [3 h] | EE | 1 | C03a | TY1 | C03b | EIT02.1 |
| 2.1-RHCUEE03-1930 |  | Install Ladder / Tray | 20d | 2026-02-18 | 2026-03-12 | 2.1-RHCUEE03-1190 | 371d | 0d |  | EE | 1 | C03a | TY1 | C03b | EIT02.1 |
| 2.1-RHCUEE03-1940 |  | Install Conduits | 20d | 2026-02-18 | 2026-03-12 | 2.1-RHCUEE03-1930 SS | 371d | 0d |  | EE | 1 | C03a | TY1 | C03b | EIT02.1 |
| 2.1-RHCUEE03-2840 |  | Clear punch | 6d | 2026-03-13 | 2026-03-19 | 2.1-RHCUEE03-1940, 2.1-RHCUEE03-1930 | 371d | 0d |  | EE | 1 | C03a | TY1 | C03b | EIT02.1 |
| 2.1-RHCUEE03-3390 |  | Complete QA/QC document | 3d | 2026-03-20 | 2026-03-23 | 2.1-RHCUEE03-2840 | 371d |  |  | EE | 1 | C03a | TY1 | C03b | EIT02.1 |

| ID | WBS | Activity | Duration | Start | Finish | Predecessors | Total float | Free float | Disciplines | Main Activity | WBS | Types | EIT WBS | EIT PKG |
| --- | --- | --- | --- | --- | --- | --- | --- | --- | --- | --- | --- | --- | --- | --- |
|  | 47 | **Air Fin Cooler - EM-10610-15** |  | 2026-01-26 | 2026-03-23 |  |  |  |  |  |  |  |  |  |
| 2.1-RHCUEE03-1200 |  | Install support / bracket | 20d | 2026-01-26 | 2026-02-17 | 2.1-RHCUEE03-1190 SS | 371d | 0d | EE | 1 | C03a | TY1 | C03b | EIT02.1 |
| 2.1-RHCUEE03-1950 |  | Install Ladder / Tray | 20d | 2026-02-18 | 2026-03-12 | 2.1-RHCUEE03-1200 | 371d | 0d | EE | 1 | C03a | TY1 | C03b | EIT02.1 |
| 2.1-RHCUEE03-1960 |  | Install Conduits | 20d | 2026-02-18 | 2026-03-12 | 2.1-RHCUEE03-1950 SS | 371d | 0d | EE | 1 | C03a | TY1 | C03b | EIT02.1 |
| 2.1-RHCUEE03-2850 |  | Clear punch | 6d | 2026-03-13 | 2026-03-19 | 2.1-RHCUEE03-1960, 2.1-RHCUEE03-1950 | 371d | 0d | EE | 1 | C03a | TY1 | C03b | EIT02.1 |
| 2.1-RHCUEE03-3400 |  | Complete QA/QC document | 3d | 2026-03-20 | 2026-03-23 | 2.1-RHCUEE03-2850 | 371d |  | EE | 1 | C03a | TY1 | C03b | EIT02.1 |
|  | 60 | **Air Fin Cooler - EM-10610-16** |  | 2026-01-26 | 2026-03-23 |  |  |  |  |  |  |  |  |  |
| 2.1-RHCUEE03-1210 |  | Install support / bracket | 20d | 2026-01-26 | 2026-02-17 | 2.1-RHCUEE03-1200 SS | 371d | 0d | EE | 1 | C03a | TY1 | C03b | EIT02.1 |
| 2.1-RHCUEE03-1970 |  | Install Ladder / Tray | 20d | 2026-02-18 | 2026-03-12 | 2.1-RHCUEE03-1210 | 371d | 0d | EE | 1 | C03a | TY1 | C03b | EIT02.1 |
| 2.1-RHCUEE03-1980 |  | Install Conduits | 20d | 2026-02-18 | 2026-03-12 | 2.1-RHCUEE03-1970 SS | 371d | 0d | EE | 1 | C03a | TY1 | C03b | EIT02.1 |
| 2.1-RHCUEE03-2860 |  | Clear punch | 6d | 2026-03-13 | 2026-03-19 | 2.1-RHCUEE03-1980, 2.1-RHCUEE03-1970 | 371d | 0d | EE | 1 | C03a | TY1 | C03b | EIT02.1 |
| 2.1-RHCUEE03-3410 |  | Complete QA/QC document | 3d | 2026-03-20 | 2026-03-23 | 2.1-RHCUEE03-2860 | 371d |  | EE | 1 | C03a | TY1 | C03b | EIT02.1 |
|  | 48 | **Air Fin Cooler - EM-10610-17** |  | 2026-01-26 | 2026-03-23 |  |  |  |  |  |  |  |  |  |
| 2.1-RHCUEE03-1220 |  | Install support / bracket | 20d | 2026-01-26 | 2026-02-17 | 2.1-RHCUEE03-1210 SS | 371d | 0d | EE | 1 | C03a | TY1 | C03b | EIT02.1 |
| 2.1-RHCUEE03-1990 |  | Install Ladder / Tray | 20d | 2026-02-18 | 2026-03-12 | 2.1-RHCUEE03-1220 | 371d | 0d | EE | 1 | C03a | TY1 | C03b | EIT02.1 |
| 2.1-RHCUEE03-2000 |  | Install Conduits | 20d | 2026-02-18 | 2026-03-12 | 2.1-RHCUEE03-1990 SS | 371d | 0d | EE | 1 | C03a | TY1 | C03b | EIT02.1 |
| 2.1-RHCUEE03-2870 |  | Clear punch | 6d | 2026-03-13 | 2026-03-19 | 2.1-RHCUEE03-2000, 2.1-RHCUEE03-1990 | 371d | 0d | EE | 1 | C03a | TY1 | C03b | EIT02.1 |
| 2.1-RHCUEE03-3420 |  | Complete QA/QC document | 3d | 2026-03-20 | 2026-03-23 | 2.1-RHCUEE03-2870 | 371d |  | EE | 1 | C03a | TY1 | C03b | EIT02.1 |
|  | 61 | **Air Fin Cooler - EM-10610-18** |  | 2026-01-26 | 2026-03-23 |  |  |  |  |  |  |  |  |  |
| 2.1-RHCUEE03-1230 |  | Install support / bracket | 20d | 2026-01-26 | 2026-02-17 | 2.1-RHCUEE03-1220 SS | 371d | 0d | EE | 1 | C03a | TY1 | C03b | EIT02.1 |
| 2.1-RHCUEE03-2010 |  | Install Ladder / Tray | 20d | 2026-02-18 | 2026-03-12 | 2.1-RHCUEE03-1230 | 371d | 0d | EE | 1 | C03a | TY1 | C03b | EIT02.1 |
| 2.1-RHCUEE03-2020 |  | Install Conduits | 20d | 2026-02-18 | 2026-03-12 | 2.1-RHCUEE03-2010 SS | 371d | 0d | EE | 1 | C03a | TY1 | C03b | EIT02.1 |
| 2.1-RHCUEE03-2880 |  | Clear punch | 6d | 2026-03-13 | 2026-03-19 | 2.1-RHCUEE03-2020, 2.1-RHCUEE03-2010 | 371d | 0d | EE | 1 | C03a | TY1 | C03b | EIT02.1 |
| 2.1-RHCUEE03-3430 |  | Complete QA/QC document | 3d | 2026-03-20 | 2026-03-23 | 2.1-RHCUEE03-2880 | 371d |  | EE | 1 | C03a | TY1 | C03b | EIT02.1 |

| ID | WBS | Activity | Duration | Start | Finish | Predecessors | Total float | Free float | Resources | Disciplines | Main Activity | WBS | Types | EIT WBS | EIT PKG |
| --- | --- | --- | --- | --- | --- | --- | --- | --- | --- | --- | --- | --- | --- | --- | --- |
|  | 49 | **Air Fin Cooler - EM-10610-19** |  | 2026-01-26 | 2026-03-23 |  |  |  |  |  |  |  |  |  |  |
| 2.1-RHCUEE03-1240 |  | Install support / bracket | 20d | 2026-01-26 | 2026-02-17 | 2.1-RHCUEE03-1230 SS | 371d | 0d | LABOUR [3 h] | EE | 1 | C03a | TY1 | C03b | EIT02.1 |
| 2.1-RHCUEE03-2030 |  | Install Ladder / Tray | 20d | 2026-02-18 | 2026-03-12 | 2.1-RHCUEE03-1240 | 371d | 0d | LABOUR [10 h] | EE | 1 | C03a | TY1 | C03b | EIT02.1 |
| 2.1-RHCUEE03-2040 |  | Install Conduits | 20d | 2026-02-18 | 2026-03-12 | 2.1-RHCUEE03-2030 SS | 371d | 0d | LABOUR [3 h] | EE | 1 | C03a | TY1 | C03b | EIT02.1 |
| 2.1-RHCUEE03-2890 |  | Clear punch | 6d | 2026-03-13 | 2026-03-19 | 2.1-RHCUEE03-2040, 2.1-RHCUEE03-2030 | 371d | 0d | LABOUR [3 h] | EE | 1 | C03a | TY1 | C03b | EIT02.1 |
| 2.1-RHCUEE03-3440 |  | Complete QA/QC document | 3d | 2026-03-20 | 2026-03-23 | 2.1-RHCUEE03-2890 | 371d |  | LABOUR [3.29 h] | EE | 1 | C03a | TY1 | C03b | EIT02.1 |
|  | 62 | **Air Fin Cooler - EM-10610-20** |  | 2026-01-26 | 2026-03-23 |  |  |  |  |  |  |  |  |  |  |
| 2.1-RHCUEE03-1250 |  | Install support / bracket | 20d | 2026-01-26 | 2026-02-17 | 2.1-RHCUEE03-1240 SS | 371d | 0d | LABOUR [3 h] | EE | 1 | C03a | TY1 | C03b | EIT02.1 |
| 2.1-RHCUEE03-2050 |  | Install Ladder / Tray | 20d | 2026-02-18 | 2026-03-12 | 2.1-RHCUEE03-1250 | 371d | 0d | LABOUR [10 h] | EE | 1 | C03a | TY1 | C03b | EIT02.1 |
| 2.1-RHCUEE03-2060 |  | Install Conduits | 20d | 2026-02-18 | 2026-03-12 | 2.1-RHCUEE03-2050 SS | 371d | 0d | LABOUR [3 h] | EE | 1 | C03a | TY1 | C03b | EIT02.1 |
| 2.1-RHCUEE03-2900 |  | Clear punch | 6d | 2026-03-13 | 2026-03-19 | 2.1-RHCUEE03-2060, 2.1-RHCUEE03-2050 | 371d | 0d | LABOUR [3 h] | EE | 1 | C03a | TY1 | C03b | EIT02.1 |
| 2.1-RHCUEE03-3450 |  | Complete QA/QC document | 3d | 2026-03-20 | 2026-03-23 | 2.1-RHCUEE03-2900 | 371d |  | LABOUR [3.29 h] | EE | 1 | C03a | TY1 | C03b | EIT02.1 |
|  | 50 | **Air Fin Cooler - EM-10610-21** |  | 2026-01-26 | 2026-03-23 |  |  |  |  |  |  |  |  |  |  |
| 2.1-RHCUEE03-1260 |  | Install support / bracket | 20d | 2026-01-26 | 2026-02-17 | 2.1-RHCUEE03-1250 SS | 371d | 0d | LABOUR [3 h] | EE | 1 | C03a | TY1 | C03b | EIT02.1 |
| 2.1-RHCUEE03-2070 |  | Install Ladder / Tray | 20d | 2026-02-18 | 2026-03-12 | 2.1-RHCUEE03-1260 | 371d | 0d | LABOUR [10 h] | EE | 1 | C03a | TY1 | C03b | EIT02.1 |
| 2.1-RHCUEE03-2080 |  | Install Conduits | 20d | 2026-02-18 | 2026-03-12 | 2.1-RHCUEE03-2070 SS | 371d | 0d | LABOUR [3 h] | EE | 1 | C03a | TY1 | C03b | EIT02.1 |
| 2.1-RHCUEE03-2910 |  | Clear punch | 6d | 2026-03-13 | 2026-03-19 | 2.1-RHCUEE03-2080, 2.1-RHCUEE03-2070 | 371d | 0d | LABOUR [3 h] | EE | 1 | C03a | TY1 | C03b | EIT02.1 |
| 2.1-RHCUEE03-3460 |  | Complete QA/QC document | 3d | 2026-03-20 | 2026-03-23 | 2.1-RHCUEE03-2910 | 371d |  | LABOUR [3.29 h] | EE | 1 | C03a | TY1 | C03b | EIT02.1 |
|  | 63 | **Air Fin Cooler - EM-10610-22** |  | 2026-01-26 | 2026-03-23 |  |  |  |  |  |  |  |  |  |  |
| 2.1-RHCUEE03-1270 |  | Install support / bracket | 20d | 2026-01-26 | 2026-02-17 | 2.1-RHCUEE03-1260 SS | 371d | 0d | LABOUR [3 h] | EE | 1 | C03a | TY1 | C03b | EIT02.1 |
| 2.1-RHCUEE03-2090 |  | Install Ladder / Tray | 20d | 2026-02-18 | 2026-03-12 | 2.1-RHCUEE03-1270 | 371d | 0d | LABOUR [10 h] | EE | 1 | C03a | TY1 | C03b | EIT02.1 |
| 2.1-RHCUEE03-2100 |  | Install Conduits | 20d | 2026-02-18 | 2026-03-12 | 2.1-RHCUEE03-2090 SS | 371d | 0d | LABOUR [3 h] | EE | 1 | C03a | TY1 | C03b | EIT02.1 |
| 2.1-RHCUEE03-2920 |  | Clear punch | 6d | 2026-03-13 | 2026-03-19 | 2.1-RHCUEE03-2100, 2.1-RHCUEE03-2090 | 371d | 0d | LABOUR [3 h] | EE | 1 | C03a | TY1 | C03b | EIT02.1 |
| 2.1-RHCUEE03-3470 |  | Complete QA/QC document | 3d | 2026-03-20 | 2026-03-23 | 2.1-RHCUEE03-2920 | 371d |  | LABOUR [3.29 h] | EE | 1 | C03a | TY1 | C03b | EIT02.1 |

| ID | WBS | Activity | Duration | Start | Finish | Predecessors | Total float | Free float | Constraint | Resources | Disciplines | Main Activity | WBS | Types | EIT WBS | EIT PKG |
| --- | --- | --- | --- | --- | --- | --- | --- | --- | --- | --- | --- | --- | --- | --- | --- | --- |
|  | 51 | **Air Fin Cooler - EM-10610-23** |  | 2026-01-26 | 2026-03-23 |  |  |  |  |  |  |  |  |  |  |  |
| 2.1-RHCUEE03-1280 |  | Install support / bracket | 20d | 2026-01-26 | 2026-02-17 | 2.1-RHCUEE03-1270 SS | 371d | 0d |  | LABOUR [3 h] | EE | 1 | C03a | TY1 | C03b | EIT02.1 |
| 2.1-RHCUEE03-2110 |  | Install Ladder / Tray | 20d | 2026-02-18 | 2026-03-12 | 2.1-RHCUEE03-1280 | 371d | 0d |  | LABOUR [10 h] | EE | 1 | C03a | TY1 | C03b | EIT02.1 |
| 2.1-RHCUEE03-2120 |  | Install Conduits | 20d | 2026-02-18 | 2026-03-12 | 2.1-RHCUEE03-2110 SS | 371d | 0d |  | LABOUR [3 h] | EE | 1 | C03a | TY1 | C03b | EIT02.1 |
| 2.1-RHCUEE03-2930 |  | Clear punch | 6d | 2026-03-13 | 2026-03-19 | 2.1-RHCUEE03-2120, 2.1-RHCUEE03-2110 | 371d | 0d |  | LABOUR [3 h] | EE | 1 | C03a | TY1 | C03b | EIT02.1 |
| 2.1-RHCUEE03-3480 |  | Complete QA/QC document | 3d | 2026-03-20 | 2026-03-23 | 2.1-RHCUEE03-2930 | 371d |  |  | LABOUR [3.29 h] | EE | 1 | C03a | TY1 | C03b | EIT02.1 |
|  | 64 | **Air Fin Cooler - EM-10610-24** |  | 2026-01-26 | 2026-03-23 |  |  |  |  |  |  |  |  |  |  |  |
| 2.1-RHCUEE03-1290 |  | Install support / bracket | 20d | 2026-01-26 | 2026-02-17 | 2.1-RHCUEE03-1280 SS | 371d | 0d |  | LABOUR [3 h] | EE | 1 | C03a | TY1 | C03b | EIT02.1 |
| 2.1-RHCUEE03-2130 |  | Install Ladder / Tray | 20d | 2026-02-18 | 2026-03-12 | 2.1-RHCUEE03-1290 | 371d | 0d |  | LABOUR [10 h] | EE | 1 | C03a | TY1 | C03b | EIT02.1 |
| 2.1-RHCUEE03-2140 |  | Install Conduits | 20d | 2026-02-18 | 2026-03-12 | 2.1-RHCUEE03-2130 SS | 371d | 0d |  | LABOUR [3 h] | EE | 1 | C03a | TY1 | C03b | EIT02.1 |
| 2.1-RHCUEE03-2940 |  | Clear punch | 6d | 2026-03-13 | 2026-03-19 | 2.1-RHCUEE03-2140, 2.1-RHCUEE03-2130 | 371d | 0d |  | LABOUR [3 h] | EE | 1 | C03a | TY1 | C03b | EIT02.1 |
| 2.1-RHCUEE03-3490 |  | Complete QA/QC document | 3d | 2026-03-20 | 2026-03-23 | 2.1-RHCUEE03-2940 | 371d |  |  | LABOUR [3.29 h] | EE | 1 | C03a | TY1 | C03b | EIT02.1 |
|  | 52 | **Air Fin Cooler - EM-10610-10** |  | 2026-01-26 | 2026-03-23 |  |  |  |  |  |  |  |  |  |  |  |
| 2.1-RHCUEE03-1300 |  | Install support / bracket | 20d | 2026-01-26 | 2026-02-17 | 2.1-RHCUEE03-1290 SS | 371d | 0d | start on or after 2026-01-26 | LABOUR [3 h] | EE | 1 | C03a | TY1 | C03b | EIT02.1 |
| 2.1-RHCUEE03-2150 |  | Install Ladder / Tray | 20d | 2026-02-18 | 2026-03-12 | 2.1-RHCUEE03-1300 | 371d | 0d |  | LABOUR [10 h] | EE | 1 | C03a | TY1 | C03b | EIT02.1 |
| 2.1-RHCUEE03-2160 |  | Install Conduits | 20d | 2026-02-18 | 2026-03-12 | 2.1-RHCUEE03-2150 SS | 371d | 0d |  | LABOUR [3 h] | EE | 1 | C03a | TY1 | C03b | EIT02.1 |
| 2.1-RHCUEE03-2950 |  | Clear punch | 6d | 2026-03-13 | 2026-03-19 | 2.1-RHCUEE03-2160, 2.1-RHCUEE03-2150 | 371d | 0d |  | LABOUR [3 h] | EE | 1 | C03a | TY1 | C03b | EIT02.1 |
| 2.1-RHCUEE03-3500 |  | Complete QA/QC document | 3d | 2026-03-20 | 2026-03-23 | 2.1-RHCUEE03-2950 | 371d |  |  | LABOUR [3.29 h] | EE | 1 | C03a | TY1 | C03b | EIT02.1 |
|  | 65 | **Air Fin Cooler - EM-10610-11** |  | 2026-01-26 | 2026-03-23 |  |  |  |  |  |  |  |  |  |  |  |
| 2.1-RHCUEE03-1310 |  | Install support / bracket | 20d | 2026-01-26 | 2026-02-17 | 2.1-RHCUEE03-1300 SS | 371d | 0d |  | LABOUR [3 h] | EE | 1 | C03a | TY1 | C03b | EIT02.1 |
| 2.1-RHCUEE03-2170 |  | Install Ladder / Tray | 20d | 2026-02-18 | 2026-03-12 | 2.1-RHCUEE03-1310 | 371d | 0d |  | LABOUR [10 h] | EE | 1 | C03a | TY1 | C03b | EIT02.1 |
| 2.1-RHCUEE03-2180 |  | Install Conduits | 20d | 2026-02-18 | 2026-03-12 | 2.1-RHCUEE03-2170 SS | 371d | 0d |  | LABOUR [3 h] | EE | 1 | C03a | TY1 | C03b | EIT02.1 |
| 2.1-RHCUEE03-2960 |  | Clear punch | 6d | 2026-03-13 | 2026-03-19 | 2.1-RHCUEE03-2180, 2.1-RHCUEE03-2170 | 371d | 0d |  | LABOUR [3 h] | EE | 1 | C03a | TY1 | C03b | EIT02.1 |
| 2.1-RHCUEE03-3510 |  | Complete QA/QC document | 3d | 2026-03-20 | 2026-03-23 | 2.1-RHCUEE03-2960 | 371d |  |  | LABOUR [3.29 h] | EE | 1 | C03a | TY1 | C03b | EIT02.1 |

| ID | WBS | Activity | Duration | Start | Finish | Predecessors | Total float | Free float | Resources | Disciplines | Main Activity | WBS | Types | EIT WBS | EIT PKG |
| --- | --- | --- | --- | --- | --- | --- | --- | --- | --- | --- | --- | --- | --- | --- | --- |
|  | 53 | **Air Fin Cooler - EM-10610-12** |  | 2026-01-26 | 2026-03-23 |  |  |  |  |  |  |  |  |  |  |
| 2.1-RHCUEE03-1320 |  | Install support / bracket | 20d | 2026-01-26 | 2026-02-17 | 2.1-RHCUEE03-1310 SS | 371d | 0d | LABOUR [3 h] | EE | 1 | C03a | TY1 | C03b | EIT02.1 |
| 2.1-RHCUEE03-2190 |  | Install Ladder / Tray | 20d | 2026-02-18 | 2026-03-12 | 2.1-RHCUEE03-1320 | 371d | 0d | LABOUR [10 h] | EE | 1 | C03a | TY1 | C03b | EIT02.1 |
| 2.1-RHCUEE03-2200 |  | Install Conduits | 20d | 2026-02-18 | 2026-03-12 | 2.1-RHCUEE03-2190 SS | 371d | 0d | LABOUR [3 h] | EE | 1 | C03a | TY1 | C03b | EIT02.1 |
| 2.1-RHCUEE03-2970 |  | Clear punch | 6d | 2026-03-13 | 2026-03-19 | 2.1-RHCUEE03-2200, 2.1-RHCUEE03-2190 | 371d | 0d | LABOUR [3 h] | EE | 1 | C03a | TY1 | C03b | EIT02.1 |
| 2.1-RHCUEE03-3520 |  | Complete QA/QC document | 3d | 2026-03-20 | 2026-03-23 | 2.1-RHCUEE03-2970 | 371d |  | LABOUR [3.29 h] | EE | 1 | C03a | TY1 | C03b | EIT02.1 |
|  | 66 | **Air Fin Cooler - EM-10610-9** |  | 2026-01-26 | 2026-03-23 |  |  |  |  |  |  |  |  |  |  |
| 2.1-RHCUEE03-1330 |  | Install support / bracket | 20d | 2026-01-26 | 2026-02-17 | 2.1-RHCUEE03-1320 SS | 371d | 0d | LABOUR [3 h] | EE | 1 | C03a | TY1 | C03b | EIT02.1 |
| 2.1-RHCUEE03-2210 |  | Install Ladder / Tray | 20d | 2026-02-18 | 2026-03-12 | 2.1-RHCUEE03-1330 | 371d | 0d | LABOUR [10 h] | EE | 1 | C03a | TY1 | C03b | EIT02.1 |
| 2.1-RHCUEE03-2220 |  | Install Conduits | 20d | 2026-02-18 | 2026-03-12 | 2.1-RHCUEE03-2210 SS | 371d | 0d | LABOUR [3 h] | EE | 1 | C03a | TY1 | C03b | EIT02.1 |
| 2.1-RHCUEE03-2980 |  | Clear punch | 6d | 2026-03-13 | 2026-03-19 | 2.1-RHCUEE03-2220, 2.1-RHCUEE03-2210 | 371d | 0d | LABOUR [3 h] | EE | 1 | C03a | TY1 | C03b | EIT02.1 |
| 2.1-RHCUEE03-3530 |  | Complete QA/QC document | 3d | 2026-03-20 | 2026-03-23 | 2.1-RHCUEE03-2980 | 371d |  |  | EE | 1 | C03a | TY1 | C03b | EIT02.1 |
|  | 41 | **Air Fin Cooler - EM-10610-3** |  | 2026-01-26 | 2026-03-23 |  |  |  |  |  |  |  |  |  |  |
| 2.1-RHCUEE03-1340 |  | Install support / bracket | 20d | 2026-01-26 | 2026-02-17 | 2.1-RHCUEE03-1330 SS | 371d | 0d | LABOUR [3 h] | EE | 1 | C03a | TY1 | C03b | EIT02.1 |
| 2.1-RHCUEE03-2230 |  | Install Ladder / Tray | 20d | 2026-02-18 | 2026-03-12 | 2.1-RHCUEE03-1340 | 371d | 0d | LABOUR [10 h] | EE | 1 | C03a | TY1 | C03b | EIT02.1 |
| 2.1-RHCUEE03-2240 |  | Install Conduits | 20d | 2026-02-18 | 2026-03-12 | 2.1-RHCUEE03-2230 SS | 371d | 0d | LABOUR [3 h] | EE | 1 | C03a | TY1 | C03b | EIT02.1 |
| 2.1-RHCUEE03-2990 |  | Clear punch | 6d | 2026-03-13 | 2026-03-19 | 2.1-RHCUEE03-2240, 2.1-RHCUEE03-2230 | 371d | 0d | LABOUR [3 h] | EE | 1 | C03a | TY1 | C03b | EIT02.1 |
| 2.1-RHCUEE03-3540 |  | Complete QA/QC document | 3d | 2026-03-20 | 2026-03-23 | 2.1-RHCUEE03-2990 | 371d |  | LABOUR [3.29 h] | EE | 1 | C03a | TY1 | C03b | EIT02.1 |
|  | 28 | **Air Fin Cooler - EM-10610-4** |  | 2026-01-26 | 2026-03-23 |  |  |  |  |  |  |  |  |  |  |
| 2.1-RHCUEE03-1350 |  | Install support / bracket | 20d | 2026-01-26 | 2026-02-17 | 2.1-RHCUEE03-1340 SS | 371d | 0d | LABOUR [3 h] | EE | 1 | C03a | TY1 | C03b | EIT02.1 |
| 2.1-RHCUEE03-2250 |  | Install Ladder / Tray | 20d | 2026-02-18 | 2026-03-12 | 2.1-RHCUEE03-1350 | 371d | 0d | LABOUR [10 h] | EE | 1 | C03a | TY1 | C03b | EIT02.1 |
| 2.1-RHCUEE03-2260 |  | Install Conduits | 20d | 2026-02-18 | 2026-03-12 | 2.1-RHCUEE03-2250 SS | 371d | 0d | LABOUR [3 h] | EE | 1 | C03a | TY1 | C03b | EIT02.1 |
| 2.1-RHCUEE03-3000 |  | Clear punch | 6d | 2026-03-13 | 2026-03-19 | 2.1-RHCUEE03-2260, 2.1-RHCUEE03-2250 | 371d | 0d | LABOUR [3 h] | EE | 1 | C03a | TY1 | C03b | EIT02.1 |
| 2.1-RHCUEE03-3550 |  | Complete QA/QC document | 3d | 2026-03-20 | 2026-03-23 | 2.1-RHCUEE03-3000 | 371d |  | LABOUR [3.29 h] | EE | 1 | C03a | TY1 | C03b | EIT02.1 |

| ID | WBS | Activity | Duration | Start | Finish | Predecessors | Total float | Free float | Resources | Disciplines | Main Activity | WBS | Types | EIT WBS | EIT PKG |
| --- | --- | --- | --- | --- | --- | --- | --- | --- | --- | --- | --- | --- | --- | --- | --- |
|  | 29 | **Air Fin Cooler - EM-10610-5** |  | 2026-01-26 | 2026-03-23 |  |  |  |  |  |  |  |  |  |  |
| 2.1-RHCUEE03-1360 |  | Install support / bracket | 20d | 2026-01-26 | 2026-02-17 | 2.1-RHCUEE03-1350 SS | 371d | 0d | LABOUR [3 h] | EE | 1 | C03a | TY1 | C03b | EIT02.1 |
| 2.1-RHCUEE03-2270 |  | Install Ladder / Tray | 20d | 2026-02-18 | 2026-03-12 | 2.1-RHCUEE03-1360 | 371d | 0d | LABOUR [10 h] | EE | 1 | C03a | TY1 | C03b | EIT02.1 |
| 2.1-RHCUEE03-2280 |  | Install Conduits | 20d | 2026-02-18 | 2026-03-12 | 2.1-RHCUEE03-2270 SS | 371d | 0d | LABOUR [3 h] | EE | 1 | C03a | TY1 | C03b | EIT02.1 |
| 2.1-RHCUEE03-3010 |  | Clear punch | 6d | 2026-03-13 | 2026-03-19 | 2.1-RHCUEE03-2280, 2.1-RHCUEE03-2270 | 371d | 0d | LABOUR [3 h] | EE | 1 | C03a | TY1 | C03b | EIT02.1 |
| 2.1-RHCUEE03-3560 |  | Complete QA/QC document | 3d | 2026-03-20 | 2026-03-23 | 2.1-RHCUEE03-3010 | 371d |  | LABOUR [3.29 h] | EE | 1 | C03a | TY1 | C03b | EIT02.1 |
|  | 30 | **Air Fin Cooler - EM-10610-6** |  | 2026-01-26 | 2026-03-23 |  |  |  |  |  |  |  |  |  |  |
| 2.1-RHCUEE03-1370 |  | Install support / bracket | 20d | 2026-01-26 | 2026-02-17 | 2.1-RHCUEE03-1360 SS | 371d | 0d | LABOUR [3 h] | EE | 1 | C03a | TY1 | C03b | EIT02.1 |
| 2.1-RHCUEE03-2290 |  | Install Ladder / Tray | 20d | 2026-02-18 | 2026-03-12 | 2.1-RHCUEE03-1370 | 371d | 0d | LABOUR [10 h] | EE | 1 | C03a | TY1 | C03b | EIT02.1 |
| 2.1-RHCUEE03-2300 |  | Install Conduits | 20d | 2026-02-18 | 2026-03-12 | 2.1-RHCUEE03-2290 SS | 371d | 0d | LABOUR [3 h] | EE | 1 | C03a | TY1 | C03b | EIT02.1 |
| 2.1-RHCUEE03-3020 |  | Clear punch | 6d | 2026-03-13 | 2026-03-19 | 2.1-RHCUEE03-2300, 2.1-RHCUEE03-2290 | 371d | 0d | LABOUR [3 h] | EE | 1 | C03a | TY1 | C03b | EIT02.1 |
| 2.1-RHCUEE03-3570 |  | Complete QA/QC document | 3d | 2026-03-20 | 2026-03-23 | 2.1-RHCUEE03-3020 | 371d |  | LABOUR [3.29 h] | EE | 1 | C03a | TY1 | C03b | EIT02.1 |
|  | 31 | **Air Fin Cooler - EM-10610-7** |  | 2026-01-26 | 2026-03-23 |  |  |  |  |  |  |  |  |  |  |
| 2.1-RHCUEE03-1380 |  | Install support / bracket | 20d | 2026-01-26 | 2026-02-17 | 2.1-RHCUEE03-1370 SS | 371d | 0d | LABOUR [3 h] | EE | 1 | C03a | TY1 | C03b | EIT02.1 |
| 2.1-RHCUEE03-2310 |  | Install Ladder / Tray | 20d | 2026-02-18 | 2026-03-12 | 2.1-RHCUEE03-1380 | 371d | 0d | LABOUR [10 h] | EE | 1 | C03a | TY1 | C03b | EIT02.1 |
| 2.1-RHCUEE03-2320 |  | Install Conduits | 20d | 2026-02-18 | 2026-03-12 | 2.1-RHCUEE03-2310 SS | 371d | 0d | LABOUR [3 h] | EE | 1 | C03a | TY1 | C03b | EIT02.1 |
| 2.1-RHCUEE03-3030 |  | Clear punch | 6d | 2026-03-13 | 2026-03-19 | 2.1-RHCUEE03-2320, 2.1-RHCUEE03-2310 | 371d | 0d | LABOUR [3 h] | EE | 1 | C03a | TY1 | C03b | EIT02.1 |
| 2.1-RHCUEE03-3580 |  | Complete QA/QC document | 3d | 2026-03-20 | 2026-03-23 | 2.1-RHCUEE03-3030 | 371d |  | LABOUR [3.29 h] | EE | 1 | C03a | TY1 | C03b | EIT02.1 |
|  | 32 | **Air Fin Cooler - EM-10610-8** |  | 2026-01-26 | 2026-03-23 |  |  |  |  |  |  |  |  |  |  |
| 2.1-RHCUEE03-1390 |  | Install support / bracket | 20d | 2026-01-26 | 2026-02-17 | 2.1-RHCUEE03-1380 SS | 371d | 0d | LABOUR [3 h] | EE | 1 | C03a | TY1 | C03b | EIT02.1 |
| 2.1-RHCUEE03-2330 |  | Install Ladder / Tray | 20d | 2026-02-18 | 2026-03-12 | 2.1-RHCUEE03-1390 | 371d | 0d | LABOUR [10 h] | EE | 1 | C03a | TY1 | C03b | EIT02.1 |
| 2.1-RHCUEE03-2340 |  | Install Conduits | 20d | 2026-02-18 | 2026-03-12 | 2.1-RHCUEE03-2330 SS | 371d | 0d | LABOUR [3 h] | EE | 1 | C03a | TY1 | C03b | EIT02.1 |
| 2.1-RHCUEE03-3040 |  | Clear punch | 6d | 2026-03-13 | 2026-03-19 | 2.1-RHCUEE03-2340, 2.1-RHCUEE03-2330 | 371d | 0d | LABOUR [3 h] | EE | 1 | C03a | TY1 | C03b | EIT02.1 |
| 2.1-RHCUEE03-3590 |  | Complete QA/QC document | 3d | 2026-03-20 | 2026-03-23 | 2.1-RHCUEE03-3040 | 371d |  | LABOUR [3.29 h] | EE | 1 | C03a | TY1 | C03b | EIT02.1 |

| ID | WBS | Activity | Duration | Start | Finish | Predecessors | Total float | Free float | Resources | Disciplines | Main Activity | WBS | Types | EIT WBS | EIT PKG |
| --- | --- | --- | --- | --- | --- | --- | --- | --- | --- | --- | --- | --- | --- | --- | --- |
|  | 33 | **Air Fin Cooler - EM-10613-7** |  | 2026-01-26 | 2026-03-23 |  |  |  |  |  |  |  |  |  |  |
| 2.1-RHCUEE03-1400 |  | Install support / bracket | 20d | 2026-01-26 | 2026-02-17 | 2.1-RHCUEE03-1390 SS | 371d | 0d | LABOUR [3 h] | EE | 1 | C03a | TY1 | C03b | EIT02.1 |
| 2.1-RHCUEE03-2350 |  | Install Ladder / Tray | 20d | 2026-02-18 | 2026-03-12 | 2.1-RHCUEE03-1400 | 371d | 0d | LABOUR [10 h] | EE | 1 | C03a | TY1 | C03b | EIT02.1 |
| 2.1-RHCUEE03-2360 |  | Install Conduits | 20d | 2026-02-18 | 2026-03-12 | 2.1-RHCUEE03-2350 SS | 371d | 0d | LABOUR [3 h] | EE | 1 | C03a | TY1 | C03b | EIT02.1 |
| 2.1-RHCUEE03-3050 |  | Clear punch | 6d | 2026-03-13 | 2026-03-19 | 2.1-RHCUEE03-2360, 2.1-RHCUEE03-2350 | 371d | 0d | LABOUR [3 h] | EE | 1 | C03a | TY1 | C03b | EIT02.1 |
| 2.1-RHCUEE03-3600 |  | Complete QA/QC document | 3d | 2026-03-20 | 2026-03-23 | 2.1-RHCUEE03-3050 | 371d |  | LABOUR [3.29 h] | EE | 1 | C03a | TY1 | C03b | EIT02.1 |
|  | 34 | **Air Fin Cooler - EM-10613-8** |  | 2026-01-26 | 2026-03-23 |  |  |  |  |  |  |  |  |  |  |
| 2.1-RHCUEE03-1410 |  | Install support / bracket | 20d | 2026-01-26 | 2026-02-17 | 2.1-RHCUEE03-1400 SS | 371d | 0d | LABOUR [3 h] | EE | 1 | C03a | TY1 | C03b | EIT02.1 |
| 2.1-RHCUEE03-2370 |  | Install Ladder / Tray | 20d | 2026-02-18 | 2026-03-12 | 2.1-RHCUEE03-1410 | 371d | 0d | LABOUR [10 h] | EE | 1 | C03a | TY1 | C03b | EIT02.1 |
| 2.1-RHCUEE03-2380 |  | Install Conduits | 20d | 2026-02-18 | 2026-03-12 | 2.1-RHCUEE03-2370 SS | 371d | 0d | LABOUR [3 h] | EE | 1 | C03a | TY1 | C03b | EIT02.1 |
| 2.1-RHCUEE03-3060 |  | Clear punch | 6d | 2026-03-13 | 2026-03-19 | 2.1-RHCUEE03-2380, 2.1-RHCUEE03-2370 | 371d | 0d | LABOUR [3 h] | EE | 1 | C03a | TY1 | C03b | EIT02.1 |
| 2.1-RHCUEE03-3610 |  | Complete QA/QC document | 3d | 2026-03-20 | 2026-03-23 | 2.1-RHCUEE03-3060 | 371d |  | LABOUR [3.29 h] | EE | 1 | C03a | TY1 | C03b | EIT02.1 |
|  | 35 | **Air Fin Cooler - EM-10732-1** |  | 2026-01-26 | 2026-03-23 |  |  |  |  |  |  |  |  |  |  |
| 2.1-RHCUEE03-1420 |  | Install support / bracket | 20d | 2026-01-26 | 2026-02-17 | 2.1-RHCUEE03-1410 SS | 371d | 0d | LABOUR [3 h] | EE | 1 | C03a | TY1 | C03b | EIT02.1 |
| 2.1-RHCUEE03-2390 |  | Install Ladder / Tray | 20d | 2026-02-18 | 2026-03-12 | 2.1-RHCUEE03-1420 | 371d | 0d | LABOUR [10 h] | EE | 1 | C03a | TY1 | C03b | EIT02.1 |
| 2.1-RHCUEE03-2400 |  | Install Conduits | 20d | 2026-02-18 | 2026-03-12 | 2.1-RHCUEE03-2390 SS | 371d | 0d | LABOUR [3 h] | EE | 1 | C03a | TY1 | C03b | EIT02.1 |
| 2.1-RHCUEE03-3070 |  | Clear punch | 6d | 2026-03-13 | 2026-03-19 | 2.1-RHCUEE03-2400, 2.1-RHCUEE03-2390 | 371d | 0d | LABOUR [3 h] | EE | 1 | C03a | TY1 | C03b | EIT02.1 |
| 2.1-RHCUEE03-3620 |  | Complete QA/QC document | 3d | 2026-03-20 | 2026-03-23 | 2.1-RHCUEE03-3070 | 371d |  | LABOUR [3.29 h] | EE | 1 | C03a | TY1 | C03b | EIT02.1 |
|  | 36 | **Air Fin Cooler - EM-10732-2** |  | 2026-01-26 | 2026-03-23 |  |  |  |  |  |  |  |  |  |  |
| 2.1-RHCUEE03-1430 |  | Install support / bracket | 20d | 2026-01-26 | 2026-02-17 | 2.1-RHCUEE03-1420 SS | 371d | 0d | LABOUR [3 h] | EE | 1 | C03a | TY1 | C03b | EIT02.1 |
| 2.1-RHCUEE03-2410 |  | Install Ladder / Tray | 20d | 2026-02-18 | 2026-03-12 | 2.1-RHCUEE03-1430 | 371d | 0d | LABOUR [10 h] | EE | 1 | C03a | TY1 | C03b | EIT02.1 |
| 2.1-RHCUEE03-2420 |  | Install Conduits | 20d | 2026-02-18 | 2026-03-12 | 2.1-RHCUEE03-2410 SS | 371d | 0d | LABOUR [3 h] | EE | 1 | C03a | TY1 | C03b | EIT02.1 |
| 2.1-RHCUEE03-3080 |  | Clear punch | 6d | 2026-03-13 | 2026-03-19 | 2.1-RHCUEE03-2420, 2.1-RHCUEE03-2410 | 371d | 0d | LABOUR [3 h] | EE | 1 | C03a | TY1 | C03b | EIT02.1 |
| 2.1-RHCUEE03-3630 |  | Complete QA/QC document | 3d | 2026-03-20 | 2026-03-23 | 2.1-RHCUEE03-3080 | 371d |  | LABOUR [3.29 h] | EE | 1 | C03a | TY1 | C03b | EIT02.1 |

| ID | WBS | Activity | Duration | Start | Finish | Predecessors | Total float | Free float | Resources | Disciplines | Main Activity | WBS | Types | EIT WBS | EIT PKG |
| --- | --- | --- | --- | --- | --- | --- | --- | --- | --- | --- | --- | --- | --- | --- | --- |
|  | 37 | **Air Fin Cooler - EM-10613-1** |  | 2026-01-26 | 2026-03-23 |  |  |  |  |  |  |  |  |  |  |
| 2.1-RHCUEE03-1440 |  | Install support / bracket | 20d | 2026-01-26 | 2026-02-17 | 2.1-RHCUEE03-1430 SS | 371d | 0d | LABOUR [3 h] | EE | 1 | C03a | TY1 | C03b | EIT02.1 |
| 2.1-RHCUEE03-2430 |  | Install Ladder / Tray | 20d | 2026-02-18 | 2026-03-12 | 2.1-RHCUEE03-1440 | 371d | 0d | LABOUR [10 h] | EE | 1 | C03a | TY1 | C03b | EIT02.1 |
| 2.1-RHCUEE03-2440 |  | Install Conduits | 20d | 2026-02-18 | 2026-03-12 | 2.1-RHCUEE03-2430 SS | 371d | 0d | LABOUR [3 h] | EE | 1 | C03a | TY1 | C03b | EIT02.1 |
| 2.1-RHCUEE03-3090 |  | Clear punch | 6d | 2026-03-13 | 2026-03-19 | 2.1-RHCUEE03-2440, 2.1-RHCUEE03-2430 | 371d | 0d | LABOUR [3 h] | EE | 1 | C03a | TY1 | C03b | EIT02.1 |
| 2.1-RHCUEE03-3640 |  | Complete QA/QC document | 3d | 2026-03-20 | 2026-03-23 | 2.1-RHCUEE03-3090 | 371d |  | LABOUR [3.29 h] | EE | 1 | C03a | TY1 | C03b | EIT02.1 |
|  | 38 | **Air Fin Cooler - EM-10613-2** |  | 2026-01-26 | 2026-03-23 |  |  |  |  |  |  |  |  |  |  |
| 2.1-RHCUEE03-1450 |  | Install support / bracket | 20d | 2026-01-26 | 2026-02-17 | 2.1-RHCUEE03-1440 SS | 371d | 0d | LABOUR [3 h] | EE | 1 | C03a | TY1 | C03b | EIT02.1 |
| 2.1-RHCUEE03-2450 |  | Install Ladder / Tray | 20d | 2026-02-18 | 2026-03-12 | 2.1-RHCUEE03-1450 | 371d | 0d | LABOUR [10 h] | EE | 1 | C03a | TY1 | C03b | EIT02.1 |
| 2.1-RHCUEE03-2460 |  | Install Conduits | 20d | 2026-02-18 | 2026-03-12 | 2.1-RHCUEE03-2450 SS | 371d | 0d | LABOUR [3 h] | EE | 1 | C03a | TY1 | C03b | EIT02.1 |
| 2.1-RHCUEE03-3100 |  | Clear punch | 6d | 2026-03-13 | 2026-03-19 | 2.1-RHCUEE03-2460, 2.1-RHCUEE03-2450 | 371d | 0d | LABOUR [3 h] | EE | 1 | C03a | TY1 | C03b | EIT02.1 |
| 2.1-RHCUEE03-3650 |  | Complete QA/QC document | 3d | 2026-03-20 | 2026-03-23 | 2.1-RHCUEE03-3100 | 371d |  | LABOUR [3.29 h] | EE | 1 | C03a | TY1 | C03b | EIT02.1 |
|  | 39 | **Air Fin Cooler - EM-10613-3** |  | 2026-01-26 | 2026-03-23 |  |  |  |  |  |  |  |  |  |  |
| 2.1-RHCUEE03-1460 |  | Install support / bracket | 20d | 2026-01-26 | 2026-02-17 | 2.1-RHCUEE03-1450 SS | 371d | 0d | LABOUR [3 h] | EE | 1 | C03a | TY1 | C03b | EIT02.1 |
| 2.1-RHCUEE03-2470 |  | Install Ladder / Tray | 20d | 2026-02-18 | 2026-03-12 | 2.1-RHCUEE03-1460 | 371d | 0d | LABOUR [10 h] | EE | 1 | C03a | TY1 | C03b | EIT02.1 |
| 2.1-RHCUEE03-2480 |  | Install Conduits | 20d | 2026-02-18 | 2026-03-12 | 2.1-RHCUEE03-2470 SS | 371d | 0d | LABOUR [3 h] | EE | 1 | C03a | TY1 | C03b | EIT02.1 |
| 2.1-RHCUEE03-3110 |  | Clear punch | 6d | 2026-03-13 | 2026-03-19 | 2.1-RHCUEE03-2480, 2.1-RHCUEE03-2470 | 371d | 0d | LABOUR [3 h] | EE | 1 | C03a | TY1 | C03b | EIT02.1 |
| 2.1-RHCUEE03-3660 |  | Complete QA/QC document | 3d | 2026-03-20 | 2026-03-23 | 2.1-RHCUEE03-3110 | 371d |  | LABOUR [3.29 h] | EE | 1 | C03a | TY1 | C03b | EIT02.1 |
|  | 40 | **Air Fin Cooler - EM-10613-4** |  | 2026-01-26 | 2026-03-23 |  |  |  |  |  |  |  |  |  |  |
| 2.1-RHCUEE03-1470 |  | Install support / bracket | 20d | 2026-01-26 | 2026-02-17 | 2.1-RHCUEE03-1460 SS | 371d | 0d | LABOUR [3 h] | EE | 1 | C03a | TY1 | C03b | EIT02.1 |
| 2.1-RHCUEE03-2490 |  | Install Ladder / Tray | 20d | 2026-02-18 | 2026-03-12 | 2.1-RHCUEE03-1470 | 371d | 0d | LABOUR [10 h] | EE | 1 | C03a | TY1 | C03b | EIT02.1 |
| 2.1-RHCUEE03-2500 |  | Install Conduits | 20d | 2026-02-18 | 2026-03-12 | 2.1-RHCUEE03-2490 SS | 371d | 0d | LABOUR [3 h] | EE | 1 | C03a | TY1 | C03b | EIT02.1 |
| 2.1-RHCUEE03-3120 |  | Clear punch | 6d | 2026-03-13 | 2026-03-19 | 2.1-RHCUEE03-2500, 2.1-RHCUEE03-2490 | 371d | 0d | LABOUR [3 h] | EE | 1 | C03a | TY1 | C03b | EIT02.1 |
| 2.1-RHCUEE03-3670 |  | Complete QA/QC document | 3d | 2026-03-20 | 2026-03-23 | 2.1-RHCUEE03-3120 | 371d |  | LABOUR [3.29 h] | EE | 1 | C03a | TY1 | C03b | EIT02.1 |

| ID | WBS | Activity | Duration | Start | Finish | Predecessors | Total float | Free float | Resources | Disciplines | Main Activity | WBS | Types | EIT WBS | EIT PKG |
| --- | --- | --- | --- | --- | --- | --- | --- | --- | --- | --- | --- | --- | --- | --- | --- |
|  | 8 | **Air Fin Cooler - EM-10613-5** |  | 2026-01-26 | 2026-03-23 |  |  |  |  |  |  |  |  |  |  |
| 2.1-RHCUEE03-1480 |  | Install support / bracket | 20d | 2026-01-26 | 2026-02-17 | 2.1-RHCUEE03-1470 SS | 371d | 0d | LABOUR [3 h] | EE | 1 | C03a | TY1 | C03b | EIT02.1 |
| 2.1-RHCUEE03-2510 |  | Install Ladder / Tray | 20d | 2026-02-18 | 2026-03-12 | 2.1-RHCUEE03-1480 | 371d | 0d | LABOUR [10 h] | EE | 1 | C03a | TY1 | C03b | EIT02.1 |
| 2.1-RHCUEE03-2520 |  | Install Conduits | 20d | 2026-02-18 | 2026-03-12 | 2.1-RHCUEE03-2510 SS | 371d | 0d | LABOUR [3 h] | EE | 1 | C03a | TY1 | C03b | EIT02.1 |
| 2.1-RHCUEE03-3130 |  | Clear punch | 6d | 2026-03-13 | 2026-03-19 | 2.1-RHCUEE03-2520, 2.1-RHCUEE03-2510 | 371d | 0d | LABOUR [3 h] | EE | 1 | C03a | TY1 | C03b | EIT02.1 |
| 2.1-RHCUEE03-3680 |  | Complete QA/QC document | 3d | 2026-03-20 | 2026-03-23 | 2.1-RHCUEE03-3130 | 371d |  | LABOUR [3.29 h] | EE | 1 | C03a | TY1 | C03b | EIT02.1 |
|  | 13 | **Air Fin Cooler - EM-10613-6** |  | 2026-01-26 | 2026-03-23 |  |  |  |  |  |  |  |  |  |  |
| 2.1-RHCUEE03-1490 |  | Install support / bracket | 20d | 2026-01-26 | 2026-02-17 | 2.1-RHCUEE03-1480 SS | 371d | 0d | LABOUR [3 h] | EE | 1 | C03a | TY1 | C03b | EIT02.1 |
| 2.1-RHCUEE03-2530 |  | Install Ladder / Tray | 20d | 2026-02-18 | 2026-03-12 | 2.1-RHCUEE03-1490 | 371d | 0d | LABOUR [10 h] | EE | 1 | C03a | TY1 | C03b | EIT02.1 |
| 2.1-RHCUEE03-2540 |  | Install Conduits | 20d | 2026-02-18 | 2026-03-12 | 2.1-RHCUEE03-2530 SS | 371d | 0d | LABOUR [3 h] | EE | 1 | C03a | TY1 | C03b | EIT02.1 |
| 2.1-RHCUEE03-3140 |  | Clear punch | 6d | 2026-03-13 | 2026-03-19 | 2.1-RHCUEE03-2540, 2.1-RHCUEE03-2530 | 371d | 0d | LABOUR [3 h] | EE | 1 | C03a | TY1 | C03b | EIT02.1 |
| 2.1-RHCUEE03-3690 |  | Complete QA/QC document | 3d | 2026-03-20 | 2026-03-23 | 2.1-RHCUEE03-3140 | 371d |  | LABOUR [3.29 h] | EE | 1 | C03a | TY1 | C03b | EIT02.1 |
|  | 14 | **Air Fin Cooler - EM-10615-1** |  | 2026-01-26 | 2026-03-23 |  |  |  |  |  |  |  |  |  |  |
| 2.1-RHCUEE03-1500 |  | Install support / bracket | 20d | 2026-01-26 | 2026-02-17 | 2.1-RHCUEE03-1490 SS | 371d | 0d | LABOUR [3 h] | EE | 1 | C03a | TY1 | C03b | EIT02.1 |
| 2.1-RHCUEE03-2550 |  | Install Ladder / Tray | 20d | 2026-02-18 | 2026-03-12 | 2.1-RHCUEE03-1500 | 371d | 0d | LABOUR [10 h] | EE | 1 | C03a | TY1 | C03b | EIT02.1 |
| 2.1-RHCUEE03-2560 |  | Install Conduits | 20d | 2026-02-18 | 2026-03-12 | 2.1-RHCUEE03-2550 SS | 371d | 0d | LABOUR [3 h] | EE | 1 | C03a | TY1 | C03b | EIT02.1 |
| 2.1-RHCUEE03-3150 |  | Clear punch | 6d | 2026-03-13 | 2026-03-19 | 2.1-RHCUEE03-2560, 2.1-RHCUEE03-2550 | 371d | 0d | LABOUR [3 h] | EE | 1 | C03a | TY1 | C03b | EIT02.1 |
| 2.1-RHCUEE03-3700 |  | Complete QA/QC document | 3d | 2026-03-20 | 2026-03-23 | 2.1-RHCUEE03-3150 | 371d |  | LABOUR [3.29 h] | EE | 1 | C03a | TY1 | C03b | EIT02.1 |
|  | 20 | **Air Fin Cooler - EM-10615-2** |  | 2026-01-26 | 2026-03-23 |  |  |  |  |  |  |  |  |  |  |
| 2.1-RHCUEE03-1510 |  | Install support / bracket | 20d | 2026-01-26 | 2026-02-17 | 2.1-RHCUEE03-1500 SS | 371d | 0d | LABOUR [3 h] | EE | 1 | C03a | TY1 | C03b | EIT02.1 |
| 2.1-RHCUEE03-2570 |  | Install Ladder / Tray | 20d | 2026-02-18 | 2026-03-12 | 2.1-RHCUEE03-1510 | 371d | 0d | LABOUR [10 h] | EE | 1 | C03a | TY1 | C03b | EIT02.1 |
| 2.1-RHCUEE03-2580 |  | Install Conduits | 20d | 2026-02-18 | 2026-03-12 | 2.1-RHCUEE03-2570 SS | 371d | 0d | LABOUR [3 h] | EE | 1 | C03a | TY1 | C03b | EIT02.1 |
| 2.1-RHCUEE03-3160 |  | Clear punch | 6d | 2026-03-13 | 2026-03-19 | 2.1-RHCUEE03-2580, 2.1-RHCUEE03-2570 | 371d | 0d | LABOUR [3 h] | EE | 1 | C03a | TY1 | C03b | EIT02.1 |
| 2.1-RHCUEE03-3710 |  | Complete QA/QC document | 3d | 2026-03-20 | 2026-03-23 | 2.1-RHCUEE03-3160 | 371d |  | LABOUR [3.29 h] | EE | 1 | C03a | TY1 | C03b | EIT02.1 |

| ID | WBS | Activity | Duration | Start | Finish | Predecessors | Total float | Free float | Constraint | Resources | Disciplines | Main Activity | WBS | Types | EIT WBS | EIT PKG |
| --- | --- | --- | --- | --- | --- | --- | --- | --- | --- | --- | --- | --- | --- | --- | --- | --- |
|  | 27 | **Air Fin Cooler - EM-10720-1** |  | 2026-01-26 | 2026-03-23 |  |  |  |  |  |  |  |  |  |  |  |
| 2.1-RHCUEE03-1520 |  | Install support / bracket | 20d | 2026-01-26 | 2026-02-17 | 2.1-RHCUEE03-1510 SS | 371d | 0d |  | LABOUR [3 h] | EE | 1 | C03a | TY1 | C03b | EIT02.1 |
| 2.1-RHCUEE03-2590 |  | Install Ladder / Tray | 20d | 2026-02-18 | 2026-03-12 | 2.1-RHCUEE03-1520 | 371d | 0d |  | LABOUR [10 h] | EE | 1 | C03a | TY1 | C03b | EIT02.1 |
| 2.1-RHCUEE03-2600 |  | Install Conduits | 20d | 2026-02-18 | 2026-03-12 | 2.1-RHCUEE03-2590 SS | 371d | 0d |  | LABOUR [3 h] | EE | 1 | C03a | TY1 | C03b | EIT02.1 |
| 2.1-RHCUEE03-3170 |  | Clear punch | 6d | 2026-03-13 | 2026-03-19 | 2.1-RHCUEE03-2600, 2.1-RHCUEE03-2590 | 371d | 0d |  | LABOUR [3 h] | EE | 1 | C03a | TY1 | C03b | EIT02.1 |
| 2.1-RHCUEE03-3720 |  | Complete QA/QC document | 3d | 2026-03-20 | 2026-03-23 | 2.1-RHCUEE03-3170 | 371d |  |  | LABOUR [3.29 h] | EE | 1 | C03a | TY1 | C03b | EIT02.1 |
|  | 21 | **Air Fin Cooler - EM-10720-2** |  | 2026-01-26 | 2026-03-23 |  |  |  |  |  |  |  |  |  |  |  |
| 2.1-RHCUEE03-1530 |  | Install support / bracket | 20d | 2026-01-26 | 2026-02-17 | 2.1-RHCUEE03-1520 SS | 371d | 0d |  | LABOUR [3 h] | EE | 1 | C03a | TY1 | C03b | EIT02.1 |
| 2.1-RHCUEE03-2610 |  | Install Ladder / Tray | 20d | 2026-02-18 | 2026-03-12 | 2.1-RHCUEE03-1530 | 371d | 0d |  | LABOUR [10 h] | EE | 1 | C03a | TY1 | C03b | EIT02.1 |
| 2.1-RHCUEE03-2620 |  | Install Conduits | 20d | 2026-02-18 | 2026-03-12 | 2.1-RHCUEE03-2610 SS | 371d | 0d |  | LABOUR [3 h] | EE | 1 | C03a | TY1 | C03b | EIT02.1 |
| 2.1-RHCUEE03-3180 |  | Clear punch | 6d | 2026-03-13 | 2026-03-19 | 2.1-RHCUEE03-2620, 2.1-RHCUEE03-2610 | 371d | 0d |  | LABOUR [3 h] | EE | 1 | C03a | TY1 | C03b | EIT02.1 |
| 2.1-RHCUEE03-3730 |  | Complete QA/QC document | 3d | 2026-03-20 | 2026-03-23 | 2.1-RHCUEE03-3180 | 371d |  |  | LABOUR [3.29 h] | EE | 1 | C03a | TY1 | C03b | EIT02.1 |
|  | 22 | **Air Fin Cooler - EM-10720-3** |  | 2026-01-26 | 2026-03-23 |  |  |  |  |  |  |  |  |  |  |  |
| 2.1-RHCUEE03-1540 |  | Install support / bracket | 20d | 2026-01-26 | 2026-02-17 | 2.1-RHCUEE03-1530 SS | 371d | 0d |  | LABOUR [3 h] | EE | 1 | C03a | TY1 | C03b | EIT02.1 |
| 2.1-RHCUEE03-2630 |  | Install Ladder / Tray | 20d | 2026-02-18 | 2026-03-12 | 2.1-RHCUEE03-1540 | 371d | 0d |  | LABOUR [10 h] | EE | 1 | C03a | TY1 | C03b | EIT02.1 |
| 2.1-RHCUEE03-2640 |  | Install Conduits | 20d | 2026-02-18 | 2026-03-12 | 2.1-RHCUEE03-2630 SS | 371d | 0d |  | LABOUR [3 h] | EE | 1 | C03a | TY1 | C03b | EIT02.1 |
| 2.1-RHCUEE03-3190 |  | Clear punch | 6d | 2026-03-13 | 2026-03-19 | 2.1-RHCUEE03-2640, 2.1-RHCUEE03-2630 | 371d | 0d |  | LABOUR [3 h] | EE | 1 | C03a | TY1 | C03b | EIT02.1 |
| 2.1-RHCUEE03-3740 |  | Complete QA/QC document | 3d | 2026-03-20 | 2026-03-23 | 2.1-RHCUEE03-3190 | 371d |  |  | LABOUR [3.29 h] | EE | 1 | C03a | TY1 | C03b | EIT02.1 |
|  | 2 | **Electrical Cable Installation** |  | 2026-02-09 | 2026-03-23 |  |  |  |  |  |  |  |  |  |  |  |
|  | 1 | **Cable Pull MV Cable** |  | 2026-02-09 | 2026-03-23 |  |  |  |  |  |  |  |  |  |  |  |
| 2.1-RHCUEE01-1000 |  | Pull Cable | 30d | 2026-02-09 | 2026-03-14 |  | 371d | 0d | start on or after 2026-02-09 | LABOUR [2400 h] | EE | 1 | C03a | TY1 | C03b | EIT02.1 |
| 2.1-RHCUEE01-1090 |  | Megger & Continuity test | 4d | 2026-03-16 | 2026-03-19 | 2.1-RHCUEE01-1000 | 371d | 0d |  | LABOUR [600 h] | EE | 1 | C03a | TY1 | C03b | EIT02.1 |
| 2.1-RHCUEE01-1120 |  | Complete QA/QC document | 3d | 2026-03-20 | 2026-03-23 | 2.1-RHCUEE01-1090 | 371d |  |  | LABOUR [470.77 h] | EE | 1 | C03a | TY1 | C03b | EIT02.1 |
|  | 2 | **Cable Pull LV Cable** |  | 2026-02-09 | 2026-03-23 |  |  |  |  |  |  |  |  |  |  |  |
| 2.1-RHCUEE01-1010 |  | Pull Cable | 30d | 2026-02-09 | 2026-03-14 |  | 371d | 0d | start on or after 2026-02-09 | LABOUR [2400 h] | EE | 1 | C03a | TY1 | C03b | EIT02.1 |
| 2.1-RHCUEE01-1100 |  | Megger & Continuity test | 4d | 2026-03-16 | 2026-03-19 | 2.1-RHCUEE01-1010 | 371d | 0d |  | LABOUR [600 h] | EE | 1 | C03a | TY1 | C03b | EIT02.1 |
| 2.1-RHCUEE01-1130 |  | Complete QA/QC document | 3d | 2026-03-20 | 2026-03-23 | 2.1-RHCUEE01-1100 | 371d |  |  | LABOUR [470.77 h] | EE | 1 | C03a | TY1 | C03b | EIT02.1 |

| ID | WBS | Activity | Duration | Start | Finish | Predecessors | Total float | Free float | Constraint | Resources | Disciplines | Main Activity | WBS | Types | EIT WBS | EIT PKG |
| --- | --- | --- | --- | --- | --- | --- | --- | --- | --- | --- | --- | --- | --- | --- | --- | --- |
|  | 3 | **Cable Pull Control Cable** |  | 2026-02-09 | 2026-03-23 |  |  |  |  |  |  |  |  |  |  |  |
| 2.1-RHCUEE01-1020 |  | Pull Cable | 30d | 2026-02-09 | 2026-03-14 |  | 371d | 0d | start on or after 2026-02-09 | LABOUR [2400 h] | EE | 1 | C03a | TY1 | C03b | EIT02.1 |
| 2.1-RHCUEE01-1110 |  | Megger & Continuity test | 4d | 2026-03-16 | 2026-03-19 | 2.1-RHCUEE01-1020 | 371d | 0d |  | LABOUR [600 h] | EE | 1 | C03a | TY1 | C03b | EIT02.1 |
| 2.1-RHCUEE01-1140 |  | Complete QA/QC document | 3d | 2026-03-20 | 2026-03-23 | 2.1-RHCUEE01-1110 | 371d |  |  | LABOUR [470.77 h] | EE | 1 | C03a | TY1 | C03b | EIT02.1 |
|  | 4 | **Serial Communication Cable** |  | 2026-02-12 | 2026-03-14 |  |  |  |  |  |  |  |  |  |  |  |
| 2.1-RHCUEE01-1030 |  | Pull Cable | 20d | 2026-02-12 | 2026-03-06 |  | 378d | 0d | start on or after 2026-02-12 | LABOUR [2400 h] | EE | 1 | C03a | TY1 | C03b | EIT02.1 |
| 2.1-RHCUEE01-1050 |  | Megger & Continuity test | 4d | 2026-03-07 | 2026-03-11 | 2.1-RHCUEE01-1030 | 378d | 0d |  | LABOUR [600 h] | EE | 1 | C03a | TY1 | C03b | EIT02.1 |
| 2.1-RHCUEE01-1070 |  | Complete QA/QC document | 3d | 2026-03-12 | 2026-03-14 | 2.1-RHCUEE01-1050 | 378d |  |  | LABOUR [470.77 h] | EE | 1 | C03a | TY1 | C03b | EIT02.1 |
|  | 5 | **Cable Pull Instrument Cable** |  | 2026-02-12 | 2026-03-14 |  |  |  |  |  |  |  |  |  |  |  |
| 2.1-RHCUEE01-1040 |  | Pull Cable | 20d | 2026-02-12 | 2026-03-06 |  | 378d | 0d | start on or after 2026-02-12 | LABOUR [2400 h] | EE | 1 | C03a | TY1 | C03b | EIT02.1 |
| 2.1-RHCUEE01-1060 |  | Megger & Continuity test | 4d | 2026-03-07 | 2026-03-11 | 2.1-RHCUEE01-1040 | 378d | 0d |  | LABOUR [600 h] | EE | 1 | C03a | TY1 | C03b | EIT02.1 |
| 2.1-RHCUEE01-1080 |  | Complete QA/QC document | 3d | 2026-03-12 | 2026-03-14 | 2.1-RHCUEE01-1060 | 378d |  |  | LABOUR [470.77 h] | EE | 1 | C03a | TY1 | C03b | EIT02.1 |
|  | 4 | **Electrical Cable Termination / Glanding** |  | 2026-02-16 | 2026-03-18 |  |  |  |  |  |  |  |  |  |  |  |
|  | 1 | **Termination MV Cable** |  | 2026-02-16 | 2026-03-18 |  |  |  |  |  |  |  |  |  |  |  |
| 2.1-RHCUEE02-1000 |  | Cable Termination/Glanding | 20d | 2026-02-16 | 2026-03-10 |  | 375d | 0d | start on or after 2026-02-16 | LABOUR [100 h] | EE | 1 | C03a | TY1 | C03b | EIT02.1 |
| 2.1-RHCUEE02-1040 |  | Clear punch | 4d | 2026-03-11 | 2026-03-14 | 2.1-RHCUEE02-1000 | 375d | 0d |  | LABOUR [20 h] | EE | 1 | C03a | TY1 | C03b | EIT02.1 |
| 2.1-RHCUEE02-1080 |  | Complete QA/QC document | 3d | 2026-03-16 | 2026-03-18 | 2.1-RHCUEE02-1040 | 375d |  |  | LABOUR [36.8 h] | EE | 1 | C03a | TY1 | C03b | EIT02.1 |
|  | 2 | **Termination LV Cable** |  | 2026-02-16 | 2026-03-18 |  |  |  |  |  |  |  |  |  |  |  |
| 2.1-RHCUEE02-1010 |  | Cable Termination/Glanding | 20d | 2026-02-16 | 2026-03-10 | 2.1-RHCUEE02-1000 SS | 375d | 0d |  | LABOUR [100 h] | EE | 1 | C03a | TY1 | C03b | EIT02.1 |
| 2.1-RHCUEE02-1050 |  | Clear punch | 4d | 2026-03-11 | 2026-03-14 | 2.1-RHCUEE02-1010 | 375d | 0d |  | LABOUR [20 h] | EE | 1 | C03a | TY1 | C03b | EIT02.1 |
| 2.1-RHCUEE02-1090 |  | Complete QA/QC document | 3d | 2026-03-16 | 2026-03-18 | 2.1-RHCUEE02-1050 | 375d |  |  | LABOUR [36.8 h] | EE | 1 | C03a | TY1 | C03b | EIT02.1 |
|  | 3 | **Termination Control Cable** |  | 2026-02-16 | 2026-03-18 |  |  |  |  |  |  |  |  |  |  |  |
| 2.1-RHCUEE02-1020 |  | Cable Termination/Glanding | 20d | 2026-02-16 | 2026-03-10 | 2.1-RHCUEE02-1010 SS | 375d | 0d |  | LABOUR [100 h] | EE | 1 | C03a | TY1 | C03b | EIT02.1 |
| 2.1-RHCUEE02-1060 |  | Clear punch | 4d | 2026-03-11 | 2026-03-14 | 2.1-RHCUEE02-1020 | 375d | 0d |  | LABOUR [20 h] | EE | 1 | C03a | TY1 | C03b | EIT02.1 |
| 2.1-RHCUEE02-1100 |  | Complete QA/QC document | 3d | 2026-03-16 | 2026-03-18 | 2.1-RHCUEE02-1060 | 375d |  |  | LABOUR [36.8 h] | EE | 1 | C03a | TY1 | C03b | EIT02.1 |

| ID | WBS | Activity | Duration | Start | Finish | Predecessors | Total float | Free float | Constraint | Resources | Disciplines | Main Activity | WBS | Types | EIT WBS | EIT PKG |
| --- | --- | --- | --- | --- | --- | --- | --- | --- | --- | --- | --- | --- | --- | --- | --- | --- |
|  | 4 | **Termination Serial Communication Cable** |  | 2026-02-16 | 2026-03-18 |  |  |  |  |  |  |  |  |  |  |  |
| 2.1-RHCUEE02-1030 |  | Cable Termination/Glanding | 20d | 2026-02-16 | 2026-03-10 | 2.1-RHCUEE02-1020 SS | 375d | 0d |  | LABOUR [100 h] | EE | 1 | C03a | TY1 | C03b | EIT02.1 |
| 2.1-RHCUEE02-1070 |  | Clear punch | 4d | 2026-03-11 | 2026-03-14 | 2.1-RHCUEE02-1030 | 375d | 0d |  | LABOUR [20 h] | EE | 1 | C03a | TY1 | C03b | EIT02.1 |
| 2.1-RHCUEE02-1110 |  | Complete QA/QC document | 3d | 2026-03-16 | 2026-03-18 | 2.1-RHCUEE02-1070 | 375d |  |  | LABOUR [36.8 h] | EE | 1 | C03a | TY1 | C03b | EIT02.1 |
|  | 5 | **Lighting & Small Power Equipment Installation** |  | 2026-02-02 | 2026-03-17 |  |  |  |  |  |  |  |  |  |  |  |
| 2.1-RHCUEE05-1000 |  | Install support / bracket / Pole | 10d | 2026-02-02 | 2026-02-12 |  | 376d | 0d | start on or after 2026-02-02 | LABOUR [3 h] | EE | 1 | C03a | TY1 | C03b | EIT02.1 |
| 2.1-RHCUEE05-1020 |  | Install Distribution panel, lighting fitting ,convenience outlet | 20d | 2026-02-13 | 2026-03-07 | 2.1-RHCUEE05-1000 | 376d | 0d |  | LABOUR [15 h] | EE | 1 | C03a | TY1 | C03b | EIT02.1 |
| 2.1-RHCUEE05-1030 |  | Clear punch | 5d | 2026-03-09 | 2026-03-13 | 2.1-RHCUEE05-1020 | 376d | 0d |  | LABOUR [2 h] | EE | 1 | C03a | TY1 | C03b | EIT02.1 |
| 2.1-RHCUEE05-1050 |  | Complete QA/QC document | 3d | 2026-03-14 | 2026-03-17 | 2.1-RHCUEE05-1030 | 376d |  |  | LABOUR [3.69 h] | EE | 1 | C03a | TY1 | C03b | EIT02.1 |
|  | 9 | **Electrical Earthing / Lightning Installation** |  | 2026-02-02 | 2026-03-19 |  |  |  |  |  |  |  |  |  |  |  |
| 2.1-RHCUEE05-1010 |  | Install Equipment Earthing / Inspection PIT / Install earthing pull and Connecttion | 30d | 2026-02-02 | 2026-03-07 |  | 374d | 0d | start on or after 2026-02-02 | LABOUR [3000 h] | EE | 1 | C03a | TY1 | C03b | EIT02.1 |
| 2.1-RHCUEE05-1040 |  | Punch listing | 5d | 2026-03-09 | 2026-03-13 | 2.1-RHCUEE05-1010 | 374d | 0d |  | LABOUR [500 h] | EE | 1 | C03a | TY1 | C03b | EIT02.1 |
| 2.1-RHCUEE05-1060 |  | Complete QA/QC document | 5d | 2026-03-14 | 2026-03-19 | 2.1-RHCUEE05-1040 | 374d |  |  | LABOUR [933.1 h] | EE | 1 | C03a | TY1 | C03b | EIT02.1 |
|  | 7 | **Instrument** |  | 2026-01-19 | 2026-03-23 |  |  |  |  |  |  |  |  |  |  |  |
|  | 3 | **Instrument Cable Tray/Ladder Installation** |  | 2026-01-26 | 2026-03-11 |  |  |  |  |  |  |  |  |  |  |  |
| 2.1-RHCUIN03-1000 |  | Install support / bracket | 10d | 2026-01-26 | 2026-02-05 |  | 381d | 0d | start on or after 2026-01-26 | LABOUR [1000 h] | EE | 1 | C03a | TY1 | C03b | EIT02.1 |
| 2.1-RHCUIN03-1010 |  | Install Ladder / Tray | 20d | 2026-02-06 | 2026-02-28 | 2.1-RHCUIN03-1020 SS | 381d | 0d |  | LABOUR [500 h] | EE | 1 | C03a | TY1 | C03b | EIT02.1 |
| 2.1-RHCUIN03-1020 |  | Steel Conduits for Cable tray | 20d | 2026-02-06 | 2026-02-28 | 2.1-RHCUIN03-1000 | 381d | 0d |  | LABOUR [100 h] | EE | 1 | C03a | TY1 | C03b | EIT02.1 |
| 2.1-RHCUIN03-1030 |  | Clear punch | 6d | 2026-03-02 | 2026-03-07 | 2.1-RHCUIN03-1010, 2.1-RHCUIN03-1020 | 381d | 0d |  | LABOUR [50 h] | EE | 1 | C03a | TY1 | C03b | EIT02.1 |
| 2.1-RHCUIN03-1040 |  | Complete QA/QC document | 3d | 2026-03-09 | 2026-03-11 | 2.1-RHCUIN03-1030 | 381d |  |  | LABOUR [45.65 h] | EE | 1 | C03a | TY1 | C03b | EIT02.1 |
|  | 1 | **Instrument Cable Installation** |  | 2026-02-09 | 2026-03-23 |  |  |  |  |  |  |  |  |  |  |  |
|  | 8 | **Cable Pull Primary Cable** |  | 2026-02-09 | 2026-03-23 |  |  |  |  |  |  |  |  |  |  |  |
| 2.1-RHCUIN01-1000 |  | Pull Cable | 30d | 2026-02-09 | 2026-03-14 |  | 371d | 0d | start on or after 2026-02-09 | LABOUR [2500 h] | EE | 1 | C03a | TY1 | C03b | EIT02.1 |
| 2.1-RHCUIN01-1050 |  | Megger & Continuity test | 4d | 2026-03-16 | 2026-03-19 | 2.1-RHCUIN01-1000 | 371d | 0d |  | LABOUR [300 h] | EE | 1 | C03a | TY1 | C03b | EIT02.1 |
| 2.1-RHCUIN01-1100 |  | Complete QA/QC document | 3d | 2026-03-20 | 2026-03-23 | 2.1-RHCUIN01-1050 | 371d |  |  | LABOUR [574.28 h] | EE | 1 | C03a | TY1 | C03b | EIT02.1 |

| ID | WBS | Activity | Duration | Start | Finish | Predecessors | Total float | Free float | Constraint | Resources | Disciplines | Main Activity | WBS | Types | EIT WBS | EIT PKG |
| --- | --- | --- | --- | --- | --- | --- | --- | --- | --- | --- | --- | --- | --- | --- | --- | --- |
|  | 5 | **Cable Pull Power Cable** |  | 2026-02-09 | 2026-03-23 |  |  |  |  |  |  |  |  |  |  |  |
| 2.1-RHCUIN01-1010 |  | Pull Cable | 30d | 2026-02-09 | 2026-03-14 |  | 371d | 0d | start on or after 2026-02-09 | LABOUR [2500 h] | EE | 1 | C03a | TY1 | C03b | EIT02.1 |
| 2.1-RHCUIN01-1060 |  | Megger & Continuity test | 4d | 2026-03-16 | 2026-03-19 | 2.1-RHCUIN01-1010 | 371d | 0d |  | LABOUR [300 h] | EE | 1 | C03a | TY1 | C03b | EIT02.1 |
| 2.1-RHCUIN01-1110 |  | Complete QA/QC document | 3d | 2026-03-20 | 2026-03-23 | 2.1-RHCUIN01-1060 | 371d |  |  | LABOUR [574.28 h] | EE | 1 | C03a | TY1 | C03b | EIT02.1 |
|  | 9 | **Cable Pull Secondary Cable** |  | 2026-02-09 | 2026-03-23 |  |  |  |  |  |  |  |  |  |  |  |
| 2.1-RHCUIN01-1020 |  | Pull Cable | 30d | 2026-02-09 | 2026-03-14 |  | 371d | 0d | start on or after 2026-02-09 | LABOUR [2500 h] | EE | 1 | C03a | TY1 | C03b | EIT02.1 |
| 2.1-RHCUIN01-1070 |  | Megger & Continuity test | 4d | 2026-03-16 | 2026-03-19 | 2.1-RHCUIN01-1020 | 371d | 0d |  | LABOUR [300 h] | EE | 1 | C03a | TY1 | C03b | EIT02.1 |
| 2.1-RHCUIN01-1120 |  | Complete QA/QC document | 3d | 2026-03-20 | 2026-03-23 | 2.1-RHCUIN01-1070 | 371d |  |  | LABOUR [574.28 h] | EE | 1 | C03a | TY1 | C03b | EIT02.1 |
|  | 2 | **Cable Pull Thermocouple Cable** |  | 2026-02-09 | 2026-03-23 |  |  |  |  |  |  |  |  |  |  |  |
| 2.1-RHCUIN01-1030 |  | Pull Cable | 30d | 2026-02-09 | 2026-03-14 |  | 371d | 0d | start on or after 2026-02-09 | LABOUR [2500 h] | EE | 1 | C03a | TY1 | C03b | EIT02.1 |
| 2.1-RHCUIN01-1080 |  | Megger & Continuity test | 4d | 2026-03-16 | 2026-03-19 | 2.1-RHCUIN01-1030 | 371d | 0d |  | LABOUR [300 h] | EE | 1 | C03a | TY1 | C03b | EIT02.1 |
| 2.1-RHCUIN01-1130 |  | Complete QA/QC document | 3d | 2026-03-20 | 2026-03-23 | 2.1-RHCUIN01-1080 | 371d |  |  | LABOUR [574.28 h] | EE | 1 | C03a | TY1 | C03b | EIT02.1 |
|  | 1 | **Cable Pull LAN Cable** |  | 2026-02-09 | 2026-03-23 |  |  |  |  |  |  |  |  |  |  |  |
| 2.1-RHCUIN01-1040 |  | Pull Cable | 30d | 2026-02-09 | 2026-03-14 |  | 371d | 0d | start on or after 2026-02-09 | LABOUR [2500 h] | EE | 1 | C03a | TY1 | C03b | EIT02.1 |
| 2.1-RHCUIN01-1090 |  | Megger & Continuity test | 4d | 2026-03-16 | 2026-03-19 | 2.1-RHCUIN01-1040 | 371d | 0d |  | LABOUR [300 h] | EE | 1 | C03a | TY1 | C03b | EIT02.1 |
| 2.1-RHCUIN01-1140 |  | Complete QA/QC document | 3d | 2026-03-20 | 2026-03-23 | 2.1-RHCUIN01-1090 | 371d |  |  | LABOUR [574.28 h] | EE | 1 | C03a | TY1 | C03b | EIT02.1 |
|  | 2 | **Instrument Cable Termination / Glanding** |  | 2026-02-20 | 2026-03-23 |  |  |  |  |  |  |  |  |  |  |  |
|  | 8 | **Cable Termination Primary Cable** |  | 2026-02-20 | 2026-03-23 |  |  |  |  |  |  |  |  |  |  |  |
| 2.1-RHCUIN02-1000 |  | Cable Termination/Glanding | 20d | 2026-02-20 | 2026-03-14 |  | 371d | 0d | start on or after 2026-02-20 | LABOUR [500 h] | EE | 1 | C03a | TY1 | C03b | EIT02.1 |
| 2.1-RHCUIN02-1050 |  | Clear punch | 4d | 2026-03-16 | 2026-03-19 | 2.1-RHCUIN02-1000 | 371d | 0d |  | LABOUR [51.16 h] | EE | 1 | C03a | TY1 | C03b | EIT02.1 |
| 2.1-RHCUIN02-1100 |  | Complete QA/QC document | 3d | 2026-03-20 | 2026-03-23 | 2.1-RHCUIN02-1050 | 371d |  |  | LABOUR [100 h] | EE | 1 | C03a | TY1 | C03b | EIT02.1 |
|  | 5 | **Cable Termination Power Cable** |  | 2026-02-20 | 2026-03-23 |  |  |  |  |  |  |  |  |  |  |  |
| 2.1-RHCUIN02-1010 |  | Cable Termination/Glanding | 20d | 2026-02-20 | 2026-03-14 | 2.1-RHCUIN02-1000 SS | 371d | 0d |  | LABOUR [500 h] | EE | 1 | C03a | TY1 | C03b | EIT02.1 |
| 2.1-RHCUIN02-1060 |  | Clear punch | 4d | 2026-03-16 | 2026-03-19 | 2.1-RHCUIN02-1010 | 371d | 0d |  | LABOUR [51.16 h] | EE | 1 | C03a | TY1 | C03b | EIT02.1 |
| 2.1-RHCUIN02-1110 |  | Complete QA/QC document | 3d | 2026-03-20 | 2026-03-23 | 2.1-RHCUIN02-1060 | 371d |  |  | LABOUR [100 h] | EE | 1 | C03a | TY1 | C03b | EIT02.1 |

| ID | WBS | Activity | Duration | Start | Finish | Predecessors | Total float | Free float | Constraint | Resources | Disciplines | Main Activity | WBS | Types | EIT WBS | EIT PKG |
| --- | --- | --- | --- | --- | --- | --- | --- | --- | --- | --- | --- | --- | --- | --- | --- | --- |
|  | 9 | **Cable Termination Secondary Cable** |  | 2026-02-20 | 2026-03-23 |  |  |  |  |  |  |  |  |  |  |  |
| 2.1-RHCUIN02-1020 |  | Cable Termination/Glanding | 20d | 2026-02-20 | 2026-03-14 | 2.1-RHCUIN02-1010 SS | 371d | 0d |  | LABOUR [500 h] | EE | 1 | C03a | TY1 | C03b | EIT02.1 |
| 2.1-RHCUIN02-1070 |  | Clear punch | 4d | 2026-03-16 | 2026-03-19 | 2.1-RHCUIN02-1020 | 371d | 0d |  | LABOUR [51.16 h] | EE | 1 | C03a | TY1 | C03b | EIT02.1 |
| 2.1-RHCUIN02-1120 |  | Complete QA/QC document | 3d | 2026-03-20 | 2026-03-23 | 2.1-RHCUIN02-1070 | 371d |  |  | LABOUR [100 h] | EE | 1 | C03a | TY1 | C03b | EIT02.1 |
|  | 2 | **Cable Termination Thermocouple Cable** |  | 2026-02-20 | 2026-03-23 |  |  |  |  |  |  |  |  |  |  |  |
| 2.1-RHCUIN02-1030 |  | Cable Termination/Glanding | 20d | 2026-02-20 | 2026-03-14 | 2.1-RHCUIN02-1020 SS | 371d | 0d |  | LABOUR [500 h] | EE | 1 | C03a | TY1 | C03b | EIT02.1 |
| 2.1-RHCUIN02-1080 |  | Clear punch | 4d | 2026-03-16 | 2026-03-19 | 2.1-RHCUIN02-1030 | 371d | 0d |  | LABOUR [51.16 h] | EE | 1 | C03a | TY1 | C03b | EIT02.1 |
| 2.1-RHCUIN02-1130 |  | Complete QA/QC document | 3d | 2026-03-20 | 2026-03-23 | 2.1-RHCUIN02-1080 | 371d |  |  | LABOUR [100 h] | EE | 1 | C03a | TY1 | C03b | EIT02.1 |
|  | 1 | **Cable Termination LAN Cable** |  | 2026-02-20 | 2026-03-23 |  |  |  |  |  |  |  |  |  |  |  |
| 2.1-RHCUIN02-1040 |  | Cable Termination/Glanding | 20d | 2026-02-20 | 2026-03-14 | 2.1-RHCUIN02-1030 SS | 371d | 0d |  | LABOUR [500 h] | EE | 1 | C03a | TY1 | C03b | EIT02.1 |
| 2.1-RHCUIN02-1090 |  | Clear punch | 4d | 2026-03-16 | 2026-03-19 | 2.1-RHCUIN02-1040 | 371d | 0d |  | LABOUR [51.16 h] | EE | 1 | C03a | TY1 | C03b | EIT02.1 |
| 2.1-RHCUIN02-1140 |  | Complete QA/QC document | 3d | 2026-03-20 | 2026-03-23 | 2.1-RHCUIN02-1090 | 371d |  |  | LABOUR [100 h] | EE | 1 | C03a | TY1 | C03b | EIT02.1 |
|  | 6 | **Instrument Equipment Installation** |  | 2026-01-30 | 2026-03-13 |  |  |  |  |  |  |  |  |  |  |  |
|  | 1 | **Analyser Instruments** |  | 2026-01-30 | 2026-03-13 |  |  |  |  |  |  |  |  |  |  |  |
| 2.1-RHCUIN04-1000 |  | Install support / bracket | 10d | 2026-01-30 | 2026-02-10 |  | 379d | 0d | start on or after 2026-01-30 | LABOUR [630.19 h] | EE | 1 | C03a | TY1 | C03b | EIT02.1 |
| 2.1-RHCUIN04-1010 |  | Install Equipment | 20d | 2026-02-11 | 2026-03-05 | 2.1-RHCUIN04-1000 | 379d | 0d |  | LABOUR [80 h] | EE | 1 | C03a | TY1 | C03b | EIT02.1 |
| 2.1-RHCUIN04-1020 |  | Clear punch | 4d | 2026-03-06 | 2026-03-10 | 2.1-RHCUIN04-1010 | 379d | 0d |  | LABOUR [10 h] | EE | 1 | C03a | TY1 | C03b | EIT02.1 |
| 2.1-RHCUIN04-1030 |  | Complete QA/QC document | 3d | 2026-03-11 | 2026-03-13 | 2.1-RHCUIN04-1020 | 379d |  |  | LABOUR [39.41 h] | EE | 1 | C03a | TY1 | C03b | EIT02.1 |
|  | 4 | **Instrument Calibration** |  | 2026-01-19 | 2026-02-25 |  |  |  |  |  |  |  |  |  |  |  |
| 2.1-RHCUIN05-1000 |  | Calibration Equipment | 30d | 2026-01-19 | 2026-02-21 |  | 393d | 0d | start on or after 2026-01-19 | LABOUR [2300 h] | EE | 1 | C03a | TY1 | C03b | EIT02.1 |
| 2.1-RHCUIN05-1010 |  | Complete QA/QC document | 3d | 2026-02-23 | 2026-02-25 | 2.1-RHCUIN05-1000 | 393d |  |  | LABOUR [360.97 h] | EE | 1 | C03a | TY1 | C03b | EIT02.1 |
|  | 8 | **Telecommunication** |  | 2026-01-26 | 2026-03-31 |  |  |  |  |  |  |  |  |  |  |  |
|  | 5 | **Telecom** |  | 2026-01-26 | 2026-03-28 |  |  |  |  |  |  |  |  |  |  |  |
|  | 1 | **Telecommunication Cable Installation** |  | 2026-01-26 | 2026-02-25 |  |  |  |  |  |  |  |  |  |  |  |
| 2.1-RHCUTE01-1000 |  | Pull Cable | 20d | 2026-01-26 | 2026-02-17 |  | 366d | 0d | start on or after 2026-01-26 | LABOUR [875.44 h] | EE | 1 | C03a | TY1 | C03b | EIT02.1 |
| 2.1-RHCUTE01-1010 |  | Megger & Continuity test | 4d | 2026-02-18 | 2026-02-21 | 2.1-RHCUTE01-1000 | 366d | 0d |  | LABOUR [180 h] | EE | 1 | C03a | TY1 | C03b | EIT02.1 |
| 2.1-RHCUTE01-1020 |  | Complete QA/QC document | 3d | 2026-02-23 | 2026-02-25 | 2.1-RHCUTE01-1010 | 366d | 0d |  | LABOUR [200 h] | EE | 1 | C03a | TY1 | C03b | EIT02.1 |

| ID | WBS | Activity | Duration | Start | Finish | Predecessors | Total float | Free float | Constraint | Resources | Disciplines | Main Activity | WBS | Types | EIT WBS | EIT PKG |
| --- | --- | --- | --- | --- | --- | --- | --- | --- | --- | --- | --- | --- | --- | --- | --- | --- |
|  | 4 | **Telecommunication Termination / Glanding** |  | 2026-02-26 | 2026-03-28 |  |  |  |  |  |  |  |  |  |  |  |
| 2.1-RHCUTE02-1000 |  | Cable Termination/Glanding | 20d | 2026-02-26 | 2026-03-20 | 2.1-RHCUTE01-1020 | 366d | 0d |  | LABOUR | EE | 1 | C03a | TY1 | C03b | EIT02.1 |
| 2.1-RHCUTE02-1010 |  | Clear punch | 4d | 2026-03-21 | 2026-03-25 | 2.1-RHCUTE02-1000 | 366d | 0d |  | LABOUR | EE | 1 | C03a | TY1 | C03b | EIT02.1 |
| 2.1-RHCUTE02-1020 |  | Complete QA/QC document | 3d | 2026-03-26 | 2026-03-28 | 2.1-RHCUTE02-1010 | 366d |  |  | LABOUR | EE | 1 | C03a | TY1 | C03b | EIT02.1 |
|  | 6 | **CCTV System** |  | 2026-02-26 | 2026-03-31 |  |  |  |  |  |  |  |  |  |  |  |
|  | 1 | **CCTV Cable Installation** |  | 2026-02-26 | 2026-03-31 |  |  |  |  |  |  |  |  |  |  |  |
| 2.1-RHCUTE01.1-1000 |  | Pull Cable | 22d | 2026-02-26 | 2026-03-23 |  | 364d | 0d | start on or after 2026-02-26 | LABOUR | EE | 1 | C03a | TY1 | C03b | EIT02.1 |
| 2.1-RHCUTE01.1-1010 |  | Megger & Continuity test | 4d | 2026-03-24 | 2026-03-27 | 2.1-RHCUTE01.1-1000 | 364d | 0d |  | LABOUR | EE | 1 | C03a | TY1 | C03b | EIT02.1 |
| 2.1-RHCUTE01.1-1020 |  | Complete QA/QC document | 3d | 2026-03-28 | 2026-03-31 | 2.1-RHCUTE01.1-1010 | 364d | 0d |  | LABOUR | EE | 1 | C03a | TY1 | C03b | EIT02.1 |
|  | 1 | **WBS : SDA (Solvent De-Asphalting Unit)** |  | 2025-12-23 | 2026-03-31 |  |  |  |  |  |  |  |  |  |  |  |
|  | 6 | **Electrical** |  | 2025-12-23 | 2026-03-13 |  |  |  |  |  |  |  |  |  |  |  |
|  | 3 | **Electrical Cable Tray/Ladder Installation** |  | 2025-12-23 | 2026-02-28 |  |  |  |  |  |  |  |  |  |  |  |
|  | 17 | **Air Fin Cooler -EM-10803-1** |  | 2025-12-23 | 2026-02-28 |  |  |  |  |  |  |  |  |  |  |  |
| 2.1-SDAEE03-1000 |  | Install support / bracket | 20d | 2025-12-23 | 2026-01-14 |  | 390d | 0d | start on or after 2025-12-23 | LABOUR [4.36 h] | EE | 1 | C03a | TY1 | C03c | EIT02.1 |
| 2.1-SDAEE03-1280 |  | Install Ladder / Tray | 30d | 2026-01-15 | 2026-02-18 | 2.1-SDAEE03-1000 | 390d | 0d |  | LABOUR [15 h] | EE | 1 | C03a | TY1 | C03c | EIT02.1 |
| 2.1-SDAEE03-1290 |  | Install Conduits | 30d | 2026-01-15 | 2026-02-18 | 2.1-SDAEE03-1280 SS | 390d | 0d |  | LABOUR [5 h] | EE | 1 | C03a | TY1 | C03c | EIT02.1 |
| 2.1-SDAEE03-1840 |  | Clear punch | 6d | 2026-02-19 | 2026-02-25 | 2.1-SDAEE03-1290, 2.1-SDAEE03-1280 | 390d | 0d |  | LABOUR [5 h] | EE | 1 | C03a | TY1 | C03c | EIT02.1 |
| 2.1-SDAEE03-2120 |  | Complete QA/QC document | 3d | 2026-02-26 | 2026-02-28 | 2.1-SDAEE03-1840 | 390d |  |  | LABOUR [6.37 h] | EE | 1 | C03a | TY1 | C03c | EIT02.1 |
|  | 1 | **Air Fin Cooler - EM-10803-2** |  | 2025-12-23 | 2026-02-28 |  |  |  |  |  |  |  |  |  |  |  |
| 2.1-SDAEE03-1010 |  | Install support / bracket | 20d | 2025-12-23 | 2026-01-14 | 2.1-SDAEE03-1000 SS | 390d | 0d |  | LABOUR [4.36 h] | EE | 1 | C03a | TY1 | C03c | EIT02.1 |
| 2.1-SDAEE03-1300 |  | Install Ladder / Tray | 30d | 2026-01-15 | 2026-02-18 | 2.1-SDAEE03-1010 | 390d | 0d |  | LABOUR [15 h] | EE | 1 | C03a | TY1 | C03c | EIT02.1 |
| 2.1-SDAEE03-1310 |  | Install Conduits | 30d | 2026-01-15 | 2026-02-18 | 2.1-SDAEE03-1300 SS | 390d | 0d |  | LABOUR [5 h] | EE | 1 | C03a | TY1 | C03c | EIT02.1 |
| 2.1-SDAEE03-1850 |  | Clear punch | 6d | 2026-02-19 | 2026-02-25 | 2.1-SDAEE03-1310, 2.1-SDAEE03-1300 | 390d | 0d |  | LABOUR [5 h] | EE | 1 | C03a | TY1 | C03c | EIT02.1 |
| 2.1-SDAEE03-2130 |  | Complete QA/QC document | 3d | 2026-02-26 | 2026-02-28 | 2.1-SDAEE03-1850 | 390d |  |  | LABOUR [6.37 h] | EE | 1 | C03a | TY1 | C03c | EIT02.1 |

| ID | WBS | Activity | Duration | Start | Finish | Predecessors | Total float | Free float | Resources | Disciplines | Main Activity | WBS | Types | EIT WBS | EIT PKG |
| --- | --- | --- | --- | --- | --- | --- | --- | --- | --- | --- | --- | --- | --- | --- | --- |
|  | 10 | **Air Fin Cooler - EM-10807-2** |  | 2025-12-23 | 2026-02-28 |  |  |  |  |  |  |  |  |  |  |
| 2.1-SDAEE03-1030 |  | Install support / bracket | 20d | 2025-12-23 | 2026-01-14 | 2.1-SDAEE03-1020 SS | 390d | 0d | LABOUR [4.36 h] | EE | 1 | C03a | TY1 | C03c | EIT02.1 |
| 2.1-SDAEE03-1340 |  | Install Ladder / Tray | 30d | 2026-01-15 | 2026-02-18 | 2.1-SDAEE03-1030 | 390d | 0d | LABOUR [15 h] | EE | 1 | C03a | TY1 | C03c | EIT02.1 |
| 2.1-SDAEE03-1350 |  | Install Conduits | 30d | 2026-01-15 | 2026-02-18 | 2.1-SDAEE03-1340 SS | 390d | 0d | LABOUR [5 h] | EE | 1 | C03a | TY1 | C03c | EIT02.1 |
| 2.1-SDAEE03-1870 |  | Clear punch | 6d | 2026-02-19 | 2026-02-25 | 2.1-SDAEE03-1350, 2.1-SDAEE03-1340 | 390d | 0d | LABOUR [5 h] | EE | 1 | C03a | TY1 | C03c | EIT02.1 |
| 2.1-SDAEE03-2150 |  | Complete QA/QC document | 3d | 2026-02-26 | 2026-02-28 | 2.1-SDAEE03-1870 | 390d |  | LABOUR [6.37 h] | EE | 1 | C03a | TY1 | C03c | EIT02.1 |
|  | 18 | **Air Fin Cooler - EM-10812-1** |  | 2025-12-23 | 2026-02-28 |  |  |  |  |  |  |  |  |  |  |
| 2.1-SDAEE03-1040 |  | Install support / bracket | 20d | 2025-12-23 | 2026-01-14 | 2.1-SDAEE03-1030 SS | 390d | 0d | LABOUR [4.36 h] | EE | 1 | C03a | TY1 | C03c | EIT02.1 |
| 2.1-SDAEE03-1360 |  | Install Ladder / Tray | 30d | 2026-01-15 | 2026-02-18 | 2.1-SDAEE03-1040 | 390d | 0d | LABOUR [15 h] | EE | 1 | C03a | TY1 | C03c | EIT02.1 |
| 2.1-SDAEE03-1370 |  | Install Conduits | 30d | 2026-01-15 | 2026-02-18 | 2.1-SDAEE03-1360 SS | 390d | 0d | LABOUR [5 h] | EE | 1 | C03a | TY1 | C03c | EIT02.1 |
| 2.1-SDAEE03-1880 |  | Clear punch | 6d | 2026-02-19 | 2026-02-25 | 2.1-SDAEE03-1370, 2.1-SDAEE03-1360 | 390d | 0d | LABOUR [5 h] | EE | 1 | C03a | TY1 | C03c | EIT02.1 |
| 2.1-SDAEE03-2160 |  | Complete QA/QC document | 3d | 2026-02-26 | 2026-02-28 | 2.1-SDAEE03-1880 | 390d |  | LABOUR [6.37 h] | EE | 1 | C03a | TY1 | C03c | EIT02.1 |
|  | 6 | **Air Fin Cooler - EM-10807-1** |  | 2025-12-23 | 2026-02-28 |  |  |  |  |  |  |  |  |  |  |
| 2.1-SDAEE03-1020 |  | Install support / bracket | 20d | 2025-12-23 | 2026-01-14 | 2.1-SDAEE03-1010 SS | 390d | 0d | LABOUR [4.36 h] | EE | 1 | C03a | TY1 | C03c | EIT02.1 |
| 2.1-SDAEE03-1320 |  | Install Ladder / Tray | 30d | 2026-01-15 | 2026-02-18 | 2.1-SDAEE03-1020 | 390d | 0d | LABOUR [15 h] | EE | 1 | C03a | TY1 | C03c | EIT02.1 |
| 2.1-SDAEE03-1330 |  | Install Conduits | 30d | 2026-01-15 | 2026-02-18 | 2.1-SDAEE03-1320 SS | 390d | 0d | LABOUR [5 h] | EE | 1 | C03a | TY1 | C03c | EIT02.1 |
| 2.1-SDAEE03-1860 |  | Clear punch | 6d | 2026-02-19 | 2026-02-25 | 2.1-SDAEE03-1330, 2.1-SDAEE03-1320 | 390d | 0d | LABOUR [5 h] | EE | 1 | C03a | TY1 | C03c | EIT02.1 |
| 2.1-SDAEE03-2140 |  | Complete QA/QC document | 3d | 2026-02-26 | 2026-02-28 | 2.1-SDAEE03-1860 | 390d |  | LABOUR [6.37 h] | EE | 1 | C03a | TY1 | C03c | EIT02.1 |
|  | 11 | **Air Fin Cooler - EM-10802-1** |  | 2025-12-23 | 2026-02-28 |  |  |  |  |  |  |  |  |  |  |
| 2.1-SDAEE03-1060 |  | Install support / bracket | 20d | 2025-12-23 | 2026-01-14 | 2.1-SDAEE03-1050 SS | 390d | 0d | LABOUR [4.36 h] | EE | 1 | C03a | TY1 | C03c | EIT02.1 |
| 2.1-SDAEE03-1400 |  | Install Ladder / Tray | 30d | 2026-01-15 | 2026-02-18 | 2.1-SDAEE03-1060 | 390d | 0d | LABOUR [15 h] | EE | 1 | C03a | TY1 | C03c | EIT02.1 |
| 2.1-SDAEE03-1410 |  | Install Conduits | 30d | 2026-01-15 | 2026-02-18 | 2.1-SDAEE03-1400 SS | 390d | 0d | LABOUR [5 h] | EE | 1 | C03a | TY1 | C03c | EIT02.1 |
| 2.1-SDAEE03-1900 |  | Clear punch | 6d | 2026-02-19 | 2026-02-25 | 2.1-SDAEE03-1410, 2.1-SDAEE03-1400 | 390d | 0d | LABOUR [5 h] | EE | 1 | C03a | TY1 | C03c | EIT02.1 |
| 2.1-SDAEE03-2180 |  | Complete QA/QC document | 3d | 2026-02-26 | 2026-02-28 | 2.1-SDAEE03-1900 | 390d |  | LABOUR [6.37 h] | EE | 1 | C03a | TY1 | C03c | EIT02.1 |

| ID | WBS | Activity | Duration | Start | Finish | Predecessors | Total float | Free float | Resources | Disciplines | Main Activity | WBS | Types | EIT WBS | EIT PKG |
| --- | --- | --- | --- | --- | --- | --- | --- | --- | --- | --- | --- | --- | --- | --- | --- |
|  | 19 | **Air Fin Cooler - EM-10802-2** |  | 2025-12-23 | 2026-02-28 |  |  |  |  |  |  |  |  |  |  |
| 2.1-SDAEE03-1070 |  | Install support / bracket | 20d | 2025-12-23 | 2026-01-14 | 2.1-SDAEE03-1060 SS | 390d | 0d | LABOUR [4.36 h] | EE | 1 | C03a | TY1 | C03c | EIT02.1 |
| 2.1-SDAEE03-1420 |  | Install Ladder / Tray | 30d | 2026-01-15 | 2026-02-18 | 2.1-SDAEE03-1070 | 390d | 0d | LABOUR [15 h] | EE | 1 | C03a | TY1 | C03c | EIT02.1 |
| 2.1-SDAEE03-1430 |  | Install Conduits | 30d | 2026-01-15 | 2026-02-18 | 2.1-SDAEE03-1420 SS | 390d | 0d | LABOUR [5 h] | EE | 1 | C03a | TY1 | C03c | EIT02.1 |
| 2.1-SDAEE03-1910 |  | Clear punch | 6d | 2026-02-19 | 2026-02-25 | 2.1-SDAEE03-1430, 2.1-SDAEE03-1420 | 390d | 0d | LABOUR [5 h] | EE | 1 | C03a | TY1 | C03c | EIT02.1 |
| 2.1-SDAEE03-2190 |  | Complete QA/QC document | 3d | 2026-02-26 | 2026-02-28 | 2.1-SDAEE03-1910 | 390d |  | LABOUR [6.37 h] | EE | 1 | C03a | TY1 | C03c | EIT02.1 |
|  | 7 | **Air Fin Cooler - EM-10812-2** |  | 2025-12-23 | 2026-02-28 |  |  |  |  |  |  |  |  |  |  |
| 2.1-SDAEE03-1050 |  | Install support / bracket | 20d | 2025-12-23 | 2026-01-14 | 2.1-SDAEE03-1040 SS | 390d | 0d | LABOUR [4.36 h] | EE | 1 | C03a | TY1 | C03c | EIT02.1 |
| 2.1-SDAEE03-1380 |  | Install Ladder / Tray | 30d | 2026-01-15 | 2026-02-18 | 2.1-SDAEE03-1050 | 390d | 0d | LABOUR [15 h] | EE | 1 | C03a | TY1 | C03c | EIT02.1 |
| 2.1-SDAEE03-1390 |  | Install Conduits | 30d | 2026-01-15 | 2026-02-18 | 2.1-SDAEE03-1380 SS | 390d | 0d | LABOUR [5 h] | EE | 1 | C03a | TY1 | C03c | EIT02.1 |
| 2.1-SDAEE03-1890 |  | Clear punch | 6d | 2026-02-19 | 2026-02-25 | 2.1-SDAEE03-1390, 2.1-SDAEE03-1380 | 390d | 0d | LABOUR [5 h] | EE | 1 | C03a | TY1 | C03c | EIT02.1 |
| 2.1-SDAEE03-2170 |  | Complete QA/QC document | 3d | 2026-02-26 | 2026-02-28 | 2.1-SDAEE03-1890 | 390d |  | LABOUR [6.37 h] | EE | 1 | C03a | TY1 | C03c | EIT02.1 |
|  | 12 | **Air Fin Cooler - EM-10802-4** |  | 2025-12-23 | 2026-02-28 |  |  |  |  |  |  |  |  |  |  |
| 2.1-SDAEE03-1090 |  | Install support / bracket | 20d | 2025-12-23 | 2026-01-14 | 2.1-SDAEE03-1080 SS | 390d | 0d | LABOUR [4.36 h] | EE | 1 | C03a | TY1 | C03c | EIT02.1 |
| 2.1-SDAEE03-1460 |  | Install Ladder / Tray | 30d | 2026-01-15 | 2026-02-18 | 2.1-SDAEE03-1090 | 390d | 0d | LABOUR [15 h] | EE | 1 | C03a | TY1 | C03c | EIT02.1 |
| 2.1-SDAEE03-1470 |  | Install Conduits | 30d | 2026-01-15 | 2026-02-18 | 2.1-SDAEE03-1460 SS | 390d | 0d | LABOUR [5 h] | EE | 1 | C03a | TY1 | C03c | EIT02.1 |
| 2.1-SDAEE03-1930 |  | Clear punch | 6d | 2026-02-19 | 2026-02-25 | 2.1-SDAEE03-1470, 2.1-SDAEE03-1460 | 390d | 0d | LABOUR [5 h] | EE | 1 | C03a | TY1 | C03c | EIT02.1 |
| 2.1-SDAEE03-2210 |  | Complete QA/QC document | 3d | 2026-02-26 | 2026-02-28 | 2.1-SDAEE03-1930 | 390d |  | LABOUR [6.37 h] | EE | 1 | C03a | TY1 | C03c | EIT02.1 |
|  | 20 | **Air Fin Cooler - EM-10802-5** |  | 2025-12-23 | 2026-02-28 |  |  |  |  |  |  |  |  |  |  |
| 2.1-SDAEE03-1100 |  | Install support / bracket | 20d | 2025-12-23 | 2026-01-14 | 2.1-SDAEE03-1090 SS | 390d | 0d | LABOUR [4.36 h] | EE | 1 | C03a | TY1 | C03c | EIT02.1 |
| 2.1-SDAEE03-1480 |  | Install Ladder / Tray | 30d | 2026-01-15 | 2026-02-18 | 2.1-SDAEE03-1100 | 390d | 0d | LABOUR [15 h] | EE | 1 | C03a | TY1 | C03c | EIT02.1 |
| 2.1-SDAEE03-1490 |  | Install Conduits | 30d | 2026-01-15 | 2026-02-18 | 2.1-SDAEE03-1480 SS | 390d | 0d | LABOUR [5 h] | EE | 1 | C03a | TY1 | C03c | EIT02.1 |
| 2.1-SDAEE03-1940 |  | Clear punch | 6d | 2026-02-19 | 2026-02-25 | 2.1-SDAEE03-1490, 2.1-SDAEE03-1480 | 390d | 0d | LABOUR [5 h] | EE | 1 | C03a | TY1 | C03c | EIT02.1 |
| 2.1-SDAEE03-2220 |  | Complete QA/QC document | 3d | 2026-02-26 | 2026-02-28 | 2.1-SDAEE03-1940 | 390d |  | LABOUR [6.37 h] | EE | 1 | C03a | TY1 | C03c | EIT02.1 |

| ID | WBS | Activity | Duration | Start | Finish | Predecessors | Total float | Free float | Resources | Disciplines | Main Activity | WBS | Types | EIT WBS | EIT PKG |
| --- | --- | --- | --- | --- | --- | --- | --- | --- | --- | --- | --- | --- | --- | --- | --- |
|  | 8 | **Air Fin Cooler - EM-10802-3** |  | 2025-12-23 | 2026-02-28 |  |  |  |  |  |  |  |  |  |  |
| 2.1-SDAEE03-1080 |  | Install support / bracket | 20d | 2025-12-23 | 2026-01-14 | 2.1-SDAEE03-1070 SS | 390d | 0d | LABOUR [4.36 h] | EE | 1 | C03a | TY1 | C03c | EIT02.1 |
| 2.1-SDAEE03-1440 |  | Install Ladder / Tray | 30d | 2026-01-15 | 2026-02-18 | 2.1-SDAEE03-1080 | 390d | 0d | LABOUR [15 h] | EE | 1 | C03a | TY1 | C03c | EIT02.1 |
| 2.1-SDAEE03-1450 |  | Install Conduits | 30d | 2026-01-15 | 2026-02-18 | 2.1-SDAEE03-1440 SS | 390d | 0d | LABOUR [5 h] | EE | 1 | C03a | TY1 | C03c | EIT02.1 |
| 2.1-SDAEE03-1920 |  | Clear punch | 6d | 2026-02-19 | 2026-02-25 | 2.1-SDAEE03-1450, 2.1-SDAEE03-1440 | 390d | 0d | LABOUR [5 h] | EE | 1 | C03a | TY1 | C03c | EIT02.1 |
| 2.1-SDAEE03-2200 |  | Complete QA/QC document | 3d | 2026-02-26 | 2026-02-28 | 2.1-SDAEE03-1920 | 390d |  | LABOUR [6.37 h] | EE | 1 | C03a | TY1 | C03c | EIT02.1 |
|  | 13 | **Air Fin Cooler - EM-10802-7** |  | 2025-12-23 | 2026-02-28 |  |  |  |  |  |  |  |  |  |  |
| 2.1-SDAEE03-1120 |  | Install support / bracket | 20d | 2025-12-23 | 2026-01-14 | 2.1-SDAEE03-1110 SS | 390d | 0d | LABOUR [4.36 h] | EE | 1 | C03a | TY1 | C03c | EIT02.1 |
| 2.1-SDAEE03-1520 |  | Install Ladder / Tray | 30d | 2026-01-15 | 2026-02-18 | 2.1-SDAEE03-1120 | 390d | 0d | LABOUR [15 h] | EE | 1 | C03a | TY1 | C03c | EIT02.1 |
| 2.1-SDAEE03-1530 |  | Install Conduits | 30d | 2026-01-15 | 2026-02-18 | 2.1-SDAEE03-1520 SS | 390d | 0d | LABOUR [5 h] | EE | 1 | C03a | TY1 | C03c | EIT02.1 |
| 2.1-SDAEE03-1960 |  | Clear punch | 6d | 2026-02-19 | 2026-02-25 | 2.1-SDAEE03-1530, 2.1-SDAEE03-1520 | 390d | 0d | LABOUR [5 h] | EE | 1 | C03a | TY1 | C03c | EIT02.1 |
| 2.1-SDAEE03-2240 |  | Complete QA/QC document | 3d | 2026-02-26 | 2026-02-28 | 2.1-SDAEE03-1960 | 390d |  | LABOUR [6.37 h] | EE | 1 | C03a | TY1 | C03c | EIT02.1 |
|  | 2 | **Air Fin Cooler - EM-10802-6** |  | 2025-12-23 | 2026-02-28 |  |  |  |  |  |  |  |  |  |  |
| 2.1-SDAEE03-1110 |  | Install support / bracket | 20d | 2025-12-23 | 2026-01-14 | 2.1-SDAEE03-1100 SS | 390d | 0d | LABOUR [4.36 h] | EE | 1 | C03a | TY1 | C03c | EIT02.1 |
| 2.1-SDAEE03-1500 |  | Install Ladder / Tray | 30d | 2026-01-15 | 2026-02-18 | 2.1-SDAEE03-1110 | 390d | 0d | LABOUR [15 h] | EE | 1 | C03a | TY1 | C03c | EIT02.1 |
| 2.1-SDAEE03-1510 |  | Install Conduits | 30d | 2026-01-15 | 2026-02-18 | 2.1-SDAEE03-1500 SS | 390d | 0d | LABOUR [5 h] | EE | 1 | C03a | TY1 | C03c | EIT02.1 |
| 2.1-SDAEE03-1950 |  | Clear punch | 6d | 2026-02-19 | 2026-02-25 | 2.1-SDAEE03-1510, 2.1-SDAEE03-1500 | 390d | 0d | LABOUR [5 h] | EE | 1 | C03a | TY1 | C03c | EIT02.1 |
| 2.1-SDAEE03-2230 |  | Complete QA/QC document | 3d | 2026-02-26 | 2026-02-28 | 2.1-SDAEE03-1950 | 390d |  | LABOUR [6.37 h] | EE | 1 | C03a | TY1 | C03c | EIT02.1 |
|  | 21 | **Air Fin Cooler - EM-10802-8** |  | 2025-12-23 | 2026-02-28 |  |  |  |  |  |  |  |  |  |  |
| 2.1-SDAEE03-1130 |  | Install support / bracket | 20d | 2025-12-23 | 2026-01-14 | 2.1-SDAEE03-1120 SS | 390.4d | 0d | LABOUR [4.36 h] | EE | 1 | C03a | TY1 | C03c | EIT02.1 |
| 2.1-SDAEE03-1540 |  | Install Ladder / Tray | 30d | 2026-01-15 | 2026-02-18 | 2.1-SDAEE03-1130 | 390.4d | 0d | LABOUR [15 h] | EE | 1 | C03a | TY1 | C03c | EIT02.1 |
| 2.1-SDAEE03-1550 |  | Install Conduits | 30d | 2026-01-15 | 2026-02-18 | 2.1-SDAEE03-1540 SS | 390.4d | 0d | LABOUR [5 h] | EE | 1 | C03a | TY1 | C03c | EIT02.1 |
| 2.1-SDAEE03-1970 |  | Clear punch | 5.6d | 2026-02-19 | 2026-02-25 | 2.1-SDAEE03-1550, 2.1-SDAEE03-1540 | 390.4d | 0d | LABOUR [5 h] | EE | 1 | C03a | TY1 | C03c | EIT02.1 |
| 2.1-SDAEE03-2250 |  | Complete QA/QC document | 3d | 2026-02-25 | 2026-02-28 | 2.1-SDAEE03-1970 | 390.4d |  | LABOUR [6.37 h] | EE | 1 | C03a | TY1 | C03c | EIT02.1 |

| ID | WBS | Activity | Duration | Start | Finish | Predecessors | Total float | Free float | Resources | Disciplines | Main Activity | WBS | Types | EIT WBS | EIT PKG |
| --- | --- | --- | --- | --- | --- | --- | --- | --- | --- | --- | --- | --- | --- | --- | --- |
|  | 14 | **Air Fin Cooler - EM-10802-10** |  | 2025-12-23 | 2026-02-28 |  |  |  |  |  |  |  |  |  |  |
| 2.1-SDAEE03-1140 |  | Install support / bracket | 20d | 2025-12-23 | 2026-01-14 | 2.1-SDAEE03-1130 SS | 390.4d | 0d | LABOUR [4.36 h] | EE | 1 | C03a | TY1 | C03c | EIT02.1 |
| 2.1-SDAEE03-1560 |  | Install Ladder / Tray | 30d | 2026-01-15 | 2026-02-18 | 2.1-SDAEE03-1140 | 390.4d | 0d | LABOUR [15 h] | EE | 1 | C03a | TY1 | C03c | EIT02.1 |
| 2.1-SDAEE03-1570 |  | Install Conduits | 30d | 2026-01-15 | 2026-02-18 | 2.1-SDAEE03-1560 SS | 390.4d | 0d | LABOUR [5 h] | EE | 1 | C03a | TY1 | C03c | EIT02.1 |
| 2.1-SDAEE03-1980 |  | Clear punch | 5.6d | 2026-02-19 | 2026-02-25 | 2.1-SDAEE03-1570, 2.1-SDAEE03-1560 | 390.4d | 0d | LABOUR [5 h] | EE | 1 | C03a | TY1 | C03c | EIT02.1 |
| 2.1-SDAEE03-2260 |  | Complete QA/QC document | 3d | 2026-02-25 | 2026-02-28 | 2.1-SDAEE03-1980 | 390.4d |  | LABOUR [6.37 h] | EE | 1 | C03a | TY1 | C03c | EIT02.1 |
|  | 22 | **Air Fin Cooler - EM-10802-11** |  | 2025-12-23 | 2026-02-28 |  |  |  |  |  |  |  |  |  |  |
| 2.1-SDAEE03-1150 |  | Install support / bracket | 20d | 2025-12-23 | 2026-01-14 | 2.1-SDAEE03-1140 SS | 390.4d | 0d | LABOUR [4.36 h] | EE | 1 | C03a | TY1 | C03c | EIT02.1 |
| 2.1-SDAEE03-1580 |  | Install Ladder / Tray | 30d | 2026-01-15 | 2026-02-18 | 2.1-SDAEE03-1150 | 390.4d | 0d | LABOUR [15 h] | EE | 1 | C03a | TY1 | C03c | EIT02.1 |
| 2.1-SDAEE03-1590 |  | Install Conduits | 30d | 2026-01-15 | 2026-02-18 | 2.1-SDAEE03-1580 SS | 390.4d | 0d | LABOUR [5 h] | EE | 1 | C03a | TY1 | C03c | EIT02.1 |
| 2.1-SDAEE03-1990 |  | Clear punch | 5.6d | 2026-02-19 | 2026-02-25 | 2.1-SDAEE03-1590, 2.1-SDAEE03-1580 | 390.4d | 0d | LABOUR [5 h] | EE | 1 | C03a | TY1 | C03c | EIT02.1 |
| 2.1-SDAEE03-2270 |  | Complete QA/QC document | 3d | 2026-02-25 | 2026-02-28 | 2.1-SDAEE03-1990 | 390.4d |  | LABOUR [6.37 h] | EE | 1 | C03a | TY1 | C03c | EIT02.1 |
|  | 15 | **Air Fin Cooler - EM-10802-12** |  | 2025-12-23 | 2026-02-28 |  |  |  |  |  |  |  |  |  |  |
| 2.1-SDAEE03-1160 |  | Install support / bracket | 20d | 2025-12-23 | 2026-01-14 | 2.1-SDAEE03-1150 SS | 390.4d | 0d | LABOUR [4.36 h] | EE | 1 | C03a | TY1 | C03c | EIT02.1 |
| 2.1-SDAEE03-1600 |  | Install Ladder / Tray | 30d | 2026-01-15 | 2026-02-18 | 2.1-SDAEE03-1160 | 390.4d | 0d | LABOUR [15 h] | EE | 1 | C03a | TY1 | C03c | EIT02.1 |
| 2.1-SDAEE03-1610 |  | Install Conduits | 30d | 2026-01-15 | 2026-02-18 | 2.1-SDAEE03-1600 SS | 390.4d | 0d | LABOUR [5 h] | EE | 1 | C03a | TY1 | C03c | EIT02.1 |
| 2.1-SDAEE03-2000 |  | Clear punch | 5.6d | 2026-02-19 | 2026-02-25 | 2.1-SDAEE03-1610, 2.1-SDAEE03-1600 | 390.4d | 0d | LABOUR [5 h] | EE | 1 | C03a | TY1 | C03c | EIT02.1 |
| 2.1-SDAEE03-2280 |  | Complete QA/QC document | 3d | 2026-02-25 | 2026-02-28 | 2.1-SDAEE03-2000 | 390.4d |  | LABOUR [6.37 h] | EE | 1 | C03a | TY1 | C03c | EIT02.1 |
|  | 23 | **Air Fin Cooler - EM-10802-13** |  | 2025-12-23 | 2026-02-28 |  |  |  |  |  |  |  |  |  |  |
| 2.1-SDAEE03-1170 |  | Install support / bracket | 20d | 2025-12-23 | 2026-01-14 | 2.1-SDAEE03-1160 SS | 390.4d | 0d | LABOUR [4.36 h] | EE | 1 | C03a | TY1 | C03c | EIT02.1 |
| 2.1-SDAEE03-1620 |  | Install Ladder / Tray | 30d | 2026-01-15 | 2026-02-18 | 2.1-SDAEE03-1170 | 390.4d | 0d | LABOUR [15 h] | EE | 1 | C03a | TY1 | C03c | EIT02.1 |
| 2.1-SDAEE03-1630 |  | Install Conduits | 30d | 2026-01-15 | 2026-02-18 | 2.1-SDAEE03-1620 SS | 390.4d | 0d | LABOUR [5 h] | EE | 1 | C03a | TY1 | C03c | EIT02.1 |
| 2.1-SDAEE03-2010 |  | Clear punch | 5.6d | 2026-02-19 | 2026-02-25 | 2.1-SDAEE03-1630, 2.1-SDAEE03-1620 | 390.4d | 0d | LABOUR [5 h] | EE | 1 | C03a | TY1 | C03c | EIT02.1 |
| 2.1-SDAEE03-2290 |  | Complete QA/QC document | 3d | 2026-02-25 | 2026-02-28 | 2.1-SDAEE03-2010 | 390.4d |  | LABOUR [6.37 h] | EE | 1 | C03a | TY1 | C03c | EIT02.1 |

| ID | WBS | Activity | Duration | Start | Finish | Predecessors | Total float | Free float | Resources | Disciplines | Main Activity | WBS | Types | EIT WBS | EIT PKG |
| --- | --- | --- | --- | --- | --- | --- | --- | --- | --- | --- | --- | --- | --- | --- | --- |
|  | 16 | **Air Fin Cooler - EM-10802-14** |  | 2025-12-23 | 2026-02-28 |  |  |  |  |  |  |  |  |  |  |
| 2.1-SDAEE03-1180 |  | Install support / bracket | 20d | 2025-12-23 | 2026-01-14 | 2.1-SDAEE03-1170 SS | 390.4d | 0d | LABOUR [4.36 h] | EE | 1 | C03a | TY1 | C03c | EIT02.1 |
| 2.1-SDAEE03-1640 |  | Install Ladder / Tray | 30d | 2026-01-15 | 2026-02-18 | 2.1-SDAEE03-1180 | 390.4d | 0d | LABOUR [15 h] | EE | 1 | C03a | TY1 | C03c | EIT02.1 |
| 2.1-SDAEE03-1650 |  | Install Conduits | 30d | 2026-01-15 | 2026-02-18 | 2.1-SDAEE03-1640 SS | 390.4d | 0d | LABOUR [5 h] | EE | 1 | C03a | TY1 | C03c | EIT02.1 |
| 2.1-SDAEE03-2020 |  | Clear punch | 5.6d | 2026-02-19 | 2026-02-25 | 2.1-SDAEE03-1650, 2.1-SDAEE03-1640 | 390.4d | 0d | LABOUR [5 h] | EE | 1 | C03a | TY1 | C03c | EIT02.1 |
| 2.1-SDAEE03-2300 |  | Complete QA/QC document | 3d | 2026-02-25 | 2026-02-28 | 2.1-SDAEE03-2020 | 390.4d |  | LABOUR [6.37 h] | EE | 1 | C03a | TY1 | C03c | EIT02.1 |
|  | 24 | **Air Fin Cooler - EM-10802-9** |  | 2025-12-23 | 2026-02-28 |  |  |  |  |  |  |  |  |  |  |
| 2.1-SDAEE03-1190 |  | Install support / bracket | 20d | 2025-12-23 | 2026-01-14 | 2.1-SDAEE03-1180 SS | 390.4d | 0d | LABOUR [4.36 h] | EE | 1 | C03a | TY1 | C03c | EIT02.1 |
| 2.1-SDAEE03-1660 |  | Install Ladder / Tray | 30d | 2026-01-15 | 2026-02-18 | 2.1-SDAEE03-1190 | 390.4d | 0d | LABOUR [15 h] | EE | 1 | C03a | TY1 | C03c | EIT02.1 |
| 2.1-SDAEE03-1670 |  | Install Conduits | 30d | 2026-01-15 | 2026-02-18 | 2.1-SDAEE03-1660 SS | 390.4d | 0d | LABOUR [5 h] | EE | 1 | C03a | TY1 | C03c | EIT02.1 |
| 2.1-SDAEE03-2030 |  | Clear punch | 5.6d | 2026-02-19 | 2026-02-25 | 2.1-SDAEE03-1670, 2.1-SDAEE03-1660 | 390.4d | 0d | LABOUR [5 h] | EE | 1 | C03a | TY1 | C03c | EIT02.1 |
| 2.1-SDAEE03-2310 |  | Complete QA/QC document | 3d | 2026-02-25 | 2026-02-28 | 2.1-SDAEE03-2030 | 390.4d |  | LABOUR [6.36 h] | EE | 1 | C03a | TY1 | C03c | EIT02.1 |
|  | 25 | **Air Fin Cooler - EM-10802-16** |  | 2025-12-23 | 2026-02-28 |  |  |  |  |  |  |  |  |  |  |
| 2.1-SDAEE03-1210 |  | Install support / bracket | 20d | 2025-12-23 | 2026-01-14 | 2.1-SDAEE03-1200 SS | 390.4d | 0d | LABOUR [4.36 h] | EE | 1 | C03a | TY1 | C03c | EIT02.1 |
| 2.1-SDAEE03-1700 |  | Install Ladder / Tray | 30d | 2026-01-15 | 2026-02-18 | 2.1-SDAEE03-1210 | 390.4d | 0d | LABOUR [15 h] | EE | 1 | C03a | TY1 | C03c | EIT02.1 |
| 2.1-SDAEE03-1710 |  | Install Conduits | 30d | 2026-01-15 | 2026-02-18 | 2.1-SDAEE03-1700 SS | 390.4d | 0d | LABOUR [5 h] | EE | 1 | C03a | TY1 | C03c | EIT02.1 |
| 2.1-SDAEE03-2050 |  | Clear punch | 5.6d | 2026-02-19 | 2026-02-25 | 2.1-SDAEE03-1710, 2.1-SDAEE03-1700 | 390.4d | 0d | LABOUR [5 h] | EE | 1 | C03a | TY1 | C03c | EIT02.1 |
| 2.1-SDAEE03-2330 |  | Complete QA/QC document | 3d | 2026-02-25 | 2026-02-28 | 2.1-SDAEE03-2050 | 390.4d |  | LABOUR [6.36 h] | EE | 1 | C03a | TY1 | C03c | EIT02.1 |
|  | 5 | **Air Fin Cooler - EM-10802-15** |  | 2025-12-23 | 2026-02-28 |  |  |  |  |  |  |  |  |  |  |
| 2.1-SDAEE03-1200 |  | Install support / bracket | 20d | 2025-12-23 | 2026-01-14 | 2.1-SDAEE03-1190 SS | 390.4d | 0d | LABOUR [4.36 h] | EE | 1 | C03a | TY1 | C03c | EIT02.1 |
| 2.1-SDAEE03-1680 |  | Install Ladder / Tray | 30d | 2026-01-15 | 2026-02-18 | 2.1-SDAEE03-1200 | 390.4d | 0d | LABOUR [15 h] | EE | 1 | C03a | TY1 | C03c | EIT02.1 |
| 2.1-SDAEE03-1690 |  | Install Conduits | 30d | 2026-01-15 | 2026-02-18 | 2.1-SDAEE03-1680 SS | 390.4d | 0d | LABOUR [5 h] | EE | 1 | C03a | TY1 | C03c | EIT02.1 |
| 2.1-SDAEE03-2040 |  | Clear punch | 5.6d | 2026-02-19 | 2026-02-25 | 2.1-SDAEE03-1690, 2.1-SDAEE03-1680 | 390.4d | 0d | LABOUR [5 h] | EE | 1 | C03a | TY1 | C03c | EIT02.1 |
| 2.1-SDAEE03-2320 |  | Complete QA/QC document | 3d | 2026-02-25 | 2026-02-28 | 2.1-SDAEE03-2040 | 390.4d |  | LABOUR [6.36 h] | EE | 1 | C03a | TY1 | C03c | EIT02.1 |

| ID | WBS | Activity | Duration | Start | Finish | Predecessors | Total float | Free float | Resources | Disciplines | Main Activity | WBS | Types | EIT WBS | EIT PKG |
| --- | --- | --- | --- | --- | --- | --- | --- | --- | --- | --- | --- | --- | --- | --- | --- |
|  | 26 | **Air Fin Cooler - EM-10802-17** |  | 2025-12-23 | 2026-02-28 |  |  |  |  |  |  |  |  |  |  |
| 2.1-SDAEE03-1220 |  | Install support / bracket | 20d | 2025-12-23 | 2026-01-14 | 2.1-SDAEE03-1210 SS | 390.4d | 0d | LABOUR [4.36 h] | EE | 1 | C03a | TY1 | C03c | EIT02.1 |
| 2.1-SDAEE03-1720 |  | Install Ladder / Tray | 30d | 2026-01-15 | 2026-02-18 | 2.1-SDAEE03-1220 | 390.4d | 0d | LABOUR [15 h] | EE | 1 | C03a | TY1 | C03c | EIT02.1 |
| 2.1-SDAEE03-1730 |  | Install Conduits | 30d | 2026-01-15 | 2026-02-18 | 2.1-SDAEE03-1720 SS | 390.4d | 0d | LABOUR [5 h] | EE | 1 | C03a | TY1 | C03c | EIT02.1 |
| 2.1-SDAEE03-2060 |  | Clear punch | 5.6d | 2026-02-19 | 2026-02-25 | 2.1-SDAEE03-1730, 2.1-SDAEE03-1720 | 390.4d | 0d | LABOUR [5 h] | EE | 1 | C03a | TY1 | C03c | EIT02.1 |
| 2.1-SDAEE03-2340 |  | Complete QA/QC document | 3d | 2026-02-25 | 2026-02-28 | 2.1-SDAEE03-2060 | 390.4d |  | LABOUR [6.36 h] | EE | 1 | C03a | TY1 | C03c | EIT02.1 |
|  | 27 | **Air Fin Cooler - EM-10802-18** |  | 2025-12-23 | 2026-02-28 |  |  |  |  |  |  |  |  |  |  |
| 2.1-SDAEE03-1230 |  | Install support / bracket | 20d | 2025-12-23 | 2026-01-14 | 2.1-SDAEE03-1220 SS | 390.4d | 0d | LABOUR [4.36 h] | EE | 1 | C03a | TY1 | C03c | EIT02.1 |
| 2.1-SDAEE03-1740 |  | Install Ladder / Tray | 30d | 2026-01-15 | 2026-02-18 | 2.1-SDAEE03-1230 | 390.4d | 0d | LABOUR [15 h] | EE | 1 | C03a | TY1 | C03c | EIT02.1 |
| 2.1-SDAEE03-1750 |  | Install Conduits | 30d | 2026-01-15 | 2026-02-18 | 2.1-SDAEE03-1740 SS | 390.4d | 0d | LABOUR [5 h] | EE | 1 | C03a | TY1 | C03c | EIT02.1 |
| 2.1-SDAEE03-2070 |  | Clear punch | 5.6d | 2026-02-19 | 2026-02-25 | 2.1-SDAEE03-1750, 2.1-SDAEE03-1740 | 390.4d | 0d | LABOUR [5 h] | EE | 1 | C03a | TY1 | C03c | EIT02.1 |
| 2.1-SDAEE03-2350 |  | Complete QA/QC document | 3d | 2026-02-25 | 2026-02-28 | 2.1-SDAEE03-2070 | 390.4d |  | LABOUR [6.36 h] | EE | 1 | C03a | TY1 | C03c | EIT02.1 |
|  | 28 | **Air Fin Cooler - EM-10802-19** |  | 2025-12-23 | 2026-02-28 |  |  |  |  |  |  |  |  |  |  |
| 2.1-SDAEE03-1240 |  | Install support / bracket | 20d | 2025-12-23 | 2026-01-14 | 2.1-SDAEE03-1230 SS | 390.4d | 0d | LABOUR [4.36 h] | EE | 1 | C03a | TY1 | C03c | EIT02.1 |
| 2.1-SDAEE03-1760 |  | Install Ladder / Tray | 30d | 2026-01-15 | 2026-02-18 | 2.1-SDAEE03-1240 | 390.4d | 0d | LABOUR [15 h] | EE | 1 | C03a | TY1 | C03c | EIT02.1 |
| 2.1-SDAEE03-1770 |  | Install Conduits | 30d | 2026-01-15 | 2026-02-18 | 2.1-SDAEE03-1760 SS | 390.4d | 0d | LABOUR [5 h] | EE | 1 | C03a | TY1 | C03c | EIT02.1 |
| 2.1-SDAEE03-2080 |  | Clear punch | 5.6d | 2026-02-19 | 2026-02-25 | 2.1-SDAEE03-1770, 2.1-SDAEE03-1760 | 390.4d | 0d | LABOUR [5 h] | EE | 1 | C03a | TY1 | C03c | EIT02.1 |
| 2.1-SDAEE03-2360 |  | Complete QA/QC document | 3d | 2026-02-25 | 2026-02-28 | 2.1-SDAEE03-2080 | 390.4d |  | LABOUR [6.36 h] | EE | 1 | C03a | TY1 | C03c | EIT02.1 |
|  | 29 | **Air Fin Cooler - EM-10802-20** |  | 2025-12-23 | 2026-02-28 |  |  |  |  |  |  |  |  |  |  |
| 2.1-SDAEE03-1250 |  | Install support / bracket | 20d | 2025-12-23 | 2026-01-14 | 2.1-SDAEE03-1240 SS | 390.4d | 0d | LABOUR [4.36 h] | EE | 1 | C03a | TY1 | C03c | EIT02.1 |
| 2.1-SDAEE03-1780 |  | Install Ladder / Tray | 30d | 2026-01-15 | 2026-02-18 | 2.1-SDAEE03-1250 | 390.4d | 0d | LABOUR [15 h] | EE | 1 | C03a | TY1 | C03c | EIT02.1 |
| 2.1-SDAEE03-1790 |  | Install Conduits | 30d | 2026-01-15 | 2026-02-18 | 2.1-SDAEE03-1780 SS | 390.4d | 0d | LABOUR [5 h] | EE | 1 | C03a | TY1 | C03c | EIT02.1 |
| 2.1-SDAEE03-2090 |  | Clear punch | 5.6d | 2026-02-19 | 2026-02-25 | 2.1-SDAEE03-1790, 2.1-SDAEE03-1780 | 390.4d | 0d | LABOUR [5 h] | EE | 1 | C03a | TY1 | C03c | EIT02.1 |
| 2.1-SDAEE03-2370 |  | Complete QA/QC document | 3d | 2026-02-25 | 2026-02-28 | 2.1-SDAEE03-2090 | 390.4d |  | LABOUR [6.36 h] | EE | 1 | C03a | TY1 | C03c | EIT02.1 |

| ID | WBS | Activity | Duration | Start | Finish | Predecessors | Total float | Free float | Constraint | Resources | Disciplines | Main Activity | WBS | Types | EIT WBS | EIT PKG |
| --- | --- | --- | --- | --- | --- | --- | --- | --- | --- | --- | --- | --- | --- | --- | --- | --- |
|  | 30 | **Air Fin Cooler - EM-10853-1** |  | 2025-12-23 | 2026-02-28 |  |  |  |  |  |  |  |  |  |  |  |
| 2.1-SDAEE03-1260 |  | Install support / bracket | 20d | 2025-12-23 | 2026-01-14 | 2.1-SDAEE03-1250 SS | 390.4d | 0d |  | LABOUR [4.36 h] | EE | 1 | C03a | TY1 | C03c | EIT02.1 |
| 2.1-SDAEE03-1800 |  | Install Ladder / Tray | 30d | 2026-01-15 | 2026-02-18 | 2.1-SDAEE03-1260 | 390.4d | 0d |  | LABOUR [15 h] | EE | 1 | C03a | TY1 | C03c | EIT02.1 |
| 2.1-SDAEE03-1810 |  | Install Conduits | 30d | 2026-01-15 | 2026-02-18 | 2.1-SDAEE03-1800 SS | 390.4d | 0d |  | LABOUR [5 h] | EE | 1 | C03a | TY1 | C03c | EIT02.1 |
| 2.1-SDAEE03-2100 |  | Clear punch | 5.6d | 2026-02-19 | 2026-02-25 | 2.1-SDAEE03-1810, 2.1-SDAEE03-1800 | 390.4d | 0d |  | LABOUR [5 h] | EE | 1 | C03a | TY1 | C03c | EIT02.1 |
| 2.1-SDAEE03-2380 |  | Complete QA/QC document | 3d | 2026-02-25 | 2026-02-28 | 2.1-SDAEE03-2100 | 390.4d |  |  | LABOUR [6.36 h] | EE | 1 | C03a | TY1 | C03c | EIT02.1 |
|  | 31 | **Air Fin Cooler - EM-10853-2** |  | 2025-12-23 | 2026-02-28 |  |  |  |  |  |  |  |  |  |  |  |
| 2.1-SDAEE03-1270 |  | Install support / bracket | 20d | 2025-12-23 | 2026-01-14 | 2.1-SDAEE03-1260 SS | 390.4d | 0d |  | LABOUR [4.36 h] | EE | 1 | C03a | TY1 | C03c | EIT02.1 |
| 2.1-SDAEE03-1820 |  | Install Ladder / Tray | 30d | 2026-01-15 | 2026-02-18 | 2.1-SDAEE03-1270 | 390.4d | 0d |  | LABOUR [15 h] | EE | 1 | C03a | TY1 | C03c | EIT02.1 |
| 2.1-SDAEE03-1830 |  | Install Conduits | 30d | 2026-01-15 | 2026-02-18 | 2.1-SDAEE03-1820 SS | 390.4d | 0d |  | LABOUR [5 h] | EE | 1 | C03a | TY1 | C03c | EIT02.1 |
| 2.1-SDAEE03-2110 |  | Clear punch | 5.6d | 2026-02-19 | 2026-02-25 | 2.1-SDAEE03-1830, 2.1-SDAEE03-1820 | 390.4d | 0d |  | LABOUR [5 h] | EE | 1 | C03a | TY1 | C03c | EIT02.1 |
| 2.1-SDAEE03-2390 |  | Complete QA/QC document | 3d | 2026-02-25 | 2026-02-28 | 2.1-SDAEE03-2110 | 390.4d |  |  | LABOUR [6.36 h] | EE | 1 | C03a | TY1 | C03c | EIT02.1 |
|  | 2 | **Electrical Cable Installation** |  | 2026-01-19 | 2026-03-02 |  |  |  |  |  |  |  |  |  |  |  |
|  | 1 | **Cable Pull MV Cable** |  | 2026-01-19 | 2026-03-02 |  |  |  |  |  |  |  |  |  |  |  |
| 2.1-SDAEE01-1000 |  | Pull Cable | 30d | 2026-01-19 | 2026-02-21 |  | 379d | 0d | start on or after 2026-01-19 | LABOUR [1000 h] | EE | 1 | C03a | TY1 | C03c | EIT02.1 |
| 2.1-SDAEE01-1090 |  | Megger & Continuity test | 4d | 2026-02-23 | 2026-02-26 | 2.1-SDAEE01-1000 | 389d | 0d |  | LABOUR [300 h] | EE | 1 | C03a | TY1 | C03c | EIT02.1 |
| 2.1-SDAEE01-1120 |  | Complete QA/QC document | 3d | 2026-02-27 | 2026-03-02 | 2.1-SDAEE01-1090 | 389d |  |  | LABOUR [238.83 h] | EE | 1 | C03a | TY1 | C03c | EIT02.1 |
|  | 2 | **Cable Pull LV Cable** |  | 2026-01-19 | 2026-03-02 |  |  |  |  |  |  |  |  |  |  |  |
| 2.1-SDAEE01-1010 |  | Pull Cable | 30d | 2026-01-19 | 2026-02-21 | 2.1-SDAEE01-1000 SS | 379d | 0d |  | LABOUR [1000 h] | EE | 1 | C03a | TY1 | C03c | EIT02.1 |
| 2.1-SDAEE01-1100 |  | Megger & Continuity test | 4d | 2026-02-23 | 2026-02-26 | 2.1-SDAEE01-1010 | 389d | 0d |  | LABOUR [300 h] | EE | 1 | C03a | TY1 | C03c | EIT02.1 |
| 2.1-SDAEE01-1130 |  | Complete QA/QC document | 3d | 2026-02-27 | 2026-03-02 | 2.1-SDAEE01-1100 | 389d |  |  | LABOUR [238.83 h] | EE | 1 | C03a | TY1 | C03c | EIT02.1 |
|  | 3 | **Cable Pull Control Cable** |  | 2026-01-19 | 2026-03-02 |  |  |  |  |  |  |  |  |  |  |  |
| 2.1-SDAEE01-1020 |  | Pull Cable | 30d | 2026-01-19 | 2026-02-21 | 2.1-SDAEE01-1010 SS | 379d | 0d | as late as possible | LABOUR [1000 h] | EE | 1 | C03a | TY1 | C03c | EIT02.1 |
| 2.1-SDAEE01-1110 |  | Megger & Continuity test | 4d | 2026-02-23 | 2026-02-26 | 2.1-SDAEE01-1020 | 389d | 0d |  | LABOUR [300 h] | EE | 1 | C03a | TY1 | C03c | EIT02.1 |
| 2.1-SDAEE01-1140 |  | Complete QA/QC document | 3d | 2026-02-27 | 2026-03-02 | 2.1-SDAEE01-1110 | 389d |  |  | LABOUR [238.83 h] | EE | 1 | C03a | TY1 | C03c | EIT02.1 |

| ID | WBS | Activity | Duration | Start | Finish | Predecessors | Total float | Free float | Resources | Disciplines | Main Activity | WBS | Types | EIT WBS | EIT PKG |
| --- | --- | --- | --- | --- | --- | --- | --- | --- | --- | --- | --- | --- | --- | --- | --- |
|  | 4 | **Serial Communication Cable** |  | 2026-01-19 | 2026-02-18 |  |  |  |  |  |  |  |  |  |  |
| 2.1-SDAEE01-1030 |  | Pull Cable | 20d | 2026-01-19 | 2026-02-10 | 2.1-SDAEE01-1020 SS | 379d | 0d | LABOUR [1000 h] | EE | 1 | C03a | TY1 | C03c | EIT02.1 |
| 2.1-SDAEE01-1050 |  | Megger & Continuity test | 4d | 2026-02-11 | 2026-02-14 | 2.1-SDAEE01-1030 | 399d | 0d | LABOUR [300 h] | EE | 1 | C03a | TY1 | C03c | EIT02.1 |
| 2.1-SDAEE01-1070 |  | Complete QA/QC document | 3d | 2026-02-16 | 2026-02-18 | 2.1-SDAEE01-1050 | 399d |  | LABOUR [238.83 h] | EE | 1 | C03a | TY1 | C03c | EIT02.1 |
|  | 5 | **Cable Pull Instrument Cable** |  | 2026-01-19 | 2026-02-18 |  |  |  |  |  |  |  |  |  |  |
| 2.1-SDAEE01-1040 |  | Pull Cable | 20d | 2026-01-19 | 2026-02-10 | 2.1-SDAEE01-1030 SS | 379d | 0d | LABOUR [1000 h] | EE | 1 | C03a | TY1 | C03c | EIT02.1 |
| 2.1-SDAEE01-1060 |  | Megger & Continuity test | 4d | 2026-02-11 | 2026-02-14 | 2.1-SDAEE01-1040 | 399d | 0d | LABOUR [300 h] | EE | 1 | C03a | TY1 | C03c | EIT02.1 |
| 2.1-SDAEE01-1080 |  | Complete QA/QC document | 3d | 2026-02-16 | 2026-02-18 | 2.1-SDAEE01-1060 | 399d |  | LABOUR [238.83 h] | EE | 1 | C03a | TY1 | C03c | EIT02.1 |
|  | 4 | **Electrical Cable Termination / Glanding** |  | 2026-02-11 | 2026-03-13 |  |  |  |  |  |  |  |  |  |  |
|  | 1 | **Termination MV Cable** |  | 2026-02-11 | 2026-03-13 |  |  |  |  |  |  |  |  |  |  |
| 2.1-SDAEE02-1000 |  | Cable Termination/Glanding | 20d | 2026-02-11 | 2026-03-05 | 2.1-SDAEE01-1040 | 379d | 0d | LABOUR [30 h] | EE | 1 | C03a | TY1 | C03c | EIT02.1 |
| 2.1-SDAEE02-1050 |  | Clear punch | 4d | 2026-03-06 | 2026-03-10 | 2.1-SDAEE02-1000 | 379d | 0d | LABOUR [5 h] | EE | 1 | C03a | TY1 | C03c | EIT02.1 |
| 2.1-SDAEE02-1100 |  | Complete QA/QC document | 3d | 2026-03-11 | 2026-03-13 | 2.1-SDAEE02-1050 | 379d |  | LABOUR [9.08 h] | EE | 1 | C03a | TY1 | C03c | EIT02.1 |
|  | 2 | **Termination LV Cable** |  | 2026-02-11 | 2026-03-13 |  |  |  |  |  |  |  |  |  |  |
| 2.1-SDAEE02-1010 |  | Cable Termination/Glanding | 20d | 2026-02-11 | 2026-03-05 | 2.1-SDAEE02-1000 SS | 379d | 0d | LABOUR [30 h] | EE | 1 | C03a | TY1 | C03c | EIT02.1 |
| 2.1-SDAEE02-1060 |  | Clear punch | 4d | 2026-03-06 | 2026-03-10 | 2.1-SDAEE02-1010 | 379d | 0d | LABOUR [5 h] | EE | 1 | C03a | TY1 | C03c | EIT02.1 |
| 2.1-SDAEE02-1110 |  | Complete QA/QC document | 3d | 2026-03-11 | 2026-03-13 | 2.1-SDAEE02-1060 | 379d |  | LABOUR [9.08 h] | EE | 1 | C03a | TY1 | C03c | EIT02.1 |
|  | 3 | **Termination Control Cable** |  | 2026-02-11 | 2026-03-13 |  |  |  |  |  |  |  |  |  |  |
| 2.1-SDAEE02-1020 |  | Cable Termination/Glanding | 20d | 2026-02-11 | 2026-03-05 | 2.1-SDAEE02-1010 SS | 379d | 0d | LABOUR [30 h] | EE | 1 | C03a | TY1 | C03c | EIT02.1 |
| 2.1-SDAEE02-1070 |  | Clear punch | 4d | 2026-03-06 | 2026-03-10 | 2.1-SDAEE02-1020 | 379d | 0d | LABOUR [5 h] | EE | 1 | C03a | TY1 | C03c | EIT02.1 |
| 2.1-SDAEE02-1120 |  | Complete QA/QC document | 3d | 2026-03-11 | 2026-03-13 | 2.1-SDAEE02-1070 | 379d |  | LABOUR [9.08 h] | EE | 1 | C03a | TY1 | C03c | EIT02.1 |
|  | 4 | **Termination Serial Communication Cable** |  | 2026-02-11 | 2026-03-13 |  |  |  |  |  |  |  |  |  |  |
| 2.1-SDAEE02-1030 |  | Cable Termination/Glanding | 20d | 2026-02-11 | 2026-03-05 | 2.1-SDAEE02-1020 SS | 379d | 0d | LABOUR [30 h] | EE | 1 | C03a | TY1 | C03c | EIT02.1 |
| 2.1-SDAEE02-1080 |  | Clear punch | 4d | 2026-03-06 | 2026-03-10 | 2.1-SDAEE02-1030 | 379d | 0d | LABOUR [5 h] | EE | 1 | C03a | TY1 | C03c | EIT02.1 |
| 2.1-SDAEE02-1130 |  | Complete QA/QC document | 3d | 2026-03-11 | 2026-03-13 | 2.1-SDAEE02-1080 | 379d |  | LABOUR [9.08 h] | EE | 1 | C03a | TY1 | C03c | EIT02.1 |

| ID | WBS | Activity | Duration | Start | Finish | Predecessors | Total float | Free float | Constraint | Resources | Disciplines | Main Activity | WBS | Types | EIT WBS | EIT PKG |
| --- | --- | --- | --- | --- | --- | --- | --- | --- | --- | --- | --- | --- | --- | --- | --- | --- |
|  | 5 | **Termination Instrument Cable** |  | 2026-02-11 | 2026-03-13 |  |  |  |  |  |  |  |  |  |  |  |
| 2.1-SDAEE02-1040 |  | Cable Termination/Glanding | 20d | 2026-02-11 | 2026-03-05 | 2.1-SDAEE02-1030 SS | 379d | 0d |  | LABOUR [30 h] | EE | 1 | C03a | TY1 | C03c | EIT02.1 |
| 2.1-SDAEE02-1090 |  | Clear punch | 4d | 2026-03-06 | 2026-03-10 | 2.1-SDAEE02-1040 | 379d | 0d |  | LABOUR [5 h] | EE | 1 | C03a | TY1 | C03c | EIT02.1 |
| 2.1-SDAEE02-1140 |  | Complete QA/QC document | 3d | 2026-03-11 | 2026-03-13 | 2.1-SDAEE02-1090 | 379d |  |  | LABOUR [9.08 h] | EE | 1 | C03a | TY1 | C03c | EIT02.1 |
|  | 5 | **Lighting & Small Power Equipment Installation** |  | 2026-01-26 | 2026-03-10 |  |  |  |  |  |  |  |  |  |  |  |
| 2.1-SDAEE05-1000 |  | Install support / bracket / Pole | 10d | 2026-01-26 | 2026-02-05 |  | 364d | 0d | start on or after 2026-01-26 | LABOUR [2 h] | EE | 1 | C03a | TY1 | C03c | EIT02.1 |
| 2.1-SDAEE05-1010 |  | Install Distribution panel, lighting fitting ,convenience outlet | 20d | 2026-02-06 | 2026-02-28 | 2.1-SDAEE05-1000 | 382d | 0d |  | LABOUR [10 h] | EE | 1 | C03a | TY1 | C03c | EIT02.1 |
| 2.1-SDAEE05-1020 |  | Clear punch | 5d | 2026-03-02 | 2026-03-06 | 2.1-SDAEE05-1010 | 382d | 0d |  | LABOUR [5 h] | EE | 1 | C03a | TY1 | C03c | EIT02.1 |
| 2.1-SDAEE05-1030 |  | Complete QA/QC document | 3d | 2026-03-07 | 2026-03-10 | 2.1-SDAEE05-1020 | 382d |  |  | LABOUR [3.41 h] | EE | 1 | C03a | TY1 | C03c | EIT02.1 |
|  | 9 | **Electrical Earthing / Lightning Installation** |  | 2026-01-26 | 2026-03-12 |  |  |  |  |  |  |  |  |  |  |  |
| 2.1-SDAEE06-1000 |  | Install Equipment Earthing / Inspection PIT / Install earthing pull and Connecttion | 30d | 2026-01-26 | 2026-02-28 | 2.1-SDAEE05-1000 SS | 364d | 0d | start on or after 2026-01-26 | LABOUR [1500 h] | EE | 1 | C03a | TY1 | C03c | EIT02.1 |
| 2.1-SDAEE06-1010 |  | Punch listing | 5d | 2026-03-02 | 2026-03-06 | 2.1-SDAEE06-1000 | 380d | 0d |  | LABOUR [300 h] | EE | 1 | C03a | TY1 | C03c | EIT02.1 |
| 2.1-SDAEE06-1020 |  | Complete QA/QC document | 5d | 2026-03-07 | 2026-03-12 | 2.1-SDAEE06-1010 | 380d |  |  | LABOUR [491.49 h] | EE | 1 | C03a | TY1 | C03c | EIT02.1 |
|  | 7 | **Instrument** |  | 2026-01-26 | 2026-03-31 |  |  |  |  |  |  |  |  |  |  |  |
|  | 3 | **Instrument Cable Tray/Ladder Installation** |  | 2026-01-26 | 2026-03-11 |  |  |  |  |  |  |  |  |  |  |  |
| 2.1-SDAIN03-1000 |  | Install support / bracket | 10d | 2026-01-26 | 2026-02-05 | 2.1-SDAEE06-1000 SS | 364d | 0d |  | LABOUR [500 h] | EE | 1 | C03a | TY1 | C03c | EIT02.1 |
| 2.1-SDAIN03-1010 |  | Install Ladder / Tray | 20d | 2026-02-06 | 2026-02-28 | 2.1-SDAIN03-1020 SS | 364d | 0d |  | LABOUR [200 h] | EE | 1 | C03a | TY1 | C03c | EIT02.1 |
| 2.1-SDAIN03-1020 |  | Steel Conduits for Cable tray | 20d | 2026-02-06 | 2026-02-28 | 2.1-SDAIN03-1000 | 364d | 0d |  | LABOUR [100 h] | EE | 1 | C03a | TY1 | C03c | EIT02.1 |
| 2.1-SDAIN03-1030 |  | Clear punch | 5.6d | 2026-03-02 | 2026-03-07 | 2.1-SDAIN03-1010, 2.1-SDAIN03-1020 | 381.4d | 0d |  | LABOUR [20 h] | EE | 1 | C03a | TY1 | C03c | EIT02.1 |
| 2.1-SDAIN03-1040 |  | Complete QA/QC document | 3d | 2026-03-07 | 2026-03-11 | 2.1-SDAIN03-1030 | 381.4d |  |  | LABOUR [34.34 h] | EE | 1 | C03a | TY1 | C03c | EIT02.1 |
|  | 1 | **Instrument Cable Installation** |  | 2026-02-06 | 2026-03-20 |  |  |  |  |  |  |  |  |  |  |  |
|  | 8 | **Cable Pull Primary Cable** |  | 2026-02-06 | 2026-03-20 |  |  |  |  |  |  |  |  |  |  |  |
| 2.1-SDAIN01-1000 |  | Pull Cable | 30d | 2026-02-06 | 2026-03-12 | 2.1-SDAIN03-1010 SS | 364d | 0d |  | LABOUR [1200 h] | EE | 1 | C03a | TY1 | C03c | EIT02.1 |
| 2.1-SDAIN01-1040 |  | Megger & Continuity test | 4d | 2026-03-13 | 2026-03-17 | 2.1-SDAIN01-1000 | 373d | 0d |  | LABOUR [200 h] | EE | 1 | C03a | TY1 | C03c | EIT02.1 |
| 2.1-SDAIN01-1080 |  | Complete QA/QC document | 3d | 2026-03-18 | 2026-03-20 | 2.1-SDAIN01-1040 | 373d |  |  | LABOUR [264.85 h] | EE | 1 | C03a | TY1 | C03c | EIT02.1 |

| ID | WBS | Activity | Duration | Start | Finish | Predecessors | Total float | Free float | Resources | Disciplines | Main Activity | WBS | Types | EIT WBS | EIT PKG |
| --- | --- | --- | --- | --- | --- | --- | --- | --- | --- | --- | --- | --- | --- | --- | --- |
|  | 5 | **Cable Pull Power Cable** |  | 2026-02-06 | 2026-03-20 |  |  |  |  |  |  |  |  |  |  |
| 2.1-SDAIN01-1010 |  | Pull Cable | 30d | 2026-02-06 | 2026-03-12 | 2.1-SDAIN01-1000 SS | 364d | 0d | LABOUR [1200 h] | EE | 1 | C03a | TY1 | C03c | EIT02.1 |
| 2.1-SDAIN01-1050 |  | Megger & Continuity test | 4d | 2026-03-13 | 2026-03-17 | 2.1-SDAIN01-1010 | 373d | 0d | LABOUR [200 h] | EE | 1 | C03a | TY1 | C03c | EIT02.1 |
| 2.1-SDAIN01-1090 |  | Complete QA/QC document | 3d | 2026-03-18 | 2026-03-20 | 2.1-SDAIN01-1050 | 373d |  | LABOUR [264.85 h] | EE | 1 | C03a | TY1 | C03c | EIT02.1 |
|  | 9 | **Cable Pull Secondary Cable** |  | 2026-02-06 | 2026-03-20 |  |  |  |  |  |  |  |  |  |  |
| 2.1-SDAIN01-1020 |  | Pull Cable | 30d | 2026-02-06 | 2026-03-12 | 2.1-SDAIN01-1010 SS | 364d | 0d | LABOUR [1200 h] | EE | 1 | C03a | TY1 | C03c | EIT02.1 |
| 2.1-SDAIN01-1060 |  | Megger & Continuity test | 4d | 2026-03-13 | 2026-03-17 | 2.1-SDAIN01-1020 | 373d | 0d | LABOUR [200 h] | EE | 1 | C03a | TY1 | C03c | EIT02.1 |
| 2.1-SDAIN01-1100 |  | Complete QA/QC document | 3d | 2026-03-18 | 2026-03-20 | 2.1-SDAIN01-1060 | 373d |  | LABOUR [264.85 h] | EE | 1 | C03a | TY1 | C03c | EIT02.1 |
|  | 2 | **Cable Pull Thermocouple Cable** |  | 2026-02-06 | 2026-03-20 |  |  |  |  |  |  |  |  |  |  |
| 2.1-SDAIN01-1030 |  | Pull Cable | 30d | 2026-02-06 | 2026-03-12 | 2.1-SDAIN01-1020 SS | 364d | 0d | LABOUR [1200 h] | EE | 1 | C03a | TY1 | C03c | EIT02.1 |
| 2.1-SDAIN01-1070 |  | Megger & Continuity test | 4d | 2026-03-13 | 2026-03-17 | 2.1-SDAIN01-1030 | 373d | 0d | LABOUR [200 h] | EE | 1 | C03a | TY1 | C03c | EIT02.1 |
| 2.1-SDAIN01-1110 |  | Complete QA/QC document | 3d | 2026-03-18 | 2026-03-20 | 2.1-SDAIN01-1070 | 373d |  | LABOUR [264.85 h] | EE | 1 | C03a | TY1 | C03c | EIT02.1 |
|  | 2 | **Instrument Cable Termination / Glanding** |  | 2026-03-13 | 2026-03-31 |  |  |  |  |  |  |  |  |  |  |
|  | 8 | **Cable Termination Primary Cable** |  | 2026-03-13 | 2026-03-31 |  |  |  |  |  |  |  |  |  |  |
| 2.1-SDAIN02-1000 |  | Pull Cable | 10d | 2026-03-13 | 2026-03-24 | 2.1-SDAIN01-1000 | 364d | 0d | LABOUR [100 h] | EE | 1 | C03a | TY1 | C03c | EIT02.1 |
| 2.1-SDAIN02-1050 |  | Megger & Continuity test | 4d | 2026-03-25 | 2026-03-28 | 2.1-SDAIN02-1000 | 364d | 0d | LABOUR [20 h] | EE | 1 | C03a | TY1 | C03c | EIT02.1 |
| 2.1-SDAIN02-1100 |  | Complete QA/QC document | 2d | 2026-03-30 | 2026-03-31 | 2.1-SDAIN02-1050 | 364d |  | LABOUR [24.69 h] | EE | 1 | C03a | TY1 | C03c | EIT02.1 |
|  | 5 | **Cable Termination Power Cable** |  | 2026-03-13 | 2026-03-31 |  |  |  |  |  |  |  |  |  |  |
| 2.1-SDAIN02-1010 |  | Pull Cable | 10d | 2026-03-13 | 2026-03-24 | 2.1-SDAIN01-1010 | 364d | 0d | LABOUR [100 h] | EE | 1 | C03a | TY1 | C03c | EIT02.1 |
| 2.1-SDAIN02-1060 |  | Megger & Continuity test | 4d | 2026-03-25 | 2026-03-28 | 2.1-SDAIN02-1010 | 364d | 0d | LABOUR [20 h] | EE | 1 | C03a | TY1 | C03c | EIT02.1 |
| 2.1-SDAIN02-1110 |  | Complete QA/QC document | 2d | 2026-03-30 | 2026-03-31 | 2.1-SDAIN02-1060 | 364d |  | LABOUR [24.69 h] | EE | 1 | C03a | TY1 | C03c | EIT02.1 |
|  | 9 | **Cable Termination Secondary Cable** |  | 2026-03-13 | 2026-03-31 |  |  |  |  |  |  |  |  |  |  |
| 2.1-SDAIN02-1020 |  | Pull Cable | 10d | 2026-03-13 | 2026-03-24 | 2.1-SDAIN01-1020 | 364d | 0d | LABOUR [100 h] | EE | 1 | C03a | TY1 | C03c | EIT02.1 |
| 2.1-SDAIN02-1070 |  | Megger & Continuity test | 4d | 2026-03-25 | 2026-03-28 | 2.1-SDAIN02-1020 | 364d | 0d | LABOUR [20 h] | EE | 1 | C03a | TY1 | C03c | EIT02.1 |
| 2.1-SDAIN02-1120 |  | Complete QA/QC document | 2d | 2026-03-30 | 2026-03-31 | 2.1-SDAIN02-1070 | 364d |  | LABOUR [24.69 h] | EE | 1 | C03a | TY1 | C03c | EIT02.1 |

| ID | WBS | Activity | Duration | Start | Finish | Predecessors | Total float | Free float | Constraint | Resources | Disciplines | Main Activity | WBS | Types | EIT WBS | EIT PKG |
| --- | --- | --- | --- | --- | --- | --- | --- | --- | --- | --- | --- | --- | --- | --- | --- | --- |
|  | 2 | **Cable Termination Thermocouple Cable** |  | 2026-03-13 | 2026-03-31 |  |  |  |  |  |  |  |  |  |  |  |
| 2.1-SDAIN02-1030 |  | Pull Cable | 10d | 2026-03-13 | 2026-03-24 | 2.1-SDAIN01-1030 | 364d | 0d |  | LABOUR [100 h] | EE | 1 | C03a | TY1 | C03c | EIT02.1 |
| 2.1-SDAIN02-1080 |  | Megger & Continuity test | 4d | 2026-03-25 | 2026-03-28 | 2.1-SDAIN02-1030 | 364d | 0d |  | LABOUR [20 h] | EE | 1 | C03a | TY1 | C03c | EIT02.1 |
| 2.1-SDAIN02-1130 |  | Complete QA/QC document | 2d | 2026-03-30 | 2026-03-31 | 2.1-SDAIN02-1080 | 364d |  |  | LABOUR [24.69 h] | EE | 1 | C03a | TY1 | C03c | EIT02.1 |
|  | 6 | **Instrument Equipment Installation** |  | 2026-01-30 | 2026-03-13 |  |  |  |  |  |  |  |  |  |  |  |
|  | 1 | **Analyser Instruments** |  | 2026-01-30 | 2026-03-13 |  |  |  |  |  |  |  |  |  |  |  |
| 2.1-SDAIN04-1000 |  | Install support / bracket | 10d | 2026-01-30 | 2026-02-10 |  | 379d | 0d | start on or after 2026-01-30 | LABOUR [169.21 h] | EE | 1 | C03a | TY1 | C03c | EIT02.1 |
| 2.1-SDAIN04-1010 |  | Install Equipment | 20d | 2026-02-11 | 2026-03-05 | 2.1-SDAIN04-1000 | 379d | 0d |  | LABOUR [25 h] | EE | 1 | C03a | TY1 | C03c | EIT02.1 |
| 2.1-SDAIN04-1020 |  | Clear punch | 4d | 2026-03-06 | 2026-03-10 | 2.1-SDAIN04-1010 | 379d | 0d |  | LABOUR [5 h] | EE | 1 | C03a | TY1 | C03c | EIT02.1 |
| 2.1-SDAIN04-1030 |  | Complete QA/QC document | 3d | 2026-03-11 | 2026-03-13 | 2.1-SDAIN04-1020 | 379d |  |  | LABOUR [10.44 h] | EE | 1 | C03a | TY1 | C03c | EIT02.1 |
|  | 4 | **Instrument Calibration** |  | 2026-01-30 | 2026-03-09 |  |  |  |  |  |  |  |  |  |  |  |
| 2.1-SDAIN05-1000 |  | Calibration Equipment | 30d | 2026-01-30 | 2026-03-05 | 2.1-SDAIN04-1000 SS | 383d | 0d |  | LABOUR [300 h] | EE | 1 | C03a | TY1 | C03c | EIT02.1 |
| 2.1-SDAIN05-1010 |  | Complete QA/QC document | 3d | 2026-03-06 | 2026-03-09 | 2.1-SDAIN05-1000 | 383d |  |  | LABOUR [161.02 h] | EE | 1 | C03a | TY1 | C03c | EIT02.1 |
|  | 4 | **Telecommunication** |  | 2026-03-13 | 2026-03-31 |  |  |  |  |  |  |  |  |  |  |  |
|  | 5 | **Telecom** |  | 2026-03-13 | 2026-03-31 |  |  |  |  |  |  |  |  |  |  |  |
|  | 1 | **Telecommunication Cable Installation** |  | 2026-03-13 | 2026-03-26 |  |  |  |  |  |  |  |  |  |  |  |
| 2.1-SDATE01-1000 |  | Pull Cable | 5d | 2026-03-13 | 2026-03-18 | 2.1-SDAIN01-1000 | 364d | 0d |  | LABOUR [600 h] | EE | 1 | C03a | TY1 | C03c | EIT02.1 |
| 2.1-SDATE01-1010 |  | Megger & Continuity test | 4d | 2026-03-19 | 2026-03-23 | 2.1-SDATE01-1000 | 364d | 0d |  | LABOUR [50 h] | EE | 1 | C03a | TY1 | C03c | EIT02.1 |
| 2.1-SDATE01-1020 |  | Complete QA/QC document | 3d | 2026-03-24 | 2026-03-26 | 2.1-SDATE01-1010 | 364d | 0d |  | LABOUR [59.12 h] | EE | 1 | C03a | TY1 | C03c | EIT02.1 |
|  | 4 | **Telecommunication Termination / Glanding** |  | 2026-03-27 | 2026-03-31 |  |  |  |  |  |  |  |  |  |  |  |
| 2.1-SDATE02-1000 |  | Cable Termination/Glanding | 2d | 2026-03-27 | 2026-03-28 | 2.1-SDATE01-1020 | 364d | 0d |  | LABOUR | EE | 1 | C03a | TY1 | C03c | EIT02.1 |
| 2.1-SDATE02-1010 |  | Clear punch | 1d | 2026-03-30 | 2026-03-30 | 2.1-SDATE02-1000 | 364d | 0d |  | LABOUR | EE | 1 | C03a | TY1 | C03c | EIT02.1 |
| 2.1-SDATE02-1020 |  | Complete QA/QC document | 1d | 2026-03-31 | 2026-03-31 | 2.1-SDATE02-1010 | 364d |  |  | LABOUR | EE | 1 | C03a | TY1 | C03c | EIT02.1 |
|  | 6 | **CCTV System** |  | 2026-03-13 | 2026-03-31 |  |  |  |  |  |  |  |  |  |  |  |
|  | 1 | **CCTV Cable Installation** |  | 2026-03-13 | 2026-03-31 |  |  |  |  |  |  |  |  |  |  |  |
| 2.1-SDATE01.1-1000 |  | Pull Cable | 9d | 2026-03-13 | 2026-03-23 | 2.1-SDATE01-1000 SS | 364d | 0d |  | LABOUR | EE | 1 | C03a | TY1 | C03c | EIT02.1 |
| 2.1-SDATE01.1-1010 |  | Megger & Continuity test | 4d | 2026-03-24 | 2026-03-27 | 2.1-SDATE01.1-1000 | 364d | 0d |  | LABOUR | EE | 1 | C03a | TY1 | C03c | EIT02.1 |
| 2.1-SDATE01.1-1020 |  | Complete QA/QC document | 3d | 2026-03-28 | 2026-03-31 | 2.1-SDATE01.1-1010 | 364d | 0d |  | LABOUR | EE | 1 | C03a | TY1 | C03c | EIT02.1 |

| ID | WBS | Activity | Duration | Start | Finish | Predecessors | Total float | Free float | Constraint | Resources | Disciplines | Main Activity | WBS | Types | EIT WBS | EIT PKG |
| --- | --- | --- | --- | --- | --- | --- | --- | --- | --- | --- | --- | --- | --- | --- | --- | --- |
|  | 11 | **WBS : C05** |  | 2025-12-15 | 2026-03-12 |  |  |  |  |  |  |  |  |  |  |  |
|  | 5 | **Substation SS-098 (FAR-13)** |  | 2025-12-15 | 2026-03-12 |  |  |  |  |  |  |  |  |  |  |  |
|  | 1 | **Electrical** |  | 2026-01-19 | 2026-02-28 |  |  |  |  |  |  |  |  |  |  |  |
| 2.1-SS098P-1000 |  | Remainning Punchlist closure in Substation SS-098 (FAR-13) | 36d | 2026-01-19 | 2026-02-28 |  | 390d | 0d | start on or after 2026-01-19 | LABOUR | EE | 6 | WBSc053 | TY3 | C05 | EIT02.1 |
|  | 1 | **Electrical Equipment Installation** |  | 2026-01-22 | 2026-02-27 |  |  |  |  |  |  |  |  |  |  |  |
|  | 2 | **UPS and Charger System** |  | 2026-01-22 | 2026-02-27 |  |  |  |  |  |  |  |  |  |  |  |
|  | 5 | **110VAC UPS for vital Instrument - Battery Unit BATT-CV98H1 for CV98H1** |  | 2026-01-22 | 2026-02-27 |  |  |  |  |  |  |  |  |  |  |  |
| 2.1-SS098EE04-1000 |  | Install Equipment | 15d | 2026-01-22 | 2026-02-07 |  | 391d | 0d | start on or after 2026-01-22 | LABOUR [15 h] | EE | 1 | C03a | TY1 | C05 | EIT02.1 |
| 2.1-SS098EE04-1040 |  | Inspection and Testing, Per-Commissionning | 10d | 2026-02-09 | 2026-02-19 | 2.1-SS098EE04-1000 | 391d | 0d |  | LABOUR [5 h] | EE | 1 | C03a | TY1 | C05 | EIT02.1 |
| 2.1-SS098EE04-1090 |  | Clear punch | 4d | 2026-02-20 | 2026-02-24 | 2.1-SS098EE04-1040 | 391d | 0d |  | LABOUR [5 h] | EE | 1 | C03a | TY1 | C05 | EIT02.1 |
| 2.1-SS098EE04-1140 |  | Complete QA/QC document | 3d | 2026-02-25 | 2026-02-27 | 2.1-SS098EE04-1090 | 391d |  |  | LABOUR [3.61 h] | EE | 1 | C03a | TY1 | C05 | EIT02.1 |
|  | 6 | **110VAC UPS for vital Instrument - Battery Unit BATT-CV98H2 for CV98H2** |  | 2026-01-22 | 2026-02-27 |  |  |  |  |  |  |  |  |  |  |  |
| 2.1-SS098EE04-1010 |  | Install Equipment | 15d | 2026-01-22 | 2026-02-07 | 2.1-SS098EE04-1000 SS | 391d | 0d |  | LABOUR [15 h] | EE | 1 | C03a | TY1 | C05 | EIT02.1 |
| 2.1-SS098EE04-1050 |  | Inspection and Testing, Per-Commissionning | 10d | 2026-02-09 | 2026-02-19 | 2.1-SS098EE04-1010 | 391d | 0d |  | LABOUR [5 h] | EE | 1 | C03a | TY1 | C05 | EIT02.1 |
| 2.1-SS098EE04-1100 |  | Clear punch | 4d | 2026-02-20 | 2026-02-24 | 2.1-SS098EE04-1050 | 391d | 0d |  | LABOUR [5 h] | EE | 1 | C03a | TY1 | C05 | EIT02.1 |
| 2.1-SS098EE04-1150 |  | Complete QA/QC document | 3d | 2026-02-25 | 2026-02-27 | 2.1-SS098EE04-1100 | 391d |  |  | LABOUR [3.61 h] | EE | 1 | C03a | TY1 | C05 | EIT02.1 |
|  | 3 | **110VAC UPS for vital Instrument - Battery Unit for BATT-CV98H3 for CV98H3** |  | 2026-01-22 | 2026-02-27 |  |  |  |  |  |  |  |  |  |  |  |
| 2.1-SS098EE04-1020 |  | Install Equipment | 15d | 2026-01-22 | 2026-02-07 | 2.1-SS098EE04-1010 SS | 391d | 0d |  | LABOUR [15 h] | EE | 1 | C03a | TY1 | C05 | EIT02.1 |
| 2.1-SS098EE04-1060 |  | Inspection and Testing, Per-Commissionning | 10d | 2026-02-09 | 2026-02-19 | 2.1-SS098EE04-1020 | 391d | 0d |  | LABOUR [5 h] | EE | 1 | C03a | TY1 | C05 | EIT02.1 |
| 2.1-SS098EE04-1110 |  | Clear punch | 4d | 2026-02-20 | 2026-02-24 | 2.1-SS098EE04-1060 | 391d | 0d |  | LABOUR [5 h] | EE | 1 | C03a | TY1 | C05 | EIT02.1 |
| 2.1-SS098EE04-1160 |  | Complete QA/QC document | 3d | 2026-02-25 | 2026-02-27 | 2.1-SS098EE04-1110 | 391d |  |  | LABOUR [3.61 h] | EE | 1 | C03a | TY1 | C05 | EIT02.1 |
|  | 2 | **10VAC UPS for vital Instrument - Battery Unit BATT-CV98H4 for CV98H4** |  | 2026-01-22 | 2026-02-27 |  |  |  |  |  |  |  |  |  |  |  |
| 2.1-SS098EE04-1030 |  | Install Equipment | 15d | 2026-01-22 | 2026-02-07 | 2.1-SS098EE04-1020 SS | 391d | 0d |  | LABOUR [15 h] | EE | 1 | C03a | TY1 | C05 | EIT02.1 |
| 2.1-SS098EE04-1070 |  | Inspection and Testing, Per-Commissionning | 10d | 2026-02-09 | 2026-02-19 | 2.1-SS098EE04-1030 | 391d | 0d |  | LABOUR [5 h] | EE | 1 | C03a | TY1 | C05 | EIT02.1 |
| 2.1-SS098EE04-1120 |  | Clear punch | 4d | 2026-02-20 | 2026-02-24 | 2.1-SS098EE04-1070 | 391d | 0d |  | LABOUR [5 h] | EE | 1 | C03a | TY1 | C05 | EIT02.1 |
| 2.1-SS098EE04-1170 |  | Complete QA/QC document | 3d | 2026-02-25 | 2026-02-27 | 2.1-SS098EE04-1120 | 391d |  |  | LABOUR [3.61 h] | EE | 1 | C03a | TY1 | C05 | EIT02.1 |

| ID | WBS | Activity | Duration | Start | Finish | Predecessors | Total float | Free float | Constraint | Resources | Disciplines | Main Activity | WBS | Types | EIT WBS | EIT PKG |
| --- | --- | --- | --- | --- | --- | --- | --- | --- | --- | --- | --- | --- | --- | --- | --- | --- |
|  | 1 | **Battery Unit BATT-CV98H5 for C98H5** |  | 2026-02-09 | 2026-02-27 |  |  |  |  |  |  |  |  |  |  |  |
| 2.1-SS098EE04-1080 |  | Inspection and Testing, Per-Commissionning | 10d | 2026-02-09 | 2026-02-19 | 2.1-SS098EE04-1030 | 391d | 0d |  | LABOUR [3 h] | EE | 1 | C03a | TY1 | C05 | EIT02.1 |
| 2.1-SS098EE04-1130 |  | Clear punch | 4d | 2026-02-20 | 2026-02-24 | 2.1-SS098EE04-1080 | 391d | 0d |  | LABOUR [75 h] | EE | 1 | C03a | TY1 | C05 | EIT02.1 |
| 2.1-SS098EE04-1180 |  | Complete QA/QC document | 3d | 2026-02-25 | 2026-02-27 | 2.1-SS098EE04-1130 | 391d |  |  | LABOUR [75 h] | EE | 1 | C03a | TY1 | C05 | EIT02.1 |
|  | 2 | **Instrument** |  | 2025-12-15 | 2026-02-20 |  |  |  |  |  |  |  |  |  |  |  |
|  | 2 | **Verify System Cable Damage** |  | 2025-12-15 | 2026-01-31 |  |  |  |  |  |  |  |  |  |  |  |
| 2.1-SS098INV-1000 |  | Site Survey in Substation | 7d | 2025-12-15 | 2025-12-22 |  | 414d | 0d | start on or after 2025-12-15 | LABOUR | EE | 1 | C03a | TY1 | C05 | EIT02.1 |
| 2.1-SS098INV-1010 |  | Verify Cable in Substation SS-098 (FAR-13) | 30d | 2025-12-23 | 2026-01-26 | 2.1-SS098INV-1000 | 414d | 0d |  | LABOUR | EE | 1 | C03a | TY1 | C05 | EIT02.1 |
| 2.1-SS098INV-1020 |  | Complete QA/QC document and Report Cablel Verify | 5d | 2026-01-27 | 2026-01-31 | 2.1-SS098INV-1010 | 414d | 0d |  | LABOUR | EE | 1 | C03a | TY1 | C05 | EIT02.1 |
|  | 1 | **F&G System** |  | 2026-01-21 | 2026-02-20 |  |  |  |  |  |  |  |  |  |  |  |
| 2.1-SS098IN04-1000 |  | Install Equipment | 20d | 2026-01-21 | 2026-02-12 |  | 397d | 0d | start on or after 2026-01-21 | LABOUR | EE | 1 | C03a | TY1 | C05 | EIT02.1 |
| 2.1-SS098IN04-1010 |  | Clear punch | 4d | 2026-02-13 | 2026-02-17 | 2.1-SS098IN04-1000 | 397d | 0d |  | LABOUR | EE | 1 | C03a | TY1 | C05 | EIT02.1 |
| 2.1-SS098IN04-1020 |  | Complete QA/QC document | 3d | 2026-02-18 | 2026-02-20 | 2.1-SS098IN04-1010 | 397d |  | start on or after 2026-01-29 | LABOUR | EE | 1 | C03a | TY1 | C05 | EIT02.1 |
|  | 3 | **Telecommunication** |  | 2026-01-26 | 2026-03-12 |  |  |  |  |  |  |  |  |  |  |  |
|  | 5 | **Telecom** |  | 2026-01-26 | 2026-03-12 |  |  |  |  |  |  |  |  |  |  |  |
|  | 1 | **Telecommunication Cable Installation** |  | 2026-01-26 | 2026-02-19 |  |  |  |  |  |  |  |  |  |  |  |
| 2.1-SS098TE01-1000 |  | Pull Cable | 15d | 2026-01-26 | 2026-02-11 |  | 380d | 0d | start on or after 2026-01-26 | LABOUR | EE | 1 | C03a | TY1 | C05 | EIT02.1 |
| 2.1-SS098TE01-1010 |  | Megger & Continuity test | 4d | 2026-02-12 | 2026-02-16 | 2.1-SS098TE01-1000 | 398d | 0d |  | LABOUR | EE | 1 | C03a | TY1 | C05 | EIT02.1 |
| 2.1-SS098TE01-1020 |  | Complete QA/QC document | 3d | 2026-02-17 | 2026-02-19 | 2.1-SS098TE01-1010 | 398d |  |  | LABOUR | EE | 1 | C03a | TY1 | C05 | EIT02.1 |
|  | 4 | **Telecommunication Termination / Glanding** |  | 2026-02-12 | 2026-03-12 |  |  |  |  |  |  |  |  |  |  |  |
| 2.1-SS098TE02-1000 |  | Cable Termination/Glanding | 15d | 2026-02-12 | 2026-02-28 | 2.1-SS098TE01-1000 | 380d | 0d |  | LABOUR | EE | 1 | C03a | TY1 | C05 | EIT02.1 |
| 2.1-SS098TE02-1010 |  | Clear punch | 4d | 2026-03-02 | 2026-03-05 | 2.1-SS098TE02-1000 | 380d | 0d |  | LABOUR | EE | 1 | C03a | TY1 | C05 | EIT02.1 |
| 2.1-SS098TE02-1020 |  | Complete QA/QC document | 6d | 2026-03-06 | 2026-03-12 | 2.1-SS098TE02-1010 | 380d |  |  | LABOUR | EE | 1 | C03a | TY1 | C05 | EIT02.1 |
|  | 4 | **Substation SS-097** |  | 2026-01-19 | 2026-03-12 |  |  |  |  |  |  |  |  |  |  |  |
|  | 1 | **Electrical** |  | 2026-01-19 | 2026-02-28 |  |  |  |  |  |  |  |  |  |  |  |
| 2.1-SS097P-1000 |  | Remainning Punchlist closure in Substation SS-098 (FAR-13) | 36d | 2026-01-19 | 2026-02-28 |  | 390d |  | start on or after 2026-01-19 | LABOUR | EE | 6 | WBSc053 | TY3 | C05 | EIT02.1 |

| ID | WBS | Activity | Duration | Start | Finish | Predecessors | Total float | Free float | Constraint | Resources | Disciplines | Main Activity | WBS | Types | EIT WBS | EIT PKG |
| --- | --- | --- | --- | --- | --- | --- | --- | --- | --- | --- | --- | --- | --- | --- | --- | --- |
|  | 1 | **Electrical Equipment Installation** |  | 2026-01-22 | 2026-02-27 |  |  |  |  |  |  |  |  |  |  |  |
|  | 42 | **UPS and Charger System** |  | 2026-02-02 | 2026-02-20 |  |  |  |  |  |  |  |  |  |  |  |
|  | 4 | **CV97F23-1 - 240VAC UPS For Emergency Lighting** |  | 2026-02-02 | 2026-02-20 |  |  |  |  |  |  |  |  |  |  |  |
| 2.1-SS097EE04-1010 |  | Inspection and Testing, Per-Commissionning | 10d | 2026-02-02 | 2026-02-12 |  | 397d | 0d | start on or after 2026-02-02 | LABOUR [10 h] | EE | 1 | C03a | TY1 | C05 | EIT02.1 |
| 2.1-SS097EE04-1040 |  | Clear punch | 4d | 2026-02-13 | 2026-02-17 | 2.1-SS097EE04-1010 | 397d | 0d |  | LABOUR [3 h] | EE | 1 | C03a | TY1 | C05 | EIT02.1 |
| 2.1-SS097EE04-1060 |  | Complete QA/QC document | 3d | 2026-02-18 | 2026-02-20 | 2.1-SS097EE04-1040 | 397d |  |  | LABOUR [5.7 h] | EE | 1 | C03a | TY1 | C05 | EIT02.1 |
|  | 1 | **CV97F23-2 - 240VAC UPS For Emergency Lighting** |  | 2026-02-02 | 2026-02-20 |  |  |  |  |  |  |  |  |  |  |  |
| 2.1-SS097EE04-1020 |  | Inspection and Testing, Per-Commissionning | 10d | 2026-02-02 | 2026-02-12 | 2.1-SS097EE04-1010 SS | 397d | 0d |  | LABOUR [10 h] | EE | 1 | C03a | TY1 | C05 | EIT02.1 |
| 2.1-SS097EE04-1050 |  | Clear punch | 4d | 2026-02-13 | 2026-02-17 | 2.1-SS097EE04-1020 | 397d | 0d |  | LABOUR [3 h] | EE | 1 | C03a | TY1 | C05 | EIT02.1 |
| 2.1-SS097EE04-1070 |  | Complete QA/QC document | 3d | 2026-02-18 | 2026-02-20 | 2.1-SS097EE04-1050 | 397d |  |  | LABOUR [5.7 h] | EE | 1 | C03a | TY1 | C05 | EIT02.1 |
|  | 6 | **Miscellaneous Panels** |  | 2026-01-22 | 2026-02-27 |  |  |  |  |  |  |  |  |  |  |  |
|  | 3 | **S097-ELC-0004 - Cathodic Protection Transformer Rectifier For UG Pipes Unit 10700** |  | 2026-01-22 | 2026-02-27 |  |  |  |  |  |  |  |  |  |  |  |
| 2.1-SS097EE04-1000 |  | Install Equipment | 15d | 2026-01-22 | 2026-02-07 | 2.1-SS098EE04-1030 SS | 391d | 0d |  | LABOUR [10 h] | EE | 1 | C03a | TY1 | C05 | EIT02.1 |
| 2.1-SS097EE04-1030 |  | Inspection and Testing, Per-Commissionning | 10d | 2026-02-09 | 2026-02-19 | 2.1-SS097EE04-1000 | 391d | 0d |  | LABOUR [3 h] | EE | 1 | C03a | TY1 | C05 | EIT02.1 |
| 2.1-SS097EE04-1080 |  | Clear punch | 4d | 2026-02-20 | 2026-02-24 | 2.1-SS097EE04-1030 | 391d | 0d |  | LABOUR [2 h] | EE | 1 | C03a | TY1 | C05 | EIT02.1 |
| 2.1-SS097EE04-1090 |  | Complete QA/QC document | 3d | 2026-02-25 | 2026-02-27 | 2.1-SS097EE04-1080 | 391d |  |  | LABOUR [3.7 h] | EE | 1 | C03a | TY1 | C05 | EIT02.1 |
|  | 2 | **Instrument** |  | 2026-01-21 | 2026-02-20 |  |  |  |  |  |  |  |  |  |  |  |
|  | 1 | **F&G System** |  | 2026-01-21 | 2026-02-20 |  |  |  |  |  |  |  |  |  |  |  |
| 2.1-SS097IN04-1000 |  | Install Equipment | 20d | 2026-01-21 | 2026-02-12 |  | 397d | 0d | start on or after 2026-01-21 | LABOUR | EE | 1 | C03a | TY1 | C05 | EIT02.1 |
| 2.1-SS097IN04-1010 |  | Clear punch | 4d | 2026-02-13 | 2026-02-17 | 2.1-SS097IN04-1000 | 397d | 0d |  | LABOUR | EE | 1 | C03a | TY1 | C05 | EIT02.1 |
| 2.1-SS097IN04-1020 |  | Complete QA/QC document | 3d | 2026-02-18 | 2026-02-20 | 2.1-SS097IN04-1010 | 397d |  |  | LABOUR | EE | 1 | C03a | TY1 | C05 | EIT02.1 |
|  | 3 | **Telecommunication** |  | 2026-01-26 | 2026-03-12 |  |  |  |  |  |  |  |  |  |  |  |
|  | 5 | **Telecom** |  | 2026-01-26 | 2026-03-12 |  |  |  |  |  |  |  |  |  |  |  |
|  | 1 | **Telecommunication Cable Installation** |  | 2026-01-26 | 2026-02-19 |  |  |  |  |  |  |  |  |  |  |  |
| 2.1-SS097TE01-1000 |  | Pull Cable | 15d | 2026-01-26 | 2026-02-11 |  | 380d | 0d | start on or after 2026-01-26 | LABOUR | EE | 1 | C03a | TY1 | C05 | EIT02.1 |
| 2.1-SS097TE01-1010 |  | Megger & Continuity test | 4d | 2026-02-12 | 2026-02-16 | 2.1-SS097TE01-1000 | 398d | 0d |  | LABOUR | EE | 1 | C03a | TY1 | C05 | EIT02.1 |
| 2.1-SS097TE01-1020 |  | Complete QA/QC document | 3d | 2026-02-17 | 2026-02-19 | 2.1-SS097TE01-1010 | 398d |  |  | LABOUR | EE | 1 | C03a | TY1 | C05 | EIT02.1 |

| ID | WBS | Activity | Duration | Start | Finish | Predecessors | Total float | Free float | Constraint | Resources | Disciplines | Main Activity | WBS | Types | EIT WBS | EIT PKG |
| --- | --- | --- | --- | --- | --- | --- | --- | --- | --- | --- | --- | --- | --- | --- | --- | --- |
|  | 4 | **Telecommunication Termination / Glanding** |  | 2026-02-12 | 2026-03-12 |  |  |  |  |  |  |  |  |  |  |  |
| 2.1-SS097TE02-1000 |  | Cable Termination/Glanding | 15d | 2026-02-12 | 2026-02-28 | 2.1-SS097TE01-1000 | 380d | 0d |  | LABOUR | EE | 1 | C03a | TY1 | C05 | EIT02.1 |
| 2.1-SS097TE02-1010 |  | Clear punch | 4d | 2026-03-02 | 2026-03-05 | 2.1-SS097TE02-1000 | 380d | 0d |  | LABOUR | EE | 1 | C03a | TY1 | C05 | EIT02.1 |
| 2.1-SS097TE02-1020 |  | Complete QA/QC document | 6d | 2026-03-06 | 2026-03-12 | 2.1-SS097TE02-1010 | 380d |  |  | LABOUR | EE | 1 | C03a | TY1 | C05 | EIT02.1 |
|  | WBS C07 | **WBS : C07** |  | 2026-01-19 | 2026-03-13 |  |  |  |  |  |  |  |  |  |  |  |
|  | 9 | **Main Contro Building MCB3** |  | 2026-01-19 | 2026-03-13 |  |  |  |  |  |  |  |  |  |  |  |
|  | 1 | **Electrical** |  | 2026-01-19 | 2026-03-07 |  |  |  |  |  |  |  |  |  |  |  |
|  | 2 | **Electrical Cable Installation** |  | 2026-01-19 | 2026-02-18 |  |  |  |  |  |  |  |  |  |  |  |
|  | 2 | **Cable Pull LV Cable** |  | 2026-01-19 | 2026-02-18 |  |  |  |  |  |  |  |  |  |  |  |
| 2.1-MCB3EE01-1000 |  | Pull Cable | 20d | 2026-01-19 | 2026-02-10 |  | 384d | 0d | start on or after 2026-01-19 | LABOUR [400 h] | EE | 1 | C03a | TY1 | C07 | EIT02.1 |
| 2.1-MCB3EE01-1030 |  | Megger & Continuity test | 4d | 2026-02-11 | 2026-02-14 | 2.1-MCB3EE01-1000 | 399d | 0d |  | LABOUR [50 h] | EE | 1 | C03a | TY1 | C07 | EIT02.1 |
| 2.1-MCB3EE01-1060 |  | Complete QA/QC document | 3d | 2026-02-16 | 2026-02-18 | 2.1-MCB3EE01-1030 | 399d |  |  | LABOUR [81.66 h] | EE | 1 | C03a | TY1 | C07 | EIT02.1 |
|  | 3 | **Cable Pull Control Cable** |  | 2026-01-19 | 2026-02-18 |  |  |  |  |  |  |  |  |  |  |  |
| 2.1-MCB3EE01-1010 |  | Pull Cable | 20d | 2026-01-19 | 2026-02-10 | 2.1-MCB3EE01-1000 SS | 384d | 0d | start on or after 2026-01-19 | LABOUR [400 h] | EE | 1 | C03a | TY1 | C07 | EIT02.1 |
| 2.1-MCB3EE01-1040 |  | Megger & Continuity test | 4d | 2026-02-11 | 2026-02-14 | 2.1-MCB3EE01-1010 | 399d | 0d |  | LABOUR [50 h] | EE | 1 | C03a | TY1 | C07 | EIT02.1 |
| 2.1-MCB3EE01-1070 |  | Complete QA/QC document | 3d | 2026-02-16 | 2026-02-18 | 2.1-MCB3EE01-1040 | 399d |  |  | LABOUR [81.66 h] | EE | 1 | C03a | TY1 | C07 | EIT02.1 |
|  | 5 | **Cable Pull Lighting Cable** |  | 2026-01-19 | 2026-02-18 |  |  |  |  |  |  |  |  |  |  |  |
| 2.1-MCB3EE01-1020 |  | Pull Cable | 20d | 2026-01-19 | 2026-02-10 | 2.1-MCB3EE01-1010 SS | 384d | 0d | start on or after 2026-01-19 | LABOUR [400 h] | EE | 1 | C03a | TY1 | C07 | EIT02.1 |
| 2.1-MCB3EE01-1050 |  | Megger & Continuity test | 4d | 2026-02-11 | 2026-02-14 | 2.1-MCB3EE01-1020 | 399d | 0d |  | LABOUR [50 h] | EE | 1 | C03a | TY1 | C07 | EIT02.1 |
| 2.1-MCB3EE01-1080 |  | Complete QA/QC document | 3d | 2026-02-16 | 2026-02-18 | 2.1-MCB3EE01-1050 | 399d |  |  | LABOUR [81.66 h] | EE | 1 | C03a | TY1 | C07 | EIT02.1 |
|  | 4 | **Electrical Cable Termination / Glanding** |  | 2026-02-11 | 2026-03-07 |  |  |  |  |  |  |  |  |  |  |  |
|  | 2 | **Termination LV Cable** |  | 2026-02-11 | 2026-03-07 |  |  |  |  |  |  |  |  |  |  |  |
| 2.1-MCB3EE02-1000 |  | Cable Termination/Glanding | 15d | 2026-02-11 | 2026-02-27 | 2.1-MCB3EE01-1020 | 384d | 0d |  | LABOUR [20 h] | EE | 1 | C03a | TY1 | C07 | EIT02.1 |
| 2.1-MCB3EE02-1030 |  | Clear punch | 4d | 2026-02-28 | 2026-03-04 | 2.1-MCB3EE02-1000 | 384d | 0d |  | LABOUR [5 h] | EE | 1 | C03a | TY1 | C07 | EIT02.1 |
| 2.1-MCB3EE02-1060 |  | Complete QA/QC document | 3d | 2026-03-05 | 2026-03-07 | 2.1-MCB3EE02-1030 | 384d |  |  | LABOUR [13.3 h] | EE | 1 | C03a | TY1 | C07 | EIT02.1 |

| ID | WBS | Activity | Duration | Start | Finish | Predecessors | Total float | Free float | Constraint | Resources | Disciplines | Main Activity | WBS | Types | EIT WBS | EIT PKG |
| --- | --- | --- | --- | --- | --- | --- | --- | --- | --- | --- | --- | --- | --- | --- | --- | --- |
|  | 3 | **Termination Control Cable** |  | 2026-02-11 | 2026-03-07 |  |  |  |  |  |  |  |  |  |  |  |
| 2.1-MCB3EE02-1010 |  | Cable Termination/Glanding | 15d | 2026-02-11 | 2026-02-27 | 2.1-MCB3EE02-1000 SS | 384d | 0d |  | LABOUR [20 h] | EE | 1 | C03a | TY1 | C07 | EIT02.1 |
| 2.1-MCB3EE02-1040 |  | Clear punch | 4d | 2026-02-28 | 2026-03-04 | 2.1-MCB3EE02-1010 | 384d | 0d |  | LABOUR [5 h] | EE | 1 | C03a | TY1 | C07 | EIT02.1 |
| 2.1-MCB3EE02-1070 |  | Complete QA/QC document | 3d | 2026-03-05 | 2026-03-07 | 2.1-MCB3EE02-1040 | 384d |  |  | LABOUR [13.3 h] | EE | 1 | C03a | TY1 | C07 | EIT02.1 |
|  | 1 | **Termination Lighting Cable** |  | 2026-02-11 | 2026-03-07 |  |  |  |  |  |  |  |  |  |  |  |
| 2.1-MCB3EE02-1020 |  | Cable Termination/Glanding | 15d | 2026-02-11 | 2026-02-27 | 2.1-MCB3EE02-1010 SS | 384d | 0d |  | LABOUR [20 h] | EE | 1 | C03a | TY1 | C07 | EIT02.1 |
| 2.1-MCB3EE02-1050 |  | Clear punch | 4d | 2026-02-28 | 2026-03-04 | 2.1-MCB3EE02-1020 | 384d | 0d |  | LABOUR [5 h] | EE | 1 | C03a | TY1 | C07 | EIT02.1 |
| 2.1-MCB3EE02-1080 |  | Complete QA/QC document | 3d | 2026-03-05 | 2026-03-07 | 2.1-MCB3EE02-1050 | 384d |  |  | LABOUR [13.3 h] | EE | 1 | C03a | TY1 | C07 | EIT02.1 |
|  | 5 | **Lighting & Small Power Equipment Installation** |  | 2026-01-23 | 2026-02-28 |  |  |  |  |  |  |  |  |  |  |  |
| 2.1-MCB3EE05-1000 |  | Install support / bracket / Pole | 5d | 2026-01-23 | 2026-01-28 |  | 390d | 0d | start on or after 2026-01-23 | LABOUR [1 h] | EE | 1 | C03a | TY1 | C07 | EIT02.1 |
| 2.1-MCB3EE05-1010 |  | Install Distribution panel, lighting fitting ,convenience outlet | 15d | 2026-01-29 | 2026-02-14 | 2.1-MCB3EE05-1000 | 390d | 0d |  | LABOUR [4 h] | EE | 1 | C03a | TY1 | C07 | EIT02.1 |
| 2.1-MCB3EE05-1020 |  | Clear punch | 5d | 2026-02-16 | 2026-02-20 | 2.1-MCB3EE05-1010 | 390d | 0d |  | LABOUR [1 h] | EE | 1 | C03a | TY1 | C07 | EIT02.1 |
| 2.1-MCB3EE05-1030 |  | Complete QA/QC document | 7d | 2026-02-21 | 2026-02-28 | 2.1-MCB3EE05-1020 | 390d | 0d |  | LABOUR [1.9 h] | EE | 1 | C03a | TY1 | C07 | EIT02.1 |
|  | 2 | **Instrument** |  | 2026-01-19 | 2026-03-13 |  |  |  |  |  |  |  |  |  |  |  |
|  | 3 | **Instrument Cable Installation** |  | 2026-01-19 | 2026-02-18 |  |  |  |  |  |  |  |  |  |  |  |
|  | 1 | **Cable Pull Primary Cable** |  | 2026-01-19 | 2026-02-18 |  |  |  |  |  |  |  |  |  |  |  |
| 2.1-MCB3IN01-1030 |  | Pull Cable | 20d | 2026-01-19 | 2026-02-10 |  | 379d | 0d | start on or after 2026-01-19 | LABOUR [600 h] | EE | 1 | C03a | TY1 | C07 | EIT02.1 |
| 2.1-MCB3IN01-1070 |  | Megger & Continuity test | 4d | 2026-02-11 | 2026-02-14 | 2.1-MCB3IN01-1030 | 399d | 0d |  | LABOUR [100 h] | EE | 1 | C03a | TY1 | C07 | EIT02.1 |
| 2.1-MCB3IN01-1110 |  | Complete QA/QC document | 3d | 2026-02-16 | 2026-02-18 | 2.1-MCB3IN01-1070 | 399d |  |  | LABOUR [221.7 h] | EE | 1 | C03a | TY1 | C07 | EIT02.1 |
|  | 5 | **Cable Pull Power Cable** |  | 2026-01-19 | 2026-02-18 |  |  |  |  |  |  |  |  |  |  |  |
| 2.1-MCB3IN01-1010 |  | Pull Cable | 20d | 2026-01-19 | 2026-02-10 | 2.1-MCB3IN01-1030 SS | 379d | 0d |  | LABOUR [600 h] | EE | 1 | C03a | TY1 | C07 | EIT02.1 |
| 2.1-MCB3IN01-1050 |  | Megger & Continuity test | 4d | 2026-02-11 | 2026-02-14 | 2.1-MCB3IN01-1010 | 399d | 0d |  | LABOUR [100 h] | EE | 1 | C03a | TY1 | C07 | EIT02.1 |
| 2.1-MCB3IN01-1090 |  | Complete QA/QC document | 3d | 2026-02-16 | 2026-02-18 | 2.1-MCB3IN01-1050 | 399d |  |  | LABOUR [221.7 h] | EE | 1 | C03a | TY1 | C07 | EIT02.1 |
|  | 9 | **Cable Pull Secondary Cable** |  | 2026-01-19 | 2026-02-18 |  |  |  |  |  |  |  |  |  |  |  |
| 2.1-MCB3IN01-1020 |  | Pull Cable | 20d | 2026-01-19 | 2026-02-10 | 2.1-MCB3IN01-1010 SS | 379d | 0d | start on or after 2026-01-19 | LABOUR [600 h] | EE | 1 | C03a | TY1 | C07 | EIT02.1 |
| 2.1-MCB3IN01-1060 |  | Megger & Continuity test | 4d | 2026-02-11 | 2026-02-14 | 2.1-MCB3IN01-1020 | 399d | 0d |  | LABOUR [100 h] | EE | 1 | C03a | TY1 | C07 | EIT02.1 |
| 2.1-MCB3IN01-1100 |  | Complete QA/QC document | 3d | 2026-02-16 | 2026-02-18 | 2.1-MCB3IN01-1060 | 399d |  |  | LABOUR [221.7 h] | EE | 1 | C03a | TY1 | C07 | EIT02.1 |

| ID | WBS | Activity | Duration | Start | Finish | Predecessors | Total float | Free float | Constraint | Resources | Disciplines | Main Activity | WBS | Types | EIT WBS | EIT PKG |
| --- | --- | --- | --- | --- | --- | --- | --- | --- | --- | --- | --- | --- | --- | --- | --- | --- |
|  | 8 | **Cross Wiring Cable Cable** |  | 2026-01-19 | 2026-02-18 |  |  |  |  |  |  |  |  |  |  |  |
| 2.1-MCB3IN01-1000 |  | Pull Cable | 20d | 2026-01-19 | 2026-02-10 | 2.1-MCB3IN01-1020 SS | 379d | 0d | start on or after 2026-01-19 | LABOUR [600 h] | EE | 1 | C03a | TY1 | C07 | EIT02.1 |
| 2.1-MCB3IN01-1040 |  | Megger & Continuity test | 4d | 2026-02-11 | 2026-02-14 | 2.1-MCB3IN01-1000 | 399d | 0d |  | LABOUR [100 h] | EE | 1 | C03a | TY1 | C07 | EIT02.1 |
| 2.1-MCB3IN01-1080 |  | Complete QA/QC document | 3d | 2026-02-16 | 2026-02-18 | 2.1-MCB3IN01-1040 | 399d |  |  | LABOUR [221.7 h] | EE | 1 | C03a | TY1 | C07 | EIT02.1 |
|  | 2 | **Instrument Cable Termination / Glanding** |  | 2026-02-11 | 2026-03-13 |  |  |  |  |  |  |  |  |  |  |  |
|  | 8 | **Cable Termination Primary Cable** |  | 2026-02-11 | 2026-03-07 |  |  |  |  |  |  |  |  |  |  |  |
| 2.1-MCB3IN02-1030 |  | Cable Termination/Glanding | 15d | 2026-02-11 | 2026-02-27 | 2.1-MCB3IN01-1030 | 384d | 0d |  | LABOUR [150 h] | EE | 1 | C03a | TY1 | C07 | EIT02.1 |
| 2.1-MCB3IN02-1070 |  | Clear punch | 4d | 2026-02-28 | 2026-03-04 | 2.1-MCB3IN02-1030 | 384d | 0d |  | LABOUR [50 h] | EE | 1 | C03a | TY1 | C07 | EIT02.1 |
| 2.1-MCB3IN02-1110 |  | Complete QA/QC document | 3d | 2026-03-05 | 2026-03-07 | 2.1-MCB3IN02-1070 | 384d |  |  | LABOUR [39.5 h] | EE | 1 | C03a | TY1 | C07 | EIT02.1 |
|  | 5 | **Cable Termination Power Cable** |  | 2026-02-11 | 2026-03-13 |  |  |  |  |  |  |  |  |  |  |  |
| 2.1-MCB3IN02-1000 |  | Cable Termination/Glanding | 20d | 2026-02-11 | 2026-03-05 | 2.1-MCB3IN01-1010 | 379d | 0d |  | LABOUR [150 h] | EE | 1 | C03a | TY1 | C07 | EIT02.1 |
| 2.1-MCB3IN02-1040 |  | Clear punch | 4d | 2026-03-06 | 2026-03-10 | 2.1-MCB3IN02-1000 | 379d | 0d |  | LABOUR [50 h] | EE | 1 | C03a | TY1 | C07 | EIT02.1 |
| 2.1-MCB3IN02-1080 |  | Complete QA/QC document | 3d | 2026-03-11 | 2026-03-13 | 2.1-MCB3IN02-1040 | 379d |  |  | LABOUR [39.5 h] | EE | 1 | C03a | TY1 | C07 | EIT02.1 |
|  | 9 | **Cable Termination Secondary Cable** |  | 2026-02-11 | 2026-03-13 |  |  |  |  |  |  |  |  |  |  |  |
| 2.1-MCB3IN02-1010 |  | Cable Termination/Glanding | 20d | 2026-02-11 | 2026-03-05 | 2.1-MCB3IN01-1020 | 379d | 0d |  | LABOUR [150 h] | EE | 1 | C03a | TY1 | C07 | EIT02.1 |
| 2.1-MCB3IN02-1050 |  | Clear punch | 4d | 2026-03-06 | 2026-03-10 | 2.1-MCB3IN02-1010 | 379d | 0d |  | LABOUR [50 h] | EE | 1 | C03a | TY1 | C07 | EIT02.1 |
| 2.1-MCB3IN02-1090 |  | Complete QA/QC document | 3d | 2026-03-11 | 2026-03-13 | 2.1-MCB3IN02-1050 | 379d |  |  | LABOUR [39.5 h] | EE | 1 | C03a | TY1 | C07 | EIT02.1 |
|  | 1 | **Cable Termination Cross Wiring Cable** |  | 2026-02-11 | 2026-03-13 |  |  |  |  |  |  |  |  |  |  |  |
| 2.1-MCB3IN02-1020 |  | Cable Termination/Glanding | 20d | 2026-02-11 | 2026-03-05 | 2.1-MCB3IN01-1000 | 379d | 0d |  | LABOUR [150 h] | EE | 1 | C03a | TY1 | C07 | EIT02.1 |
| 2.1-MCB3IN02-1060 |  | Clear punch | 4d | 2026-03-06 | 2026-03-10 | 2.1-MCB3IN02-1020 | 379d | 0d |  | LABOUR [50 h] | EE | 1 | C03a | TY1 | C07 | EIT02.1 |
| 2.1-MCB3IN02-1100 |  | Complete QA/QC document | 3d | 2026-03-11 | 2026-03-13 | 2.1-MCB3IN02-1060 | 379d |  |  | LABOUR [39.5 h] | EE | 1 | C03a | TY1 | C07 | EIT02.1 |
|  | 1 | **F&G System** |  | 2026-01-21 | 2026-02-28 |  |  |  |  |  |  |  |  |  |  |  |
| 2.1-MCB3IN04-1000 |  | Install Equipment | 20d | 2026-01-21 | 2026-02-12 |  | 390d | 0d | start on or after 2026-01-21 | LABOUR | EE | 1 | C03a | TY1 | C07 | EIT02.1 |
| 2.1-MCB3IN04-1010 |  | Clear punch | 7d | 2026-02-13 | 2026-02-20 | 2.1-MCB3IN04-1000 | 390d | 0d | start on or after 2026-01-29 | LABOUR | EE | 1 | C03a | TY1 | C07 | EIT02.1 |
| 2.1-MCB3IN04-1020 |  | Complete QA/QC document | 7d | 2026-02-21 | 2026-02-28 | 2.1-MCB3IN04-1010 | 390d |  | start on or after 2026-01-29 | LABOUR | EE | 1 | C03a | TY1 | C07 | EIT02.1 |

| ID | WBS | Activity | Duration | Start | Finish | Predecessors | Total float | Free float | Constraint | Resources | Disciplines | Main Activity | WBS | Types | EIT WBS | EIT PKG |
| --- | --- | --- | --- | --- | --- | --- | --- | --- | --- | --- | --- | --- | --- | --- | --- | --- |
|  | 4 | **WBS : B04** |  | 2026-01-22 | 2026-02-28 |  |  |  |  |  |  |  |  |  |  |  |
|  | 8 | **Substation SS-118** |  | 2026-01-22 | 2026-02-28 |  |  |  |  |  |  |  |  |  |  |  |
|  | 4 | **Electrical** |  | 2026-01-22 | 2026-02-28 |  |  |  |  |  |  |  |  |  |  |  |
|  | 1 | **Electrical Equipment Installation** |  | 2026-01-22 | 2026-02-28 |  |  |  |  |  |  |  |  |  |  |  |
|  | 2 | **Miscellaneous Panels** |  | 2026-01-22 | 2026-02-28 |  |  |  |  |  |  |  |  |  |  |  |
|  | 5 | **S118-ELC-0005 - KM-10602A Exciter control panel 415 V** |  | 2026-01-22 | 2026-02-27 |  |  |  |  |  |  |  |  |  |  |  |
| 2.1-SS118EE04-1000 |  | Install Equipment | 10d | 2026-01-22 | 2026-02-02 |  | 390d | 0d | start on or after 2026-01-22 | LABOUR | EE | 1 | C03a | TY1 | B04 | EIT02.1 |
| 2.1-SS118EE04-1050 |  | Internal Wiring Cable | 5d | 2026-02-03 | 2026-02-07 | 2.1-SS118EE04-1000 | 391d | 0d |  | LABOUR | EE | 1 | C03a | TY1 | B04 | EIT02.1 |
| 2.1-SS118EE04-1100 |  | Inspection and Testing, Per-Commissionning | 10d | 2026-02-09 | 2026-02-19 | 2.1-SS118EE04-1050 | 391d | 0d |  | LABOUR | EE | 1 | C03a | TY1 | B04 | EIT02.1 |
| 2.1-SS118EE04-1150 |  | Clear punch | 4d | 2026-02-20 | 2026-02-24 | 2.1-SS118EE04-1100 | 391d | 0d |  | LABOUR | EE | 1 | C03a | TY1 | B04 | EIT02.1 |
| 2.1-SS118EE04-1200 |  | Complete QA/QC document | 3d | 2026-02-25 | 2026-02-27 | 2.1-SS118EE04-1150 | 391d |  |  | LABOUR | EE | 1 | C03a | TY1 | B04 | EIT02.1 |
|  | 3 | **S118-ELC-0006 - KM-10602B Exciter control panel 415 V** |  | 2026-01-22 | 2026-02-27 |  |  |  |  |  |  |  |  |  |  |  |
| 2.1-SS118EE04-1010 |  | Install Equipment | 10d | 2026-01-22 | 2026-02-02 | 2.1-SS118EE04-1000 SS | 390d | 0d |  | LABOUR | EE | 1 | C03a | TY1 | B04 | EIT02.1 |
| 2.1-SS118EE04-1060 |  | Internal Wiring Cable | 5d | 2026-02-03 | 2026-02-07 | 2.1-SS118EE04-1010 | 391d | 0d |  | LABOUR | EE | 1 | C03a | TY1 | B04 | EIT02.1 |
| 2.1-SS118EE04-1110 |  | Inspection and Testing, Per-Commissionning | 10d | 2026-02-09 | 2026-02-19 | 2.1-SS118EE04-1060 | 391d | 0d |  | LABOUR | EE | 1 | C03a | TY1 | B04 | EIT02.1 |
| 2.1-SS118EE04-1160 |  | Clear punch | 4d | 2026-02-20 | 2026-02-24 | 2.1-SS118EE04-1110 | 391d | 0d |  | LABOUR | EE | 1 | C03a | TY1 | B04 | EIT02.1 |
| 2.1-SS118EE04-1210 |  | Complete QA/QC document | 3d | 2026-02-25 | 2026-02-27 | 2.1-SS118EE04-1160 | 391d |  |  | LABOUR | EE | 1 | C03a | TY1 | B04 | EIT02.1 |
|  | 6 | **S118-ELC-0007 - KM-10602C Exciter control panel 415 V** |  | 2026-01-22 | 2026-02-27 |  |  |  |  |  |  |  |  |  |  |  |
| 2.1-SS118EE04-1020 |  | Install Equipment | 10d | 2026-01-22 | 2026-02-02 | 2.1-SS118EE04-1010 SS | 390d | 0d |  | LABOUR | EE | 1 | C03a | TY1 | B04 | EIT02.1 |
| 2.1-SS118EE04-1070 |  | Internal Wiring Cable | 5d | 2026-02-03 | 2026-02-07 | 2.1-SS118EE04-1020 | 391d | 0d |  | LABOUR | EE | 1 | C03a | TY1 | B04 | EIT02.1 |
| 2.1-SS118EE04-1120 |  | Inspection and Testing, Per-Commissionning | 10d | 2026-02-09 | 2026-02-19 | 2.1-SS118EE04-1070 | 391d | 0d |  | LABOUR | EE | 1 | C03a | TY1 | B04 | EIT02.1 |
| 2.1-SS118EE04-1170 |  | Clear punch | 4d | 2026-02-20 | 2026-02-24 | 2.1-SS118EE04-1120 | 391d | 0d |  | LABOUR | EE | 1 | C03a | TY1 | B04 | EIT02.1 |
| 2.1-SS118EE04-1220 |  | Complete QA/QC document | 3d | 2026-02-25 | 2026-02-27 | 2.1-SS118EE04-1170 | 391d |  |  | LABOUR | EE | 1 | C03a | TY1 | B04 | EIT02.1 |
|  | 2 | **S118-ELC-0008 - KM-10602D Exciter control panel 415 V** |  | 2026-01-22 | 2026-02-27 |  |  |  |  |  |  |  |  |  |  |  |
| 2.1-SS118EE04-1030 |  | Install Equipment | 10d | 2026-01-22 | 2026-02-02 | 2.1-SS118EE04-1020 SS | 390d | 0d |  | LABOUR | EE | 1 | C03a | TY1 | B04 | EIT02.1 |
| 2.1-SS118EE04-1080 |  | Internal Wiring Cable | 5d | 2026-02-03 | 2026-02-07 | 2.1-SS118EE04-1030 | 391d | 0d |  | LABOUR | EE | 1 | C03a | TY1 | B04 | EIT02.1 |
| 2.1-SS118EE04-1130 |  | Inspection and Testing, Per-Commissionning | 10d | 2026-02-09 | 2026-02-19 | 2.1-SS118EE04-1080 | 391d | 0d |  | LABOUR | EE | 1 | C03a | TY1 | B04 | EIT02.1 |
| 2.1-SS118EE04-1180 |  | Clear punch | 4d | 2026-02-20 | 2026-02-24 | 2.1-SS118EE04-1130 | 391d | 0d |  | LABOUR | EE | 1 | C03a | TY1 | B04 | EIT02.1 |
| 2.1-SS118EE04-1230 |  | Complete QA/QC document | 3d | 2026-02-25 | 2026-02-27 | 2.1-SS118EE04-1180 | 391d |  |  | LABOUR | EE | 1 | C03a | TY1 | B04 | EIT02.1 |

| ID | WBS | Activity | Duration | Start | Finish | Predecessors | Total float | Free float | Constraint | Resources | Disciplines | Main Activity | WBS | Types | EIT WBS | EIT PKG |
| --- | --- | --- | --- | --- | --- | --- | --- | --- | --- | --- | --- | --- | --- | --- | --- | --- |
|  | 1 | **S118-ELC-0009 - PLC PANEL 415 V K-10602A/B/C/D Change Ober Cabinet** |  | 2026-01-22 | 2026-02-28 |  |  |  |  |  |  |  |  |  |  |  |
| 2.1-SS118EE04-1040 |  | Install Equipment | 10d | 2026-01-22 | 2026-02-02 | 2.1-SS118EE04-1030 SS | 390d | 0d |  | LABOUR [3 h] | EE | 1 | C03a | TY1 | B04 | EIT02.1 |
| 2.1-SS118EE04-1090 |  | Internal Wiring Cable | 5d | 2026-02-03 | 2026-02-07 | 2.1-SS118EE04-1040 | 390d | 0d |  | LABOUR [3 h] | EE | 1 | C03a | TY1 | B04 | EIT02.1 |
| 2.1-SS118EE04-1140 |  | Inspection and Testing, Per-Commissionning | 10d | 2026-02-09 | 2026-02-19 | 2.1-SS118EE04-1090 | 390d | 0d |  | LABOUR [3 h] | EE | 1 | C03a | TY1 | B04 | EIT02.1 |
| 2.1-SS118EE04-1190 |  | Clear punch | 4d | 2026-02-20 | 2026-02-24 | 2.1-SS118EE04-1140 | 390d | 0d |  | LABOUR [75 h] | EE | 1 | C03a | TY1 | B04 | EIT02.1 |
| 2.1-SS118EE04-1240 |  | Complete QA/QC document | 4d | 2026-02-25 | 2026-02-28 | 2.1-SS118EE04-1190 | 390d | 0d |  | LABOUR [75 h] | EE | 1 | C03a | TY1 | B04 | EIT02.1 |
|  | 7 | **WBS : E06** |  | 2026-01-22 | 2026-03-28 |  |  |  |  |  |  |  |  |  |  |  |
|  | 4 | **Substation SS-077** |  | 2026-01-22 | 2026-03-28 |  |  |  |  |  |  |  |  |  |  |  |
|  | 1 | **Electrical** |  | 2026-01-22 | 2026-03-28 |  |  |  |  |  |  |  |  |  |  |  |
|  | 2 | **Electrical Equipment Installation** |  | 2026-01-22 | 2026-03-28 |  |  |  |  |  |  |  |  |  |  |  |
|  | 2 | **Miscellaneous Panels** |  | 2026-01-22 | 2026-02-21 |  |  |  |  |  |  |  |  |  |  |  |
|  | 5 | **SS-ANN-77B - Substation Annunciator Panel** |  | 2026-01-22 | 2026-02-21 |  |  |  |  |  |  |  |  |  |  |  |
| 2.1-SS077EE04-1000 |  | Install Equipment | 10d | 2026-01-22 | 2026-02-02 |  | 366d | 0d | start on or after 2026-01-22 | LABOUR [10 h] | EE | 1 | C03a | TY1 | E06 | EIT02.1 |
| 2.1-SS077EE04-1090 |  | Inspection and Testing, Per-Commissionning | 10d | 2026-02-03 | 2026-02-13 | 2.1-SS077EE04-1000 | 396d | 0d |  | LABOUR [5 h] | EE | 1 | C03a | TY1 | E06 | EIT02.1 |
| 2.1-SS077EE04-1320 |  | Clear punch | 4d | 2026-02-14 | 2026-02-18 | 2.1-SS077EE04-1090 | 396d | 0d |  | LABOUR [2 h] | EE | 1 | C03a | TY1 | E06 | EIT02.1 |
| 2.1-SS077EE04-1530 |  | Complete QA/QC document | 3d | 2026-02-19 | 2026-02-21 | 2.1-SS077EE04-1320 | 396d |  |  | LABOUR [2.55 h] | EE | 1 | C03a | TY1 | E06 | EIT02.1 |
|  | 3 | **SS-ANN-77C - Substation Annunciator Panel** |  | 2026-02-03 | 2026-02-21 |  |  |  |  |  |  |  |  |  |  |  |
| 2.1-SS077EE04-1100 |  | Inspection and Testing, Per-Commissionning | 10d | 2026-02-03 | 2026-02-13 | 2.1-SS077EE04-1090 SS | 396d | 0d |  | LABOUR [10 h] | EE | 1 | C03a | TY1 | E06 | EIT02.1 |
| 2.1-SS077EE04-1330 |  | Clear punch | 4d | 2026-02-14 | 2026-02-18 | 2.1-SS077EE04-1100 | 396d | 0d |  | LABOUR [5 h] | EE | 1 | C03a | TY1 | E06 | EIT02.1 |
| 2.1-SS077EE04-1540 |  | Complete QA/QC document | 3d | 2026-02-19 | 2026-02-21 | 2.1-SS077EE04-1330 | 396d |  |  | LABOUR [4.55 h] | EE | 1 | C03a | TY1 | E06 | EIT02.1 |
|  | 5 | **ELICS Panels** |  | 2026-01-22 | 2026-02-28 |  |  |  |  |  |  |  |  |  |  |  |
|  | 9 | **E-S77-41-3 - Electrical Integrated Control System** |  | 2026-01-22 | 2026-02-21 |  |  |  |  |  |  |  |  |  |  |  |
| 2.1-SS077EE04-1010 |  | Install Equipment | 10d | 2026-01-22 | 2026-02-02 | 2.1-SS077EE04-1000 SS | 366d | 0d |  | LABOUR [10 h] | EE | 1 | C03a | TY1 | E06 | EIT02.1 |
| 2.1-SS077EE04-1110 |  | Inspection and Testing, Per-Commissionning | 10d | 2026-02-03 | 2026-02-13 | 2.1-SS077EE04-1010 | 396d | 0d |  | LABOUR [5 h] | EE | 1 | C03a | TY1 | E06 | EIT02.1 |
| 2.1-SS077EE04-1360 |  | Clear punch | 4d | 2026-02-14 | 2026-02-18 | 2.1-SS077EE04-1110 | 396d | 0d |  | LABOUR [2 h] | EE | 1 | C03a | TY1 | E06 | EIT02.1 |
| 2.1-SS077EE04-1550 |  | Complete QA/QC document | 3d | 2026-02-19 | 2026-02-21 | 2.1-SS077EE04-1360 | 396d |  |  | LABOUR [2.55 h] | EE | 1 | C03a | TY1 | E06 | EIT02.1 |

| ID | WBS | Activity | Duration | Start | Finish | Predecessors | Total float | Free float | Resources | Disciplines | Main Activity | WBS | Types | EIT WBS | EIT PKG |
| --- | --- | --- | --- | --- | --- | --- | --- | --- | --- | --- | --- | --- | --- | --- | --- |
|  | 7 | **E-S77-41-4 - Extension of Electrical Integrated Control System E-S77-41** |  | 2026-01-22 | 2026-02-10 |  |  |  |  |  |  |  |  |  |  |
| 2.1-SS077EE04-1160 |  | Inspection and Testing, Per-Commissionning | 10d | 2026-01-22 | 2026-02-02 | 2.1-SS077EE04-1010 SS | 366d | 0d | LABOUR [10 h] | EE | 1 | C03a | TY1 | E06 | EIT02.1 |
| 2.1-SS077EE04-1410 |  | Clear punch | 4d | 2026-02-03 | 2026-02-06 | 2.1-SS077EE04-1160 | 406d | 0d | LABOUR [5 h] | EE | 1 | C03a | TY1 | E06 | EIT02.1 |
| 2.1-SS077EE04-1600 |  | Complete QA/QC document | 3d | 2026-02-07 | 2026-02-10 | 2.1-SS077EE04-1410 | 406d |  | LABOUR [4.55 h] | EE | 1 | C03a | TY1 | E06 | EIT02.1 |
|  | 15 | **E-S77-42-4 - Extension of Electrical Integrated Control System E-S77-42** |  | 2026-02-03 | 2026-02-28 |  |  |  |  |  |  |  |  |  |  |
| 2.1-SS077EE04-1200 |  | Inspection and Testing, Per-Commissionning | 15d | 2026-02-03 | 2026-02-19 | 2.1-SS077EE04-1160 | 366d | 0d | LABOUR [10 h] | EE | 1 | C03a | TY1 | E06 | EIT02.1 |
| 2.1-SS077EE04-1420 |  | Clear punch | 4d | 2026-02-20 | 2026-02-24 | 2.1-SS077EE04-1200 | 390d | 0d | LABOUR [5 h] | EE | 1 | C03a | TY1 | E06 | EIT02.1 |
| 2.1-SS077EE04-1610 |  | Complete QA/QC document | 4d | 2026-02-25 | 2026-02-28 | 2.1-SS077EE04-1420 | 390d | 0d | LABOUR [4.55 h] | EE | 1 | C03a | TY1 | E06 | EIT02.1 |
|  | 1 | **HV/LV Switchgear** |  | 2026-02-20 | 2026-03-11 |  |  |  |  |  |  |  |  |  |  |
|  | 1 | **S77B2 11kV Switchgear Panel** |  | 2026-02-20 | 2026-03-11 |  |  |  |  |  |  |  |  |  |  |
| 2.1-SS077EE04-1170 |  | Inspection and Testing, Per-Commissionning | 10d | 2026-02-20 | 2026-03-03 | 2.1-SS077EE04-1200 | 366d | 0d | LABOUR [10 h] | EE | 1 | C03a | TY1 | E06 | EIT02.1 |
| 2.1-SS077EE04-1430 |  | Clear punch | 4d | 2026-03-04 | 2026-03-07 | 2.1-SS077EE04-1170 | 381d | 0d | LABOUR [5 h] | EE | 1 | C03a | TY1 | E06 | EIT02.1 |
| 2.1-SS077EE04-1620 |  | Complete QA/QC document | 3d | 2026-03-09 | 2026-03-11 | 2.1-SS077EE04-1430 | 381d |  | LABOUR [4.55 h] | EE | 1 | C03a | TY1 | E06 | EIT02.1 |
|  | 7 | **S77D2 3.3kV Switchgear Panel** |  | 2026-02-20 | 2026-03-11 |  |  |  |  |  |  |  |  |  |  |
| 2.1-SS077EE04-1210 |  | Inspection and Testing, Per-Commissionning | 10d | 2026-02-20 | 2026-03-03 | 2.1-SS077EE04-1170 SS | 366d | 0d | LABOUR [10 h] | EE | 1 | C03a | TY1 | E06 | EIT02.1 |
| 2.1-SS077EE04-1440 |  | Clear punch | 4d | 2026-03-04 | 2026-03-07 | 2.1-SS077EE04-1210 | 381d | 0d | LABOUR [5 h] | EE | 1 | C03a | TY1 | E06 | EIT02.1 |
| 2.1-SS077EE04-1630 |  | Complete QA/QC document | 3d | 2026-03-09 | 2026-03-11 | 2.1-SS077EE04-1440 | 381d |  | LABOUR [4.55 h] | EE | 1 | C03a | TY1 | E06 | EIT02.1 |
|  | 11 | **S77E3 415V Switchgear Panel** |  | 2026-02-20 | 2026-03-11 |  |  |  |  |  |  |  |  |  |  |
| 2.1-SS077EE04-1220 |  | Inspection and Testing, Per-Commissionning | 10d | 2026-02-20 | 2026-03-03 | 2.1-SS077EE04-1210 SS | 366d | 0d | LABOUR [10 h] | EE | 1 | C03a | TY1 | E06 | EIT02.1 |
| 2.1-SS077EE04-1450 |  | Clear punch | 4d | 2026-03-04 | 2026-03-07 | 2.1-SS077EE04-1220 | 381d | 0d | LABOUR [5 h] | EE | 1 | C03a | TY1 | E06 | EIT02.1 |
| 2.1-SS077EE04-1640 |  | Complete QA/QC document | 3d | 2026-03-09 | 2026-03-11 | 2.1-SS077EE04-1450 | 381d |  | LABOUR [4.55 h] | EE | 1 | C03a | TY1 | E06 | EIT02.1 |
|  | 8 | **S77E4 415V Switchgear Panel** |  | 2026-02-20 | 2026-03-11 |  |  |  |  |  |  |  |  |  |  |
| 2.1-SS077EE04-1230 |  | Inspection and Testing, Per-Commissionning | 10d | 2026-02-20 | 2026-03-03 | 2.1-SS077EE04-1220 SS | 366d | 0d | LABOUR [10 h] | EE | 1 | C03a | TY1 | E06 | EIT02.1 |
| 2.1-SS077EE04-1460 |  | Clear punch | 4d | 2026-03-04 | 2026-03-07 | 2.1-SS077EE04-1230 | 381d | 0d | LABOUR [5 h] | EE | 1 | C03a | TY1 | E06 | EIT02.1 |
| 2.1-SS077EE04-1650 |  | Complete QA/QC document | 3d | 2026-03-09 | 2026-03-11 | 2.1-SS077EE04-1460 | 381d |  | LABOUR [4.55 h] | EE | 1 | C03a | TY1 | E06 | EIT02.1 |

| ID | WBS | Activity | Duration | Start | Finish | Predecessors | Total float | Free float | Resources | Disciplines | Main Activity | WBS | Types | EIT WBS | EIT PKG |
| --- | --- | --- | --- | --- | --- | --- | --- | --- | --- | --- | --- | --- | --- | --- | --- |
|  | 3 | **S77E7 415V Switchgear Panel** |  | 2026-02-20 | 2026-03-11 |  |  |  |  |  |  |  |  |  |  |
| 2.1-SS077EE04-1240 |  | Inspection and Testing, Per-Commissionning | 10d | 2026-02-20 | 2026-03-03 | 2.1-SS077EE04-1230 SS | 366d | 0d | LABOUR [10 h] | EE | 1 | C03a | TY1 | E06 | EIT02.1 |
| 2.1-SS077EE04-1470 |  | Clear punch | 4d | 2026-03-04 | 2026-03-07 | 2.1-SS077EE04-1240 | 381d | 0d | LABOUR [5 h] | EE | 1 | C03a | TY1 | E06 | EIT02.1 |
| 2.1-SS077EE04-1660 |  | Complete QA/QC document | 3d | 2026-03-09 | 2026-03-11 | 2.1-SS077EE04-1470 | 381d |  | LABOUR [4.55 h] | EE | 1 | C03a | TY1 | E06 | EIT02.1 |
|  | 4 | **S77E21 415V Switchgear Panel** |  | 2026-02-20 | 2026-03-11 |  |  |  |  |  |  |  |  |  |  |
| 2.1-SS077EE04-1250 |  | Inspection and Testing, Per-Commissionning | 10d | 2026-02-20 | 2026-03-03 | 2.1-SS077EE04-1240 SS | 366d | 0d | LABOUR [10 h] | EE | 1 | C03a | TY1 | E06 | EIT02.1 |
| 2.1-SS077EE04-1480 |  | Clear punch | 4d | 2026-03-04 | 2026-03-07 | 2.1-SS077EE04-1250 | 381d | 0d | LABOUR [5 h] | EE | 1 | C03a | TY1 | E06 | EIT02.1 |
| 2.1-SS077EE04-1670 |  | Complete QA/QC document | 3d | 2026-03-09 | 2026-03-11 | 2.1-SS077EE04-1480 | 381d |  | LABOUR [4.55 h] | EE | 1 | C03a | TY1 | E06 | EIT02.1 |
|  | 12 | **S77B1-A8 PM-14702D (3000 kW) - Remain full function test** |  | 2026-02-20 | 2026-03-11 |  |  |  |  |  |  |  |  |  |  |
| 2.1-SS077EE04-1260 |  | Inspection and Testing, Per-Commissionning | 10d | 2026-02-20 | 2026-03-03 | 2.1-SS077EE04-1250 SS | 366d | 0d | LABOUR [10 h] | EE | 1 | C03a | TY1 | E06 | EIT02.1 |
| 2.1-SS077EE04-1490 |  | Clear punch | 4d | 2026-03-04 | 2026-03-07 | 2.1-SS077EE04-1260 | 381d | 0d | LABOUR [5 h] | EE | 1 | C03a | TY1 | E06 | EIT02.1 |
| 2.1-SS077EE04-1680 |  | Complete QA/QC document | 3d | 2026-03-09 | 2026-03-11 | 2.1-SS077EE04-1490 | 381d |  | LABOUR [4.55 h] | EE | 1 | C03a | TY1 | E06 | EIT02.1 |
|  | 9 | **S77D1-B7 PM-10719B (715kW) - Remain full function test** |  | 2026-02-20 | 2026-03-11 |  |  |  |  |  |  |  |  |  |  |
| 2.1-SS077EE04-1180 |  | Inspection and Testing, Per-Commissionning | 10d | 2026-02-20 | 2026-03-03 | 2.1-SS077EE04-1260 SS | 366d | 0d | LABOUR [10 h] | EE | 1 | C03a | TY1 | E06 | EIT02.1 |
| 2.1-SS077EE04-1500 |  | Clear punch | 4d | 2026-03-04 | 2026-03-07 | 2.1-SS077EE04-1180 | 381d | 0d | LABOUR [5 h] | EE | 1 | C03a | TY1 | E06 | EIT02.1 |
| 2.1-SS077EE04-1690 |  | Complete QA/QC document | 3d | 2026-03-09 | 2026-03-11 | 2.1-SS077EE04-1500 | 381d |  | LABOUR [4.55 h] | EE | 1 | C03a | TY1 | E06 | EIT02.1 |
|  | 13 | **UPS and Charger System** |  | 2026-03-04 | 2026-03-28 |  |  |  |  |  |  |  |  |  |  |
|  | 15 | **S77J1 - 125VDC Distribution Board** |  | 2026-03-04 | 2026-03-23 |  |  |  |  |  |  |  |  |  |  |
| 2.1-SS077EE04-1060 |  | Inspection and Testing, Per-Commissionning | 10d | 2026-03-04 | 2026-03-14 | 2.1-SS077EE04-1180 | 366d | 0d | LABOUR [10 h] | EE | 1 | C03a | TY1 | E06 | EIT02.1 |
| 2.1-SS077EE04-1190 |  | Clear punch | 4d | 2026-03-16 | 2026-03-19 | 2.1-SS077EE04-1060 | 371d | 0d | LABOUR [5 h] | EE | 1 | C03a | TY1 | E06 | EIT02.1 |
| 2.1-SS077EE04-1290 |  | Complete QA/QC document | 3d | 2026-03-20 | 2026-03-23 | 2.1-SS077EE04-1190 | 371d |  | LABOUR [4.55 h] | EE | 1 | C03a | TY1 | E06 | EIT02.1 |
|  | 14 | **BATT-C77J1 - 125VDC Battery Charger - Battery Unit for C77J1** |  | 2026-03-04 | 2026-03-28 |  |  |  |  |  |  |  |  |  |  |
| 2.1-SS077EE04-1020 |  | Install Equipment | 10d | 2026-03-04 | 2026-03-14 | 2.1-SS077EE04-1060 SS | 366d | 0d | LABOUR [10 h] | EE | 1 | C03a | TY1 | E06 | EIT02.1 |
| 2.1-SS077EE04-1120 |  | Inspection and Testing, Per-Commissionning | 5d | 2026-03-16 | 2026-03-20 | 2.1-SS077EE04-1020 | 366d | 0d | LABOUR [5 h] | EE | 1 | C03a | TY1 | E06 | EIT02.1 |
| 2.1-SS077EE04-1370 |  | Clear punch | 4d | 2026-03-21 | 2026-03-25 | 2.1-SS077EE04-1120 | 366d | 0d | LABOUR [2 h] | EE | 1 | C03a | TY1 | E06 | EIT02.1 |
| 2.1-SS077EE04-1560 |  | Complete QA/QC document | 3d | 2026-03-26 | 2026-03-28 | 2.1-SS077EE04-1370 | 366d |  | LABOUR [2.55 h] | EE | 1 | C03a | TY1 | E06 | EIT02.1 |

| ID | WBS | Activity | Duration | Start | Finish | Predecessors | Total float | Free float | Resources | Disciplines | Main Activity | WBS | Types | EIT WBS | EIT PKG |
| --- | --- | --- | --- | --- | --- | --- | --- | --- | --- | --- | --- | --- | --- | --- | --- |
|  | 16 | **BATT-C77J2 - 125VDC Battery Charger - Battery Unit for C77J2** |  | 2026-03-04 | 2026-03-28 |  |  |  |  |  |  |  |  |  |  |
| 2.1-SS077EE04-1030 |  | Install Equipment | 10d | 2026-03-04 | 2026-03-14 | 2.1-SS077EE04-1020 SS | 366d | 0d | LABOUR [10 h] | EE | 1 | C03a | TY1 | E06 | EIT02.1 |
| 2.1-SS077EE04-1130 |  | Inspection and Testing, Per-Commissionning | 5d | 2026-03-16 | 2026-03-20 | 2.1-SS077EE04-1030 | 366d | 0d | LABOUR [5 h] | EE | 1 | C03a | TY1 | E06 | EIT02.1 |
| 2.1-SS077EE04-1380 |  | Clear punch | 4d | 2026-03-21 | 2026-03-25 | 2.1-SS077EE04-1130 | 366d | 0d | LABOUR [2 h] | EE | 1 | C03a | TY1 | E06 | EIT02.1 |
| 2.1-SS077EE04-1570 |  | Complete QA/QC document | 3d | 2026-03-26 | 2026-03-28 | 2.1-SS077EE04-1380 | 366d |  | LABOUR [2.55 h] | EE | 1 | C03a | TY1 | E06 | EIT02.1 |
|  | 6 | **CB-BATT-C77J1 - 125VDC Battery Charger - Battery CB for C77J1** |  | 2026-03-04 | 2026-03-28 |  |  |  |  |  |  |  |  |  |  |
| 2.1-SS077EE04-1040 |  | Install Equipment | 10d | 2026-03-04 | 2026-03-14 | 2.1-SS077EE04-1030 SS | 366d | 0d | LABOUR [10 h] | EE | 1 | C03a | TY1 | E06 | EIT02.1 |
| 2.1-SS077EE04-1140 |  | Inspection and Testing, Per-Commissionning | 5d | 2026-03-16 | 2026-03-20 | 2.1-SS077EE04-1040 | 366d | 0d | LABOUR [5 h] | EE | 1 | C03a | TY1 | E06 | EIT02.1 |
| 2.1-SS077EE04-1390 |  | Clear punch | 4d | 2026-03-21 | 2026-03-25 | 2.1-SS077EE04-1140 | 366d | 0d | LABOUR [2 h] | EE | 1 | C03a | TY1 | E06 | EIT02.1 |
| 2.1-SS077EE04-1580 |  | Complete QA/QC document | 3d | 2026-03-26 | 2026-03-28 | 2.1-SS077EE04-1390 | 366d |  | LABOUR [2.55 h] | EE | 1 | C03a | TY1 | E06 | EIT02.1 |
|  | 17 | **CB-BATT-C77J2 - 125VDC Battery Charger - Battery CB for C77J2** |  | 2026-03-04 | 2026-03-28 |  |  |  |  |  |  |  |  |  |  |
| 2.1-SS077EE04-1050 |  | Install Equipment | 10d | 2026-03-04 | 2026-03-14 | 2.1-SS077EE04-1040 SS | 366d | 0d | LABOUR [10 h] | EE | 1 | C03a | TY1 | E06 | EIT02.1 |
| 2.1-SS077EE04-1150 |  | Inspection and Testing, Per-Commissionning | 5d | 2026-03-16 | 2026-03-20 | 2.1-SS077EE04-1050 | 366d | 0d | LABOUR [5 h] | EE | 1 | C03a | TY1 | E06 | EIT02.1 |
| 2.1-SS077EE04-1400 |  | Clear punch | 4d | 2026-03-21 | 2026-03-25 | 2.1-SS077EE04-1150 | 366d | 0d | LABOUR [2 h] | EE | 1 | C03a | TY1 | E06 | EIT02.1 |
| 2.1-SS077EE04-1590 |  | Complete QA/QC document | 3d | 2026-03-26 | 2026-03-28 | 2.1-SS077EE04-1400 | 366d |  | LABOUR [2.55 h] | EE | 1 | C03a | TY1 | E06 | EIT02.1 |
|  | 1 | **C77J1 - 125VDC Battery Charger** |  | 2026-03-04 | 2026-03-23 |  |  |  |  |  |  |  |  |  |  |
| 2.1-SS077EE04-1070 |  | Inspection and Testing, Per-Commissionning | 10d | 2026-03-04 | 2026-03-14 | 2.1-SS077EE04-1050 SS | 369d | 0d | LABOUR [10 h] | EE | 1 | C03a | TY1 | E06 | EIT02.1 |
| 2.1-SS077EE04-1300 |  | Clear punch | 4d | 2026-03-16 | 2026-03-19 | 2.1-SS077EE04-1070 | 371d | 0d | LABOUR [5 h] | EE | 1 | C03a | TY1 | E06 | EIT02.1 |
| 2.1-SS077EE04-1340 |  | Complete QA/QC document | 3d | 2026-03-20 | 2026-03-23 | 2.1-SS077EE04-1300 | 371d |  | LABOUR [4.55 h] | EE | 1 | C03a | TY1 | E06 | EIT02.1 |
|  | 2 | **C77J2 - 125VDC Battery Charger** |  | 2026-03-04 | 2026-03-23 |  |  |  |  |  |  |  |  |  |  |
| 2.1-SS077EE04-1080 |  | Inspection and Testing, Per-Commissionning | 10d | 2026-03-04 | 2026-03-14 | 2.1-SS077EE04-1070 SS | 369d | 0d | LABOUR [10 h] | EE | 1 | C03a | TY1 | E06 | EIT02.1 |
| 2.1-SS077EE04-1310 |  | Clear punch | 4d | 2026-03-16 | 2026-03-19 | 2.1-SS077EE04-1080 | 371d | 0d | LABOUR [5 h] | EE | 1 | C03a | TY1 | E06 | EIT02.1 |
| 2.1-SS077EE04-1350 |  | Complete QA/QC document | 3d | 2026-03-20 | 2026-03-23 | 2.1-SS077EE04-1310 | 371d |  | LABOUR [4.55 h] | EE | 1 | C03a | TY1 | E06 | EIT02.1 |
|  | 16 | **Power Transformer** |  | 2026-03-04 | 2026-03-25 |  |  |  |  |  |  |  |  |  |  |
|  | 17 | **TR77D2L - Transformer 11/3.45kV** |  | 2026-03-04 | 2026-03-23 |  |  |  |  |  |  |  |  |  |  |
| 2.1-SS077EE04-1270 |  | Inspection and Testing, Per-Commissionning | 10d | 2026-03-04 | 2026-03-14 | 2.1-SS077EE04-1080 SS | 369d | 0d | LABOUR [10 h] | EE | 1 | C03a | TY1 | E06 | EIT02.1 |
| 2.1-SS077EE04-1510 |  | Clear punch | 4d | 2026-03-16 | 2026-03-19 | 2.1-SS077EE04-1270 | 371d | 0d | LABOUR [5 h] | EE | 1 | C03a | TY1 | E06 | EIT02.1 |
| 2.1-SS077EE04-1700 |  | Complete QA/QC document | 3d | 2026-03-20 | 2026-03-23 | 2.1-SS077EE04-1510 | 371d |  | LABOUR [4.55 h] | EE | 1 | C03a | TY1 | E06 | EIT02.1 |

| ID | WBS | Activity | Type | Duration | Start | Finish | Predecessors | Total float | Free float | Constraint | Resources | Disciplines | Main Activity | WBS | Types | EIT WBS | EIT PKG |
| --- | --- | --- | --- | --- | --- | --- | --- | --- | --- | --- | --- | --- | --- | --- | --- | --- | --- |
|  | 6 | **TR77D2R - Transformer 11/3.45kV** |  |  | 2026-03-04 | 2026-03-25 |  |  |  |  |  |  |  |  |  |  |  |
| 2.1-SS077EE04-1280 |  | Inspection and Testing, Per-Commissionning |  | 10d | 2026-03-04 | 2026-03-14 | 2.1-SS077EE04-1270 SS | 369d | 0d |  | LABOUR [10 h] | EE | 1 | C03a | TY1 | E06 | EIT02.1 |
| 2.1-SS077EE04-1520 |  | Clear punch |  | 4d | 2026-03-16 | 2026-03-19 | 2.1-SS077EE04-1280 | 369d | 0d |  | LABOUR [5 h] | EE | 1 | C03a | TY1 | E06 | EIT02.1 |
| 2.1-SS077EE04-1710 |  | Complete QA/QC document |  | 5d | 2026-03-20 | 2026-03-25 | 2.1-SS077EE04-1520 | 369d |  |  | LABOUR [75 h] | EE | 1 | C03a | TY1 | E06 | EIT02.1 |
|  | 1 | **EIT 2.2 : Schedule Level 4 : Clean Fuel Project (CFP)** |  |  | 2026-04-01 | 2027-05-29 |  |  |  |  |  |  |  |  |  |  |  |
|  | 1 | **EIT-2.2 Project Milestones** |  |  | 2027-02-27 | 2027-05-29 |  |  |  |  |  |  |  |  |  |  |  |
| MI2010 |  | EIT2.2 : WBS C03a : HCU-3 (Hydrocracking Unit) | milestone | 0d | 2027-02-27 | 2027-02-27 | 2.2-HCUIN09-1550 FF | 78d |  |  |  |  |  |  |  |  |  |
| MI2020 |  | EIT2.2 : WBS C03b : RHCU (Residue Hydrocracking Unit) | milestone | 0d | 2027-05-29 | 2027-05-29 | 2.2-RHCUIN00-1140 FF | 0d |  |  |  |  |  |  |  |  |  |
| MI2030 |  | EIT2.2 : WBS C03c : SDA (Solvent De-Asphalting Unit) | milestone | 0d | 2027-05-29 | 2027-05-29 | 2.2-SDAIN05-2040 FF | 0d |  |  |  |  |  |  |  |  |  |
|  | 4 | **EIT-2.2 Construction Work** |  |  | 2026-04-01 | 2027-05-29 |  |  |  |  |  |  |  |  |  |  |  |
|  | EIT-2.211 | **WBS : SDA (Solvent De-Asphalting Unit)** |  |  | 2026-04-01 | 2027-05-29 |  |  |  |  |  |  |  |  |  |  |  |
|  | 1 | **Electrical** |  |  | 2026-04-01 | 2027-04-14 |  |  |  |  |  |  |  |  |  |  |  |
|  | 6 | **Cable Trench** |  |  | 2026-04-01 | 2026-08-11 |  |  |  |  |  |  |  |  |  |  |  |
|  | 3 | **Cable trench Excavation buried** |  |  | 2026-04-01 | 2026-08-11 |  |  |  |  |  |  |  |  |  |  |  |
|  | 3 | **C03-ETD-594/562/560/559/615/464/467/567/595/568** |  |  | 2026-04-01 | 2026-05-05 |  |  |  |  |  |  |  |  |  |  |  |
| 2.2-SDAEE09-1000 |  | Cable trench Excavation |  | 25d | 2026-04-01 | 2026-04-29 |  | 73d | 0d | start on or after 2026-04-01 | LABOUR [900 h] |  |  |  |  | C03c | EIT02.2 |
| 2.2-SDAEE09-1010 |  | Sand Filling Compaction |  | 5d | 2026-04-30 | 2026-05-05 | 2.2-SDAEE09-1000 | 319d | 20d |  | LABOUR [329 h] |  |  |  |  | C03c | EIT02.2 |
|  | 1 | **C03-ETD-598/468/599//442/597/406/469/578/472/455/579/581/454** |  |  | 2026-04-30 | 2026-06-03 |  |  |  |  |  |  |  |  |  |  |  |
| 2.2-SDAEE09-1030 |  | Cable trench Excavation |  | 25d | 2026-04-30 | 2026-05-28 | 2.2-SDAEE09-1000 | 73d | 0d |  | LABOUR [900 h] |  |  |  |  | C03c | EIT02.2 |
| 2.2-SDAEE09-1040 |  | Sand Filling Compaction |  | 5d | 2026-05-29 | 2026-06-03 | 2.2-SDAEE09-1030, 2.2-SDAEE09-1010 | 299d | 25d |  | LABOUR [329 h] |  |  |  |  | C03c | EIT02.2 |
|  | 2 | **C03-ETD-413/412/414/418/419/605/474/328/473/577/435/435/417/416/574/575/576/470** |  |  | 2026-05-29 | 2026-07-08 |  |  |  |  |  |  |  |  |  |  |  |
| 2.2-SDAEE09-1060 |  | Cable trench Excavation |  | 30d | 2026-05-29 | 2026-07-02 | 2.2-SDAEE09-1030 | 73d | 0d |  | LABOUR [900 h] |  |  |  |  | C03c | EIT02.2 |
| 2.2-SDAEE09-1070 |  | Sand Filling Compaction |  | 5d | 2026-07-03 | 2026-07-08 | 2.2-SDAEE09-1060, 2.2-SDAEE09-1040 | 274d | 24d |  | LABOUR [329 h] |  |  |  |  | C03c | EIT02.2 |
|  | 5 | **C03-ETD-610/415/314/420/421/614** |  |  | 2026-07-03 | 2026-08-11 |  |  |  |  |  |  |  |  |  |  |  |
| 2.2-SDAEE09-1090 |  | Cable trench Excavation |  | 29d | 2026-07-03 | 2026-08-05 | 2.2-SDAEE09-1060 | 73d | 0d |  | LABOUR [900 h] |  |  |  |  | C03c | EIT02.2 |
| 2.2-SDAEE09-1100 |  | Sand Filling Compaction |  | 5d | 2026-08-06 | 2026-08-11 | 2.2-SDAEE09-1090, 2.2-SDAEE09-1070 | 250d |  |  | LABOUR [329 h] |  |  |  |  | C03c | EIT02.2 |

| ID | WBS | Activity | Duration | Start | Finish | Predecessors | Total float | Free float | Resources | EIT WBS | EIT PKG |
| --- | --- | --- | --- | --- | --- | --- | --- | --- | --- | --- | --- |
|  | 3 | **Electrical Cable laying** |  | 2026-04-30 | 2026-10-31 |  |  |  |  |  |  |
|  | 4 | **Cable Laying Direct buried** |  | 2026-04-30 | 2026-10-31 |  |  |  |  |  |  |
|  | 3 | **C03-ETD-594/562/560/559/615/464/467/567/595/568** |  | 2026-04-30 | 2026-07-25 |  |  |  |  |  |  |
| 2.2-SDAEE01-2000 |  | Sand Filling First Layer | 5d | 2026-04-30 | 2026-05-05 | 2.2-SDAEE09-1000 | 260d | 0d | LABOUR [200 h] | C03c | EIT02.2 |
| 2.2-SDAEE01-2010 |  | Cable Laying | 25d | 2026-05-06 | 2026-06-03 | 2.2-SDAEE01-2000 | 260d | 0d | LABOUR [2000 h] | C03c | EIT02.2 |
| 2.2-SDAEE01-2020 |  | Megger & Continuity test | 5d | 2026-06-04 | 2026-06-09 | 2.2-SDAEE01-2010 | 264d | 0d | LABOUR [500 h] | C03c | EIT02.2 |
| 2.2-SDAEE01-2030 |  | Punch Clear | 10d | 2026-06-10 | 2026-06-20 | 2.2-SDAEE01-2020 | 264d | 0d | LABOUR [200 h] |  |  |
| 2.2-SDAEE01-2040 |  | Sand Filling, compaction | 5d | 2026-06-22 | 2026-06-26 | 2.2-SDAEE01-2030 | 264d | 0d | LABOUR [100 h] | C03c | EIT02.2 |
| 2.2-SDAEE01-2050 |  | Complete QA/QC document | 5d | 2026-06-27 | 2026-07-02 | 2.2-SDAEE01-2040 | 264d | 0d | LABOUR [50 h] | C03c | EIT02.2 |
| 2.2-SDAEE01-2060 |  | Back Filling | 20d | 2026-07-03 | 2026-07-25 | 2.2-SDAEE01-2050 | 264d | 25d | LABOUR [897.38 h] |  |  |
|  | 1 | **C03-ETD-598/468/599//442/597/406/469/578/472/455/579/581/454** |  | 2026-05-29 | 2026-08-24 |  |  |  |  |  |  |
| 2.2-SDAEE01-2070 |  | Sand Filling First Layer | 5d | 2026-05-29 | 2026-06-03 | 2.2-SDAEE09-1030 | 235d | 0d | LABOUR [200 h] | C03c | EIT02.2 |
| 2.2-SDAEE01-2080 |  | Cable Laying | 25d | 2026-06-04 | 2026-07-02 | 2.2-SDAEE01-2070 | 235d | 0d | LABOUR [2000 h] | C03c | EIT02.2 |
| 2.2-SDAEE01-2090 |  | Megger & Continuity test | 5d | 2026-07-03 | 2026-07-08 | 2.2-SDAEE01-2080 | 239d | 0d | LABOUR [500 h] | C03c | EIT02.2 |
| 2.2-SDAEE01-2100 |  | Punch Clear | 10d | 2026-07-09 | 2026-07-20 | 2.2-SDAEE01-2090 | 239d | 0d | LABOUR [200 h] |  |  |
| 2.2-SDAEE01-2110 |  | Sand Filling, compaction | 5d | 2026-07-21 | 2026-07-25 | 2.2-SDAEE01-2100 | 239d | 0d | LABOUR [100 h] | C03c | EIT02.2 |
| 2.2-SDAEE01-2120 |  | Complete QA/QC document | 5d | 2026-07-27 | 2026-07-31 | 2.2-SDAEE01-2110 | 239d | 0d | LABOUR [50 h] | C03c | EIT02.2 |
| 2.2-SDAEE01-2130 |  | Back Filling | 20d | 2026-08-01 | 2026-08-24 | 2.2-SDAEE01-2120, 2.2-SDAEE01-2060 FF | 239d | 30d | LABOUR [897.38 h] |  |  |
|  | 2 | **C03-ETD-413/412/414/418/419/605/474/328/473/577/435/435/417/416/574/575/576/470** |  | 2026-07-03 | 2026-09-28 |  |  |  |  |  |  |
| 2.2-SDAEE01-2140 |  | Sand Filling First Layer | 5d | 2026-07-03 | 2026-07-08 | 2.2-SDAEE09-1060 | 185d | 0d | LABOUR [200 h] | C03c | EIT02.2 |
| 2.2-SDAEE01-2150 |  | Cable Laying | 25d | 2026-07-09 | 2026-08-06 | 2.2-SDAEE01-2140 | 185d | 0d | LABOUR [2000 h] | C03c | EIT02.2 |
| 2.2-SDAEE01-2160 |  | Megger & Continuity test | 5d | 2026-08-07 | 2026-08-12 | 2.2-SDAEE01-2150 | 209d | 0d | LABOUR [500 h] | C03c | EIT02.2 |
| 2.2-SDAEE01-2170 |  | Punch Clear | 10d | 2026-08-13 | 2026-08-24 | 2.2-SDAEE01-2160 | 209d | 0d | LABOUR [200 h] |  |  |
| 2.2-SDAEE01-2180 |  | Sand Filling, compaction | 5d | 2026-08-25 | 2026-08-29 | 2.2-SDAEE01-2170 | 209d | 0d | LABOUR [100 h] | C03c | EIT02.2 |
| 2.2-SDAEE01-2190 |  | Complete QA/QC document | 5d | 2026-08-31 | 2026-09-04 | 2.2-SDAEE01-2180 | 209d | 0d | LABOUR [50 h] | C03c | EIT02.2 |
| 2.2-SDAEE01-2200 |  | Back Filling | 20d | 2026-09-05 | 2026-09-28 | 2.2-SDAEE01-2190, 2.2-SDAEE01-2130 FF | 209d |  | LABOUR [897.38 h] |  |  |

| ID | WBS | Activity | Duration | Start | Finish | Predecessors | Total float | Free float | Resources | EIT WBS | EIT PKG |
| --- | --- | --- | --- | --- | --- | --- | --- | --- | --- | --- | --- |
|  | 5 | **C03-ETD-610/415/314/420/421/614** |  | 2026-08-06 | 2026-10-31 |  |  |  |  |  |  |
| 2.2-SDAEE01-2210 |  | Sand Filling First Layer | 5d | 2026-08-06 | 2026-08-11 | 2.2-SDAEE09-1090 | 73d | 0d | LABOUR [200 h] | C03c | EIT02.2 |
| 2.2-SDAEE01-2220 |  | Cable Laying | 25d | 2026-08-12 | 2026-09-09 | 2.2-SDAEE01-2210 | 73d | 0d | LABOUR [2000 h] | C03c | EIT02.2 |
| 2.2-SDAEE01-2230 |  | Megger & Continuity test | 5d | 2026-09-10 | 2026-09-15 | 2.2-SDAEE01-2220 | 180d | 0d | LABOUR [500 h] | C03c | EIT02.2 |
| 2.2-SDAEE01-2240 |  | Punch Clear | 10d | 2026-09-16 | 2026-09-26 | 2.2-SDAEE01-2230 | 180d | 0d | LABOUR [200 h] |  |  |
| 2.2-SDAEE01-2250 |  | Sand Filling, compaction | 5d | 2026-09-28 | 2026-10-02 | 2.2-SDAEE01-2240 | 180d | 0d | LABOUR [100 h] | C03c | EIT02.2 |
| 2.2-SDAEE01-2260 |  | Complete QA/QC document | 5d | 2026-10-03 | 2026-10-08 | 2.2-SDAEE01-2250 | 180d | 0d | LABOUR [50 h] | C03c | EIT02.2 |
| 2.2-SDAEE01-2270 |  | Back Filling | 20d | 2026-10-09 | 2026-10-31 | 2.2-SDAEE01-2260 | 180d |  | LABOUR [897.38 h] |  |  |
|  | 5 | **Cable Laying Concrete Trench** |  | 2026-05-06 | 2026-10-30 |  |  |  |  |  |  |
|  | 30 | **C03-ETC-357/354/330/356/319/345/301/302/331/354** |  | 2026-05-06 | 2026-07-30 |  |  |  |  |  |  |
| 2.2-SDAEE01-2280 |  | Cable Laying | 25d | 2026-05-06 | 2026-06-03 | 2.2-SDAEE01-2010 SS | 260d | 0d | LABOUR [2000 h] | C03c | EIT02.2 |
| 2.2-SDAEE01-2290 |  | Megger & Continuity test | 5d | 2026-06-04 | 2026-06-09 | 2.2-SDAEE01-2280 | 260d | 0d | LABOUR [500 h] | C03c | EIT02.2 |
| 2.2-SDAEE01-2300 |  | punch Clear | 5d | 2026-06-10 | 2026-06-15 | 2.2-SDAEE01-2290 | 260d | 0d | LABOUR [200 h] | C03c | EIT02.2 |
| 2.2-SDAEE01-2310 |  | Sand Filling Compaction | 4d | 2026-06-16 | 2026-06-19 | 2.2-SDAEE01-2300 | 260d | 0d | LABOUR [200 h] |  |  |
| 2.2-SDAEE01-2320 |  | Complete QA/QC document | 10d | 2026-06-20 | 2026-07-01 | 2.2-SDAEE01-2310 | 260d | 0d | LABOUR [100 h] | C03c | EIT02.2 |
| 2.2-SDAEE01-2330 |  | Back Filling | 25d | 2026-07-02 | 2026-07-30 | 2.2-SDAEE01-2320 | 260d |  | LABOUR [947.38 h] | C03c | EIT02.2 |
|  | 6 | **C03-ETC-358/351/324/351/338/321/337/316/320/336/303/328** |  | 2026-06-04 | 2026-08-28 |  |  |  |  |  |  |
| 2.2-SDAEE01-2340 |  | Cable Laying | 25d | 2026-06-04 | 2026-07-02 | 2.2-SDAEE01-2080 SS | 235d | 0d | LABOUR [2000 h] | C03c | EIT02.2 |
| 2.2-SDAEE01-2350 |  | Megger & Continuity test | 5d | 2026-07-03 | 2026-07-08 | 2.2-SDAEE01-2340 | 235d | 0d | LABOUR [500 h] | C03c | EIT02.2 |
| 2.2-SDAEE01-2360 |  | punch Clear | 5d | 2026-07-09 | 2026-07-14 | 2.2-SDAEE01-2350 | 235d | 0d | LABOUR [200 h] | C03c | EIT02.2 |
| 2.2-SDAEE01-2370 |  | Sand Filling Compaction | 4d | 2026-07-15 | 2026-07-18 | 2.2-SDAEE01-2360 | 235d | 0d | LABOUR [200 h] |  |  |
| 2.2-SDAEE01-2380 |  | Complete QA/QC document | 10d | 2026-07-20 | 2026-07-30 | 2.2-SDAEE01-2370 | 235d | 0d | LABOUR [100 h] | C03c | EIT02.2 |
| 2.2-SDAEE01-2390 |  | Back Filling | 25d | 2026-07-31 | 2026-08-28 | 2.2-SDAEE01-2380 | 235d |  | LABOUR [947.38 h] | C03c | EIT02.2 |
|  | 28 | **C03-ETC-355/328/305/339/340/341/352/343/344** |  | 2026-08-07 | 2026-10-26 |  |  |  |  |  |  |
| 2.2-SDAEE01-2400 |  | Cable Laying | 25d | 2026-08-07 | 2026-09-04 | 2.2-SDAEE01-2150 | 185d | 0d | LABOUR [2000 h] | C03c | EIT02.2 |
| 2.2-SDAEE01-2410 |  | Megger & Continuity test | 5d | 2026-09-05 | 2026-09-10 | 2.2-SDAEE01-2400 | 185d | 0d | LABOUR [500 h] | C03c | EIT02.2 |
| 2.2-SDAEE01-2420 |  | punch Clear | 5d | 2026-09-11 | 2026-09-16 | 2.2-SDAEE01-2410 | 185d | 0d | LABOUR [200 h] | C03c | EIT02.2 |
| 2.2-SDAEE01-2430 |  | Sand Filling Compaction | 4d | 2026-09-17 | 2026-09-21 | 2.2-SDAEE01-2420 | 185d | 0d | LABOUR [200 h] |  |  |
| 2.2-SDAEE01-2440 |  | Complete QA/QC document | 10d | 2026-09-22 | 2026-10-02 | 2.2-SDAEE01-2430 | 185d | 0d | LABOUR [100 h] | C03c | EIT02.2 |
| 2.2-SDAEE01-2450 |  | Back Filling | 20d | 2026-10-03 | 2026-10-26 | 2.2-SDAEE01-2440 | 185d |  | LABOUR [947.38 h] | C03c | EIT02.2 |

| ID | WBS | Activity | Duration | Start | Finish | Predecessors | Total float | Free float | Constraint | Resources | EIT WBS | EIT PKG | Disciplines | Main Activity | WBS | Types |
| --- | --- | --- | --- | --- | --- | --- | --- | --- | --- | --- | --- | --- | --- | --- | --- | --- |
|  | 29 | **C03-ETC-310/418/350/306** |  | 2026-08-07 | 2026-10-26 |  |  |  |  |  |  |  |  |  |  |  |
| 2.2-SDAEE01-2460 |  | Cable Laying | 25d | 2026-08-07 | 2026-09-04 | 2.2-SDAEE01-2150 | 185d | 0d |  | LABOUR [2000 h] | C03c | EIT02.2 |  |  |  |  |
| 2.2-SDAEE01-2470 |  | Megger & Continuity test | 5d | 2026-09-05 | 2026-09-10 | 2.2-SDAEE01-2460 | 185d | 0d |  | LABOUR [500 h] | C03c | EIT02.2 |  |  |  |  |
| 2.2-SDAEE01-2480 |  | punch Clear | 5d | 2026-09-11 | 2026-09-16 | 2.2-SDAEE01-2470 | 185d | 0d |  | LABOUR [200 h] | C03c | EIT02.2 |  |  |  |  |
| 2.2-SDAEE01-2490 |  | Sand Filling Compaction | 4d | 2026-09-17 | 2026-09-21 | 2.2-SDAEE01-2480 | 185d | 0d |  | LABOUR [200 h] |  |  |  |  |  |  |
| 2.2-SDAEE01-2500 |  | Complete QA/QC document | 10d | 2026-09-22 | 2026-10-02 | 2.2-SDAEE01-2490 | 185d | 0d |  | LABOUR [100 h] | C03c | EIT02.2 |  |  |  |  |
| 2.2-SDAEE01-2510 |  | Back Filling | 20d | 2026-10-03 | 2026-10-26 | 2.2-SDAEE01-2500 | 185d |  |  | LABOUR [947.38 h] | C03c | EIT02.2 |  |  |  |  |
|  | 32 | **C03-ETC-311/347/346/311/313/309/349** |  | 2026-08-12 | 2026-10-30 |  |  |  |  |  |  |  |  |  |  |  |
| 2.2-SDAEE01-2520 |  | Cable Laying | 25d | 2026-08-12 | 2026-09-09 | 2.2-SDAEE01-2220 SS | 73d | 0d |  | LABOUR [2000 h] | C03c | EIT02.2 |  |  |  |  |
| 2.2-SDAEE01-2530 |  | Megger & Continuity test | 5d | 2026-09-10 | 2026-09-15 | 2.2-SDAEE01-2520 | 73d | 0d |  | LABOUR [500 h] | C03c | EIT02.2 |  |  |  |  |
| 2.2-SDAEE01-2540 |  | punch Clear | 5d | 2026-09-16 | 2026-09-21 | 2.2-SDAEE01-2530 | 73d | 0d |  | LABOUR [200 h] | C03c | EIT02.2 |  |  |  |  |
| 2.2-SDAEE01-2550 |  | Sand Filling Compaction | 4d | 2026-09-22 | 2026-09-25 | 2.2-SDAEE01-2540 | 73d | 0d |  | LABOUR [200 h] |  |  |  |  |  |  |
| 2.2-SDAEE01-2560 |  | Complete QA/QC document | 10d | 2026-09-26 | 2026-10-07 | 2.2-SDAEE01-2550 | 73d | 0d |  | LABOUR [100 h] | C03c | EIT02.2 |  |  |  |  |
| 2.2-SDAEE01-2570 |  | Back Filling | 20d | 2026-10-08 | 2026-10-30 | 2.2-SDAEE01-2560 | 73d | 0d |  | LABOUR [947.38 h] | C03c | EIT02.2 |  |  |  |  |
|  | 1 | **Electrical Cable Tray/Ladder Installation** |  | 2026-04-01 | 2026-10-27 |  |  |  |  |  |  |  |  |  |  |  |
| 2.2-SDAEE03-1550 |  | Install support / bracket | 120d | 2026-04-01 | 2026-08-18 |  | 0d |  | start on or after 2026-04-01 | LABOUR [3000 h] | C03c | EIT02.2 | EE | 1 | C03a | TY1 |
| 2.2-SDAEE03-1560 |  | Install Ladder / Tray | 120d | 2026-04-01 | 2026-08-18 | 2.2-SDAEE03-1550 SS | 39d | 0d |  | LABOUR [8000 h] | C03c | EIT02.2 | EE | 1 | C03a | TY1 |
| 2.2-SDAEE03-1570 |  | Install Conduits | 120d | 2026-04-01 | 2026-08-18 | 2.2-SDAEE03-1550 SS | 69d | 0d |  | LABOUR [2000 h] | C03c | EIT02.2 | EE | 1 | C03a | TY1 |
| 2.2-SDAEE03-1580 |  | Clear Punch | 30d | 2026-08-19 | 2026-09-22 | 2.2-SDAEE03-1560, 2.2-SDAEE03-1570 | 69d | 0d |  | LABOUR [200 h] | C03c | EIT02.2 | EE | 1 | C03a | TY1 |
| 2.2-SDAEE03-1590 |  | Complete QA/QC document | 30d | 2026-09-23 | 2026-10-27 | 2.2-SDAEE03-1580 | 69d | 30d |  | LABOUR [3 h] | C03c | EIT02.2 | EE | 1 | C03a | TY1 |
|  | 12 | **AG Cable Pull LV Cable** |  | 2026-08-19 | 2026-12-30 |  |  |  |  |  |  |  |  |  |  |  |
| 2.2-SDAEE01-1420 |  | Pull Cable | 90d | 2026-08-19 | 2026-12-01 | 2.2-SDAEE03-1560, 2.2-SDAEE03-1590 FF | 39d | 0d |  | LABOUR [5000 h] |  |  |  |  |  |  |
| 2.2-SDAEE01-1425 |  | Megger & Continuity test | 10d | 2026-12-02 | 2026-12-12 | 2.2-SDAEE01-1420 | 129d | 0d |  | LABOUR [500 h] |  |  |  |  |  |  |
| 2.2-SDAEE01-1430 |  | Complete QA/QC document | 15d | 2026-12-14 | 2026-12-30 | 2.2-SDAEE01-1425 | 129d |  |  | LABOUR [876.56 h] |  |  |  |  |  |  |

| ID | WBS | Activity | Duration | Start | Finish | Predecessors | Total float | Free float | Resources |
| --- | --- | --- | --- | --- | --- | --- | --- | --- | --- |
|  | 11 | **AG Cable Pull Control Cable** |  | 2026-08-19 | 2026-12-30 |  |  |  |  |
| 2.2-SDAEE01-1450 |  | Pull Cable | 90d | 2026-08-19 | 2026-12-01 | 2.2-SDAEE01-1420 SS | 39d | 0d | LABOUR [5000 h] |
| 2.2-SDAEE01-1455 |  | Megger & Continuity test | 10d | 2026-12-02 | 2026-12-12 | 2.2-SDAEE01-1450 | 129d | 0d | LABOUR [500 h] |
| 2.2-SDAEE01-1460 |  | Complete QA/QC document | 15d | 2026-12-14 | 2026-12-30 | 2.2-SDAEE01-1455 | 129d |  | LABOUR [876.56 h] |
|  | 10 | **AG Lighting Cable** |  | 2026-08-19 | 2027-02-15 |  |  |  |  |
| 2.2-SDAEE01-1480 |  | Pull Cable | 120d | 2026-08-19 | 2027-01-05 | 2.2-SDAEE01-1450 SS | 39d | 0d | LABOUR [5000 h] |
| 2.2-SDAEE01-1485 |  | Megger & Continuity test | 15d | 2027-01-06 | 2027-01-22 | 2.2-SDAEE01-1480 | 89d | 0d | LABOUR [500 h] |
| 2.2-SDAEE01-1490 |  | Complete QA/QC document | 20d | 2027-01-23 | 2027-02-15 | 2.2-SDAEE01-1485 | 89d |  | LABOUR [876.56 h] |
|  | 4 | **Electrical Cable Termination / Glanding** |  | 2026-10-31 | 2027-04-14 |  |  |  |  |
|  | 1 | **Termination MV Cable** |  | 2026-10-31 | 2027-01-02 |  |  |  |  |
| 2.2-SDAEE02-1420 |  | Cable Termination/Glanding | 40d | 2026-10-31 | 2026-12-16 | 2.2-SDAEE01-2570 | 73d | 0d | LABOUR [2000 h] |
| 2.2-SDAEE02-1430 |  | Clear punch | 5d | 2026-12-17 | 2026-12-22 | 2.2-SDAEE02-1420 | 73d | 0d | LABOUR [200 h] |
| 2.2-SDAEE02-1440 |  | Complete QA/QC document | 10d | 2026-12-23 | 2027-01-02 | 2.2-SDAEE02-1430 | 73d | 0d | LABOUR [450 h] |
|  | 2 | **Termination LV Cable** |  | 2026-12-02 | 2027-03-10 |  |  |  |  |
| 2.2-SDAEE02-1450 |  | Cable Termination/Glanding | 60d | 2026-12-02 | 2027-02-09 | 2.2-SDAEE01-1420 | 69d | 0d | LABOUR [12000 h] |
| 2.2-SDAEE02-1460 |  | Clear punch | 10d | 2027-02-10 | 2027-02-20 | 2.2-SDAEE02-1450 | 69d | 0d | LABOUR [1000 h] |
| 2.2-SDAEE02-1470 |  | Complete QA/QC document | 15d | 2027-02-22 | 2027-03-10 | 2.2-SDAEE02-1460 | 69d |  | LABOUR [2899.6 h] |
|  | 3 | **Termination Control Cable** |  | 2026-12-02 | 2027-03-10 |  |  |  |  |
| 2.2-SDAEE02-1480 |  | Cable Termination/Glanding | 60d | 2026-12-02 | 2027-02-09 | 2.2-SDAEE02-1450 SS | 69d | 0d | LABOUR [2000 h] |
| 2.2-SDAEE02-1490 |  | Clear punch | 10d | 2027-02-10 | 2027-02-20 | 2.2-SDAEE02-1480 | 69d | 0d | LABOUR [200 h] |
| 2.2-SDAEE02-1500 |  | Complete QA/QC document | 15d | 2027-02-22 | 2027-03-10 | 2.2-SDAEE02-1490 | 69d |  | LABOUR [450 h] |
|  | 4 | **Termination Lighting Cable** |  | 2027-01-06 | 2027-04-14 |  |  |  |  |
| 2.2-SDAEE02-1510 |  | Cable Termination/Glanding | 60d | 2027-01-06 | 2027-03-16 | 2.2-SDAEE01-1480 | 39d | 0d | LABOUR [3500 h] |
| 2.2-SDAEE02-1520 |  | Clear punch | 10d | 2027-03-17 | 2027-03-27 | 2.2-SDAEE02-1510 | 39d | 0d | LABOUR [1000 h] |
| 2.2-SDAEE02-1530 |  | Complete QA/QC document | 15d | 2027-03-29 | 2027-04-14 | 2.2-SDAEE02-1520 | 39d |  | LABOUR [799.9 h] |

| ID | WBS | Activity | Duration | Start | Finish | Predecessors | Total float | Free float | Constraint | Resources | EIT WBS | EIT PKG |
| --- | --- | --- | --- | --- | --- | --- | --- | --- | --- | --- | --- | --- |
|  | 5 | **Lighting Fixture Installation** |  | 2026-08-19 | 2026-11-06 |  |  |  |  |  |  |  |
| 2.2-SDAEE05-1150 |  | Install support / bracket / Pole | 60d | 2026-08-19 | 2026-10-27 | 2.2-SDAEE03-1560 | 175d | 0d |  | LABOUR [1500 h] |  |  |
| 2.2-SDAEE05-1160 |  | lighting fixture | 60d | 2026-08-19 | 2026-10-27 | 2.2-SDAEE05-1150 SS | 175d | 0d |  | LABOUR [3000 h] |  |  |
| 2.2-SDAEE05-1170 |  | Clear punch | 5d | 2026-10-28 | 2026-11-02 | 2.2-SDAEE05-1160 | 175d | 0d |  | LABOUR [500 h] |  |  |
| 2.2-SDAEE05-1180 |  | Complete QA/QC document | 4d | 2026-11-03 | 2026-11-06 | 2.2-SDAEE05-1170 | 175d |  |  | LABOUR [1044.94 h] |  |  |
|  | 8 | **Small Power Equipment Installation** |  | 2026-08-19 | 2026-11-06 |  |  |  |  |  |  |  |
| 2.2-SDAEE05-1550 |  | Install support / bracket | 60d | 2026-08-19 | 2026-10-27 | 2.2-SDAEE05-1150 SS | 175d | 0d |  | LABOUR [1500 h] |  |  |
| 2.2-SDAEE05-1560 |  | Install Distribution panel, convenience outlet | 60d | 2026-08-19 | 2026-10-27 | 2.2-SDAEE05-1550 SS | 175d | 0d |  | LABOUR [3000 h] |  |  |
| 2.2-SDAEE05-1570 |  | Clear punch | 5d | 2026-10-28 | 2026-11-02 | 2.2-SDAEE05-1560 | 175d | 0d |  | LABOUR [500 h] |  |  |
| 2.2-SDAEE05-1580 |  | Complete QA/QC document | 4d | 2026-11-03 | 2026-11-06 | 2.2-SDAEE05-1570 | 175d |  |  | LABOUR [1044.94 h] |  |  |
|  | 7 | **Electrical Earthing / Lightning Installation** |  | 2026-04-07 | 2026-10-03 |  |  |  |  |  |  |  |
| 2.2-SDAEE05- 1130 |  | Install Equipment Earthing / Inspection PIT / Install earthing pull and Connecttion | 140d | 2026-04-07 | 2026-09-16 |  | 204d | 0d | start on or after 2026-04-07 | LABOUR [10000 h] |  |  |
| 2.2-SDAEE05- 1140 |  | Clear punch | 5d | 2026-09-17 | 2026-09-22 | 2.2-SDAEE05- 1130 | 204d | 0d |  | LABOUR [1000 h] |  |  |
| 2.2-SDAEE05- 1150 |  | Complete QA/QC document | 10d | 2026-09-23 | 2026-10-03 | 2.2-SDAEE05- 1140 | 204d |  |  | LABOUR [1203.36 h] |  |  |
|  | 2 | **Motor Solo Run** |  | 2027-01-04 | 2027-03-05 |  |  |  |  |  |  |  |
| 2.2-SDAEE05- 1160 |  | Motor solo run | 30d | 2027-01-04 | 2027-02-06 | 2.2-SDAEE02-1440 | 73d | 0d |  | LABOUR |  |  |
| 2.2-SDAEE05- 1170 |  | Clear punch | 10d | 2027-02-08 | 2027-02-18 | 2.2-SDAEE05- 1160 | 73d | 0d |  | LABOUR |  |  |
| 2.2-SDAEE05- 1180 |  | Complete QA/QC document | 13d | 2027-02-19 | 2027-03-05 | 2.2-SDAEE05- 1170 | 73d |  |  | LABOUR |  |  |
|  | 2 | **Instrument** |  | 2026-04-01 | 2027-05-29 |  |  |  |  |  |  |  |
|  | 12 | **Cable Laying concrete Trench** |  | 2026-05-01 | 2026-10-15 |  |  |  |  |  |  |  |
|  | 20 | **C03-JTR-479/452/476/453/482/480/454/457/455/458/459/460** |  | 2026-05-01 | 2026-08-06 |  |  |  |  |  |  |  |
| 2.2-SDAIN01-2000 |  | Cable Laying | 30d | 2026-05-01 | 2026-06-04 |  | 194d | 0d | start on or after 2026-05-01 | LABOUR [6000 h] | C03c | EIT02.2 |
| 2.2-SDAIN01-2010 |  | Megger & Continuity test | 5d | 2026-06-05 | 2026-06-10 | 2.2-SDAIN01-2000 | 254d | 0d |  | LABOUR [500 h] | C03c | EIT02.2 |
| 2.2-SDAIN01-2020 |  | punch Clear | 5d | 2026-06-11 | 2026-06-16 | 2.2-SDAIN01-2010 | 254d | 0d |  | LABOUR [500 h] | C03c | EIT02.2 |
| 2.2-SDAIN01-2030 |  | Sand Filling Compaction | 4d | 2026-06-17 | 2026-06-20 | 2.2-SDAIN01-2020 | 254d | 0d |  | LABOUR [300 h] |  |  |
| 2.2-SDAIN01-2040 |  | Complete QA/QC document | 10d | 2026-06-22 | 2026-07-02 | 2.2-SDAIN01-2030 | 254d | 0d |  | LABOUR [1000 h] | C03c | EIT02.2 |
| 2.2-SDAIN01-2060 |  | Back Filling | 30d | 2026-07-03 | 2026-08-06 | 2.2-SDAIN01-2040 | 254d |  |  | LABOUR [2110.86 h] | C03c | EIT02.2 |

| ID | WBS | Activity | Duration | Start | Finish | Predecessors | Total float | Free float | Resources | EIT WBS | EIT PKG | Disciplines | Main Activity | WBS | Types |
| --- | --- | --- | --- | --- | --- | --- | --- | --- | --- | --- | --- | --- | --- | --- | --- |
|  | 2 | **C03-JTR-470/471/472/473/463** |  | 2026-06-05 | 2026-09-10 |  |  |  |  |  |  |  |  |  |  |
| 2.2-SDAIN01-2070 |  | Cable Laying | 30d | 2026-06-05 | 2026-07-09 | 2.2-SDAIN01-2000 | 194d | 0d | LABOUR [6000 h] | C03c | EIT02.2 |  |  |  |  |
| 2.2-SDAIN01-2080 |  | Megger & Continuity test | 5d | 2026-07-10 | 2026-07-15 | 2.2-SDAIN01-2070 | 224d | 0d | LABOUR [500 h] | C03c | EIT02.2 |  |  |  |  |
| 2.2-SDAIN01-2090 |  | punch Clear | 5d | 2026-07-16 | 2026-07-21 | 2.2-SDAIN01-2080 | 224d | 0d | LABOUR [500 h] | C03c | EIT02.2 |  |  |  |  |
| 2.2-SDAIN01-2100 |  | Sand Filling Compaction | 4d | 2026-07-22 | 2026-07-25 | 2.2-SDAIN01-2090 | 224d | 0d | LABOUR [300 h] |  |  |  |  |  |  |
| 2.2-SDAIN01-2110 |  | Complete QA/QC document | 10d | 2026-07-27 | 2026-08-06 | 2.2-SDAIN01-2100 | 224d | 0d | LABOUR [1000 h] | C03c | EIT02.2 |  |  |  |  |
| 2.2-SDAIN01-2120 |  | Back Filling | 30d | 2026-08-07 | 2026-09-10 | 2.2-SDAIN01-2110 | 224d |  | LABOUR [2110.86 h] | C03c | EIT02.2 |  |  |  |  |
|  | 1 | **C03-JTR-461/462/464/465/466/467/468/474** |  | 2026-07-10 | 2026-10-15 |  |  |  |  |  |  |  |  |  |  |
| 2.2-SDAIN01-2130 |  | Cable Laying | 30d | 2026-07-10 | 2026-08-13 | 2.2-SDAIN01-2070 | 194d | 0d | LABOUR [6000 h] | C03c | EIT02.2 |  |  |  |  |
| 2.2-SDAIN01-2140 |  | Megger & Continuity test | 5d | 2026-08-14 | 2026-08-19 | 2.2-SDAIN01-2130 | 194d | 0d | LABOUR [500 h] | C03c | EIT02.2 |  |  |  |  |
| 2.2-SDAIN01-2150 |  | punch Clear | 5d | 2026-08-20 | 2026-08-25 | 2.2-SDAIN01-2140 | 194d | 0d | LABOUR [500 h] | C03c | EIT02.2 |  |  |  |  |
| 2.2-SDAIN01-2160 |  | Sand Filling Compaction | 4d | 2026-08-26 | 2026-08-29 | 2.2-SDAIN01-2150 | 194d | 0d | LABOUR [300 h] |  |  |  |  |  |  |
| 2.2-SDAIN01-2170 |  | Complete QA/QC document | 10d | 2026-08-31 | 2026-09-10 | 2.2-SDAIN01-2160 | 194d | 0d | LABOUR [1000 h] | C03c | EIT02.2 |  |  |  |  |
| 2.2-SDAIN01-2180 |  | Back Filling | 30d | 2026-09-11 | 2026-10-15 | 2.2-SDAIN01-2170 | 194d |  | LABOUR [2110.86 h] | C03c | EIT02.2 |  |  |  |  |
|  | 3 | **Instrument Cable Tray/Ladder Installation** |  | 2026-04-01 | 2026-08-08 |  |  |  |  |  |  |  |  |  |  |
| 2.2-SDAIN03-1450 |  | Install support / bracket | 90d | 2026-04-01 | 2026-07-14 | 2.2-SDAEE03-1550 SS | 0d |  | LABOUR [1500 h] | C03c | EIT02.2 | EE | 1 | C03a | TY1 |
| 2.2-SDAIN03-1460 |  | Install Ladder / Tray | 90d | 2026-04-01 | 2026-07-14 | 2.2-SDAIN03-1450 SS | 0d |  | LABOUR [5000 h] | C03c | EIT02.2 | EE | 1 | C03a | TY1 |
| 2.2-SDAIN03-1470 |  | Steel Conduits for Cable tray | 90d | 2026-04-01 | 2026-07-14 | 2.2-SDAIN03-1450 SS | 92d | 0d | LABOUR [500 h] | C03c | EIT02.2 | EE | 1 | C03a | TY1 |
| 2.2-SDAIN03-1480 |  | Clear punch | 8d | 2026-07-15 | 2026-07-23 | 2.2-SDAIN03-1460, 2.2-SDAIN03-1470 | 92d | 0d | LABOUR [500 h] | C03c | EIT02.2 | EE | 1 | C03a | TY1 |
| 2.2-SDAIN03-1490 |  | Complete QA/QC document | 14d | 2026-07-24 | 2026-08-08 | 2.2-SDAIN03-1480 | 92d | 28d | LABOUR [1138.61 h] | C03c | EIT02.2 | EE | 1 | C03a | TY1 |
|  | 8 | **AG Cable Pull Primary Cable** |  | 2026-07-15 | 2026-09-10 |  |  |  |  |  |  |  |  |  |  |
| 2.2-SDAIN01-1500 |  | Pull Cable | 30d | 2026-07-15 | 2026-08-18 | 2.2-SDAIN03-1460 | 0d |  | LABOUR [8000 h] | C03c | EIT02.2 | EE | 1 | C03a | TY1 |
| 2.2-SDAIN01-1510 |  | Megger & Continuity test | 5d | 2026-08-19 | 2026-08-24 | 2.2-SDAIN01-1500 | 64d | 0d | LABOUR [1000 h] | C03c | EIT02.2 | EE | 1 | C03a | TY1 |
| 2.2-SDAIN01-1520 |  | Complete QA/QC document | 15d | 2026-08-25 | 2026-09-10 | 2.2-SDAIN01-1510, 2.2-SDAIN03-1490 FF | 64d | 0d | LABOUR [1410.9 h] | C03c | EIT02.2 | EE | 1 | C03a | TY1 |

| ID | WBS | Activity | Duration | Start | Finish | Predecessors | Total float | Free float | Constraint | Resources | Disciplines | Main Activity | WBS | Types | EIT WBS | EIT PKG |
| --- | --- | --- | --- | --- | --- | --- | --- | --- | --- | --- | --- | --- | --- | --- | --- | --- |
|  | 9 | **AG Cable Pull Secondary Cable** |  | 2026-07-15 | 2026-10-26 |  |  |  |  |  |  |  |  |  |  |  |
| 2.2-SDAIN01-1530 |  | Pull Cable | 64d | 2026-07-15 | 2026-09-26 | 2.2-SDAIN01-1500 SS | 0d |  |  | LABOUR [8000 h] | EE | 1 | C03a | TY1 | C03c | EIT02.2 |
| 2.2-SDAIN01-1540 |  | Megger & Continuity test | 10d | 2026-09-28 | 2026-10-08 | 2.2-SDAIN01-1530 | 0d |  |  | LABOUR [1000 h] | EE | 1 | C03a | TY1 | C03c | EIT02.2 |
| 2.2-SDAIN01-1550 |  | Complete QA/QC document | 15d | 2026-10-09 | 2026-10-26 | 2.2-SDAIN01-1540 | 0d |  |  | LABOUR [1410.9 h] | EE | 1 | C03a | TY1 | C03c | EIT02.2 |
|  | 2 | **Instrument Cable Termination / Glanding** |  | 2026-08-14 | 2027-01-09 |  |  |  |  |  |  |  |  |  |  |  |
|  | 1 | **UG Cable Termination Cable** |  | 2026-08-14 | 2026-09-29 |  |  |  |  |  |  |  |  |  |  |  |
| 2.2-SDAIN02-1620 |  | Cable Termination/Glanding | 20d | 2026-08-14 | 2026-09-05 | 2.2-SDAIN01-2130 | 208d | 0d |  | LABOUR [3000 h] | EE | 1 | C03a | TY1 | C03c | EIT02.2 |
| 2.2-SDAIN02-1630 |  | Clear punch | 5d | 2026-09-07 | 2026-09-11 | 2.2-SDAIN02-1620 | 208d | 0d |  | LABOUR [500 h] | EE | 1 | C03a | TY1 | C03c | EIT02.2 |
| 2.2-SDAIN02-1640 |  | Complete QA/QC document | 15d | 2026-09-12 | 2026-09-29 | 2.2-SDAIN02-1630 | 208d |  |  | LABOUR [973.8 h] | EE | 1 | C03a | TY1 | C03c | EIT02.2 |
|  | 8 | **Cable Termination Primary Cable** |  | 2026-09-11 | 2026-10-27 |  |  |  |  |  |  |  |  |  |  |  |
| 2.2-SDAIN02-1560 |  | Cable Termination/Glanding | 20d | 2026-09-11 | 2026-10-03 | 2.2-SDAIN01-1520 | 64d | 0d |  | LABOUR [3000 h] | EE | 1 | C03a | TY1 | C03c | EIT02.2 |
| 2.2-SDAIN02-1570 |  | Clear punch | 5d | 2026-10-05 | 2026-10-09 | 2.2-SDAIN02-1560 | 64d | 0d |  | LABOUR [500 h] | EE | 1 | C03a | TY1 | C03c | EIT02.2 |
| 2.2-SDAIN02-1580 |  | Complete QA/QC document | 15d | 2026-10-10 | 2026-10-27 | 2.2-SDAIN02-1570 | 64d |  |  | LABOUR [973.8 h] | EE | 1 | C03a | TY1 | C03c | EIT02.2 |
|  | 9 | **Cable Termination Secondary Cable** |  | 2026-10-27 | 2027-01-09 |  |  |  |  |  |  |  |  |  |  |  |
| 2.2-SDAIN02-1590 |  | Cable Termination/Glanding | 40d | 2026-10-27 | 2026-12-11 | 2.2-SDAIN01-1550 | 0d |  |  | LABOUR [3000 h] | EE | 1 | C03a | TY1 | C03c | EIT02.2 |
| 2.2-SDAIN02-1600 |  | Clear punch | 10d | 2026-12-12 | 2026-12-23 | 2.2-SDAIN02-1590 | 0d |  |  | LABOUR [500 h] | EE | 1 | C03a | TY1 | C03c | EIT02.2 |
| 2.2-SDAIN02-1610 |  | Complete QA/QC document | 15d | 2026-12-24 | 2027-01-09 | 2.2-SDAIN02-1600, 2.2-SDAIN02-1580 FF | 0d |  |  | LABOUR [973.8 h] | EE | 1 | C03a | TY1 | C03c | EIT02.2 |
|  | 4 | **Instrument Calibration** |  | 2026-05-01 | 2026-06-04 |  |  |  |  |  |  |  |  |  |  |  |
| 2.2-SDAIN05-1620 |  | Calibration of Gauges | 30d | 2026-05-01 | 2026-06-04 |  | 256d | 0d | start on or after 2026-05-01 | LABOUR [5000 h] | EE | 1 | C03a | TY1 | C03c | EIT02.2 |
| 2.2-SDAIN05-1630 |  | Calibration of Transmitters/Switches | 30d | 2026-05-01 | 2026-06-04 | 2.2-SDAIN05-1620 SS | 256d | 0d |  | LABOUR [1840.66 h] |  |  |  |  |  |  |
|  | 10 | **Gauges** |  | 2026-05-01 | 2026-05-22 |  |  |  |  |  |  |  |  |  |  |  |
| 2.2-SDAIN04-1110 |  | D.P Pressure Gauge Installation | 5d | 2026-05-01 | 2026-05-06 | 2.2-SDAIN05-1620 SS | 319d | 0d |  | LABOUR [500 h] |  |  |  |  |  |  |
| 2.2-SDAIN04-1120 |  | Pressure Gauge Installation | 5d | 2026-05-07 | 2026-05-12 | 2.2-SDAIN04-1110 | 319d | 0d |  | LABOUR [500 h] |  |  |  |  |  |  |
| 2.2-SDAIN04-1130 |  | Level Gauge Installation | 5d | 2026-05-13 | 2026-05-18 | 2.2-SDAIN04-1120 | 319d | 0d |  | LABOUR [500 h] |  |  |  |  |  |  |
| 2.2-SDAIN04-1140 |  | Clear punch | 2d | 2026-05-19 | 2026-05-20 | 2.2-SDAIN04-1130 | 319d | 0d |  | LABOUR [500 h] |  |  |  |  |  |  |
| 2.2-SDAIN04-1150 |  | Complete QA/QC document | 2d | 2026-05-21 | 2026-05-22 | 2.2-SDAIN04-1140 | 319d |  |  | LABOUR [879.5 h] |  |  |  |  |  |  |

| ID | WBS | Activity | Duration | Start | Finish | Predecessors | Total float | Free float | Resources | Disciplines | Main Activity | WBS | Types | EIT WBS | EIT PKG |
| --- | --- | --- | --- | --- | --- | --- | --- | --- | --- | --- | --- | --- | --- | --- | --- |
|  | 6 | **Transmitters/Switches** |  | 2026-05-01 | 2026-06-12 |  |  |  |  |  |  |  |  |  |  |
| 2.2-SDAIN04-1160 |  | Install support / bracket | 10d | 2026-05-01 | 2026-05-12 | 2.2-SDAIN05-1630 SS | 256d | 0d | LABOUR [200 h] | EE | 1 | C03a | TY1 | C03c | EIT02.2 |
| 2.2-SDAIN04-1170 |  | Pressure transmitters Installation | 5d | 2026-05-13 | 2026-05-18 | 2.2-SDAIN04-1160 | 256d | 0d | LABOUR [500 h] | EE | 1 | C03a | TY1 | C03c | EIT02.2 |
| 2.2-SDAIN04-1180 |  | D.P. Transmitters - HART Installation | 5d | 2026-05-19 | 2026-05-23 | 2.2-SDAIN04-1170 | 256d | 0d | LABOUR [500 h] | EE | 1 | C03a | TY1 | C03c | EIT02.2 |
| 2.2-SDAIN04-1190 |  | Temperature Transmitters Installation | 5d | 2026-05-25 | 2026-05-29 | 2.2-SDAIN04-1180 | 301d | 0d | LABOUR [500 h] | EE | 1 | C03a | TY1 | C03c | EIT02.2 |
| 2.2-SDAIN04-1240 |  | Level Switch Installation | 5d | 2026-05-30 | 2026-06-04 | 2.2-SDAIN04-1190 | 301d | 0d | LABOUR [500 h] |  |  |  |  |  |  |
| 2.2-SDAIN04-1250 |  | Clear punch | 2d | 2026-06-05 | 2026-06-06 | 2.2-SDAIN04-1240 | 301d | 0d | LABOUR [100 h] |  |  |  |  |  |  |
| 2.2-SDAIN04-1260 |  | Complete QA/QC document | 5d | 2026-06-08 | 2026-06-12 | 2.2-SDAIN04-1250 | 301d |  | LABOUR [579.5 h] |  |  |  |  |  |  |
|  | 11 | **Instrument Junction Box Installation** |  | 2026-04-01 | 2026-04-16 |  |  |  |  |  |  |  |  |  |  |
| 2.2-SDAIN04-1200 |  | Install support / bracket | 5d | 2026-04-01 | 2026-04-06 | 2.2-SDAIN03-1450 SS | 350d | 0d | LABOUR [1000 h] | EE | 1 | C03a | TY1 | C03c | EIT02.2 |
| 2.2-SDAIN04-1210 |  | Instrument Junction Box Installation | 5d | 2026-04-07 | 2026-04-11 | 2.2-SDAIN04-1200 | 350d | 0d | LABOUR [1000 h] | EE | 1 | C03a | TY1 | C03c | EIT02.2 |
| 2.2-SDAIN04-1220 |  | Clear punch | 2d | 2026-04-13 | 2026-04-14 | 2.2-SDAIN04-1210 | 350d | 0d | LABOUR [200 h] | EE | 1 | C03a | TY1 | C03c | EIT02.2 |
| 2.2-SDAIN04-1230 |  | Complete QA/QC document | 2d | 2026-04-15 | 2026-04-16 | 2.2-SDAIN04-1220 | 350d |  | LABOUR [679.5 h] | EE | 1 | C03a | TY1 | C03c | EIT02.2 |
|  | 5 | **Tubing** |  | 2026-05-25 | 2026-08-04 |  |  |  |  |  |  |  |  |  |  |
| 2.2-SDAIN05-1980 |  | Instrument Hook up Tubing Installation | 20d | 2026-05-25 | 2026-06-16 | 2.2-SDAIN04-1170, 2.2-SDAIN04-1180 | 256d | 0d | LABOUR [200 h] |  |  |  |  |  |  |
| 2.2-SDAIN05-1990 |  | Leak Test | 20d | 2026-06-17 | 2026-07-09 | 2.2-SDAIN05-1980 | 256d | 0d | LABOUR [100 h] |  |  |  |  |  |  |
| 2.2-SDAIN05-2000 |  | Clear Punch | 10d | 2026-07-10 | 2026-07-21 | 2.2-SDAIN05-1990 | 256d | 0d | LABOUR [50 h] |  |  |  |  |  |  |
| 2.2-SDAIN05-2010 |  | Complete QA/QC document | 12d | 2026-07-22 | 2026-08-04 | 2.2-SDAIN05-2000 | 256d |  | LABOUR [50.37 h] |  |  |  |  |  |  |
|  | 7 | **Instrument Loop Check** |  | 2027-01-11 | 2027-05-29 |  |  |  |  |  |  |  |  |  |  |
| 2.2-SDAIN05-2020 |  | Instrument Loop check | 60d | 2027-01-11 | 2027-03-20 | 2.2-SDAIN02-1610 | 0d |  | LABOUR [3000 h] |  |  |  |  |  |  |
| 2.2-SDAIN05-2030 |  | Clear Punch | 20d | 2027-03-22 | 2027-04-13 | 2.2-SDAIN05-2020 | 0d |  | LABOUR [500 h] |  |  |  |  |  |  |
| 2.2-SDAIN05-2040 |  | Complete QA/QC document | 40d | 2027-04-14 | 2027-05-29 | 2.2-SDAIN05-2030 | 0d |  | LABOUR [607.78 h] |  |  |  |  |  |  |
|  | 8 | **Telecom** |  | 2026-07-15 | 2026-11-19 |  |  |  |  |  |  |  |  |  |  |
|  | 3 | **Telecom Cable Tray/Ladder Installation** |  | 2026-07-15 | 2026-08-29 |  |  |  |  |  |  |  |  |  |  |
| 2.2-SDATE-1330 |  | Install support / bracket | 30d | 2026-07-15 | 2026-08-18 | 2.2-SDAIN03-1450 | 164d | 0d | LABOUR | EE | 1 | C03a | TY1 | C03a | EIT02.2 |
| 2.2-SDATE-1335 |  | Install Ladder / Tray | 30d | 2026-07-15 | 2026-08-18 | 2.2-SDATE-1330 SS | 164d | 0d | LABOUR | EE | 1 | C03a | TY1 | C03a | EIT02.2 |
| 2.2-SDATE-1340 |  | Conduit Install | 30d | 2026-07-15 | 2026-08-18 | 2.2-SDATE-1330 SS | 244d |  | LABOUR |  |  |  |  | C03a | EIT02.2 |
| 2.2-SDATE-1345 |  | Clear punch | 5d | 2026-08-19 | 2026-08-24 | 2.2-SDATE-1335 | 164d | 0d | LABOUR | EE | 1 | C03a | TY1 | C03a | EIT02.2 |
| 2.2-SDATE-1350 |  | Complete QA/QC document | 5d | 2026-08-25 | 2026-08-29 | 2.2-SDATE-1345 | 164d | 0d | LABOUR | EE | 1 | C03a | TY1 | C03a | EIT02.2 |

| ID | WBS | Activity | Duration | Start | Finish | Predecessors | Total float | Free float | Constraint | Resources | Disciplines | Main Activity | WBS | Types | EIT WBS | EIT PKG |
| --- | --- | --- | --- | --- | --- | --- | --- | --- | --- | --- | --- | --- | --- | --- | --- | --- |
|  | 1 | **AG Telecommunication Cable Installation** |  | 2026-08-31 | 2026-10-15 |  |  |  |  |  |  |  |  |  |  |  |
| 2.2-SDATE01-1090 |  | Above Ground Pull Cable | 30d | 2026-08-31 | 2026-10-03 | 2.2-SDATE-1350 | 164d | 0d |  | LABOUR [1000 h] | EE | 1 | C03a | TY1 | C03c | EIT02.2 |
| 2.2-SDATE01-1095 |  | Megger & Continuity test | 5d | 2026-10-05 | 2026-10-09 | 2.2-SDATE01-1090 | 164d | 0d |  | LABOUR [500 h] | EE | 1 | C03a | TY1 | C03c | EIT02.2 |
| 2.2-SDATE01-1100 |  | Complete QA/QC document | 5d | 2026-10-10 | 2026-10-15 | 2.2-SDATE01-1095 | 164d | 0d |  | LABOUR [643.81 h] | EE | 1 | C03a | TY1 | C03c | EIT02.2 |
|  | 4 | **Telecommunication Termination / Glanding** |  | 2026-10-16 | 2026-11-19 |  |  |  |  |  |  |  |  |  |  |  |
| 2.2-SDATE02-1090 |  | Cable Termination/Glanding | 20d | 2026-10-16 | 2026-11-07 | 2.2-SDATE01-1100 | 164d | 0d |  | LABOUR [500 h] | EE | 1 | C03a | TY1 | C03c | EIT02.2 |
| 2.2-SDATE02-1100 |  | Clear punch | 5d | 2026-11-09 | 2026-11-13 | 2.2-SDATE02-1090 | 164d | 0d |  | LABOUR [200 h] | EE | 1 | C03a | TY1 | C03c | EIT02.2 |
| 2.2-SDATE02-1110 |  | Complete QA/QC document | 5d | 2026-11-14 | 2026-11-19 | 2.2-SDATE02-1100 | 164d |  |  | LABOUR [300 h] | EE | 1 | C03a | TY1 | C03c | EIT02.2 |
|  | 2 | **Telecommunication Equipment Installation** |  | 2026-08-19 | 2026-10-03 |  |  |  |  |  |  |  |  |  |  |  |
| 2.2-SDATE01.1-1120 |  | Telecom Equpiment Installation | 10d | 2026-08-19 | 2026-08-29 | 2.2-SDATE-1330 | 204d | 0d |  | LABOUR [1000 h] | EE | 1 | C03a | TY1 | C03c | EIT02.2 |
| 2.2-SDATE01.1-1130 |  | Clear Punch | 10d | 2026-08-31 | 2026-09-10 | 2.2-SDATE01.1-1120 | 204d | 0d |  | LABOUR [300 h] | EE | 1 | C03a | TY1 | C03c | EIT02.2 |
| 2.2-SDATE01.1-1140 |  | Complete QA/QC document | 20d | 2026-09-11 | 2026-10-03 | 2.2-SDATE01.1-1130 | 204d |  |  | LABOUR [782.95 h] | EE | 1 | C03a | TY1 | C03c | EIT02.2 |
|  | EIT-2.2 | **WBS : C03a HCU-3 (Hydrocracking Unit)-1** |  | 2026-04-01 | 2027-02-27 |  |  |  |  |  |  |  |  |  |  |  |
|  | 2 | **HCU ZONE-A** |  | 2026-04-01 | 2027-02-27 |  |  |  |  |  |  |  |  |  |  |  |
|  | 1 | **Electrical Works** |  | 2026-04-01 | 2027-01-08 |  |  |  |  |  |  |  |  |  |  |  |
|  | 6 | **Cable trench Excavation buried** |  | 2026-04-01 | 2026-07-20 |  |  |  |  |  |  |  |  |  |  |  |
|  | 8 | **C03-ETD-190/536/181/399/543/645/134/683/126/124** |  | 2026-04-01 | 2026-05-11 |  |  |  |  |  |  |  |  |  |  |  |
| 2.2-HCUEE09-1000 |  | Cable trench Excavation | 30d | 2026-04-01 | 2026-05-05 |  | 78d | 0d | start on or after 2026-04-01 | LABOUR [500 h] |  |  |  |  | C03c | EIT02.2 |
| 2.2-HCUEE09-1010 |  | Sand Filling Compaction | 5d | 2026-05-06 | 2026-05-11 | 2.2-HCUEE09-1000 | 329d |  |  | LABOUR [167.55 h] |  |  |  |  | C03c | EIT02.2 |
|  | 36 | **C03-ETD-522/185/220/857/652/187/853/139/140/138** |  | 2026-05-06 | 2026-06-15 |  |  |  |  |  |  |  |  |  |  |  |
| 2.2-HCUEE09-1020 |  | Cable trench Excavation | 30d | 2026-05-06 | 2026-06-09 | 2.2-HCUEE09-1000 | 157d | 0d |  | LABOUR [500 h] |  |  |  |  | C03c | EIT02.2 |
| 2.2-HCUEE09-1030 |  | Sand Filling Compaction | 5d | 2026-06-10 | 2026-06-15 | 2.2-HCUEE09-1020 | 235d | 0d |  | LABOUR [167.55 h] |  |  |  |  | C03c | EIT02.2 |
|  | 9 | **C03-ETD-137/471/135/136/218/219/127** |  | 2026-06-10 | 2026-07-20 |  |  |  |  |  |  |  |  |  |  |  |
| 2.2-HCUEE09-1040 |  | Cable trench Excavation | 30d | 2026-06-10 | 2026-07-14 | 2.2-HCUEE09-1020 | 157d | 0d |  | LABOUR [500 h] |  |  |  |  | C03c | EIT02.2 |
| 2.2-HCUEE09-1050 |  | Sand Filling Compaction | 5d | 2026-07-15 | 2026-07-20 | 2.2-HCUEE09-1040 | 269d |  |  | LABOUR [167.55 h] |  |  |  |  | C03c | EIT02.2 |

| ID | WBS | Activity | Duration | Start | Finish | Predecessors | Total float | Free float | Resources | EIT WBS | EIT PKG |
| --- | --- | --- | --- | --- | --- | --- | --- | --- | --- | --- | --- |
|  | 8 | **Cable Laying Direct buried** |  | 2026-05-06 | 2026-09-29 |  |  |  |  |  |  |
|  | 8 | **C03-ETD-190/536/181/399/543/645/134/683/126/124** |  | 2026-05-06 | 2026-07-23 |  |  |  |  |  |  |
| 2.2-HCUEE01-1055 |  | Sand Filling First layer | 4d | 2026-05-06 | 2026-05-09 | 2.2-HCUEE09-1000 | 266d | 0d | LABOUR [100 h] |  |  |
| 2.2-HCUEE01-1060 |  | Cable Laying | 20d | 2026-05-11 | 2026-06-02 | 2.2-HCUEE01-1055 | 266d | 0d | LABOUR [2500 h] | C03c | EIT02.2 |
| 2.2-HCUEE01-1070 |  | Megger & Continuity test | 5d | 2026-06-03 | 2026-06-08 | 2.2-HCUEE01-1060 | 266d | 0d | LABOUR [200 h] | C03c | EIT02.2 |
| 2.2-HCUEE01-1080 |  | punch Clear | 5d | 2026-06-09 | 2026-06-13 | 2.2-HCUEE01-1070 | 266d | 0d | LABOUR [100 h] | C03c | EIT02.2 |
| 2.2-HCUEE01-1090 |  | Sand Filling Compaction | 4d | 2026-06-15 | 2026-06-18 | 2.2-HCUEE01-1080 | 266d | 0d | LABOUR [300 h] |  |  |
| 2.2-HCUEE01-1100 |  | Complete QA/QC document | 10d | 2026-06-19 | 2026-06-30 | 2.2-HCUEE01-1090 | 266d | 0d | LABOUR [500 h] | C03c | EIT02.2 |
| 2.2-HCUEE01-1110 |  | Back Filling | 20d | 2026-07-01 | 2026-07-23 | 2.2-HCUEE01-1100 | 266d |  | LABOUR [824.66 h] | C03c | EIT02.2 |
|  | 36 | **C03-ETD-522/185/220/857/652/187/853/139/140/138** |  | 2026-06-10 | 2026-08-28 |  |  |  |  |  |  |
| 2.2-HCUEE01-2345 |  | Sand Filling First layer | 4d | 2026-06-10 | 2026-06-13 | 2.2-HCUEE09-1020 | 300d |  | LABOUR [100 h] |  |  |
| 2.2-HCUEE01-2350 |  | Cable Laying | 20d | 2026-06-16 | 2026-07-08 | 2.2-HCUEE09-1030 | 235d | 0d | LABOUR [2500 h] | C03c | EIT02.2 |
| 2.2-HCUEE01-2360 |  | Megger & Continuity test | 5d | 2026-07-09 | 2026-07-14 | 2.2-HCUEE01-2350 | 235d | 0d | LABOUR [200 h] | C03c | EIT02.2 |
| 2.2-HCUEE01-2370 |  | punch Clear | 5d | 2026-07-15 | 2026-07-20 | 2.2-HCUEE01-2360 | 235d | 0d | LABOUR [100 h] | C03c | EIT02.2 |
| 2.2-HCUEE01-2380 |  | Sand Filling Compaction | 4d | 2026-07-21 | 2026-07-24 | 2.2-HCUEE01-2370 | 235d | 0d | LABOUR [300 h] |  |  |
| 2.2-HCUEE01-2390 |  | Complete QA/QC document | 10d | 2026-07-25 | 2026-08-05 | 2.2-HCUEE01-2380 | 235d | 0d | LABOUR [500 h] | C03c | EIT02.2 |
| 2.2-HCUEE01-2400 |  | Back Filling | 20d | 2026-08-06 | 2026-08-28 | 2.2-HCUEE01-2390 | 235d |  | LABOUR [824.66 h] | C03c | EIT02.2 |
|  | 9 | **C03-ETD-137/471/135/136/218/219/127** |  | 2026-07-15 | 2026-09-29 |  |  |  |  |  |  |
| 2.2-HCUEE01-2405 |  | Sand Filling First layer | 4d | 2026-07-15 | 2026-07-18 | 2.2-HCUEE09-1040 | 157d | 0d | LABOUR [100 h] |  |  |
| 2.2-HCUEE01-2410 |  | Cable Laying | 20d | 2026-07-20 | 2026-08-11 | 2.2-HCUEE01-2405 | 157d | 0d | LABOUR [2500 h] | C03c | EIT02.2 |
| 2.2-HCUEE01-2420 |  | Megger & Continuity test | 5d | 2026-08-12 | 2026-08-17 | 2.2-HCUEE01-2410 | 208d | 0d | LABOUR [200 h] | C03c | EIT02.2 |
| 2.2-HCUEE01-2430 |  | punch Clear | 5d | 2026-08-18 | 2026-08-22 | 2.2-HCUEE01-2420 | 208d | 0d | LABOUR [100 h] | C03c | EIT02.2 |
| 2.2-HCUEE01-2440 |  | Sand Filling Compaction | 4d | 2026-08-24 | 2026-08-27 | 2.2-HCUEE01-2430 | 208d | 0d | LABOUR [300 h] |  |  |
| 2.2-HCUEE01-2450 |  | Complete QA/QC document | 10d | 2026-08-28 | 2026-09-08 | 2.2-HCUEE01-2440 | 208d | 0d | LABOUR [500 h] | C03c | EIT02.2 |
| 2.2-HCUEE01-2460 |  | Back Filling | 18d | 2026-09-09 | 2026-09-29 | 2.2-HCUEE01-2450 | 208d |  | LABOUR [824.66 h] | C03c | EIT02.2 |

| ID | WBS | Activity | Duration | Start | Finish | Predecessors | Total float | Free float | Resources | EIT WBS | EIT PKG |
| --- | --- | --- | --- | --- | --- | --- | --- | --- | --- | --- | --- |
|  | 13 | **Cable Laying Concrete Trench** |  | 2026-05-11 | 2026-09-29 |  |  |  |  |  |  |
|  | 1 | **C03-ETC-101/406/432/121/146/147/104/175/163/190/135/111/112/138/155** |  | 2026-05-11 | 2026-07-23 |  |  |  |  |  |  |
| 2.2-HCUEE01-2470 |  | Cable Laying | 20d | 2026-05-11 | 2026-06-02 | 2.2-HCUEE01-1060 SS | 266d | 0d | LABOUR [100 h] | C03c | EIT02.2 |
| 2.2-HCUEE01-2480 |  | Megger & Continuity test | 5d | 2026-06-03 | 2026-06-08 | 2.2-HCUEE01-2470 | 266d | 0d | LABOUR [2500 h] | C03c | EIT02.2 |
| 2.2-HCUEE01-2490 |  | punch Clear | 5d | 2026-06-09 | 2026-06-13 | 2.2-HCUEE01-2480 | 266d | 0d | LABOUR [200 h] | C03c | EIT02.2 |
| 2.2-HCUEE01-2500 |  | Sand Filling Compaction | 4d | 2026-06-15 | 2026-06-18 | 2.2-HCUEE01-2490 | 266d | 0d | LABOUR [100 h] |  |  |
| 2.2-HCUEE01-2510 |  | Complete QA/QC document | 10d | 2026-06-19 | 2026-06-30 | 2.2-HCUEE01-2500 | 266d | 0d | LABOUR [500 h] | C03c | EIT02.2 |
| 2.2-HCUEE01-2520 |  | Back Filling | 20d | 2026-07-01 | 2026-07-23 | 2.2-HCUEE01-2510 | 266d |  | LABOUR [1124.66 h] | C03c | EIT02.2 |
|  | 2 | **C03-ETC-107/108/187/188/177/408/405/119/410/153/113/176/102/115/118** |  | 2026-06-16 | 2026-08-28 |  |  |  |  |  |  |
| 2.2-HCUEE01-2530 |  | Cable Laying | 20d | 2026-06-16 | 2026-07-08 | 2.2-HCUEE01-2350 SS | 235d | 0d | LABOUR [100 h] | C03c | EIT02.2 |
| 2.2-HCUEE01-2540 |  | Megger & Continuity test | 5d | 2026-07-09 | 2026-07-14 | 2.2-HCUEE01-2530 | 235d | 0d | LABOUR [2500 h] | C03c | EIT02.2 |
| 2.2-HCUEE01-2550 |  | punch Clear | 5d | 2026-07-15 | 2026-07-20 | 2.2-HCUEE01-2540 | 235d | 0d | LABOUR [200 h] | C03c | EIT02.2 |
| 2.2-HCUEE01-2560 |  | Sand Filling Compaction | 4d | 2026-07-21 | 2026-07-24 | 2.2-HCUEE01-2550 | 235d | 0d | LABOUR [100 h] |  |  |
| 2.2-HCUEE01-2570 |  | Complete QA/QC document | 10d | 2026-07-25 | 2026-08-05 | 2.2-HCUEE01-2560 | 235d | 0d | LABOUR [500 h] | C03c | EIT02.2 |
| 2.2-HCUEE01-2580 |  | Back Filling | 20d | 2026-08-06 | 2026-08-28 | 2.2-HCUEE01-2570 | 235d |  | LABOUR [1124.66 h] | C03c | EIT02.2 |
|  | 3 | **C03-ETC-439/189/545/144/433/163/156/157/191/185/186/432/182/139/175/105/122/438/121/185/404** |  | 2026-07-20 | 2026-09-29 |  |  |  |  |  |  |
| 2.2-HCUEE01-2590 |  | Cable Laying | 20d | 2026-07-20 | 2026-08-11 | 2.2-HCUEE01-2410 SS | 157d | 0d | LABOUR [100 h] | C03c | EIT02.2 |
| 2.2-HCUEE01-2600 |  | Megger & Continuity test | 5d | 2026-08-12 | 2026-08-17 | 2.2-HCUEE01-2590 | 208d | 0d | LABOUR [2500 h] | C03c | EIT02.2 |
| 2.2-HCUEE01-2610 |  | punch Clear | 5d | 2026-08-18 | 2026-08-22 | 2.2-HCUEE01-2600 | 208d | 0d | LABOUR [200 h] | C03c | EIT02.2 |
| 2.2-HCUEE01-2620 |  | Sand Filling Compaction | 4d | 2026-08-24 | 2026-08-27 | 2.2-HCUEE01-2610 | 208d | 0d | LABOUR [100 h] |  |  |
| 2.2-HCUEE01-2630 |  | Complete QA/QC document | 10d | 2026-08-28 | 2026-09-08 | 2.2-HCUEE01-2620 | 208d | 0d | LABOUR [500 h] | C03c | EIT02.2 |
| 2.2-HCUEE01-2640 |  | Back Filling | 18d | 2026-09-09 | 2026-09-29 | 2.2-HCUEE01-2630 | 208d |  | LABOUR [1124.66 h] | C03c | EIT02.2 |
|  | 1 | **Electrical Cable Tray/Ladder Installation** |  | 2026-04-01 | 2026-08-12 |  |  |  |  |  |  |
| 2.2-HCUEE03-1450 |  | Install support / bracket | 90d | 2026-04-01 | 2026-07-14 | 2.2-HCUEE09-1000 SS | 121d | 0d | LABOUR [1000 h] |  |  |
| 2.2-HCUEE03-1460 |  | Install Ladder / Tray | 90d | 2026-04-01 | 2026-07-14 | 2.2-HCUEE03-1450 SS | 121d | 0d | LABOUR [2000 h] |  |  |
| 2.2-HCUEE03-1470 |  | Install Conduits | 90d | 2026-04-01 | 2026-07-14 | 2.2-HCUEE03-1460 SS | 121d | 0d | LABOUR [500 h] |  |  |
| 2.2-HCUEE03-1480 |  | Clear punch | 10d | 2026-07-15 | 2026-07-25 | 2.2-HCUEE03-1470, 2.2-HCUEE03-1460 | 249d | 0d | LABOUR [200 h] |  |  |
| 2.2-HCUEE03-1490 |  | Complete QA/QC document | 15d | 2026-07-27 | 2026-08-12 | 2.2-HCUEE03-1480 | 249d |  | LABOUR [683.3 h] |  |  |

| ID | WBS | Activity | Duration | Start | Finish | Predecessors | Total float | Free float | Resources | Disciplines | Main Activity | WBS | Types | EIT WBS | EIT PKG |
| --- | --- | --- | --- | --- | --- | --- | --- | --- | --- | --- | --- | --- | --- | --- | --- |
|  | 9 | **AG Cable Pull LV Cable** |  | 2026-07-15 | 2026-10-21 |  |  |  |  |  |  |  |  |  |  |
| 2.2-HCUEE01-1180 |  | Pull Cable | 60d | 2026-07-15 | 2026-09-22 | 2.2-HCUEE03-1460, 2.2-HCUEE03-1470 | 121d | 0d | LABOUR [5000 h] | EE | 1 | C03a | TY1 | C03a | EIT02.2 |
| 2.2-HCUEE01-1185 |  | Megger & Continuity test | 10d | 2026-09-23 | 2026-10-03 | 2.2-HCUEE01-1180 | 134d | 0d | LABOUR [500 h] | EE | 1 | C03a | TY1 | C03a | EIT02.2 |
| 2.2-HCUEE01-1190 |  | Complete QA/QC document | 15d | 2026-10-05 | 2026-10-21 | 2.2-HCUEE01-1185 | 134d | 0d | LABOUR [1440.6 h] | EE | 1 | C03a | TY1 | C03a | EIT02.2 |
|  | 10 | **AG Cable Pull Control Cable** |  | 2026-07-15 | 2026-10-21 |  |  |  |  |  |  |  |  |  |  |
| 2.2-HCUEE01-1210 |  | Pull Cable | 60d | 2026-07-15 | 2026-09-22 | 2.2-HCUEE01-1180 SS | 121d | 0d | LABOUR [5000 h] | EE | 1 | C03a | TY1 | C03a | EIT02.2 |
| 2.2-HCUEE01-1220 |  | Megger & Continuity test | 10d | 2026-09-23 | 2026-10-03 | 2.2-HCUEE01-1210 | 189d | 0d | LABOUR [500 h] | EE | 1 | C03a | TY1 | C03a | EIT02.2 |
| 2.2-HCUEE01-1230 |  | Complete QA/QC document | 15d | 2026-10-05 | 2026-10-21 | 2.2-HCUEE01-1220 | 189d |  | LABOUR [1440.6 h] | EE | 1 | C03a | TY1 | C03a | EIT02.2 |
|  | 11 | **AG Lighting Cable** |  | 2026-07-15 | 2026-11-19 |  |  |  |  |  |  |  |  |  |  |
| 2.2-HCUEE01-1240 |  | Pull Cable | 60d | 2026-07-15 | 2026-09-22 | 2.2-HCUEE01-1210 SS | 121d | 0d | LABOUR [5000 h] | EE | 1 | C03a | TY1 | C03a | EIT02.2 |
| 2.2-HCUEE01-1250 |  | Megger & Continuity test | 30d | 2026-09-23 | 2026-10-27 | 2.2-HCUEE01-1240 | 121d | 0d | LABOUR [500 h] | EE | 1 | C03a | TY1 | C03a | EIT02.2 |
| 2.2-HCUEE01-1260 |  | Complete QA/QC document | 20d | 2026-10-28 | 2026-11-19 | 2.2-HCUEE01-1250 | 121d | 0d | LABOUR [1440.6 h] | EE | 1 | C03a | TY1 | C03a | EIT02.2 |
|  | 4 | **Electrical Cable Termination / Glanding** |  | 2026-08-12 | 2027-01-08 |  |  |  |  |  |  |  |  |  |  |
|  | 1 | **Termination MV Cable** |  | 2026-08-12 | 2026-10-02 |  |  |  |  |  |  |  |  |  |  |
| 2.2-HCUEE02-1150 |  | Cable Termination/Glanding | 30d | 2026-08-12 | 2026-09-15 | 2.2-HCUEE01-2590 | 157d | 0d | LABOUR [3000 h] | EE | 1 | C03a | TY1 | C03a | EIT02.2 |
| 2.2-HCUEE02-1160 |  | punch clear | 5d | 2026-09-16 | 2026-09-21 | 2.2-HCUEE02-1150 | 157d | 0d | LABOUR [500 h] | EE | 1 | C03a | TY1 | C03a | EIT02.2 |
| 2.2-HCUEE02-1170 |  | Complete QA/QC document | 10d | 2026-09-22 | 2026-10-02 | 2.2-HCUEE02-1160 | 157d | 0d | LABOUR [925.66 h] | EE | 1 | C03a | TY1 | C03a | EIT02.2 |
|  | 2 | **Termination LV Cable** |  | 2026-10-22 | 2026-12-24 |  |  |  |  |  |  |  |  |  |  |
| 2.2-HCUEE02-1180 |  | Cable Termination/Glanding | 30d | 2026-10-22 | 2026-11-25 | 2.2-HCUEE01-1190 | 134d | 0d | LABOUR [3000 h] | EE | 1 | C03a | TY1 | C03a | EIT02.2 |
| 2.2-HCUEE02-1190 |  | punch clear | 10d | 2026-11-26 | 2026-12-07 | 2.2-HCUEE02-1180 | 134d | 0d | LABOUR [500 h] | EE | 1 | C03a | TY1 | C03a | EIT02.2 |
| 2.2-HCUEE02-1200 |  | Complete QA/QC document | 15d | 2026-12-08 | 2026-12-24 | 2.2-HCUEE02-1190 | 134d |  | LABOUR [925.66 h] | EE | 1 | C03a | TY1 | C03a | EIT02.2 |
|  | 3 | **Termination Control Cable** |  | 2026-10-22 | 2026-12-24 |  |  |  |  |  |  |  |  |  |  |
| 2.2-HCUEE02-1210 |  | Cable Termination/Glanding | 30d | 2026-10-22 | 2026-11-25 | 2.2-HCUEE02-1180 SS | 134d | 0d | LABOUR [3000 h] | EE | 1 | C03a | TY1 | C03a | EIT02.2 |
| 2.2-HCUEE02-1220 |  | punch clear | 10d | 2026-11-26 | 2026-12-07 | 2.2-HCUEE02-1210 | 134d | 0d | LABOUR [500 h] | EE | 1 | C03a | TY1 | C03a | EIT02.2 |
| 2.2-HCUEE02-1230 |  | Complete QA/QC document | 15d | 2026-12-08 | 2026-12-24 | 2.2-HCUEE02-1220 | 134d |  | LABOUR [925.66 h] | EE | 1 | C03a | TY1 | C03a | EIT02.2 |

| ID | WBS | Activity | Duration | Start | Finish | Predecessors | Total float | Free float | Constraint | Resources | Disciplines | Main Activity | WBS | Types | EIT WBS | EIT PKG |
| --- | --- | --- | --- | --- | --- | --- | --- | --- | --- | --- | --- | --- | --- | --- | --- | --- |
|  | 4 | **Termination Lighting Cable** |  | 2026-11-20 | 2027-01-08 |  |  |  |  |  |  |  |  |  |  |  |
| 2.2-HCUEE02-1270 |  | Cable Termination/Glanding | 28d | 2026-11-20 | 2026-12-22 | 2.2-HCUEE01-1260 | 121d | 0d |  | LABOUR [3000 h] | EE | 1 | C03a | TY1 | C03a | EIT02.2 |
| 2.2-HCUEE02-1280 |  | punch clear | 5d | 2026-12-23 | 2026-12-28 | 2.2-HCUEE02-1270 | 121d | 0d |  | LABOUR [500 h] | EE | 1 | C03a | TY1 | C03a | EIT02.2 |
| 2.2-HCUEE02-1290 |  | Complete QA/QC document | 10d | 2026-12-29 | 2027-01-08 | 2.2-HCUEE02-1280 | 121d |  |  | LABOUR [925.66 h] | EE | 1 | C03a | TY1 | C03a | EIT02.2 |
|  | 7 | **Electrical Earthing / Lightning Installation** |  | 2026-04-01 | 2026-09-16 |  |  |  |  |  |  |  |  |  |  |  |
| 2.2-HCUEE05-1070 |  | Install Equipment Earthing / Inspection PIT / Install earthing pull and Connecttion | 120d | 2026-04-01 | 2026-08-18 | 2.2-HCUEE03-1470 SS | 219d | 0d |  | LABOUR [18000 h] |  |  |  |  |  |  |
| 2.2-HCUEE05-1080 |  | Clear punch | 10d | 2026-08-19 | 2026-08-29 | 2.2-HCUEE05-1070 | 219d | 0d |  | LABOUR [500 h] |  |  |  |  |  |  |
| 2.2-HCUEE05-1090 |  | Complete QA/QC document | 15d | 2026-08-31 | 2026-09-16 | 2.2-HCUEE05-1080 | 219d |  |  | LABOUR [3138 h] |  |  |  |  |  |  |
|  | 5 | **Lighting Fixture Installation** |  | 2026-07-15 | 2026-10-02 |  |  |  |  |  |  |  |  |  |  |  |
| 2.2-HCU EE05-1590 |  | Install support / bracket / Pole | 60d | 2026-07-15 | 2026-09-22 | 2.2-HCUEE01-1240 SS | 145d | 0d |  | LABOUR [1000 h] |  |  |  |  |  |  |
| 2.2-HCU EE05-1600 |  | lighting fixture | 60d | 2026-07-15 | 2026-09-22 | 2.2-HCU EE05-1590 SS | 205d | 0d |  | LABOUR [2000 h] |  |  |  |  |  |  |
| 2.2-HCU EE05-1610 |  | Clear punch | 5d | 2026-09-23 | 2026-09-28 | 2.2-HCU EE05-1600 | 205d | 0d |  | LABOUR [200 h] |  |  |  |  |  |  |
| 2.2-HCU EE05-1620 |  | Complete QA/QC document | 4d | 2026-09-29 | 2026-10-02 | 2.2-HCU EE05-1610 | 205d |  |  | LABOUR [442.08 h] |  |  |  |  |  |  |
|  | 12 | **Small Power Equipment Installation** |  | 2026-09-23 | 2026-12-11 |  |  |  |  |  |  |  |  |  |  |  |
| 2.2-HCU EE05-1630 |  | Install support / bracket | 60d | 2026-09-23 | 2026-12-01 | 2.2-HCU EE05-1590 | 145d | 0d |  | LABOUR [1000 h] |  |  |  |  |  |  |
| 2.2-HCU EE05-1640 |  | Install Distribution panel, convenience outlet | 60d | 2026-09-23 | 2026-12-01 | 2.2-HCU EE05-1630 SS | 145d | 0d |  | LABOUR [2000 h] |  |  |  |  |  |  |
| 2.2-HCU EE05-1650 |  | Clear punch | 5d | 2026-12-02 | 2026-12-07 | 2.2-HCU EE05-1640 | 145d | 0d |  | LABOUR [200 h] |  |  |  |  |  |  |
| 2.2-HCU EE05-1660 |  | Complete QA/QC document | 4d | 2026-12-08 | 2026-12-11 | 2.2-HCU EE05-1650 | 145d |  |  | LABOUR [442.08 h] |  |  |  |  |  |  |
|  | 2 | **Motor Solo Run** |  | 2026-10-03 | 2026-11-27 |  |  |  |  |  |  |  |  |  |  |  |
| 2.2-HCUEE-1090 |  | Motor solo run | 25d | 2026-10-03 | 2026-10-31 | 2.2-HCUEE02-1170 | 157d | 0d |  | LABOUR |  |  |  |  |  |  |
| 2.2-HCUEE-1100 |  | Clear punch | 10d | 2026-11-02 | 2026-11-12 | 2.2-HCUEE-1090 | 157d | 0d |  | LABOUR |  |  |  |  |  |  |
| 2.2-HCUEE-1110 |  | Complete QA/QC document | 13d | 2026-11-13 | 2026-11-27 | 2.2-HCUEE-1100 | 157d |  |  | LABOUR |  |  |  |  |  |  |
|  | 3 | **Instrument Works** |  | 2026-04-01 | 2027-02-27 |  |  |  |  |  |  |  |  |  |  |  |
|  | 10 | **Cable Laying concrete Trench** |  | 2026-04-01 | 2026-08-06 |  |  |  |  |  |  |  |  |  |  |  |
|  | 3 | **C03-JTR-070/064/069/068/054/055/102/057/071/108** |  | 2026-04-01 | 2026-07-02 |  |  |  |  |  |  |  |  |  |  |  |
| 2.2-HCUIN01-4000 |  | Cable Laying | 30d | 2026-04-01 | 2026-05-05 |  | 0d |  | start on or after 2026-04-01 | LABOUR [12000 h] |  |  |  |  | C03c | EIT02.2 |
| 2.2-HCUIN01-4010 |  | Megger & Continuity test | 5d | 2026-05-06 | 2026-05-11 | 2.2-HCUIN01-4000 | 284d | 0d |  | LABOUR [500 h] |  |  |  |  | C03c | EIT02.2 |
| 2.2-HCUIN01-4020 |  | punch Clear | 5d | 2026-05-12 | 2026-05-16 | 2.2-HCUIN01-4010 | 284d | 0d |  | LABOUR [300 h] |  |  |  |  | C03c | EIT02.2 |
| 2.2-HCUIN01-4030 |  | Sand Filling Compaction | 5d | 2026-05-18 | 2026-05-22 | 2.2-HCUIN01-4020 | 284d | 0d |  | LABOUR [500 h] |  |  |  |  |  |  |
| 2.2-HCUIN01-4040 |  | Complete QA/QC document | 5d | 2026-05-23 | 2026-05-28 | 2.2-HCUIN01-4030 | 284d | 0d |  | LABOUR [500 h] |  |  |  |  | C03c | EIT02.2 |
| 2.2-HCUIN01-4050 |  | Back Filling | 30d | 2026-05-29 | 2026-07-02 | 2.2-HCUIN01-4040 | 284d |  |  | LABOUR [3450.37 h] |  |  |  |  | C03c | EIT02.2 |

| ID | WBS | Activity | Duration | Start | Finish | Predecessors | Total float | Free float | Resources | EIT WBS | EIT PKG | Disciplines | Main Activity | WBS | Types |
| --- | --- | --- | --- | --- | --- | --- | --- | --- | --- | --- | --- | --- | --- | --- | --- |
|  | 2 | **C03-JTR-056/109/053/050/003/081/083/001/062/061** |  | 2026-05-06 | 2026-08-06 |  |  |  |  |  |  |  |  |  |  |
| 2.2-HCUIN01-4060 |  | Cable Laying | 30d | 2026-05-06 | 2026-06-09 | 2.2-HCUIN01-4000 | 78d | 0d | LABOUR [12000 h] | C03c | EIT02.2 |  |  |  |  |
| 2.2-HCUIN01-4070 |  | Megger & Continuity test | 5d | 2026-06-10 | 2026-06-15 | 2.2-HCUIN01-4060 | 254d | 0d | LABOUR [500 h] | C03c | EIT02.2 |  |  |  |  |
| 2.2-HCUIN01-4080 |  | punch Clear | 5d | 2026-06-16 | 2026-06-20 | 2.2-HCUIN01-4070 | 254d | 0d | LABOUR [300 h] | C03c | EIT02.2 |  |  |  |  |
| 2.2-HCUIN01-4090 |  | Sand Filling Compaction | 5d | 2026-06-22 | 2026-06-26 | 2.2-HCUIN01-4080 | 254d | 0d | LABOUR [500 h] |  |  |  |  |  |  |
| 2.2-HCUIN01-4100 |  | Complete QA/QC document | 5d | 2026-06-27 | 2026-07-02 | 2.2-HCUIN01-4090 | 254d | 0d | LABOUR [500 h] | C03c | EIT02.2 |  |  |  |  |
| 2.2-HCUIN01-4110 |  | Back Filling | 30d | 2026-07-03 | 2026-08-06 | 2.2-HCUIN01-4100 | 254d |  | LABOUR [3450.37 h] | C03c | EIT02.2 |  |  |  |  |
|  | 3 | **Instrument Cable Tray/Ladder Installation** |  | 2026-04-01 | 2026-07-08 |  |  |  |  |  |  |  |  |  |  |
| 2.2-HCUIN03-1050 |  | Install support / bracket | 60d | 2026-04-01 | 2026-06-09 | 2.2-HCUIN01-4000 SS | 78d | 0d | LABOUR |  |  |  |  |  |  |
| 2.2-HCUIN03-1060 |  | Install Ladder / Tray | 60d | 2026-04-01 | 2026-06-09 | 2.2-HCUIN03-1050 SS | 78d | 0d | LABOUR [6000 h] |  |  |  |  |  |  |
| 2.2-HCUIN03-1070 |  | Install Conduits | 60d | 2026-04-01 | 2026-06-09 | 2.2-HCUIN03-1060 SS | 78d | 0d | LABOUR [2000 h] |  |  |  |  |  |  |
| 2.2-HCUIN03-1080 |  | Clear punch | 10d | 2026-06-10 | 2026-06-20 | 2.2-HCUIN03-1070, 2.2-HCUIN03-1060 | 78d | 0d | LABOUR [500 h] |  |  |  |  |  |  |
| 2.2-HCUIN03-1090 |  | Complete QA/QC document | 15d | 2026-06-22 | 2026-07-08 | 2.2-HCUIN03-1080 | 78d | 0d | LABOUR [822.12 h] |  |  |  |  |  |  |
|  | 8 | **AG Cable Pull Primary Cable** |  | 2026-07-09 | 2026-10-03 |  |  |  |  |  |  |  |  |  |  |
| 2.2-HCUIN01-1150 |  | Pull Cable | 50d | 2026-07-09 | 2026-09-04 | 2.2-HCUIN03-1090 | 78d | 0d | LABOUR [15000 h] | C03a | EIT02.2 | EE | 1 | C03a | TY1 |
| 2.2-HCUIN01-1160 |  | Megger & Continuity test | 10d | 2026-09-05 | 2026-09-16 | 2.2-HCUIN01-1150 | 154d | 0d | LABOUR [1000 h] | C03a | EIT02.2 | EE | 1 | C03a | TY1 |
| 2.2-HCUIN01-1170 |  | Complete QA/QC document | 15d | 2026-09-17 | 2026-10-03 | 2.2-HCUIN01-1160 | 154d | 0d | LABOUR [1250.37 h] | C03a | EIT02.2 | EE | 1 | C03a | TY1 |
|  | 9 | **AG Cable Pull Secondary Cable** |  | 2026-07-09 | 2026-10-03 |  |  |  |  |  |  |  |  |  |  |
| 2.2-HCUIN01-1210 |  | Pull Cable | 50d | 2026-07-09 | 2026-09-04 | 2.2-HCUIN01-1150 SS | 78d | 0d | LABOUR [15000 h] | C03a | EIT02.2 | EE | 1 | C03a | TY1 |
| 2.2-HCUIN01-1220 |  | Megger & Continuity test | 10d | 2026-09-05 | 2026-09-16 | 2.2-HCUIN01-1210 | 78d | 0d | LABOUR [1000 h] | C03a | EIT02.2 | EE | 1 | C03a | TY1 |
| 2.2-HCUIN01-1230 |  | Complete QA/QC document | 15d | 2026-09-17 | 2026-10-03 | 2.2-HCUIN01-1220 | 78d | 0d | LABOUR [1250.37 h] | C03a | EIT02.2 | EE | 1 | C03a | TY1 |
|  | 2 | **Instrument Cable Termination / Glanding** |  | 2026-06-10 | 2026-12-01 |  |  |  |  |  |  |  |  |  |  |
|  | 1 | **UG Cable Termination Cable** |  | 2026-06-10 | 2026-08-06 |  |  |  |  |  |  |  |  |  |  |
| 2.2-HCUIN02-1960 |  | Cable Termination/Glanding | 25d | 2026-06-10 | 2026-07-08 | 2.2-HCUIN01-4060 | 254d | 0d | LABOUR [5000 h] | C03a | EIT02.2 | EE | 1 | C03a | TY1 |
| 2.2-HCUIN02-1970 |  | punch clear | 10d | 2026-07-09 | 2026-07-20 | 2.2-HCUIN02-1960 | 254d | 0d | LABOUR [1000 h] | C03a | EIT02.2 | EE | 1 | C03a | TY1 |
| 2.2-HCUIN02-1980 |  | Complete QA/QC document | 15d | 2026-07-21 | 2026-08-06 | 2.2-HCUIN02-1970 | 254d |  | LABOUR [1234.7 h] | C03a | EIT02.2 | EE | 1 | C03a | TY1 |

| ID | WBS | Activity | Duration | Start | Finish | Predecessors | Total float | Free float | Resources | Disciplines | Main Activity | WBS | Types | EIT WBS | EIT PKG |
| --- | --- | --- | --- | --- | --- | --- | --- | --- | --- | --- | --- | --- | --- | --- | --- |
|  | 8 | **Cable Termination Primary Cable** |  | 2026-10-05 | 2026-12-01 |  |  |  |  |  |  |  |  |  |  |
| 2.2-HCUIN02-1150 |  | Cable Termination/Glanding | 25d | 2026-10-05 | 2026-11-02 | 2.2-HCUIN01-1170 | 154d | 0d | LABOUR [5000 h] | EE | 1 | C03a | TY1 | C03a | EIT02.2 |
| 2.2-HCUIN02-1160 |  | punch clear | 10d | 2026-11-03 | 2026-11-13 | 2.2-HCUIN02-1150 | 154d | 0d | LABOUR [1000 h] | EE | 1 | C03a | TY1 | C03a | EIT02.2 |
| 2.2-HCUIN02-1170 |  | Complete QA/QC document | 15d | 2026-11-14 | 2026-12-01 | 2.2-HCUIN02-1160 | 154d |  | LABOUR [1234.7 h] | EE | 1 | C03a | TY1 | C03a | EIT02.2 |
|  | 9 | **Cable Termination Secondary Cable** |  | 2026-10-05 | 2026-12-01 |  |  |  |  |  |  |  |  |  |  |
| 2.2-HCUIN02-1210 |  | Cable Termination/Glanding | 25d | 2026-10-05 | 2026-11-02 | 2.2-HCUIN01-1230 | 78d | 0d | LABOUR [5000 h] | EE | 1 | C03a | TY1 | C03a | EIT02.2 |
| 2.2-HCUIN02-1220 |  | punch clear | 10d | 2026-11-03 | 2026-11-13 | 2.2-HCUIN02-1210 | 78d | 0d | LABOUR [1000 h] | EE | 1 | C03a | TY1 | C03a | EIT02.2 |
| 2.2-HCUIN02-1230 |  | Complete QA/QC document | 15d | 2026-11-14 | 2026-12-01 | 2.2-HCUIN02-1220 | 78d | 0d | LABOUR [1234.7 h] | EE | 1 | C03a | TY1 | C03a | EIT02.2 |
|  | 4 | **Instrument Calibration** |  | 2026-05-06 | 2026-06-09 |  |  |  |  |  |  |  |  |  |  |
| 2.2-HCUIN05-2050 |  | Calibration of Gauges | 30d | 2026-05-06 | 2026-06-09 | 2.2-HCUIN01-4060 SS | 94d | 0d | LABOUR [4000 h] | EE | 1 | C03a | TY1 | C03c | EIT02.2 |
| 2.2-HCUIN05-2080 |  | Calibration of Transmitters/Switches | 30d | 2026-05-06 | 2026-06-09 | 2.2-HCUIN05-2050 SS | 94d | 0d | LABOUR [8303.6 h] |  |  |  |  |  |  |
|  | 1 | **Gauges** |  | 2026-05-06 | 2026-06-20 |  |  |  |  |  |  |  |  |  |  |
| 2.2-HCUIN04-1260 |  | D.P Pressure Gauge Installation | 10d | 2026-05-06 | 2026-05-16 | 2.2-HCUIN05-2050 SS | 294d | 0d | LABOUR [1000 h] |  |  |  |  |  |  |
| 2.2-HCUIN04-1270 |  | Pressure Gauge Installation | 10d | 2026-05-18 | 2026-05-28 | 2.2-HCUIN04-1260 | 294d | 0d | LABOUR [2000 h] | EE | 1 | C03a | TY1 | C03c | EIT02.2 |
| 2.2-HCUIN04-1280 |  | Level Gauge Installation | 10d | 2026-05-29 | 2026-06-09 | 2.2-HCUIN04-1270 | 294d | 0d | LABOUR [1000 h] | EE | 1 | C03a | TY1 | C03c | EIT02.2 |
| 2.2-HCUIN04-1290 |  | Clear punch | 5d | 2026-06-10 | 2026-06-15 | 2.2-HCUIN04-1280 | 294d | 0d | LABOUR [500 h] | EE | 1 | C03a | TY1 | C03c | EIT02.2 |
| 2.2-HCUIN04-1300 |  | Complete QA/QC document | 5d | 2026-06-16 | 2026-06-20 | 2.2-HCUIN04-1290 | 294d | 47d | LABOUR [1009.94 h] | EE | 1 | C03a | TY1 | C03c | EIT02.2 |
|  | 6 | **Transmitters/Switches** |  | 2026-06-10 | 2026-08-14 |  |  |  |  |  |  |  |  |  |  |
| 2.2-HCUIN04-1320 |  | Install support / bracket | 10d | 2026-06-10 | 2026-06-20 | 2.2-HCUIN05-2080 | 94d | 0d | LABOUR [500 h] | EE | 1 | C03a | TY1 | C03c | EIT02.2 |
| 2.2-HCUIN04-1330 |  | Pressure transmitters Installation | 10d | 2026-06-22 | 2026-07-02 | 2.2-HCUIN04-1320 | 94d | 0d | LABOUR [1000 h] | EE | 1 | C03a | TY1 | C03c | EIT02.2 |
| 2.2-HCUIN04-1340 |  | D.P. Transmitters - HART Installation | 10d | 2026-07-03 | 2026-07-14 | 2.2-HCUIN04-1330 | 94d | 0d | LABOUR [1000 h] | EE | 1 | C03a | TY1 | C03c | EIT02.2 |
| 2.2-HCUIN04-1350 |  | Temperature Transmitters Installation | 10d | 2026-07-15 | 2026-07-25 | 2.2-HCUIN04-1340 | 247d | 0d | LABOUR [1000 h] | EE | 1 | C03a | TY1 | C03c | EIT02.2 |
| 2.2-HCUIN04-1360 |  | Level Switch Installation | 10d | 2026-07-27 | 2026-08-06 | 2.2-HCUIN04-1350 | 247d | 0d | LABOUR [1000 h] |  |  |  |  |  |  |
| 2.2-HCUIN04-1370 |  | Clear punch | 2d | 2026-08-07 | 2026-08-08 | 2.2-HCUIN04-1360 | 247d | 0d | LABOUR [500 h] |  |  |  |  |  |  |
| 2.2-HCUIN04-1380 |  | Complete QA/QC document | 5d | 2026-08-10 | 2026-08-14 | 2.2-HCUIN04-1370, 2.2-HCUIN04-1300 FF | 247d |  | LABOUR [509.94 h] |  |  |  |  |  |  |

| ID | WBS | Activity | Duration | Start | Finish | Predecessors | Total float | Free float | Calendar | Resources | Disciplines | Main Activity | WBS | Types | EIT WBS | EIT PKG |
| --- | --- | --- | --- | --- | --- | --- | --- | --- | --- | --- | --- | --- | --- | --- | --- | --- |
|  | 11 | **Instrument Junction Box Installation** |  | 2026-06-04 | 2026-06-19 |  |  |  |  |  |  |  |  |  |  |  |
| 2.2-HCUIN-1390 |  | Install support / bracket | 5d | 2026-06-04 | 2026-06-10 | 2.2-HCUIN04-1320 SF | 295d | 0d |  | LABOUR [2000 h] | EE | 1 | C03a | TY1 | C03c | EIT02.2 |
| 2.2-HCUIN-1400 |  | Instrument Junction Box Installation | 5d | 2026-06-10 | 2026-06-15 | 2.2-HCUIN-1390 | 295d | 0d |  | LABOUR [2500 h] | EE | 1 | C03a | TY1 | C03c | EIT02.2 |
| 2.2-HCUIN-1410 |  | Clear punch | 2d | 2026-06-16 | 2026-06-17 | 2.2-HCUIN-1400 | 295d | 0d |  | LABOUR [500 h] | EE | 1 | C03a | TY1 | C03c | EIT02.2 |
| 2.2-HCUIN-1420 |  | Complete QA/QC document | 2d | 2026-06-18 | 2026-06-19 | 2.2-HCUIN-1410 | 295d |  |  | LABOUR [509.94 h] | EE | 1 | C03a | TY1 | C03c | EIT02.2 |
|  | 5 | **Tubing** |  | 2026-07-15 | 2026-09-24 |  |  |  |  |  |  |  |  |  |  |  |
| 2.2-HCUIN07-1430 |  | Instrument Hook up Tubing Installation | 20d | 2026-07-15 | 2026-08-06 | 2.2-HCUIN04-1330, 2.2-HCUIN04-1340 | 94d | 0d |  | LABOUR [1000 h] |  |  |  |  | C03c | EIT02.2 |
| 2.2-HCUIN07-1440 |  | Leak Test | 20d | 2026-08-07 | 2026-08-29 | 2.2-HCUIN07-1430 | 212d | 0d |  | LABOUR [500 h] |  |  |  |  | C03c | EIT02.2 |
| 2.2-HCUIN07-1450 |  | Clear Punch | 10d | 2026-08-31 | 2026-09-10 | 2.2-HCUIN07-1440 | 212d | 0.1d |  | LABOUR [100 h] |  |  |  |  | C03c | EIT02.2 |
| 2.2-HCUIN07-1460 |  | Complete QA/QC document | 15d | 2026-09-11 | 2026-09-24 | 2.2-HCUIN07-1450 | 269.25d |  | 7 - Day Workweek (No Holidays) | LABOUR [114.53 h] |  |  |  |  | C03c | EIT02.2 |
|  | 7 | **Instrument Loop Check** |  | 2026-12-02 | 2027-02-27 |  |  |  |  |  |  |  |  |  |  |  |
| 2.2-HCUIN09-1470 |  | Instrument Loop check | 42d | 2026-12-02 | 2027-01-19 | 2.2-HCUIN02-1230 | 78d | 0d |  | LABOUR [6000 h] |  |  |  |  | C03c | EIT02.2 |
| 2.2-HCUIN09-1480 |  | Clear Punch | 15d | 2027-01-20 | 2027-02-05 | 2.2-HCUIN09-1470 | 78d | 0d |  | LABOUR [1000 h] |  |  |  |  | C03c | EIT02.2 |
| 2.2-HCUIN09-1490 |  | Complete QA/QC document | 19d | 2027-02-06 | 2027-02-27 | 2.2-HCUIN09-1480 | 78d |  |  | LABOUR [2425.48 h] |  |  |  |  | C03c | EIT02.2 |
|  | 5 | **Telecommunication** |  | 2026-07-15 | 2027-02-09 |  |  |  |  |  |  |  |  |  |  |  |
|  | 3 | **Telecom** |  | 2026-07-15 | 2027-02-09 |  |  |  |  |  |  |  |  |  |  |  |
|  | 3 | **Telecom Cable Tray/Ladder Installation** |  | 2026-07-15 | 2026-10-03 |  |  |  |  |  |  |  |  |  |  |  |
| 2.2-HCUTE03-1100 |  | Install support / bracket | 50d | 2026-07-15 | 2026-09-10 | 2.2-HCUIN07-1430 SS | 94d | 0d |  | LABOUR [3 h] | EE | 1 | C03a | TY1 | C03a | EIT02.2 |
| 2.2-HCUTE03-1110 |  | Install Ladder / Tray | 50d | 2026-07-15 | 2026-09-10 | 2.2-HCUTE03-1100 SS | 94d | 0d |  | LABOUR [77 h] | EE | 1 | C03a | TY1 | C03a | EIT02.2 |
| 2.2-HCUTE03-1120 |  | Conduit Install | 50d | 2026-07-15 | 2026-09-10 | 2.2-HCUTE03-1100 SS | 224d |  |  | LABOUR [500 h] |  |  |  |  | C03a | EIT02.2 |
| 2.2-HCUTE03-1130 |  | Clear punch | 5d | 2026-09-11 | 2026-09-16 | 2.2-HCUTE03-1110 | 94d | 0d |  | LABOUR [75 h] | EE | 1 | C03a | TY1 | C03a | EIT02.2 |
| 2.2-HCUTE03-1140 |  | Complete QA/QC document | 15d | 2026-09-17 | 2026-10-03 | 2.2-HCUTE03-1130 | 94d | 0d |  | LABOUR [75 h] | EE | 1 | C03a | TY1 | C03a | EIT02.2 |
|  | 1 | **AG Telecommunication Cable Installation** |  | 2026-10-05 | 2026-12-07 |  |  |  |  |  |  |  |  |  |  |  |
| 2.2-HCUTE01-1030 |  | Ground Pull Cable | 30d | 2026-10-05 | 2026-11-07 | 2.2-HCUTE03-1140 | 94d | 0d |  | LABOUR [1500 h] | EE | 1 | C03a | TY1 | C03c | EIT02.2 |
| 2.2-HCUTE01-1040 |  | Megger & Continuity test | 10d | 2026-11-09 | 2026-11-19 | 2.2-HCUTE01-1030 | 94d | 0d |  | LABOUR [200 h] | EE | 1 | C03a | TY1 | C03c | EIT02.2 |
| 2.2-HCUTE01-1050 |  | Complete QA/QC document | 15d | 2026-11-20 | 2026-12-07 | 2.2-HCUTE01-1040 | 94d | 0d |  | LABOUR [300 h] | EE | 1 | C03a | TY1 | C03c | EIT02.2 |

| ID | WBS | Activity | Duration | Start | Finish | Predecessors | Total float | Free float | Resources | Disciplines | Main Activity | WBS | Types | EIT WBS | EIT PKG |
| --- | --- | --- | --- | --- | --- | --- | --- | --- | --- | --- | --- | --- | --- | --- | --- |
|  | 4 | **Telecommunication Termination / Glanding** |  | 2026-12-08 | 2027-02-09 |  |  |  |  |  |  |  |  |  |  |
| 2.2-HCUTE02-1030 |  | Cable Termination/Glanding | 30d | 2026-12-08 | 2027-01-11 | 2.2-HCUTE01-1050 | 94d | 0d | LABOUR [500 h] | EE | 1 | C03a | TY1 | C03a | EIT02.2 |
| 2.2-HCUTE02-1040 |  | punch clear | 10d | 2027-01-12 | 2027-01-22 | 2.2-HCUTE02-1030 | 94d | 0d | LABOUR [200 h] | EE | 1 | C03a | TY1 | C03a | EIT02.2 |
| 2.2-HCUTE02-1050 |  | Complete QA/QC document | 15d | 2027-01-23 | 2027-02-09 | 2.2-HCUTE02-1040 | 94d |  | LABOUR [253.1 h] | EE | 1 | C03a | TY1 | C03a | EIT02.2 |
|  | 2 | **Telecommunication Equipment Installation** |  | 2026-10-05 | 2026-11-25 |  |  |  |  |  |  |  |  |  |  |
| 2.2-HCUTE03-1060 |  | Telecom Equpiment Installation | 30d | 2026-10-05 | 2026-11-07 | 2.2-HCUTE03-1140 | 159d | 0d | LABOUR [500 h] | EE | 1 | C03a | TY1 | C03c | EIT02.2 |
| 2.2-HCUTE03-1070 |  | Clear Punch | 10d | 2026-11-09 | 2026-11-19 | 2.2-HCUTE03-1060 | 159d | 0d | LABOUR [100 h] | EE | 1 | C03a | TY1 | C03c | EIT02.2 |
| 2.2-HCUTE03-1080 |  | Complete QA/QC document | 5d | 2026-11-20 | 2026-11-25 | 2.2-HCUTE03-1070 | 159d |  | LABOUR [187.26 h] | EE | 1 | C03a | TY1 | C03c | EIT02.2 |
|  | 4 | **HCU ZONE-B** |  | 2026-05-06 | 2027-02-27 |  |  |  |  |  |  |  |  |  |  |
|  | 1 | **Electrical Works** |  | 2026-05-06 | 2027-02-12 |  |  |  |  |  |  |  |  |  |  |
|  | 6 | **Cable trench Excavation buried** |  | 2026-05-06 | 2026-07-17 |  |  |  |  |  |  |  |  |  |  |
|  | 8 | **C03-ETD-142/854/504/852/508/824/216/515/666/207/478/206/513/512/522** |  | 2026-05-06 | 2026-06-12 |  |  |  |  |  |  |  |  |  |  |
| 2.2-HCUEE09-1060 |  | Cable trench Excavation | 30d | 2026-05-06 | 2026-06-09 | 2.2-HCUEE09-1000 | 78d | 0d |  |  |  |  |  | C03c | EIT02.2 |
| 2.2-HCUEE09-1070 |  | Sand Filling Compaction | 3d | 2026-06-10 | 2026-06-12 | 2.2-HCUEE09-1060 | 301d |  |  |  |  |  |  | C03c | EIT02.2 |
|  | 36 | **C03-ETD-511/480/250/141/506/699/628/487/502/145/501/190/143/624/813/814** |  | 2026-06-10 | 2026-07-17 |  |  |  |  |  |  |  |  |  |  |
| 2.2-HCUEE09-1080 |  | Cable trench Excavation | 30d | 2026-06-10 | 2026-07-14 | 2.2-HCUEE09-1060 | 207d | 0d |  |  |  |  |  | C03c | EIT02.2 |
| 2.2-HCUEE09-1090 |  | Sand Filling Compaction | 3d | 2026-07-15 | 2026-07-17 | 2.2-HCUEE09-1080 | 271d |  |  |  |  |  |  | C03c | EIT02.2 |
|  | 8 | **Cable Laying Direct buried** |  | 2026-06-10 | 2026-09-30 |  |  |  |  |  |  |  |  |  |  |
|  | 8 | **C03-ETD-142/854/504/852/508/824/216/515/666/207/478/206/513/512/522** |  | 2026-06-10 | 2026-09-02 |  |  |  |  |  |  |  |  |  |  |
| 2.2-HCUEE01-3095 |  | Sand Filling First Layer | 4d | 2026-06-10 | 2026-06-13 | 2.2-HCUEE09-1060 | 151.9d | 0d |  |  |  |  |  |  |  |
| 2.2-HCUEE01-3100 |  | Cable Laying | 30d | 2026-06-15 | 2026-07-18 | 2.2-HCUEE01-3095 | 151.9d | 0d |  |  |  |  |  | C03c | EIT02.2 |
| 2.2-HCUEE01-3110 |  | Megger & Continuity test | 5d | 2026-07-20 | 2026-07-24 | 2.2-HCUEE01-3100 | 231d | 0d |  |  |  |  |  | C03c | EIT02.2 |
| 2.2-HCUEE01-3120 |  | punch Clear | 5d | 2026-07-25 | 2026-07-30 | 2.2-HCUEE01-3110 | 231d | 0d |  |  |  |  |  | C03c | EIT02.2 |
| 2.2-HCUEE01-3130 |  | Sand Filling Compaction | 4d | 2026-07-31 | 2026-08-04 | 2.2-HCUEE01-3120 | 231d | 0d |  |  |  |  |  |  |  |
| 2.2-HCUEE01-3140 |  | Complete QA/QC document | 5d | 2026-08-05 | 2026-08-10 | 2.2-HCUEE01-3130 | 231d | 0d |  |  |  |  |  | C03c | EIT02.2 |
| 2.2-HCUEE01-3150 |  | Back Filling | 20d | 2026-08-11 | 2026-09-02 | 2.2-HCUEE01-3140 | 231d |  |  |  |  |  |  | C03c | EIT02.2 |

| ID | WBS | Activity | Duration | Start | Finish | Predecessors | Total float | Free float | EIT WBS | EIT PKG |
| --- | --- | --- | --- | --- | --- | --- | --- | --- | --- | --- |
|  | 36 | **C03-ETD-511/480/250/141/506/699/628/487/502/145/501/190/143/624/813/814** |  | 2026-07-15 | 2026-09-30 |  |  |  |  |  |
| 2.2-HCUEE01-3155 |  | Sand Filling First layer | 4d | 2026-07-15 | 2026-07-18 | 2.2-HCUEE09-1080 | 207d | 0d |  |  |
| 2.2-HCUEE01-3160 |  | Cable Laying | 25d | 2026-07-20 | 2026-08-17 | 2.2-HCUEE01-3155 | 207d | 0d | C03c | EIT02.2 |
| 2.2-HCUEE01-3170 |  | Megger & Continuity test | 5d | 2026-08-18 | 2026-08-22 | 2.2-HCUEE01-3160 | 207d | 0d | C03c | EIT02.2 |
| 2.2-HCUEE01-3180 |  | punch Clear | 5d | 2026-08-24 | 2026-08-28 | 2.2-HCUEE01-3170 | 207d | 0d | C03c | EIT02.2 |
| 2.2-HCUEE01-3190 |  | Sand Filling Compaction | 4d | 2026-08-29 | 2026-09-02 | 2.2-HCUEE01-3180 | 207d | 0d |  |  |
| 2.2-HCUEE01-3200 |  | Complete QA/QC document | 4d | 2026-09-03 | 2026-09-07 | 2.2-HCUEE01-3190 | 207d | 0d | C03c | EIT02.2 |
| 2.2-HCUEE01-3210 |  | Back Filling | 20d | 2026-09-08 | 2026-09-30 | 2.2-HCUEE01-3200 | 207d |  | C03c | EIT02.2 |
|  | 13 | **Cable Laying Concrete Trench** |  | 2026-06-15 | 2026-09-30 |  |  |  |  |  |
|  | 1 | **C03-ETC-111/1233/158/426/430/425/174/145** |  | 2026-06-15 | 2026-09-08 |  |  |  |  |  |
| 2.2-HCUEE01-1000 |  | Cable Laying | 30d | 2026-06-15 | 2026-07-18 | 2.2-HCUEE01-3100 SS | 151.9d | 0d | C03c | EIT02.2 |
| 2.2-HCUEE01-1010 |  | Megger & Continuity test | 5d | 2026-07-20 | 2026-07-24 | 2.2-HCUEE01-1000 | 226d | 0d | C03c | EIT02.2 |
| 2.2-HCUEE01-1020 |  | punch Clear | 5d | 2026-07-25 | 2026-07-30 | 2.2-HCUEE01-1010 | 226d | 0d | C03c | EIT02.2 |
| 2.2-HCUEE01-1030 |  | Sand Filling Compaction | 4d | 2026-07-31 | 2026-08-04 | 2.2-HCUEE01-1020 | 226d | 0d |  |  |
| 2.2-HCUEE01-1040 |  | Complete QA/QC document | 10d | 2026-08-05 | 2026-08-15 | 2.2-HCUEE01-1030 | 226d | 0d | C03c | EIT02.2 |
| 2.2-HCUEE01-1050 |  | Back Filling | 20d | 2026-08-17 | 2026-09-08 | 2.2-HCUEE01-1040 | 226d |  | C03c | EIT02.2 |
|  | 2 | **C03-ETC-195/193/124/577/434/192/107/138/159** |  | 2026-07-20 | 2026-09-30 |  |  |  |  |  |
| 2.2-HCUEE01-1500 |  | Cable Laying | 25d | 2026-07-20 | 2026-08-17 | 2.2-HCUEE01-1000 | 151.9d | 0d | C03c | EIT02.2 |
| 2.2-HCUEE01-1510 |  | Megger & Continuity test | 5d | 2026-08-18 | 2026-08-22 | 2.2-HCUEE01-1500 | 207d | 0d | C03c | EIT02.2 |
| 2.2-HCUEE01-1520 |  | punch Clear | 5d | 2026-08-24 | 2026-08-28 | 2.2-HCUEE01-1510 | 207d | 0d | C03c | EIT02.2 |
| 2.2-HCUEE01-1530 |  | Sand Filling Compaction | 4d | 2026-08-29 | 2026-09-02 | 2.2-HCUEE01-1520 | 207d | 0d |  |  |
| 2.2-HCUEE01-1540 |  | Complete QA/QC document | 4d | 2026-09-03 | 2026-09-07 | 2.2-HCUEE01-1530 | 207d | 0d | C03c | EIT02.2 |
| 2.2-HCUEE01-1550 |  | Back Filling | 20d | 2026-09-08 | 2026-09-30 | 2.2-HCUEE01-1540 | 207d |  | C03c | EIT02.2 |
|  | 1 | **Electrical Cable Tray/Ladder Installation** |  | 2026-05-06 | 2026-09-16 |  |  |  |  |  |
| 2.2-HCUEE01-1560 |  | Install support / bracket | 90d | 2026-05-06 | 2026-08-18 | 2.2-HCUEE09-1060 SS | 78d | 0d |  |  |
| 2.2-HCUEE01-1570 |  | Install Ladder / Tray | 90d | 2026-05-06 | 2026-08-18 | 2.2-HCUEE01-1560 SS | 91d | 0d |  |  |
| 2.2-HCUEE01-1580 |  | Install Conduits | 90d | 2026-05-06 | 2026-08-18 | 2.2-HCUEE01-1570 SS | 219d | 0d |  |  |
| 2.2-HCUEE01-1590 |  | Clear punch | 10d | 2026-08-19 | 2026-08-29 | 2.2-HCUEE01-1580, 2.2-HCUEE01-1570 | 219d | 0d |  |  |
| 2.2-HCUEE01-1600 |  | Complete QA/QC document | 15d | 2026-08-31 | 2026-09-16 | 2.2-HCUEE01-1590 | 219d |  |  |  |

| ID | WBS | Activity | Duration | Start | Finish | Predecessors | Total float | Free float | Disciplines | Main Activity | WBS | Types | EIT WBS | EIT PKG |
| --- | --- | --- | --- | --- | --- | --- | --- | --- | --- | --- | --- | --- | --- | --- |
|  | 9 | **AG Cable Pull LV Cable** |  | 2026-08-19 | 2026-10-21 |  |  |  |  |  |  |  |  |  |
| 2.2-HCUEE01-1610 |  | Pull Cable | 30d | 2026-08-19 | 2026-09-22 | 2.2-HCUEE01-1570 | 91d | 0d | EE | 1 | C03a | TY1 | C03c | EIT02.2 |
| 2.2-HCUEE01-1620 |  | Megger & Continuity test | 10d | 2026-09-23 | 2026-10-03 | 2.2-HCUEE01-1610 | 189d | 0d | EE | 1 | C03a | TY1 | C03c | EIT02.2 |
| 2.2-HCUEE01-1630 |  | Complete QA/QC document | 15d | 2026-10-05 | 2026-10-21 | 2.2-HCUEE01-1620 | 189d |  | EE | 1 | C03a | TY1 | C03c | EIT02.2 |
|  | 10 | **AG Cable Pull Control Cable** |  | 2026-08-19 | 2026-11-25 |  |  |  |  |  |  |  |  |  |
| 2.2-HCUEE01-1640 |  | Ground Pull Cable | 60d | 2026-08-19 | 2026-10-27 | 2.2-HCUEE01-1610 SS | 91d | 0d | EE | 1 | C03a | TY1 | C03a | EIT02.2 |
| 2.2-HCUEE01-1650 |  | Megger & Continuity test | 10d | 2026-10-28 | 2026-11-07 | 2.2-HCUEE01-1640 | 104d | 0d | EE | 1 | C03a | TY1 | C03a | EIT02.2 |
| 2.2-HCUEE01-1660 |  | Complete QA/QC document | 15d | 2026-11-09 | 2026-11-25 | 2.2-HCUEE01-1650 | 104d | 0d | EE | 1 | C03a | TY1 | C03a | EIT02.2 |
|  | 11 | **AG Lighting Cable** |  | 2026-08-19 | 2026-12-24 |  |  |  |  |  |  |  |  |  |
| 2.2-HCUEE01-1670 |  | Ground Pull Cable | 60d | 2026-08-19 | 2026-10-27 | 2.2-HCUEE01-1640 SS | 91d | 0d | EE | 1 | C03a | TY1 | C03a | EIT02.2 |
| 2.2-HCUEE01-1680 |  | Megger & Continuity test | 30d | 2026-10-28 | 2026-12-01 | 2.2-HCUEE01-1670 | 91d | 0d | EE | 1 | C03a | TY1 | C03a | EIT02.2 |
| 2.2-HCUEE01-1690 |  | Complete QA/QC document | 20d | 2026-12-02 | 2026-12-24 | 2.2-HCUEE01-1680 | 91d | 0d | EE | 1 | C03a | TY1 | C03a | EIT02.2 |
|  | 4 | **Electrical Cable Termination / Glanding** |  | 2026-08-18 | 2027-02-12 |  |  |  |  |  |  |  |  |  |
|  | 1 | **Termination MV Cable** |  | 2026-08-18 | 2026-10-08 |  |  |  |  |  |  |  |  |  |
| 2.2-HCUEE02-2380 |  | Cable Termination/Glanding | 30d | 2026-08-18 | 2026-09-21 | 2.2-HCUEE01-1500 | 151.9d | 0d | EE | 1 | C03a | TY1 | C03a | EIT02.2 |
| 2.2-HCUEE02-2390 |  | Clear punch | 5d | 2026-09-22 | 2026-09-26 | 2.2-HCUEE02-2380 | 151.9d | 0d | EE | 1 | C03a | TY1 | C03a | EIT02.2 |
| 2.2-HCUEE02-2400 |  | Complete QA/QC document | 10d | 2026-09-28 | 2026-10-08 | 2.2-HCUEE02-2390 | 151.9d | 0d | EE | 1 | C03a | TY1 | C03a | EIT02.2 |
|  | 2 | **Termination LV Cable** |  | 2026-09-23 | 2026-11-25 |  |  |  |  |  |  |  |  |  |
| 2.2-HCUEE02-2410 |  | Cable Termination/Glanding | 30d | 2026-09-23 | 2026-10-27 | 2.2-HCUEE01-1610 | 159d | 0d | EE | 1 | C03a | TY1 | C03a | EIT02.2 |
| 2.2-HCUEE02-2420 |  | Clear punch | 10d | 2026-10-28 | 2026-11-07 | 2.2-HCUEE02-2410 | 159d | 0d | EE | 1 | C03a | TY1 | C03a | EIT02.2 |
| 2.2-HCUEE02-2430 |  | Complete QA/QC document | 15d | 2026-11-09 | 2026-11-25 | 2.2-HCUEE02-2420 | 159d |  | EE | 1 | C03a | TY1 | C03a | EIT02.2 |
|  | 3 | **Termination Control Cable** |  | 2026-11-26 | 2027-01-28 |  |  |  |  |  |  |  |  |  |
| 2.2-HCUEE02-2440 |  | Cable Termination/Glanding | 30d | 2026-11-26 | 2026-12-30 | 2.2-HCUEE01-1660 | 104d | 0d | EE | 1 | C03a | TY1 | C03a | EIT02.2 |
| 2.2-HCUEE02-2450 |  | Clear punch | 10d | 2026-12-31 | 2027-01-11 | 2.2-HCUEE02-2440 | 104d | 0d | EE | 1 | C03a | TY1 | C03a | EIT02.2 |
| 2.2-HCUEE02-2460 |  | Complete QA/QC document | 15d | 2027-01-12 | 2027-01-28 | 2.2-HCUEE02-2450 | 104d |  | EE | 1 | C03a | TY1 | C03a | EIT02.2 |

| ID | WBS | Activity | Duration | Start | Finish | Predecessors | Total float | Free float | Calendar | Disciplines | Main Activity | WBS | Types | EIT WBS | EIT PKG |
| --- | --- | --- | --- | --- | --- | --- | --- | --- | --- | --- | --- | --- | --- | --- | --- |
|  | 4 | **Termination Lighting Cable** |  | 2026-12-25 | 2027-02-12 |  |  |  |  |  |  |  |  |  |  |
| 2.2-HCUEE02-2470 |  | Cable Termination/Glanding | 28d | 2026-12-25 | 2027-01-26 | 2.2-HCUEE01-1690 | 91d | 0d |  | EE | 1 | C03a | TY1 | C03a | EIT02.2 |
| 2.2-HCUEE02-2480 |  | Clear punch | 5d | 2027-01-27 | 2027-02-01 | 2.2-HCUEE02-2470 | 91d | 0d |  | EE | 1 | C03a | TY1 | C03a | EIT02.2 |
| 2.2-HCUEE02-2490 |  | Complete QA/QC document | 10d | 2027-02-02 | 2027-02-12 | 2.2-HCUEE02-2480 | 91d |  |  | EE | 1 | C03a | TY1 | C03a | EIT02.2 |
|  | 7 | **Electrical Earthing / Lightning Installation** |  | 2026-05-06 | 2026-10-21 |  |  |  |  |  |  |  |  |  |  |
| 2.1-HCUEE05-1100 |  | Install Equipment Earthing / Inspection PIT / Install earthing pull and Connecttion | 120d | 2026-05-06 | 2026-09-22 | 2.2-HCUEE01-1560 SS | 189d | 0d |  | EE | 1 | C03a | TY1 | C03a | EIT02.2 |
| 2.1-HCUEE05-1110 |  | Punch Clear | 10d | 2026-09-23 | 2026-10-03 | 2.1-HCUEE05-1100 | 189d | 0d |  | EE | 1 | C03a | TY1 | C03a | EIT02.2 |
| 2.1-HCUEE05-1120 |  | Complete QA/QC document | 15d | 2026-10-05 | 2026-10-21 | 2.1-HCUEE05-1110 | 189d |  |  | EE | 1 | C03a | TY1 | C03a | EIT02.2 |
|  | 5 | **Lighting Fixture Installation** |  | 2026-08-19 | 2026-11-02 |  |  |  |  |  |  |  |  |  |  |
| 2.2-HCUEE05-1590 |  | Install support / bracket / Pole | 40d | 2026-08-19 | 2026-10-03 | 2.2-HCUEE01-1570 | 179d | 0d |  | EE | 1 | C03a | TY1 | C03a | EIT02.2 |
| 2.2-HCUEE05-1600 |  | lighting fixture | 40d | 2026-08-19 | 2026-10-03 | 2.2-HCUEE05-1590 SS | 179d | 0d |  | EE | 1 | C03a | TY1 | C03a | EIT02.2 |
| 2.2-HCUEE05-1610 |  | Clear punch | 10d | 2026-10-05 | 2026-10-15 | 2.2-HCUEE05-1600 | 179d | 0d |  | EE | 1 | C03a | TY1 | C03a | EIT02.2 |
| 2.2-HCUEE05-1620 |  | Complete QA/QC document | 15d | 2026-10-16 | 2026-11-02 | 2.2-HCUEE05-1610 | 179d |  |  | EE | 1 | C03a | TY1 | C03a | EIT02.2 |
|  | 12 | **Small Power Equipment Installation** |  | 2026-08-19 | 2026-11-02 |  |  |  |  |  |  |  |  |  |  |
| 2.2-HCUEE05-1630 |  | Install support / bracket | 40d | 2026-08-19 | 2026-10-03 | 2.2-HCUEE05-1590 SS | 179d | 0d |  | EE | 1 | C03a | TY1 | C03a | EIT02.2 |
| 2.2-HCUEE05-1640 |  | Install Distribution panel, convenience outlet | 40d | 2026-08-19 | 2026-10-03 | 2.2-HCUEE05-1630 SS | 179d | 0d |  | EE | 1 | C03a | TY1 | C03a | EIT02.2 |
| 2.2-HCUEE05-1650 |  | Clear punch | 10d | 2026-10-05 | 2026-10-15 | 2.2-HCUEE05-1640 | 179d | 0d |  | EE | 1 | C03a | TY1 | C03a | EIT02.2 |
| 2.2-HCUEE05-1660 |  | Complete QA/QC document | 15d | 2026-10-16 | 2026-11-02 | 2.2-HCUEE05-1650 | 179d |  |  | EE | 1 | C03a | TY1 | C03a | EIT02.2 |
|  | 2 | **Motor Solo Run** |  | 2026-10-09 | 2026-12-03 |  |  |  |  |  |  |  |  |  |  |
| 2.1-HCUEE-1120 |  | Motor solo run | 25d | 2026-10-09 | 2026-11-06 | 2.2-HCUEE02-2400 | 151.9d | 0.1d |  |  |  |  |  | C03a | EIT02.2 |
| 2.1-HCUEE-1130 |  | Punch Clear | 10d | 2026-11-07 | 2026-11-16 | 2.1-HCUEE-1120 | 193.62d | 0d | 7 - Day Workweek (No Holidays) |  |  |  |  | C03a | EIT02.2 |
| 2.1-HCUEE-1140 |  | Complete QA/QC document | 15d | 2026-11-16 | 2026-12-03 | 2.1-HCUEE-1130 | 152.6d |  |  |  |  |  |  | C03a | EIT02.2 |
|  | 3 | **Instrument Works** |  | 2026-06-10 | 2027-02-27 |  |  |  |  |  |  |  |  |  |  |
|  | 10 | **Cable Laying concrete Trench** |  | 2026-06-10 | 2026-10-31 |  |  |  |  |  |  |  |  |  |  |
|  | 3 | **C03-JTR-044/045/041/043/049/005/047/046/106/094/095/096/097/091/098** |  | 2026-06-10 | 2026-10-31 |  |  |  |  |  |  |  |  |  |  |
| 2.2-HCUIN01 -4100 |  | Cable Laying | 70d | 2026-06-10 | 2026-08-29 | 2.2-HCUIN01-4060 | 78d | 0d |  |  |  |  |  | C03c | EIT02.2 |
| 2.2-HCUIN01 -4110 |  | Megger & Continuity test | 5d | 2026-08-31 | 2026-09-04 | 2.2-HCUIN01 -4100 | 150d | 0d |  |  |  |  |  | C03c | EIT02.2 |
| 2.2-HCUIN01 -4120 |  | punch Clear | 5d | 2026-09-05 | 2026-09-10 | 2.2-HCUIN01 -4110 | 150d | 0d |  |  |  |  |  | C03c | EIT02.2 |
| 2.2-HCUIN01 -4130 |  | Sand Filling Compaction | 5d | 2026-09-11 | 2026-09-16 | 2.2-HCUIN01 -4120 | 150d | 0d |  |  |  |  |  |  |  |
| 2.2-HCUIN01 -4140 |  | Complete QA/QC document | 5d | 2026-09-17 | 2026-09-22 | 2.2-HCUIN01 -4130 | 150d | 0d |  |  |  |  |  | C03c | EIT02.2 |
| 2.2-HCUIN01 -4150 |  | Back Filling | 34d | 2026-09-23 | 2026-10-31 | 2.2-HCUIN01 -4140 | 150d | 0d |  |  |  |  |  | C03c | EIT02.2 |

| ID | WBS | Activity | Duration | Start | Finish | Predecessors | Total float | Free float | Disciplines | Main Activity | WBS | Types | EIT WBS | EIT PKG |
| --- | --- | --- | --- | --- | --- | --- | --- | --- | --- | --- | --- | --- | --- | --- |
|  | 3 | **Instrument Cable Tray/Ladder Installation** |  | 2026-06-10 | 2026-09-16 |  |  |  |  |  |  |  |  |  |
| 2.2-HCUIN-1430 |  | Install support / bracket | 60d | 2026-06-10 | 2026-08-18 | 2.2-HCUIN01 -4100 SS | 78d | 0d | EE | 1 | C03a | TY1 | C03a | EIT02.2 |
| 2.2-HCUIN-1440 |  | Install Ladder / Tray | 60d | 2026-06-10 | 2026-08-18 | 2.2-HCUIN-1450 SS | 78d | 0d | EE | 1 | C03a | TY1 | C03a | EIT02.2 |
| 2.2-HCUIN-1450 |  | Steel Conduits for Cable tray | 60d | 2026-06-10 | 2026-08-18 | 2.2-HCUIN-1430 SS | 78d | 0d | EE | 1 | C03a | TY1 | C03a | EIT02.2 |
| 2.2-HCUIN-1460 |  | punch clear | 10d | 2026-08-19 | 2026-08-29 | 2.2-HCUIN-1440, 2.2-HCUIN-1450 | 78d | 0d | EE | 1 | C03a | TY1 | C03a | EIT02.2 |
| 2.2-HCUIN-1470 |  | Complete QA/QC document | 15d | 2026-08-31 | 2026-09-16 | 2.2-HCUIN-1460 | 78d | 0d | EE | 1 | C03a | TY1 | C03a | EIT02.2 |
|  | 8 | **AG Cable Pull Primary Cable** |  | 2026-09-17 | 2026-12-12 |  |  |  |  |  |  |  |  |  |
| 2.2-HCUIN01-1770 |  | Above Ground Pull Cable | 50d | 2026-09-17 | 2026-11-13 | 2.2-HCUIN-1470 | 114d | 0d | EE | 1 | C03a | TY1 | C03a | EIT02.2 |
| 2.2-HCUIN01-1780 |  | Megger & Continuity test | 10d | 2026-11-14 | 2026-11-25 | 2.2-HCUIN01-1770 | 114d | 0d | EE | 1 | C03a | TY1 | C03a | EIT02.2 |
| 2.2-HCUIN01-1790 |  | Complete QA/QC document | 15d | 2026-11-26 | 2026-12-12 | 2.2-HCUIN01-1780 | 114d | 0d | EE | 1 | C03a | TY1 | C03a | EIT02.2 |
|  | 9 | **AG Cable Pull Secondary Cable** |  | 2026-09-17 | 2026-12-12 |  |  |  |  |  |  |  |  |  |
| 2.2-HCUIN01-1800 |  | Above Ground Pull Cable | 50d | 2026-09-17 | 2026-11-13 | 2.2-HCUIN-1470 | 78d | 0d | EE | 1 | C03a | TY1 | C03a | EIT02.2 |
| 2.2-HCUIN01-1810 |  | Megger & Continuity test | 10d | 2026-11-14 | 2026-11-25 | 2.2-HCUIN01-1800 | 78d | 0d | EE | 1 | C03a | TY1 | C03a | EIT02.2 |
| 2.2-HCUIN01-1820 |  | Complete QA/QC document | 15d | 2026-11-26 | 2026-12-12 | 2.2-HCUIN01-1810 | 78d | 0d | EE | 1 | C03a | TY1 | C03a | EIT02.2 |
|  | 2 | **Instrument Cable Termination / Glanding** |  | 2026-11-02 | 2027-01-16 |  |  |  |  |  |  |  |  |  |
|  | 1 | **UG Cable Termination Cable** |  | 2026-11-02 | 2026-12-05 |  |  |  |  |  |  |  |  |  |
| 2.2-HCUIN02-1900 |  | Cable Termination/Glanding | 20d | 2026-11-02 | 2026-11-24 | 2.2-HCUIN01 -4150 | 150d | 0d | EE | 1 | C03a | TY1 | C03a | EIT02.2 |
| 2.2-HCUIN02-1910 |  | punch clear | 5d | 2026-11-25 | 2026-11-30 | 2.2-HCUIN02-1900 | 150d | 0d | EE | 1 | C03a | TY1 | C03a | EIT02.2 |
| 2.2-HCUIN02-1920 |  | Complete QA/QC document | 5d | 2026-12-01 | 2026-12-05 | 2.2-HCUIN02-1910 | 150d |  | EE | 1 | C03a | TY1 | C03a | EIT02.2 |
|  | 8 | **Cable Termination Primary Cable** |  | 2026-12-14 | 2027-01-16 |  |  |  |  |  |  |  |  |  |
| 2.2-HCUIN02-1780 |  | Cable Termination/Glanding | 20d | 2026-12-14 | 2027-01-05 | 2.2-HCUIN01-1790 | 114d | 0d | EE | 1 | C03a | TY1 | C03a | EIT02.2 |
| 2.2-HCUIN02-1790 |  | punch clear | 5d | 2027-01-06 | 2027-01-11 | 2.2-HCUIN02-1780 | 114d | 0d | EE | 1 | C03a | TY1 | C03a | EIT02.2 |
| 2.2-HCUIN02-1800 |  | Complete QA/QC document | 5d | 2027-01-12 | 2027-01-16 | 2.2-HCUIN02-1790 | 114d |  | EE | 1 | C03a | TY1 | C03a | EIT02.2 |
|  | 9 | **Cable Termination Secondary Cable** |  | 2026-12-14 | 2027-01-16 |  |  |  |  |  |  |  |  |  |
| 2.2-HCUIN02-1810 |  | Cable Termination/Glanding | 20d | 2026-12-14 | 2027-01-05 | 2.2-HCUIN01-1820 | 78d | 0d | EE | 1 | C03a | TY1 | C03a | EIT02.2 |
| 2.2-HCUIN02-1820 |  | punch clear | 5d | 2027-01-06 | 2027-01-11 | 2.2-HCUIN02-1810 | 78d | 0d | EE | 1 | C03a | TY1 | C03a | EIT02.2 |
| 2.2-HCUIN02-1830 |  | Complete QA/QC document | 5d | 2027-01-12 | 2027-01-16 | 2.2-HCUIN02-1820 | 78d | 0d | EE | 1 | C03a | TY1 | C03a | EIT02.2 |

| ID | WBS | Activity | Duration | Start | Finish | Predecessors | Total float | Free float | Calendar | Disciplines | Main Activity | WBS | Types | EIT WBS | EIT PKG |
| --- | --- | --- | --- | --- | --- | --- | --- | --- | --- | --- | --- | --- | --- | --- | --- |
|  | 4 | **Instrument Calibration** |  | 2026-08-19 | 2026-09-22 |  |  |  |  |  |  |  |  |  |  |
| 2.2-HCUIN05-2060 |  | Calibration of Gauges | 30d | 2026-08-19 | 2026-09-22 | 2.2-HCUIN-1440 | 122d | 0d |  | EE | 1 | C03a | TY1 | C03c | EIT02.2 |
| 2.2-HCUIN05-2090 |  | Calibration of Transmitters/Switches | 30d | 2026-08-19 | 2026-09-22 | 2.2-HCUIN05-2060 SS | 122d | 0d |  |  |  |  |  |  |  |
|  | 1 | **Gauges** |  | 2026-08-19 | 2026-10-03 |  |  |  |  |  |  |  |  |  |  |
| 2.2-HCUIN04-1440 |  | D.P Pressure Gauge Installation | 10d | 2026-08-19 | 2026-08-29 | 2.2-HCUIN05-2060 SS | 204d | 0d |  |  |  |  |  |  |  |
| 2.2-HCUIN04-1450 |  | Pressure Gauge Installation | 10d | 2026-08-31 | 2026-09-10 | 2.2-HCUIN04-1440 | 204d | 0d |  | EE | 1 | C03a | TY1 | C03c | EIT02.2 |
| 2.2-HCUIN04-1460 |  | Level Gauge Installation | 10d | 2026-09-11 | 2026-09-22 | 2.2-HCUIN04-1450 | 204d | 0d |  | EE | 1 | C03a | TY1 | C03c | EIT02.2 |
| 2.2-HCUIN04-1470 |  | Clear punch | 5d | 2026-09-23 | 2026-09-28 | 2.2-HCUIN04-1460 | 204d | 0d |  | EE | 1 | C03a | TY1 | C03c | EIT02.2 |
| 2.2-HCUIN04-1475 |  | Complete QA/QC document | 5d | 2026-09-29 | 2026-10-03 | 2.2-HCUIN04-1470 | 204d | 47d |  | EE | 1 | C03a | TY1 | C03c | EIT02.2 |
|  | 6 | **Transmitters/Switches** |  | 2026-09-23 | 2026-11-27 |  |  |  |  |  |  |  |  |  |  |
| 2.2-HCUIN04-1480 |  | Install support / bracket | 10d | 2026-09-23 | 2026-10-03 | 2.2-HCUIN05-2090 | 122d | 0d |  | EE | 1 | C03a | TY1 | C03c | EIT02.2 |
| 2.2-HCUIN04-1490 |  | Pressure transmitters Installation | 10d | 2026-10-05 | 2026-10-15 | 2.2-HCUIN04-1480 | 122d | 0d |  | EE | 1 | C03a | TY1 | C03c | EIT02.2 |
| 2.2-HCUIN04-1500 |  | D.P. Transmitters - HART Installation | 10d | 2026-10-16 | 2026-10-27 | 2.2-HCUIN04-1490 | 122d | 0d |  | EE | 1 | C03a | TY1 | C03c | EIT02.2 |
| 2.2-HCUIN04-1510 |  | Temperature Transmitters Installation | 10d | 2026-10-28 | 2026-11-07 | 2.2-HCUIN04-1500 | 157d | 0d |  | EE | 1 | C03a | TY1 | C03c | EIT02.2 |
| 2.2-HCUIN04-1520 |  | Level Switch Installation | 10d | 2026-11-09 | 2026-11-19 | 2.2-HCUIN04-1510 | 157d | 0d |  |  |  |  |  |  |  |
| 2.2-HCUIN04-1530 |  | Clear punch | 2d | 2026-11-20 | 2026-11-21 | 2.2-HCUIN04-1520 | 157d | 0d |  |  |  |  |  |  |  |
| 2.2-HCUIN04-1540 |  | Complete QA/QC document | 5d | 2026-11-23 | 2026-11-27 | 2.2-HCUIN04-1530, 2.2-HCUIN04-1475 FF | 157d |  |  |  |  |  |  |  |  |
|  | 11 | **Instrument Junction Box Installation** |  | 2026-10-05 | 2026-10-20 |  |  |  |  |  |  |  |  |  |  |
| 2.2-HCUIN-1480 |  | Install support / bracket | 5d | 2026-10-05 | 2026-10-09 | 2.2-HCUIN04-1480 | 190d | 0d |  | EE | 1 | C03a | TY1 | C03c | EIT02.2 |
| 2.2-HCUIN-1490 |  | Instrument Junction Box Installation | 5d | 2026-10-10 | 2026-10-15 | 2.2-HCUIN-1480 | 190d | 0d |  | EE | 1 | C03a | TY1 | C03c | EIT02.2 |
| 2.2-HCUIN-1500 |  | Clear punch | 2d | 2026-10-16 | 2026-10-17 | 2.2-HCUIN-1490 | 190d | 0d |  | EE | 1 | C03a | TY1 | C03c | EIT02.2 |
| 2.2-HCUIN-1510 |  | Complete QA/QC document | 2d | 2026-10-19 | 2026-10-20 | 2.2-HCUIN-1500 | 190d |  |  | EE | 1 | C03a | TY1 | C03c | EIT02.2 |
|  | 5 | **Tubing** |  | 2026-10-28 | 2027-01-07 |  |  |  |  |  |  |  |  |  |  |
| 2.2-HCUIN07-1470 |  | Instrument Hook up Tubing Installation | 20d | 2026-10-28 | 2026-11-19 | 2.2-HCUIN04-1490, 2.2-HCUIN04-1500 | 122d | 0d |  |  |  |  |  | C03c | EIT02.2 |
| 2.2-HCUIN07-1480 |  | Leak Test | 20d | 2026-11-20 | 2026-12-12 | 2.2-HCUIN07-1470 | 122d | 0d |  |  |  |  |  | C03c | EIT02.2 |
| 2.2-HCUIN07-1490 |  | Clear Punch | 10d | 2026-12-14 | 2026-12-24 | 2.2-HCUIN07-1480 | 122d | 0.1d |  |  |  |  |  | C03c | EIT02.2 |
| 2.2-HCUIN07-1500 |  | Complete QA/QC document | 15d | 2026-12-25 | 2027-01-07 | 2.2-HCUIN07-1490 | 154.88d |  | 7 - Day Workweek (No Holidays) |  |  |  |  | C03c | EIT02.2 |

| ID | WBS | Activity | Duration | Start | Finish | Predecessors | Total float | Free float | EIT WBS | EIT PKG | Disciplines | Main Activity | WBS | Types |
| --- | --- | --- | --- | --- | --- | --- | --- | --- | --- | --- | --- | --- | --- | --- |
|  | 7 | **Instrument Loop Check** |  | 2027-01-18 | 2027-02-27 |  |  |  |  |  |  |  |  |  |
| 2.2-HCUIN09-1500 |  | Instrument Loop check | 25d | 2027-01-18 | 2027-02-15 | 2.2-HCUIN02-1830 | 78d | 0d | C03c | EIT02.2 |  |  |  |  |
| 2.2-HCUIN09-1510 |  | Clear Punch | 5d | 2027-02-16 | 2027-02-20 | 2.2-HCUIN09-1500 | 78d | 0d | C03c | EIT02.2 |  |  |  |  |
| 2.2-HCUIN09-1520 |  | Complete QA/QC document | 6d | 2027-02-22 | 2027-02-27 | 2.2-HCUIN09-1510 | 78d |  | C03c | EIT02.2 |  |  |  |  |
|  | 5 | **Telecommunication** |  | 2026-08-19 | 2027-02-27 |  |  |  |  |  |  |  |  |  |
|  | 3 | **Telecom** |  | 2026-08-19 | 2027-02-27 |  |  |  |  |  |  |  |  |  |
|  | 3 | **Telecom Cable Tray/Ladder Installation** |  | 2026-08-19 | 2026-11-07 |  |  |  |  |  |  |  |  |  |
| 2.2-HCUTE03-1150 |  | Install support / bracket | 50d | 2026-08-19 | 2026-10-15 | 2.2-HCUEE01-1560 | 78d | 0d | C03a | EIT02.2 | EE | 1 | C03a | TY1 |
| 2.2-HCUTE03-1160 |  | Install Ladder / Tray | 50d | 2026-08-19 | 2026-10-15 | 2.2-HCUTE03-1150 SS | 78d | 0d | C03a | EIT02.2 | EE | 1 | C03a | TY1 |
| 2.2-HCUTE03-1170 |  | Conduit Install | 50d | 2026-08-19 | 2026-10-15 | 2.2-HCUTE03-1150 SS | 194d |  | C03a | EIT02.2 |  |  |  |  |
| 2.2-HCUTE03-1180 |  | Clear punch | 5d | 2026-10-16 | 2026-10-21 | 2.2-HCUTE03-1160 | 78d | 0d | C03a | EIT02.2 | EE | 1 | C03a | TY1 |
| 2.2-HCUTE03-1190 |  | Complete QA/QC document | 15d | 2026-10-22 | 2026-11-07 | 2.2-HCUTE03-1180 | 78d | 0d | C03a | EIT02.2 | EE | 1 | C03a | TY1 |
|  | 1 | **AG Telecommunication Cable Installation** |  | 2026-11-09 | 2027-01-11 |  |  |  |  |  |  |  |  |  |
| 2.2-HCUTE01-1310 |  | Above Ground Pull Cable | 30d | 2026-11-09 | 2026-12-12 | 2.2-HCUTE03-1190 | 78d | 0d | C03a | EIT02.2 | EE | 1 | C03a | TY1 |
| 2.2-HCUTE01-1320 |  | Megger & Continuity test | 10d | 2026-12-14 | 2026-12-24 | 2.2-HCUTE01-1310 | 78d | 0d | C03a | EIT02.2 | EE | 1 | C03a | TY1 |
| 2.2-HCUTE01-1330 |  | Complete QA/QC document | 15d | 2026-12-25 | 2027-01-11 | 2.2-HCUTE01-1320 | 78d | 0d | C03a | EIT02.2 | EE | 1 | C03a | TY1 |
|  | 4 | **Telecommunication Termination / Glanding** |  | 2027-01-12 | 2027-02-27 |  |  |  |  |  |  |  |  |  |
| 2.2-HCUTE02-1330 |  | Cable Termination/Glanding | 20d | 2027-01-12 | 2027-02-03 | 2.2-HCUTE01-1330 | 78d | 0d | C03a | EIT02.2 | EE | 1 | C03a | TY1 |
| 2.2-HCUTE02-1340 |  | Clear punch | 6d | 2027-02-04 | 2027-02-10 | 2.2-HCUTE02-1330 | 78d | 0d | C03a | EIT02.2 | EE | 1 | C03a | TY1 |
| 2.2-HCUTE02-1350 |  | Complete QA/QC document | 15d | 2027-02-11 | 2027-02-27 | 2.2-HCUTE02-1340 | 78d |  | C03a | EIT02.2 | EE | 1 | C03a | TY1 |
|  | 2 | **Telecommunication Equipment Installation** |  | 2026-11-09 | 2027-01-11 |  |  |  |  |  |  |  |  |  |
| 2.2-HCUTE01-1460 |  | Telecom Equpiment Installation | 30d | 2026-11-09 | 2026-12-12 | 2.2-HCUTE03-1190 | 119d | 0d | C03a | EIT02.2 | EE | 1 | C03a | TY1 |
| 2.2-HCUTE01-1470 |  | Clear Punch | 10d | 2026-12-14 | 2026-12-24 | 2.2-HCUTE01-1460 | 119d | 0d | C03a | EIT02.2 | EE | 1 | C03a | TY1 |
| 2.2-HCUTE01-1480 |  | Complete QA/QC document | 15d | 2026-12-25 | 2027-01-11 | 2.2-HCUTE01-1470 | 119d |  | C03a | EIT02.2 | EE | 1 | C03a | TY1 |

| ID | WBS | Activity | Duration | Start | Finish | Predecessors | Total float | Free float | Resources | EIT WBS | EIT PKG |
| --- | --- | --- | --- | --- | --- | --- | --- | --- | --- | --- | --- |
|  | 1 | **HCU ZONE-C** |  | 2026-04-20 | 2027-02-27 |  |  |  |  |  |  |
|  | 1 | **Electrical Works** |  | 2026-06-10 | 2027-02-12 |  |  |  |  |  |  |
|  | 6 | **Cable trench Excavation buried** |  | 2026-06-10 | 2026-07-31 |  |  |  |  |  |  |
|  | 8 | **C03-ETD-624/684/640/557/521/522/523/629/535/154** |  | 2026-06-10 | 2026-07-08 |  |  |  |  |  |  |
| 2.2-HCUEE09-1100 |  | Cable trench Excavation | 20d | 2026-06-10 | 2026-07-02 | 2.2-HCUEE09-1060 | 79d | 0d | LABOUR [800 h] | C03c | EIT02.2 |
| 2.2-HCUEE09-1110 |  | Sand Filling Compaction | 5d | 2026-07-03 | 2026-07-08 | 2.2-HCUEE09-1100 | 279d |  | LABOUR [201.33 h] | C03c | EIT02.2 |
|  | 36 | **C03-ETD-200/441/527/528/208/528/210/211/241/531/533** |  | 2026-07-03 | 2026-07-31 |  |  |  |  |  |  |
| 2.2-HCUEE09-1120 |  | Cable trench Excavation | 20d | 2026-07-03 | 2026-07-25 | 2.2-HCUEE09-1100 | 208d | 0d | LABOUR [800 h] | C03c | EIT02.2 |
| 2.2-HCUEE09-1130 |  | Sand Filling Compaction | 5d | 2026-07-27 | 2026-07-31 | 2.2-HCUEE09-1120 | 259d |  | LABOUR [201.33 h] | C03c | EIT02.2 |
|  | 8 | **Cable Laying Direct buried** |  | 2026-07-03 | 2026-09-29 |  |  |  |  |  |  |
|  | 8 | **C03-ETD-624/684/640/557/521/522/523/629/535/154** |  | 2026-07-03 | 2026-09-08 |  |  |  |  |  |  |
| 2.2-HCUEE01-3425 |  | Sand Filling First layer | 4d | 2026-07-03 | 2026-07-07 | 2.2-HCUEE09-1100 | 122.9d | 0d | LABOUR [500 h] |  |  |
| 2.2-HCUEE01-3430 |  | Cable Laying | 15d | 2026-07-08 | 2026-07-24 | 2.2-HCUEE01-3425 | 122.9d | 0d | LABOUR [4000 h] | C03c | EIT02.2 |
| 2.2-HCUEE01-3440 |  | Megger & Continuity test | 5d | 2026-07-25 | 2026-07-30 | 2.2-HCUEE01-3430 | 226d | 0d | LABOUR [300 h] | C03c | EIT02.2 |
| 2.2-HCUEE01-3450 |  | punch Clear | 5d | 2026-07-31 | 2026-08-05 | 2.2-HCUEE01-3440 | 226d | 0d | LABOUR [200 h] | C03c | EIT02.2 |
| 2.2-HCUEE01-3460 |  | Sand Filling Compaction | 4d | 2026-08-06 | 2026-08-10 | 2.2-HCUEE01-3450 | 226d | 0d | LABOUR [500 h] |  |  |
| 2.2-HCUEE01-3470 |  | Complete QA/QC document | 10d | 2026-08-11 | 2026-08-21 | 2.2-HCUEE01-3460 | 226d | 0d | LABOUR [500 h] | C03c | EIT02.2 |
| 2.2-HCUEE01-3480 |  | Back Filling | 15d | 2026-08-22 | 2026-09-08 | 2.2-HCUEE01-3470 | 226d |  | LABOUR [786.99 h] | C03c | EIT02.2 |
|  | 36 | **C03-ETD-200/441/527/528/208/528/210/211/241/531/533** |  | 2026-07-27 | 2026-09-29 |  |  |  |  |  |  |
| 2.2-HCUEE01-3485 |  | Sand Filling First layer | 4d | 2026-07-27 | 2026-07-30 | 2.2-HCUEE09-1120 | 208d | 0d | LABOUR [500 h] |  |  |
| 2.2-HCUEE01-3490 |  | Cable Laying | 15d | 2026-07-31 | 2026-08-17 | 2.2-HCUEE01-3485 | 208d | 0d | LABOUR [4000 h] | C03c | EIT02.2 |
| 2.2-HCUEE01-3500 |  | Megger & Continuity test | 5d | 2026-08-18 | 2026-08-22 | 2.2-HCUEE01-3490 | 208d | 0d | LABOUR [300 h] | C03c | EIT02.2 |
| 2.2-HCUEE01-3510 |  | punch Clear | 5d | 2026-08-24 | 2026-08-28 | 2.2-HCUEE01-3500 | 208d | 0d | LABOUR [200 h] | C03c | EIT02.2 |
| 2.2-HCUEE01-3520 |  | Sand Filling Compaction | 4d | 2026-08-29 | 2026-09-02 | 2.2-HCUEE01-3510 | 208d | 0d | LABOUR [500 h] |  |  |
| 2.2-HCUEE01-3530 |  | Complete QA/QC document | 8d | 2026-09-03 | 2026-09-11 | 2.2-HCUEE01-3520 | 208d | 0d | LABOUR [500 h] | C03c | EIT02.2 |
| 2.2-HCUEE01-3540 |  | Back Filling | 15d | 2026-09-12 | 2026-09-29 | 2.2-HCUEE01-3530 | 208d |  | LABOUR [786.99 h] | C03c | EIT02.2 |

| ID | WBS | Activity | Duration | Start | Finish | Predecessors | Total float | Free float | Resources | EIT WBS | EIT PKG | Disciplines | Main Activity | WBS | Types |
| --- | --- | --- | --- | --- | --- | --- | --- | --- | --- | --- | --- | --- | --- | --- | --- |
|  | 13 | **Cable Laying Concrete Trench** |  | 2026-07-08 | 2026-09-25 |  |  |  |  |  |  |  |  |  |  |
|  | 1 | **C03-ETC-154/137/199/132/130/404/103/131/167/127/196/197** |  | 2026-07-08 | 2026-09-25 |  |  |  |  |  |  |  |  |  |  |
| 2.2-HCUEE01-3310 |  | Cable Laying | 30d | 2026-07-08 | 2026-08-11 | 2.2-HCUEE01-3430 SS | 122.9d | 0d | LABOUR [4500 h] | C03c | EIT02.2 |  |  |  |  |
| 2.2-HCUEE01-3320 |  | Megger & Continuity test | 5d | 2026-08-12 | 2026-08-17 | 2.2-HCUEE01-3310 | 211d | 0d | LABOUR [300 h] | C03c | EIT02.2 |  |  |  |  |
| 2.2-HCUEE01-3330 |  | punch Clear | 5d | 2026-08-18 | 2026-08-22 | 2.2-HCUEE01-3320 | 211d | 0d | LABOUR [200 h] | C03c | EIT02.2 |  |  |  |  |
| 2.2-HCUEE01-3340 |  | Sand Filling Compaction | 4d | 2026-08-24 | 2026-08-27 | 2.2-HCUEE01-3330 | 211d | 0d | LABOUR [500 h] |  |  |  |  |  |  |
| 2.2-HCUEE01-3350 |  | Complete QA/QC document | 5d | 2026-08-28 | 2026-09-02 | 2.2-HCUEE01-3340 | 211d | 0d | LABOUR [500 h] | C03c | EIT02.2 |  |  |  |  |
| 2.2-HCUEE01-3360 |  | Back Filling | 20d | 2026-09-03 | 2026-09-25 | 2.2-HCUEE01-3350 | 211d |  | LABOUR [786.99 h] | C03c | EIT02.2 |  |  |  |  |
|  | 2 | **C03-ETC-134/181/169/421/170/422/135/136/171/423/547/126** |  | 2026-07-08 | 2026-09-19 |  |  |  |  |  |  |  |  |  |  |
| 2.2-HCUEE01-3370 |  | Cable Laying | 30d | 2026-07-08 | 2026-08-11 | 2.2-HCUEE01-3310 SS | 122.9d | 0d | LABOUR [4500 h] | C03c | EIT02.2 |  |  |  |  |
| 2.2-HCUEE01-3380 |  | Megger & Continuity test | 5d | 2026-08-12 | 2026-08-17 | 2.2-HCUEE01-3370 | 122.9d | 0d | LABOUR [300 h] | C03c | EIT02.2 |  |  |  |  |
| 2.2-HCUEE01-3390 |  | punch Clear | 5d | 2026-08-18 | 2026-08-22 | 2.2-HCUEE01-3380 | 122.9d | 0d | LABOUR [200 h] | C03c | EIT02.2 |  |  |  |  |
| 2.2-HCUEE01-3400 |  | Sand Filling Compaction | 4d | 2026-08-24 | 2026-08-27 | 2.2-HCUEE01-3390 | 122.9d | 0d | LABOUR [500 h] |  |  |  |  |  |  |
| 2.2-HCUEE01-3410 |  | Complete QA/QC document | 5d | 2026-08-28 | 2026-09-02 | 2.2-HCUEE01-3400 | 122.9d | 0d | LABOUR [500 h] | C03c | EIT02.2 |  |  |  |  |
| 2.2-HCUEE01-3420 |  | Back Filling | 15d | 2026-09-03 | 2026-09-19 | 2.2-HCUEE01-3410 | 122.9d | 0d | LABOUR [786.99 h] | C03c | EIT02.2 |  |  |  |  |
|  | 1 | **Electrical Cable Tray/Ladder Installation** |  | 2026-06-10 | 2026-09-16 |  |  |  |  |  |  |  |  |  |  |
| 2.2-HCUEE03-1010 |  | Install support / bracket | 60d | 2026-06-10 | 2026-08-18 | 2.2-HCUEE09-1100 SS | 79d | 0d | LABOUR [1000 h] | C03a | EIT02.2 | EE | 1 | C03a | TY1 |
| 2.2-HCUEE03-1020 |  | Install Ladder / Tray | 60d | 2026-06-10 | 2026-08-18 | 2.2-HCUEE03-1010 SS | 91d | 0d | LABOUR [2000 h] | C03a | EIT02.2 | EE | 1 | C03a | TY1 |
| 2.2-HCUEE03-1030 |  | Install Conduits | 60d | 2026-06-10 | 2026-08-18 | 2.2-HCUEE03-1020 SS | 219d | 0d | LABOUR [500 h] | C03a | EIT02.2 | EE | 1 | C03a | TY1 |
| 2.2-HCUEE03-1040 |  | Clear punch | 10d | 2026-08-19 | 2026-08-29 | 2.2-HCUEE03-1030, 2.2-HCUEE03-1020 | 219d | 0d | LABOUR [500 h] | C03a | EIT02.2 | EE | 1 | C03a | TY1 |
| 2.2-HCUEE03-1050 |  | Complete QA/QC document | 15d | 2026-08-31 | 2026-09-16 | 2.2-HCUEE03-1040 | 219d |  | LABOUR [383.3 h] | C03a | EIT02.2 | EE | 1 | C03a | TY1 |
|  | 9 | **AG Cable Pull LV Cable** |  | 2026-08-19 | 2026-11-25 |  |  |  |  |  |  |  |  |  |  |
| 2.2-HCUEE01-3220 |  | Above Ground Pull Cable | 60d | 2026-08-19 | 2026-10-27 | 2.2-HCUEE03-1020 | 91d | 0d | LABOUR [7000 h] | C03a | EIT02.2 | EE | 1 | C03a | TY1 |
| 2.2-HCUEE01-3240 |  | Megger & Continuity test | 10d | 2026-10-28 | 2026-11-07 | 2.2-HCUEE01-3220 | 104d | 0d | LABOUR [1049.3 h] | C03a | EIT02.2 | EE | 1 | C03a | TY1 |
| 2.2-HCUEE01-3230 |  | Complete QA/QC document | 15d | 2026-11-09 | 2026-11-25 | 2.2-HCUEE01-3240 | 104d | 0d | LABOUR [1000 h] | C03a | EIT02.2 | EE | 1 | C03a | TY1 |

| ID | WBS | Activity | Duration | Start | Finish | Predecessors | Total float | Free float | Resources | Disciplines | Main Activity | WBS | Types | EIT WBS | EIT PKG |
| --- | --- | --- | --- | --- | --- | --- | --- | --- | --- | --- | --- | --- | --- | --- | --- |
|  | 10 | **AG Cable Pull Control Cable** |  | 2026-08-19 | 2026-11-25 |  |  |  |  |  |  |  |  |  |  |
| 2.2-HCUEE01-3250 |  | Above Ground Pull Cable | 60d | 2026-08-19 | 2026-10-27 | 2.2-HCUEE01-3220 SS | 91d | 0d | LABOUR [7000 h] | EE | 1 | C03a | TY1 | C03a | EIT02.2 |
| 2.2-HCUEE01-3270 |  | Megger & Continuity test | 10d | 2026-10-28 | 2026-11-07 | 2.2-HCUEE01-3250 | 104d | 0d | LABOUR [1049.3 h] | EE | 1 | C03a | TY1 | C03a | EIT02.2 |
| 2.2-HCUEE01-3260 |  | Complete QA/QC document | 15d | 2026-11-09 | 2026-11-25 | 2.2-HCUEE01-3270 | 104d | 0d | LABOUR [1000 h] | EE | 1 | C03a | TY1 | C03a | EIT02.2 |
|  | 11 | **Lighting Cable** |  | 2026-08-19 | 2026-12-24 |  |  |  |  |  |  |  |  |  |  |
| 2.2-HCUEE01-3280 |  | Above Ground Pull Cable | 60d | 2026-08-19 | 2026-10-27 | 2.2-HCUEE01-3250 SS | 91d | 0d | LABOUR [7000 h] | EE | 1 | C03a | TY1 | C03a | EIT02.2 |
| 2.2-HCUEE01-3300 |  | Megger & Continuity test | 30d | 2026-10-28 | 2026-12-01 | 2.2-HCUEE01-3280 | 91d | 0d | LABOUR [1049.3 h] | EE | 1 | C03a | TY1 | C03a | EIT02.2 |
| 2.2-HCUEE01-3290 |  | Complete QA/QC document | 20d | 2026-12-02 | 2026-12-24 | 2.2-HCUEE01-3300 | 91d | 0d | LABOUR [1000 h] | EE | 1 | C03a | TY1 | C03a | EIT02.2 |
|  | 4 | **Electrical Cable Termination / Glanding** |  | 2026-09-21 | 2027-02-12 |  |  |  |  |  |  |  |  |  |  |
|  | 1 | **Termination MV Cable** |  | 2026-09-21 | 2026-11-11 |  |  |  |  |  |  |  |  |  |  |
| 2.2-HCUEE02-2500 |  | Cable Termination/Glanding | 30d | 2026-09-21 | 2026-10-24 | 2.2-HCUEE01-3420 | 122.9d | 0d | LABOUR [3000 h] | EE | 1 | C03a | TY1 | C03a | EIT02.2 |
| 2.2-HCUEE02-2510 |  | Clear punch | 5d | 2026-10-26 | 2026-10-30 | 2.2-HCUEE02-2500 | 122.9d | 0d | LABOUR [500 h] | EE | 1 | C03a | TY1 | C03a | EIT02.2 |
| 2.2-HCUEE02-2520 |  | Complete QA/QC document | 10d | 2026-10-31 | 2026-11-11 | 2.2-HCUEE02-2510 | 122.9d | 0d | LABOUR [925.66 h] | EE | 1 | C03a | TY1 | C03a | EIT02.2 |
|  | 2 | **Termination LV Cable** |  | 2026-11-26 | 2027-01-28 |  |  |  |  |  |  |  |  |  |  |
| 2.2-HCUEE02-2530 |  | Cable Termination/Glanding | 30d | 2026-11-26 | 2026-12-30 | 2.2-HCUEE01-3230 | 104d | 0d | LABOUR [3000 h] | EE | 1 | C03a | TY1 | C03a | EIT02.2 |
| 2.2-HCUEE02-2540 |  | Clear punch | 10d | 2026-12-31 | 2027-01-11 | 2.2-HCUEE02-2530 | 104d | 0d | LABOUR [500 h] | EE | 1 | C03a | TY1 | C03a | EIT02.2 |
| 2.2-HCUEE02-2550 |  | Complete QA/QC document | 15d | 2027-01-12 | 2027-01-28 | 2.2-HCUEE02-2540 | 104d |  | LABOUR [925.66 h] | EE | 1 | C03a | TY1 | C03a | EIT02.2 |
|  | 3 | **Termination Control Cable** |  | 2026-11-26 | 2027-01-28 |  |  |  |  |  |  |  |  |  |  |
| 2.2-HCUEE02-2560 |  | Cable Termination/Glanding | 30d | 2026-11-26 | 2026-12-30 | 2.2-HCUEE01-3260 | 104d | 0d | LABOUR [3000 h] | EE | 1 | C03a | TY1 | C03a | EIT02.2 |
| 2.2-HCUEE02-2570 |  | Clear punch | 10d | 2026-12-31 | 2027-01-11 | 2.2-HCUEE02-2560 | 104d | 0d | LABOUR [500 h] | EE | 1 | C03a | TY1 | C03a | EIT02.2 |
| 2.2-HCUEE02-2580 |  | Complete QA/QC document | 15d | 2027-01-12 | 2027-01-28 | 2.2-HCUEE02-2570 | 104d |  | LABOUR [925.66 h] | EE | 1 | C03a | TY1 | C03a | EIT02.2 |
|  | 4 | **Termination Lighting Cable** |  | 2026-12-25 | 2027-02-12 |  |  |  |  |  |  |  |  |  |  |
| 2.2-HCUEE02-2590 |  | Cable Termination/Glanding | 28d | 2026-12-25 | 2027-01-26 | 2.2-HCUEE01-3290 | 91d | 0d | LABOUR [3000 h] | EE | 1 | C03a | TY1 | C03a | EIT02.2 |
| 2.2-HCUEE02-2600 |  | Clear punch | 5d | 2027-01-27 | 2027-02-01 | 2.2-HCUEE02-2590 | 91d | 0d | LABOUR [500 h] | EE | 1 | C03a | TY1 | C03a | EIT02.2 |
| 2.2-HCUEE02-2610 |  | Complete QA/QC document | 10d | 2027-02-02 | 2027-02-12 | 2.2-HCUEE02-2600 | 91d |  | LABOUR [925.66 h] | EE | 1 | C03a | TY1 | C03a | EIT02.2 |

| ID | WBS | Activity | Duration | Start | Finish | Predecessors | Total float | Free float | Constraint | Calendar | Resources | Disciplines | Main Activity | WBS | Types | EIT WBS | EIT PKG |
| --- | --- | --- | --- | --- | --- | --- | --- | --- | --- | --- | --- | --- | --- | --- | --- | --- | --- |
|  | 7 | **Electrical Earthing / Lightning Installation** |  | 2026-06-10 | 2026-10-21 |  |  |  |  |  |  |  |  |  |  |  |  |
| 2.1-HCUEE05-1130 |  | Install Equipment Earthing / Inspection PIT / Install earthing pull and Connecttion | 90d | 2026-06-10 | 2026-09-22 | 2.2-HCUEE03-1010 SS | 189d | 0d |  |  | LABOUR [18000 h] | EE | 1 | C03a | TY1 | C03a | EIT02.2 |
| 2.1-HCUEE05-1140 |  | Punch Clear | 10d | 2026-09-23 | 2026-10-03 | 2.1-HCUEE05-1130 | 189d | 0d |  |  | LABOUR [1000 h] | EE | 1 | C03a | TY1 | C03a | EIT02.2 |
| 2.1-HCUEE05-1150 |  | Complete QA/QC document | 15d | 2026-10-05 | 2026-10-21 | 2.1-HCUEE05-1140 | 189d |  |  |  | LABOUR [2638 h] | EE | 1 | C03a | TY1 | C03a | EIT02.2 |
|  | 5 | **Lighting Fixture Installation** |  | 2026-08-19 | 2026-11-02 |  |  |  |  |  |  |  |  |  |  |  |  |
| 2.2-HCUEE05-1670 |  | Install support / bracket / Pole | 40d | 2026-08-19 | 2026-10-03 | 2.2-HCUEE03-1010 | 179d | 0d |  |  | LABOUR [1000 h] | EE | 1 | C03a | TY1 | C03a | EIT02.2 |
| 2.2-HCUEE05-1680 |  | lighting fixture | 40d | 2026-08-19 | 2026-10-03 | 2.2-HCUEE05-1670 SS | 179d | 0d |  |  | LABOUR [2000 h] | EE | 1 | C03a | TY1 | C03a | EIT02.2 |
| 2.2-HCUEE05-1690 |  | Clear punch | 10d | 2026-10-05 | 2026-10-15 | 2.2-HCUEE05-1680 | 179d | 0d |  |  | LABOUR [300 h] | EE | 1 | C03a | TY1 | C03a | EIT02.2 |
| 2.2-HCUEE05-1700 |  | Complete QA/QC document | 15d | 2026-10-16 | 2026-11-02 | 2.2-HCUEE05-1690 | 179d |  |  |  | LABOUR [342.08 h] | EE | 1 | C03a | TY1 | C03a | EIT02.2 |
|  | 12 | **Small Power Equipment Installation** |  | 2026-08-19 | 2026-11-02 |  |  |  |  |  |  |  |  |  |  |  |  |
| 2.2-HCUEE05-1710 |  | Install support / bracket | 40d | 2026-08-19 | 2026-10-03 | 2.2-HCUEE05-1670 SS | 179d | 0d |  |  | LABOUR [1000 h] | EE | 1 | C03a | TY1 | C03a | EIT02.2 |
| 2.2-HCUEE05-1720 |  | Install Distribution panel, convenience outlet | 40d | 2026-08-19 | 2026-10-03 | 2.2-HCUEE05-1710 SS | 179d | 0d |  |  | LABOUR [2000 h] | EE | 1 | C03a | TY1 | C03a | EIT02.2 |
| 2.2-HCUEE05-1730 |  | Clear punch | 10d | 2026-10-05 | 2026-10-15 | 2.2-HCUEE05-1720 | 179d | 0d |  |  | LABOUR [300 h] | EE | 1 | C03a | TY1 | C03a | EIT02.2 |
| 2.2-HCUEE05-1740 |  | Complete QA/QC document | 15d | 2026-10-16 | 2026-11-02 | 2.2-HCUEE05-1730 | 179d |  |  |  | LABOUR [342.08 h] | EE | 1 | C03a | TY1 | C03a | EIT02.2 |
|  | 2 | **Motor Solo Run** |  | 2026-11-12 | 2027-01-06 |  |  |  |  |  |  |  |  |  |  |  |  |
| 2.1-HCUEE-1150 |  | Motor solo run | 25d | 2026-11-12 | 2026-12-10 | 2.2-HCUEE02-2520 | 122.9d | 0.1d |  |  | LABOUR |  |  |  |  | C03a | EIT02.2 |
| 2.1-HCUEE-1160 |  | Punch Clear | 10d | 2026-12-11 | 2026-12-20 | 2.1-HCUEE-1150 | 156.62d | 0.75d |  | 7 - Day Workweek (No Holidays) | LABOUR |  |  |  |  | C03a | EIT02.2 |
| 2.1-HCUEE-1170 |  | Complete QA/QC document | 15d | 2026-12-21 | 2027-01-06 | 2.1-HCUEE-1160 | 123d |  |  |  | LABOUR |  |  |  |  | C03a | EIT02.2 |
|  | 3 | **Instrument Works** |  | 2026-04-20 | 2027-02-27 |  |  |  |  |  |  |  |  |  |  |  |  |
|  | 10 | **Cable Laying concrete Trench** |  | 2026-04-20 | 2026-10-31 |  |  |  |  |  |  |  |  |  |  |  |  |
|  | 3 | **C03-JTR-008/010/011/012/015/017/018/019/024/014/026/235/032/033/039** |  | 2026-04-20 | 2026-08-25 |  |  |  |  |  |  |  |  |  |  |  |  |
| 2.2-HCUIN01- 4150 |  | Cable Laying | 60d | 2026-04-20 | 2026-06-27 |  | 78d | 0d | start on or after 2026-04-20 |  | LABOUR [12000 h] |  |  |  |  | C03c | EIT02.2 |
| 2.2-HCUIN01- 4160 |  | Megger & Continuity test | 5d | 2026-06-29 | 2026-07-03 | 2.2-HCUIN01- 4150 | 238d | 0d |  |  | LABOUR [500 h] |  |  |  |  | C03c | EIT02.2 |
| 2.2-HCUIN01- 4170 |  | punch Clear | 5d | 2026-07-04 | 2026-07-09 | 2.2-HCUIN01- 4160 | 238d | 0d |  |  | LABOUR [500 h] |  |  |  |  | C03c | EIT02.2 |
| 2.2-HCUIN01- 4175 |  | Sand Filling Compaction | 5d | 2026-07-10 | 2026-07-15 | 2.2-HCUIN01- 4170 | 238d | 0d |  |  | LABOUR [500 h] |  |  |  |  |  |  |
| 2.2-HCUIN01- 4180 |  | Complete QA/QC document | 10d | 2026-07-16 | 2026-07-27 | 2.2-HCUIN01- 4175 | 238d | 0d |  |  | LABOUR [500 h] |  |  |  |  | C03c | EIT02.2 |
| 2.2-HCUIN01- 4190 |  | Back Filling | 25d | 2026-07-28 | 2026-08-25 | 2.2-HCUIN01- 4180 | 238d |  |  |  | LABOUR [3250.37 h] |  |  |  |  | C03c | EIT02.2 |

| ID | WBS | Activity | Duration | Start | Finish | Predecessors | Total float | Free float | Resources | EIT WBS | EIT PKG | Disciplines | Main Activity | WBS | Types |
| --- | --- | --- | --- | --- | --- | --- | --- | --- | --- | --- | --- | --- | --- | --- | --- |
|  | 1 | **C03-JTR-023/037/038/036/022/029/035/028/021/034/105/115** |  | 2026-06-29 | 2026-10-31 |  |  |  |  |  |  |  |  |  |  |
| 2.2-HCUIN01- 4200 |  | Cable Laying | 60d | 2026-06-29 | 2026-09-05 | 2.2-HCUIN01- 4150 | 178d | 0d | LABOUR [12000 h] | C03c | EIT02.2 |  |  |  |  |
| 2.2-HCUIN01- 4210 |  | Megger & Continuity test | 5d | 2026-09-07 | 2026-09-11 | 2.2-HCUIN01- 4200 | 180d | 0d | LABOUR [500 h] | C03c | EIT02.2 |  |  |  |  |
| 2.2-HCUIN01- 4220 |  | punch Clear | 5d | 2026-09-12 | 2026-09-17 | 2.2-HCUIN01- 4210 | 180d | 0d | LABOUR [500 h] | C03c | EIT02.2 |  |  |  |  |
| 2.2-HCUIN01- 4225 |  | Sand Filling Compaction | 5d | 2026-09-18 | 2026-09-23 | 2.2-HCUIN01- 4220 | 180d | 0d | LABOUR [500 h] |  |  |  |  |  |  |
| 2.2-HCUIN01- 4230 |  | Complete QA/QC document | 8d | 2026-09-24 | 2026-10-02 | 2.2-HCUIN01- 4225 | 180d | 0d | LABOUR [500 h] | C03c | EIT02.2 |  |  |  |  |
| 2.2-HCUIN01- 4240 |  | Back Filling | 25d | 2026-10-03 | 2026-10-31 | 2.2-HCUIN01- 4230 | 180d |  | LABOUR [3250.37 h] | C03c | EIT02.2 |  |  |  |  |
|  | 3 | **Instrument Cable Tray/Ladder Installation** |  | 2026-04-20 | 2026-07-27 |  |  |  |  |  |  |  |  |  |  |
| 2.2-HCUIN-1520 |  | Install support / bracket | 60d | 2026-04-20 | 2026-06-27 | 2.2-HCUIN01- 4150 SS | 78d | 0d | LABOUR | C03a | EIT02.2 | EE | 1 | C03a | TY1 |
| 2.2-HCUIN-1530 |  | Install Ladder / Tray | 60d | 2026-04-20 | 2026-06-27 | 2.2-HCUIN-1540 SS | 78d | 0d | LABOUR [6500 h] | C03a | EIT02.2 | EE | 1 | C03a | TY1 |
| 2.2-HCUIN-1540 |  | Steel Conduits for Cable tray | 60d | 2026-04-20 | 2026-06-27 | 2.2-HCUIN-1520 SS | 78d | 0d | LABOUR [1000 h] | C03a | EIT02.2 | EE | 1 | C03a | TY1 |
| 2.2-HCUIN-1550 |  | punch clear | 10d | 2026-06-29 | 2026-07-09 | 2.2-HCUIN-1530, 2.2-HCUIN-1540 | 78d | 0d | LABOUR [500 h] | C03a | EIT02.2 | EE | 1 | C03a | TY1 |
| 2.2-HCUIN-1560 |  | Complete QA/QC document | 15d | 2026-07-10 | 2026-07-27 | 2.2-HCUIN-1550 | 78d | 0d | LABOUR [1322.12 h] | C03a | EIT02.2 | EE | 1 | C03a | TY1 |
|  | 8 | **AG Cable Pull Primary Cable** |  | 2026-07-28 | 2026-10-22 |  |  |  |  |  |  |  |  |  |  |
| 2.2-HCUIN01-1830 |  | Above Ground Pull Cable | 50d | 2026-07-28 | 2026-09-23 | 2.2-HCUIN-1560 | 138d | 0d | LABOUR [14000 h] | C03a | EIT02.2 | EE | 1 | C03a | TY1 |
| 2.2-HCUIN01-1840 |  | Megger & Continuity test | 10d | 2026-09-24 | 2026-10-05 | 2.2-HCUIN01-1830 | 138d | 0d | LABOUR [1000 h] | C03a | EIT02.2 | EE | 1 | C03a | TY1 |
| 2.2-HCUIN01-1850 |  | Complete QA/QC document | 15d | 2026-10-06 | 2026-10-22 | 2.2-HCUIN01-1840 | 138d | 0d | LABOUR [2250.37 h] | C03a | EIT02.2 | EE | 1 | C03a | TY1 |
|  | 9 | **AG Cable Pull Secondary Cable** |  | 2026-07-28 | 2026-10-22 |  |  |  |  |  |  |  |  |  |  |
| 2.2-HCUIN01-1860 |  | Above Ground Pull Cable | 50d | 2026-07-28 | 2026-09-23 | 2.2-HCUIN-1560 | 78d | 0d | LABOUR [14000 h] | C03a | EIT02.2 | EE | 1 | C03a | TY1 |
| 2.2-HCUIN01-1870 |  | Megger & Continuity test | 10d | 2026-09-24 | 2026-10-05 | 2.2-HCUIN01-1860 | 78d | 0d | LABOUR [1000 h] | C03a | EIT02.2 | EE | 1 | C03a | TY1 |
| 2.2-HCUIN01-1880 |  | Complete QA/QC document | 15d | 2026-10-06 | 2026-10-22 | 2.2-HCUIN01-1870 | 78d | 0d | LABOUR [2250.37 h] | C03a | EIT02.2 | EE | 1 | C03a | TY1 |
|  | 2 | **Instrument Cable Termination / Glanding** |  | 2026-09-07 | 2026-12-19 |  |  |  |  |  |  |  |  |  |  |
|  | 1 | **UG Cable Termination Cable** |  | 2026-09-07 | 2026-11-03 |  |  |  |  |  |  |  |  |  |  |
| 2.2-HCUIN02-1930 |  | Cable Termination/Glanding | 25d | 2026-09-07 | 2026-10-05 | 2.2-HCUIN01- 4200 | 178d | 0d | LABOUR [5000 h] | C03a | EIT02.2 | EE | 1 | C03a | TY1 |
| 2.2-HCUIN02-1940 |  | punch clear | 10d | 2026-10-06 | 2026-10-16 | 2.2-HCUIN02-1930 | 178d | 0d | LABOUR [1000 h] | C03a | EIT02.2 | EE | 1 | C03a | TY1 |
| 2.2-HCUIN02-1950 |  | Complete QA/QC document | 15d | 2026-10-17 | 2026-11-03 | 2.2-HCUIN02-1940 | 178d |  | LABOUR [1234.71 h] | C03a | EIT02.2 | EE | 1 | C03a | TY1 |

| ID | WBS | Activity | Duration | Start | Finish | Predecessors | Total float | Free float | Resources | Disciplines | Main Activity | WBS | Types | EIT WBS | EIT PKG |
| --- | --- | --- | --- | --- | --- | --- | --- | --- | --- | --- | --- | --- | --- | --- | --- |
|  | 8 | **Cable Termination Primary Cable** |  | 2026-10-23 | 2026-12-19 |  |  |  |  |  |  |  |  |  |  |
| 2.2-HCUIN02-1840 |  | Cable Termination/Glanding | 25d | 2026-10-23 | 2026-11-20 | 2.2-HCUIN01-1850 | 138d | 0d | LABOUR [5000 h] | EE | 1 | C03a | TY1 | C03a | EIT02.2 |
| 2.2-HCUIN02-1850 |  | punch clear | 10d | 2026-11-21 | 2026-12-02 | 2.2-HCUIN02-1840 | 138d | 0d | LABOUR [1000 h] | EE | 1 | C03a | TY1 | C03a | EIT02.2 |
| 2.2-HCUIN02-1860 |  | Complete QA/QC document | 15d | 2026-12-03 | 2026-12-19 | 2.2-HCUIN02-1850 | 138d |  | LABOUR [1234.71 h] | EE | 1 | C03a | TY1 | C03a | EIT02.2 |
|  | 9 | **Cable Termination Secondary Cable** |  | 2026-10-23 | 2026-12-19 |  |  |  |  |  |  |  |  |  |  |
| 2.2-HCUIN02-1870 |  | Cable Termination/Glanding | 25d | 2026-10-23 | 2026-11-20 | 2.2-HCUIN01-1880 | 78d | 0d | LABOUR [5000 h] | EE | 1 | C03a | TY1 | C03a | EIT02.2 |
| 2.2-HCUIN02-1880 |  | punch clear | 10d | 2026-11-21 | 2026-12-02 | 2.2-HCUIN02-1870 | 78d | 0d | LABOUR [1000 h] | EE | 1 | C03a | TY1 | C03a | EIT02.2 |
| 2.2-HCUIN02-1890 |  | Complete QA/QC document | 15d | 2026-12-03 | 2026-12-19 | 2.2-HCUIN02-1880 | 78d | 0d | LABOUR [1234.71 h] | EE | 1 | C03a | TY1 | C03a | EIT02.2 |
|  | 4 | **Instrument Calibration** |  | 2026-06-29 | 2026-09-05 |  |  |  |  |  |  |  |  |  |  |
| 2.2-HCUIN05-2070 |  | Calibration of Gauges | 30d | 2026-06-29 | 2026-08-01 | 2.2-HCUIN01- 4150 | 166d | 0d | LABOUR [4000 h] | EE | 1 | C03a | TY1 | C03c | EIT02.2 |
| 2.2-HCUIN05-2100 |  | Calibration of Transmitters/Switches | 30d | 2026-08-03 | 2026-09-05 | 2.2-HCUIN05-2070 | 166d | 0d | LABOUR [8033.6 h] |  |  |  |  |  |  |
|  | 1 | **Gauges** |  | 2026-06-29 | 2026-08-13 |  |  |  |  |  |  |  |  |  |  |
| 2.2-HCUIN04-1560 |  | D.P Pressure Gauge Installation | 10d | 2026-06-29 | 2026-07-09 | 2.2-HCUIN05-2070 SS | 248d | 0d | LABOUR [1000 h] |  |  |  |  |  |  |
| 2.2-HCUIN04-1570 |  | Pressure Gauge Installation | 10d | 2026-07-10 | 2026-07-21 | 2.2-HCUIN04-1560 | 248d | 0d | LABOUR [1000 h] | EE | 1 | C03a | TY1 | C03c | EIT02.2 |
| 2.2-HCUIN04-1580 |  | Level Gauge Installation | 10d | 2026-07-22 | 2026-08-01 | 2.2-HCUIN04-1570 | 248d | 0d | LABOUR [1000 h] | EE | 1 | C03a | TY1 | C03c | EIT02.2 |
| 2.2-HCUIN04-1590 |  | Clear punch | 5d | 2026-08-03 | 2026-08-07 | 2.2-HCUIN04-1580 | 248d | 0d | LABOUR [1000 h] | EE | 1 | C03a | TY1 | C03c | EIT02.2 |
| 2.2-HCUIN04-1595 |  | Complete QA/QC document | 5d | 2026-08-08 | 2026-08-13 | 2.2-HCUIN04-1590 | 248d | 47d | LABOUR [1509.94 h] | EE | 1 | C03a | TY1 | C03c | EIT02.2 |
|  | 6 | **Transmitters/Switches** |  | 2026-08-03 | 2026-10-07 |  |  |  |  |  |  |  |  |  |  |
| 2.2-HCUIN04-1600 |  | Install support / bracket | 10d | 2026-08-03 | 2026-08-13 | 2.2-HCUIN05-2100 SS | 166d | 0d | LABOUR [500 h] | EE | 1 | C03a | TY1 | C03c | EIT02.2 |
| 2.2-HCUIN04-1610 |  | Pressure transmitters Installation | 10d | 2026-08-14 | 2026-08-25 | 2.2-HCUIN04-1600 | 166d | 0d | LABOUR [1000 h] | EE | 1 | C03a | TY1 | C03c | EIT02.2 |
| 2.2-HCUIN04-1620 |  | D.P. Transmitters - HART Installation | 10d | 2026-08-26 | 2026-09-05 | 2.2-HCUIN04-1610 | 166d | 0d | LABOUR [700 h] | EE | 1 | C03a | TY1 | C03c | EIT02.2 |
| 2.2-HCUIN04-1630 |  | Temperature Transmitters Installation | 10d | 2026-09-07 | 2026-09-17 | 2.2-HCUIN04-1620 | 201d | 0d | LABOUR [1000 h] | EE | 1 | C03a | TY1 | C03c | EIT02.2 |
| 2.2-HCUIN04-1640 |  | Level Switch Installation | 10d | 2026-09-18 | 2026-09-29 | 2.2-HCUIN04-1630 | 201d | 0d | LABOUR [1000 h] |  |  |  |  |  |  |
| 2.2-HCUIN04-1650 |  | Clear punch | 2d | 2026-09-30 | 2026-10-01 | 2.2-HCUIN04-1640 | 201d | 0d | LABOUR [300 h] |  |  |  |  |  |  |
| 2.2-HCUIN04-1660 |  | Complete QA/QC document | 5d | 2026-10-02 | 2026-10-07 | 2.2-HCUIN04-1650, 2.2-HCUIN04-1595 FF | 201d |  | LABOUR [1009.94 h] |  |  |  |  |  |  |

| ID | WBS | Activity | Duration | Start | Finish | Predecessors | Total float | Free float | Calendar | Resources | Disciplines | Main Activity | WBS | Types | EIT WBS | EIT PKG |
| --- | --- | --- | --- | --- | --- | --- | --- | --- | --- | --- | --- | --- | --- | --- | --- | --- |
|  | 11 | **Instrument Junction Box Installation** |  | 2026-07-28 | 2026-08-12 |  |  |  |  |  |  |  |  |  |  |  |
| 2.2-HCUIN-1570 |  | Install support / bracket | 5d | 2026-07-28 | 2026-08-03 | 2.2-HCUIN04-1600 SF | 249d | 0d |  | LABOUR [1000 h] | EE | 1 | C03a | TY1 | C03c | EIT02.2 |
| 2.2-HCUIN-1580 |  | Instrument Junction Box Installation | 5d | 2026-08-03 | 2026-08-07 | 2.2-HCUIN-1570 | 249d | 0d |  | LABOUR [3000 h] | EE | 1 | C03a | TY1 | C03c | EIT02.2 |
| 2.2-HCUIN-1590 |  | Clear punch | 2d | 2026-08-08 | 2026-08-10 | 2.2-HCUIN-1580 | 249d | 0d |  | LABOUR [500 h] | EE | 1 | C03a | TY1 | C03c | EIT02.2 |
| 2.2-HCUIN-1600 |  | Complete QA/QC document | 2d | 2026-08-11 | 2026-08-12 | 2.2-HCUIN-1590 | 249d |  |  | LABOUR [1009.94 h] | EE | 1 | C03a | TY1 | C03c | EIT02.2 |
|  | 5 | **Tubing** |  | 2026-09-07 | 2026-11-17 |  |  |  |  |  |  |  |  |  |  |  |
| 2.2-HCUIN07-1510 |  | Instrument Hook up Tubing Installation | 20d | 2026-09-07 | 2026-09-29 | 2.2-HCUIN04-1610, 2.2-HCUIN04-1620 | 166d | 0d |  | LABOUR [1000 h] |  |  |  |  | C03c | EIT02.2 |
| 2.2-HCUIN07-1520 |  | Leak Test | 20d | 2026-09-30 | 2026-10-22 | 2.2-HCUIN07-1510 | 166d | 0d |  | LABOUR [500 h] |  |  |  |  | C03c | EIT02.2 |
| 2.2-HCUIN07-1530 |  | Clear Punch | 10d | 2026-10-23 | 2026-11-03 | 2.2-HCUIN07-1520 | 166d | 0.1d |  | LABOUR [100 h] |  |  |  |  | C03c | EIT02.2 |
| 2.2-HCUIN07-1540 |  | Complete QA/QC document | 15d | 2026-11-04 | 2026-11-17 | 2.2-HCUIN07-1530 | 210.5d |  | 7 - Day Workweek (No Holidays) | LABOUR [114.53 h] |  |  |  |  | C03c | EIT02.2 |
|  | 7 | **Instrument Loop Check** |  | 2026-12-21 | 2027-02-27 |  |  |  |  |  |  |  |  |  |  |  |
| 2.2-HCUIN09-1530 |  | Instrument Loop check | 30d | 2026-12-21 | 2027-01-23 | 2.2-HCUIN02-1890 | 78d | 0d |  | LABOUR [6000 h] |  |  |  |  | C03c | EIT02.2 |
| 2.2-HCUIN09-1540 |  | Clear Punch | 15d | 2027-01-25 | 2027-02-10 | 2.2-HCUIN09-1530 | 78d | 0d |  | LABOUR [1000 h] |  |  |  |  | C03c | EIT02.2 |
| 2.2-HCUIN09-1550 |  | Complete QA/QC document | 15d | 2027-02-11 | 2027-02-27 | 2.2-HCUIN09-1540 | 78d | 0d |  | LABOUR [2428.48 h] |  |  |  |  | C03c | EIT02.2 |
|  | 5 | **Telecommunication** |  | 2026-08-19 | 2027-02-26 |  |  |  |  |  |  |  |  |  |  |  |
|  | 3 | **Telecom** |  | 2026-08-19 | 2027-02-26 |  |  |  |  |  |  |  |  |  |  |  |
|  | 3 | **Telecom Cable Tray/Ladder Installation** |  | 2026-08-19 | 2026-11-07 |  |  |  |  |  |  |  |  |  |  |  |
| 2.2-HCUTE03-1200 |  | Install support / bracket | 50d | 2026-08-19 | 2026-10-15 | 2.2-HCUEE03-1010 | 79d | 0d |  | LABOUR [3 h] | EE | 1 | C03a | TY1 | C03a | EIT02.2 |
| 2.2-HCUTE03-1210 |  | Install Ladder / Tray | 50d | 2026-08-19 | 2026-10-15 | 2.2-HCUTE03-1200 SS | 79d | 0d |  | LABOUR [77 h] | EE | 1 | C03a | TY1 | C03a | EIT02.2 |
| 2.2-HCUTE03-1220 |  | Conduit Install | 50d | 2026-08-19 | 2026-10-15 | 2.2-HCUTE03-1200 SS | 194d |  |  | LABOUR [500 h] |  |  |  |  | C03a | EIT02.2 |
| 2.2-HCUTE03-1230 |  | Clear punch | 5d | 2026-10-16 | 2026-10-21 | 2.2-HCUTE03-1210 | 79d | 0d |  | LABOUR [75 h] | EE | 1 | C03a | TY1 | C03a | EIT02.2 |
| 2.2-HCUTE03-1240 |  | Complete QA/QC document | 15d | 2026-10-22 | 2026-11-07 | 2.2-HCUTE03-1230 | 79d | 0d |  | LABOUR [75 h] | EE | 1 | C03a | TY1 | C03a | EIT02.2 |
|  | 1 | **AG Telecommunication Cable Installation** |  | 2026-11-09 | 2027-01-11 |  |  |  |  |  |  |  |  |  |  |  |
| 2.1-HCUTE01-1340 |  | Above Ground Pull Cable | 30d | 2026-11-09 | 2026-12-12 | 2.2-HCUTE03-1240 | 79d | 0d |  | LABOUR [1000 h] | EE | 1 | C03a | TY1 | C03a | EIT02.2 |
| 2.1-HCUTE01-1350 |  | Megger & Continuity test | 10d | 2026-12-14 | 2026-12-24 | 2.1-HCUTE01-1340 | 79d | 0d |  | LABOUR [500 h] | EE | 1 | C03a | TY1 | C03a | EIT02.2 |
| 2.1-HCUTE01-1360 |  | Complete QA/QC document | 15d | 2026-12-25 | 2027-01-11 | 2.1-HCUTE01-1350 | 79d | 0d |  | LABOUR [500 h] | EE | 1 | C03a | TY1 | C03a | EIT02.2 |

| ID | WBS | Activity | Duration | Start | Finish | Predecessors | Total float | Free float | Resources | Disciplines | Main Activity | WBS | Types | EIT WBS | EIT PKG |
| --- | --- | --- | --- | --- | --- | --- | --- | --- | --- | --- | --- | --- | --- | --- | --- |
|  | 4 | **Telecommunication Termination / Glanding** |  | 2027-01-12 | 2027-02-26 |  |  |  |  |  |  |  |  |  |  |
| 2.1-HCUTE02-1360 |  | Cable Termination/Glanding | 20d | 2027-01-12 | 2027-02-03 | 2.1-HCUTE01-1360 | 79d | 0d | LABOUR [500 h] | EE | 1 | C03a | TY1 | C03a | EIT02.2 |
| 2.1-HCUTE02-1370 |  | Clear punch | 10d | 2027-02-04 | 2027-02-15 | 2.1-HCUTE02-1360 | 79d | 0d | LABOUR [200 h] | EE | 1 | C03a | TY1 | C03a | EIT02.2 |
| 2.1-HCUTE02-1380 |  | Complete QA/QC document | 10d | 2027-02-16 | 2027-02-26 | 2.1-HCUTE02-1370 | 79d |  | LABOUR [253.1 h] | EE | 1 | C03a | TY1 | C03a | EIT02.2 |
|  | 2 | **Telecommunication Equipment Installation** |  | 2026-11-09 | 2027-01-11 |  |  |  |  |  |  |  |  |  |  |
| 2.1-HCUTE01.1-1390 |  | Telecom Equpiment Installation | 30d | 2026-11-09 | 2026-12-12 | 2.2-HCUTE03-1240 | 119d | 0d | LABOUR [150 h] | EE | 1 | C03a | TY1 | C03a | EIT02.2 |
| 2.1-HCUTE01.1-1400 |  | Clear Punch | 10d | 2026-12-14 | 2026-12-24 | 2.1-HCUTE01.1-1390 | 119d | 0d | LABOUR [50 h] | EE | 1 | C03a | TY1 | C03a | EIT02.2 |
| 2.1-HCUTE01.1-1410 |  | Complete QA/QC document | 15d | 2026-12-25 | 2027-01-11 | 2.1-HCUTE01.1-1400 | 119d |  | LABOUR [62.42 h] | EE | 1 | C03a | TY1 | C03a | EIT02.2 |
|  | EIT-2.21 | **WBS : C03b RHCU (Residue Hydrocracking Unit)** |  | 2026-04-01 | 2027-05-29 |  |  |  |  |  |  |  |  |  |  |
|  | 1 | **RHCU ZONE 1** |  | 2026-04-01 | 2027-02-09 |  |  |  |  |  |  |  |  |  |  |
|  | 1 | **Electrical Works** |  | 2026-04-01 | 2026-12-28 |  |  |  |  |  |  |  |  |  |  |
|  | 6 | **Cable trench Excavation buried** |  | 2026-04-01 | 2026-05-11 |  |  |  |  |  |  |  |  |  |  |
|  | 8 | **C03-ETD-325/326/390/391/310/655/644/816/660/661/703/381** |  | 2026-04-01 | 2026-05-11 |  |  |  |  |  |  |  |  |  |  |
| 2.2-RHCUEE09-1000 |  | Cable trench Excavation | 30d | 2026-04-01 | 2026-05-05 | 2.2-HCUEE09-1000 SS | 87.9d | 0d | LABOUR |  |  |  |  | C03c | EIT02.2 |
| 2.2-RHCUEE09-1010 |  | Sand Filling Compaction | 5d | 2026-05-06 | 2026-05-11 | 2.2-RHCUEE09-1000 | 329d |  | LABOUR |  |  |  |  | C03c | EIT02.2 |
|  | 8 | **Cable Laying Direct buried** |  | 2026-05-06 | 2026-08-04 |  |  |  |  |  |  |  |  |  |  |
|  | 8 | **C03-ETD-325/326/390/391/310/655/644/816/660/661/703/381** |  | 2026-05-06 | 2026-08-04 |  |  |  |  |  |  |  |  |  |  |
| 2.2-RHCUEE01-0990 |  | Sand Filling First layer | 4d | 2026-05-06 | 2026-05-09 | 2.2-RHCUEE09-1000 | 131.9d | 0d | LABOUR [100 h] |  |  |  |  |  |  |
| 2.2-RHCUEE01-1000 |  | Cable Laying | 30d | 2026-05-11 | 2026-06-13 | 2.2-RHCUEE01-0990 | 131.9d | 0d | LABOUR [1000 h] |  |  |  |  | C03c | EIT02.2 |
| 2.2-RHCUEE01-1010 |  | Megger & Continuity test | 5d | 2026-06-15 | 2026-06-19 | 2.2-RHCUEE01-1000 | 256d | 0d | LABOUR [200 h] |  |  |  |  | C03c | EIT02.2 |
| 2.2-RHCUEE01-1020 |  | punch Clear | 5d | 2026-06-20 | 2026-06-25 | 2.2-RHCUEE01-1010 | 256d | 0d | LABOUR [200 h] |  |  |  |  | C03c | EIT02.2 |
| 2.2-RHCUEE01-1030 |  | Sand Filling Compaction | 4d | 2026-06-26 | 2026-06-30 | 2.2-RHCUEE01-1020 | 256d | 0d | LABOUR [200 h] |  |  |  |  |  |  |
| 2.2-RHCUEE01-1040 |  | Complete QA/QC document | 10d | 2026-07-01 | 2026-07-11 | 2.2-RHCUEE01-1030 | 256d | 0d | LABOUR [200 h] |  |  |  |  | C03c | EIT02.2 |
| 2.2-RHCUEE01-1050 |  | Back Filling | 20d | 2026-07-13 | 2026-08-04 | 2.2-RHCUEE01-1040 | 256d |  | LABOUR [780.7 h] |  |  |  |  | C03c | EIT02.2 |

| ID | WBS | Activity | Duration | Start | Finish | Predecessors | Total float | Free float | Resources | EIT WBS | EIT PKG | Disciplines | Main Activity | WBS | Types |
| --- | --- | --- | --- | --- | --- | --- | --- | --- | --- | --- | --- | --- | --- | --- | --- |
|  | 13 | **Cable Laying Concrete Trench** |  | 2026-05-11 | 2026-10-30 |  |  |  |  |  |  |  |  |  |  |
|  | 1 | **C03-ETC-267/277/268/590/440/278/269/218/279/300/211/280/379/560/287/274/275** |  | 2026-05-11 | 2026-08-10 |  |  |  |  |  |  |  |  |  |  |
| 2.2-RHCUEE01-1060 |  | Cable Laying | 35d | 2026-05-11 | 2026-06-19 | 2.2-RHCUEE01-1000 SS | 131.9d | 0d | LABOUR [1100 h] | C03c | EIT02.2 |  |  |  |  |
| 2.2-RHCUEE01-1070 |  | Megger & Continuity test | 5d | 2026-06-20 | 2026-06-25 | 2.2-RHCUEE01-1060 | 251d | 0d | LABOUR [200 h] | C03c | EIT02.2 |  |  |  |  |
| 2.2-RHCUEE01-1080 |  | punch Clear | 5d | 2026-06-26 | 2026-07-01 | 2.2-RHCUEE01-1070 | 251d | 0d | LABOUR [200 h] | C03c | EIT02.2 |  |  |  |  |
| 2.2-RHCUEE01-1090 |  | Sand Filling Compaction | 4d | 2026-07-02 | 2026-07-06 | 2.2-RHCUEE01-1080 | 251d | 0d | LABOUR [200 h] |  |  |  |  |  |  |
| 2.2-RHCUEE01-1100 |  | Complete QA/QC document | 10d | 2026-07-07 | 2026-07-17 | 2.2-RHCUEE01-1090 | 251d | 0d | LABOUR [200 h] | C03c | EIT02.2 |  |  |  |  |
| 2.2-RHCUEE01-1110 |  | Back Filling | 20d | 2026-07-18 | 2026-08-10 | 2.2-RHCUEE01-1100 | 251d |  | LABOUR [780.7 h] | C03c | EIT02.2 |  |  |  |  |
|  | 2 | **C03-ETC-380/381/299/273/216/217/376/378/272/382/296/281/383/214/295/588/294** |  | 2026-06-20 | 2026-09-25 |  |  |  |  |  |  |  |  |  |  |
| 2.2-RHCUEE01-1120 |  | Cable Laying | 40d | 2026-06-20 | 2026-08-05 | 2.2-RHCUEE01-1060 | 131.9d | 0d | LABOUR [1100 h] | C03c | EIT02.2 |  |  |  |  |
| 2.2-RHCUEE01-1130 |  | Megger & Continuity test | 5d | 2026-08-06 | 2026-08-11 | 2.2-RHCUEE01-1120 | 211d | 0d | LABOUR [200 h] | C03c | EIT02.2 |  |  |  |  |
| 2.2-RHCUEE01-1140 |  | punch Clear | 5d | 2026-08-12 | 2026-08-17 | 2.2-RHCUEE01-1130 | 211d | 0d | LABOUR [200 h] | C03c | EIT02.2 |  |  |  |  |
| 2.2-RHCUEE01-1150 |  | Sand Filling Compaction | 4d | 2026-08-18 | 2026-08-21 | 2.2-RHCUEE01-1140 | 211d | 0d | LABOUR [200 h] |  |  |  |  |  |  |
| 2.2-RHCUEE01-1160 |  | Complete QA/QC document | 10d | 2026-08-22 | 2026-09-02 | 2.2-RHCUEE01-1150 | 211d | 0d | LABOUR [200 h] | C03c | EIT02.2 |  |  |  |  |
| 2.2-RHCUEE01-1170 |  | Back Filling | 20d | 2026-09-03 | 2026-09-25 | 2.2-RHCUEE01-1160 | 211d |  | LABOUR [780.7 h] | C03c | EIT02.2 |  |  |  |  |
|  | 3 | **C03-ETC-311/587/384/385/214/215/588/553/289/382/272/216** |  | 2026-08-06 | 2026-10-30 |  |  |  |  |  |  |  |  |  |  |
| 2.2-RHCUEE01-1180 |  | Cable Laying | 30d | 2026-08-06 | 2026-09-09 | 2.2-RHCUEE01-1120 | 131.9d | 0d | LABOUR [1100 h] | C03c | EIT02.2 |  |  |  |  |
| 2.2-RHCUEE01-1190 |  | Megger & Continuity test | 5d | 2026-09-10 | 2026-09-15 | 2.2-RHCUEE01-1180 | 181d | 0d | LABOUR [200 h] | C03c | EIT02.2 |  |  |  |  |
| 2.2-RHCUEE01-1200 |  | punch Clear | 5d | 2026-09-16 | 2026-09-21 | 2.2-RHCUEE01-1190 | 181d | 0d | LABOUR [200 h] | C03c | EIT02.2 |  |  |  |  |
| 2.2-RHCUEE01-1210 |  | Sand Filling Compaction | 4d | 2026-09-22 | 2026-09-25 | 2.2-RHCUEE01-1200 | 181d | 0d | LABOUR [200 h] |  |  |  |  |  |  |
| 2.2-RHCUEE01-1220 |  | Complete QA/QC document | 10d | 2026-09-26 | 2026-10-07 | 2.2-RHCUEE01-1210 | 181d | 0d | LABOUR [200 h] | C03c | EIT02.2 |  |  |  |  |
| 2.2-RHCUEE01-1230 |  | Back Filling | 20d | 2026-10-08 | 2026-10-30 | 2.2-RHCUEE01-1220 | 181d |  | LABOUR [780.7 h] | C03c | EIT02.2 |  |  |  |  |
|  | 1 | **Electrical Cable Tray/Ladder Installation** |  | 2026-04-01 | 2026-07-08 |  |  |  |  |  |  |  |  |  |  |
| 2.2-RHCUEE03-1000 |  | Install support / bracket | 60d | 2026-04-01 | 2026-06-09 | 2.2-RHCUEE09-1000 SS | 151d | 0d | LABOUR [1000 h] | C03a | EIT02.2 | EE | 1 | C03a | TY1 |
| 2.2-RHCUEE03-1010 |  | Install Ladder / Tray | 60d | 2026-04-01 | 2026-06-09 | 2.2-RHCUEE03-1000 SS | 151d | 0d | LABOUR [5000 h] | C03a | EIT02.2 | EE | 1 | C03a | TY1 |
| 2.2-RHCUEE03-1020 |  | Install Conduits | 60d | 2026-04-01 | 2026-06-09 | 2.2-RHCUEE03-1010 SS | 279d | 0d | LABOUR [1000 h] | C03a | EIT02.2 | EE | 1 | C03a | TY1 |
| 2.2-RHCUEE03-1030 |  | Clear punch | 10d | 2026-06-10 | 2026-06-20 | 2.2-RHCUEE03-1020, 2.2-RHCUEE03-1010 | 279d | 0d | LABOUR [500 h] | C03a | EIT02.2 | EE | 1 | C03a | TY1 |
| 2.2-RHCUEE03-1040 |  | Complete QA/QC document | 15d | 2026-06-22 | 2026-07-08 | 2.2-RHCUEE03-1030 | 279d |  | LABOUR [1229.78 h] | C03a | EIT02.2 | EE | 1 | C03a | TY1 |

| ID | WBS | Activity | Duration | Start | Finish | Predecessors | Total float | Free float | Resources | Disciplines | Main Activity | WBS | Types | EIT WBS | EIT PKG |
| --- | --- | --- | --- | --- | --- | --- | --- | --- | --- | --- | --- | --- | --- | --- | --- |
|  | 9 | **AG Cable Pull LV Cable** |  | 2026-06-10 | 2026-09-16 |  |  |  |  |  |  |  |  |  |  |
| 2.2-RHCUEE01-1240 |  | Pull Cable | 60d | 2026-06-10 | 2026-08-18 | 2.2-RHCUEE03-1010 | 151d | 0d | LABOUR [1800 h] | EE | 1 | C03a | TY1 | C03a | EIT02.2 |
| 2.2-RHCUEE01-1250 |  | Megger & Continuity test | 10d | 2026-08-19 | 2026-08-29 | 2.2-RHCUEE01-1240 | 164d | 0d | LABOUR [200 h] | EE | 1 | C03a | TY1 | C03a | EIT02.2 |
| 2.2-RHCUEE01-1260 |  | Complete QA/QC document | 15d | 2026-08-31 | 2026-09-16 | 2.2-RHCUEE01-1250 | 164d | 0d | LABOUR [680 h] | EE | 1 | C03a | TY1 | C03a | EIT02.2 |
|  | 10 | **AG Cable Pull Control Cable** |  | 2026-06-10 | 2026-09-16 |  |  |  |  |  |  |  |  |  |  |
| 2.2-RHCUEE01-1270 |  | Pull Cable | 60d | 2026-06-10 | 2026-08-18 | 2.2-RHCUEE01-1240 SS | 151d | 0d | LABOUR [1800 h] | EE | 1 | C03a | TY1 | C03a | EIT02.2 |
| 2.2-RHCUEE01-1280 |  | Megger & Continuity test | 10d | 2026-08-19 | 2026-08-29 | 2.2-RHCUEE01-1270 | 164d | 0d | LABOUR [200 h] | EE | 1 | C03a | TY1 | C03a | EIT02.2 |
| 2.2-RHCUEE01-1290 |  | Complete QA/QC document | 15d | 2026-08-31 | 2026-09-16 | 2.2-RHCUEE01-1280 | 164d | 0d | LABOUR [680 h] | EE | 1 | C03a | TY1 | C03a | EIT02.2 |
|  | 11 | **AG Lighting Cable** |  | 2026-06-10 | 2026-10-15 |  |  |  |  |  |  |  |  |  |  |
| 2.2-RHCUEE01-1300 |  | Pull Cable | 60d | 2026-06-10 | 2026-08-18 | 2.2-RHCUEE01-1270 SS | 151d | 0d | LABOUR [1800 h] | EE | 1 | C03a | TY1 | C03a | EIT02.2 |
| 2.2-RHCUEE01-1310 |  | Megger & Continuity test | 30d | 2026-08-19 | 2026-09-22 | 2.2-RHCUEE01-1300 | 151d | 0d | LABOUR [200 h] | EE | 1 | C03a | TY1 | C03a | EIT02.2 |
| 2.2-RHCUEE01-1320 |  | Complete QA/QC document | 20d | 2026-09-23 | 2026-10-15 | 2.2-RHCUEE01-1310 | 151d | 0d | LABOUR [680 h] | EE | 1 | C03a | TY1 | C03a | EIT02.2 |
|  | 4 | **Electrical Cable Termination / Glanding** |  | 2026-09-10 | 2026-12-04 |  |  |  |  |  |  |  |  |  |  |
|  | 1 | **Termination MV Cable** |  | 2026-09-10 | 2026-10-31 |  |  |  |  |  |  |  |  |  |  |
| 2.2-RHCUEE02-1000 |  | Cable Termination/Glanding | 30d | 2026-09-10 | 2026-10-14 | 2.2-RHCUEE01-1180 | 131.9d | 0d | LABOUR [1800 h] | EE | 1 | C03a | TY1 | C03a | EIT02.2 |
| 2.2-RHCUEE02-1010 |  | Clear punch | 5d | 2026-10-15 | 2026-10-20 | 2.2-RHCUEE02-1000 | 131.9d | 0d | LABOUR [200 h] | EE | 1 | C03a | TY1 | C03a | EIT02.2 |
| 2.2-RHCUEE02-1020 |  | Complete QA/QC document | 10d | 2026-10-21 | 2026-10-31 | 2.2-RHCUEE02-1010 | 131.9d | 0d | LABOUR [639.63 h] | EE | 1 | C03a | TY1 | C03a | EIT02.2 |
|  | 2 | **Termination LV Cable** |  | 2026-09-17 | 2026-11-19 |  |  |  |  |  |  |  |  |  |  |
| 2.2-RHCUEE02-1030 |  | Cable Termination/Glanding | 30d | 2026-09-17 | 2026-10-21 | 2.2-RHCUEE01-1260 | 164d | 0d | LABOUR [1800 h] | EE | 1 | C03a | TY1 | C03a | EIT02.2 |
| 2.2-RHCUEE02-1050 |  | Clear punch | 10d | 2026-10-22 | 2026-11-02 | 2.2-RHCUEE02-1030 | 164d | 0d | LABOUR [639.63 h] | EE | 1 | C03a | TY1 | C03a | EIT02.2 |
| 2.2-RHCUEE02-1040 |  | Complete QA/QC document | 15d | 2026-11-03 | 2026-11-19 | 2.2-RHCUEE02-1050 | 164d |  | LABOUR [200 h] | EE | 1 | C03a | TY1 | C03a | EIT02.2 |
|  | 3 | **Termination Control Cable** |  | 2026-09-17 | 2026-11-19 |  |  |  |  |  |  |  |  |  |  |
| 2.2-RHCUEE02-1060 |  | Cable Termination/Glanding | 30d | 2026-09-17 | 2026-10-21 | 2.2-RHCUEE01-1290 | 164d | 0d | LABOUR [1800 h] | EE | 1 | C03a | TY1 | C03a | EIT02.2 |
| 2.2-RHCUEE02-1070 |  | Clear punch | 10d | 2026-10-22 | 2026-11-02 | 2.2-RHCUEE02-1060 | 164d | 0d | LABOUR [200 h] | EE | 1 | C03a | TY1 | C03a | EIT02.2 |
| 2.2-RHCUEE02-1080 |  | Complete QA/QC document | 15d | 2026-11-03 | 2026-11-19 | 2.2-RHCUEE02-1070 | 164d |  | LABOUR [639.63 h] | EE | 1 | C03a | TY1 | C03a | EIT02.2 |

| ID | WBS | Activity | Duration | Start | Finish | Predecessors | Total float | Free float | Calendar | Resources | Disciplines | Main Activity | WBS | Types | EIT WBS | EIT PKG |
| --- | --- | --- | --- | --- | --- | --- | --- | --- | --- | --- | --- | --- | --- | --- | --- | --- |
|  | 4 | **Termination Lighting Cable** |  | 2026-10-16 | 2026-12-04 |  |  |  |  |  |  |  |  |  |  |  |
| 2.2-RHCUEE02-1090 |  | Cable Termination/Glanding | 28d | 2026-10-16 | 2026-11-17 | 2.2-RHCUEE01-1320 | 151d | 0d |  | LABOUR [1800 h] | EE | 1 | C03a | TY1 | C03a | EIT02.2 |
| 2.2-RHCUEE02-1100 |  | Clear punch | 5d | 2026-11-18 | 2026-11-23 | 2.2-RHCUEE02-1090 | 151d | 0d |  | LABOUR [200 h] | EE | 1 | C03a | TY1 | C03a | EIT02.2 |
| 2.2-RHCUEE02-1110 |  | Complete QA/QC document | 10d | 2026-11-24 | 2026-12-04 | 2.2-RHCUEE02-1100 | 151d |  |  | LABOUR [639.63 h] | EE | 1 | C03a | TY1 | C03a | EIT02.2 |
|  | 7 | **Electrical Earthing / Lightning Installation** |  | 2026-04-01 | 2026-08-12 |  |  |  |  |  |  |  |  |  |  |  |
| 2.2-RHCUEE06-1000 |  | Install Equipment Earthing / Inspection PIT / Install earthing pull and Connecttion | 90d | 2026-04-01 | 2026-07-14 | 2.2-RHCUEE03-1000 SS | 249d | 0d |  | LABOUR [3000 h] | EE | 1 | C03a | TY1 | C03a | EIT02.2 |
| 2.2-RHCUEE06-1010 |  | Punch Clear | 10d | 2026-07-15 | 2026-07-25 | 2.2-RHCUEE06-1000 | 249d | 0d |  | LABOUR [500 h] | EE | 1 | C03a | TY1 | C03a | EIT02.2 |
| 2.2-RHCUEE06-1020 |  | Complete QA/QC document | 15d | 2026-07-27 | 2026-08-12 | 2.2-RHCUEE06-1010 | 249d |  |  | LABOUR [763.82 h] | EE | 1 | C03a | TY1 | C03a | EIT02.2 |
|  | 5 | **Lighting Fixture Installation** |  | 2026-06-10 | 2026-08-24 |  |  |  |  |  |  |  |  |  |  |  |
| 2.2-RHCUEE05-1000 |  | Install support / bracket / Pole | 40d | 2026-06-10 | 2026-07-25 | 2.2-RHCUEE03-1000 | 239d | 0d |  | LABOUR [500 h] | EE | 1 | C03a | TY1 | C03a | EIT02.2 |
| 2.2-RHCUEE05-1010 |  | lighting fixture | 40d | 2026-06-10 | 2026-07-25 | 2.2-RHCUEE05-1000 SS | 239d | 0d |  | LABOUR [1500 h] | EE | 1 | C03a | TY1 | C03a | EIT02.2 |
| 2.2-RHCUEE05-1020 |  | Clear punch | 10d | 2026-07-27 | 2026-08-06 | 2.2-RHCUEE05-1010 | 239d | 0d |  | LABOUR [50 h] | EE | 1 | C03a | TY1 | C03a | EIT02.2 |
| 2.2-RHCUEE05-1030 |  | Complete QA/QC document | 15d | 2026-08-07 | 2026-08-24 | 2.2-RHCUEE05-1020 | 239d |  |  | LABOUR [116.75 h] | EE | 1 | C03a | TY1 | C03a | EIT02.2 |
|  | 12 | **Small Power Equipment Installation** |  | 2026-06-10 | 2026-08-24 |  |  |  |  |  |  |  |  |  |  |  |
| 2.2-RHCUEE05-1040 |  | Install support / bracket | 40d | 2026-06-10 | 2026-07-25 | 2.2-RHCUEE05-1000 SS | 239d | 0d |  | LABOUR [500 h] | EE | 1 | C03a | TY1 | C03a | EIT02.2 |
| 2.2-RHCUEE05-1050 |  | Install Distribution panel, convenience outlet | 40d | 2026-06-10 | 2026-07-25 | 2.2-RHCUEE05-1040 SS | 239d | 0d |  | LABOUR [1500 h] | EE | 1 | C03a | TY1 | C03a | EIT02.2 |
| 2.2-RHCUEE05-1060 |  | Clear punch | 10d | 2026-07-27 | 2026-08-06 | 2.2-RHCUEE05-1050 | 239d | 0d |  | LABOUR [50 h] | EE | 1 | C03a | TY1 | C03a | EIT02.2 |
| 2.2-RHCUEE05-1070 |  | Complete QA/QC document | 15d | 2026-08-07 | 2026-08-24 | 2.2-RHCUEE05-1060 | 239d |  |  | LABOUR [116.75 h] | EE | 1 | C03a | TY1 | C03a | EIT02.2 |
|  | 2 | **Motor Solo Run** |  | 2026-11-02 | 2026-12-28 |  |  |  |  |  |  |  |  |  |  |  |
| 2.2-RHCUEE00-1000 |  | Motor solo run | 25d | 2026-11-02 | 2026-11-30 | 2.2-RHCUEE02-1020 | 131.9d | 0.1d |  | LABOUR |  |  |  |  | C03a | EIT02.2 |
| 2.2-RHCUEE00-1020 |  | Punch Clear | 10d | 2026-12-01 | 2026-12-10 | 2.2-RHCUEE00-1000 | 167.62d | 0d | 7 - Day Workweek (No Holidays) | LABOUR |  |  |  |  | C03a | EIT02.2 |
| 2.2-RHCUEE00-1030 |  | Complete QA/QC document | 15d | 2026-12-10 | 2026-12-28 | 2.2-RHCUEE00-1020 | 131.8d |  |  | LABOUR |  |  |  |  | C03a | EIT02.2 |
|  | 3 | **Instrument Works** |  | 2026-04-01 | 2027-02-09 |  |  |  |  |  |  |  |  |  |  |  |
|  | 10 | **Cable Laying concrete Trench** |  | 2026-04-01 | 2026-08-06 |  |  |  |  |  |  |  |  |  |  |  |
|  | 3 | **C03-JTR-302/378/379/298/397/395/394/406/392/300/303/296/295** |  | 2026-04-01 | 2026-08-06 |  |  |  |  |  |  |  |  |  |  |  |
| 2.2-RHCUIN01-1000 |  | Cable Laying | 60d | 2026-04-01 | 2026-06-09 | 2.2-HCUIN01-4000 SS | 0d |  |  | LABOUR [9000 h] |  |  |  |  | C03a | EIT02.2 |
| 2.2-RHCUIN01-1010 |  | Megger & Continuity test | 5d | 2026-06-10 | 2026-06-15 | 2.2-RHCUIN01-1000 | 254d | 0d |  | LABOUR [500 h] |  |  |  |  | C03a | EIT02.2 |
| 2.2-RHCUIN01-1020 |  | Clear punch | 5d | 2026-06-16 | 2026-06-20 | 2.2-RHCUIN01-1010 | 254d | 0d |  | LABOUR [200 h] |  |  |  |  | C03a | EIT02.2 |
| 2.2-RHCUIN01-1030 |  | Sand Filling compaction | 10d | 2026-06-22 | 2026-07-02 | 2.2-RHCUIN01-1020 | 284d |  |  | LABOUR [300 h] |  |  |  |  |  |  |
| 2.2-RHCUIN01-1040 |  | Complete QA/QC document | 10d | 2026-06-22 | 2026-07-02 | 2.2-RHCUIN01-1020 | 254d | 0d |  | LABOUR [500 h] |  |  |  |  | C03a | EIT02.2 |
| 2.2-RHCUIN01-1050 |  | Back Filling | 30d | 2026-07-03 | 2026-08-06 | 2.2-RHCUIN01-1040 | 254d |  |  | LABOUR [4970.5 h] |  |  |  |  | C03a | EIT02.2 |

| ID | WBS | Activity | Duration | Start | Finish | Predecessors | Total float | Free float | Resources | Disciplines | Main Activity | WBS | Types | EIT WBS | EIT PKG |
| --- | --- | --- | --- | --- | --- | --- | --- | --- | --- | --- | --- | --- | --- | --- | --- |
|  | 3 | **Instrument Cable Tray/Ladder Installation** |  | 2026-04-01 | 2026-07-08 |  |  |  |  |  |  |  |  |  |  |
| 2.2-RHCUIN03-1000 |  | Install support / bracket | 60d | 2026-04-01 | 2026-06-09 | 2.2-RHCUIN01-1000 SS | 94d | 0d | LABOUR [1000 h] | EE | 1 | C03a | TY1 | C03a | EIT02.2 |
| 2.2-RHCUIN03-1010 |  | Install Ladder / Tray | 60d | 2026-04-01 | 2026-06-09 | 2.2-RHCUIN03-1020 SS | 94d | 0d | LABOUR [3000 h] | EE | 1 | C03a | TY1 | C03a | EIT02.2 |
| 2.2-RHCUIN03-1020 |  | Steel Conduits for Cable tray | 60d | 2026-04-01 | 2026-06-09 | 2.2-RHCUIN03-1000 SS | 94d | 0d | LABOUR [1000 h] | EE | 1 | C03a | TY1 | C03a | EIT02.2 |
| 2.2-RHCUIN03-1030 |  | punch clear | 10d | 2026-06-10 | 2026-06-20 | 2.2-RHCUIN03-1010, 2.2-RHCUIN03-1020 | 94d | 0d | LABOUR [200 h] | EE | 1 | C03a | TY1 | C03a | EIT02.2 |
| 2.2-RHCUIN03-1040 |  | Complete QA/QC document | 15d | 2026-06-22 | 2026-07-08 | 2.2-RHCUIN03-1030 | 94d | 0d | LABOUR [392.97 h] | EE | 1 | C03a | TY1 | C03a | EIT02.2 |
|  | 8 | **AG Cable Pull Primary Cable** |  | 2026-07-09 | 2026-10-03 |  |  |  |  |  |  |  |  |  |  |
| 2.2-RHCUIN01-1060 |  | Pull Cable | 50d | 2026-07-09 | 2026-09-04 | 2.2-RHCUIN03-1040 | 154d | 0d | LABOUR [14000 h] | EE | 1 | C03a | TY1 | C03a | EIT02.2 |
| 2.2-RHCUIN01-1070 |  | Megger & Continuity test | 10d | 2026-09-05 | 2026-09-16 | 2.2-RHCUIN01-1060 | 154d | 0d | LABOUR [500 h] | EE | 1 | C03a | TY1 | C03a | EIT02.2 |
| 2.2-RHCUIN01-1080 |  | Complete QA/QC document | 15d | 2026-09-17 | 2026-10-03 | 2.2-RHCUIN01-1070 | 154d | 0d | LABOUR [970.5 h] | EE | 1 | C03a | TY1 | C03a | EIT02.2 |
|  | 9 | **AG Cable Pull Secondary Cable** |  | 2026-07-09 | 2026-10-03 |  |  |  |  |  |  |  |  |  |  |
| 2.2-RHCUIN01-1090 |  | Pull Cable | 50d | 2026-07-09 | 2026-09-04 | 2.2-RHCUIN03-1040 | 94d | 0d | LABOUR [14000 h] | EE | 1 | C03a | TY1 | C03a | EIT02.2 |
| 2.2-RHCUIN01-1100 |  | Megger & Continuity test | 10d | 2026-09-05 | 2026-09-16 | 2.2-RHCUIN01-1090 | 94d | 0d | LABOUR [500 h] | EE | 1 | C03a | TY1 | C03a | EIT02.2 |
| 2.2-RHCUIN01-1110 |  | Complete QA/QC document | 15d | 2026-09-17 | 2026-10-03 | 2.2-RHCUIN01-1100 | 94d | 0d | LABOUR [970.5 h] | EE | 1 | C03a | TY1 | C03a | EIT02.2 |
|  | 2 | **Instrument Cable Termination / Glanding** |  | 2026-06-10 | 2026-12-01 |  |  |  |  |  |  |  |  |  |  |
|  | 1 | **UG Cable Termination Cable** |  | 2026-06-10 | 2026-08-06 |  |  |  |  |  |  |  |  |  |  |
| 2.2-RHCUIN02-1300 |  | Cable Termination/Glanding | 25d | 2026-06-10 | 2026-07-08 | 2.2-RHCUIN01-1000 | 254d | 0d | LABOUR [3000 h] | EE | 1 | C03a | TY1 | C03a | EIT02.2 |
| 2.2-RHCUIN02-1310 |  | punch clear | 10d | 2026-07-09 | 2026-07-20 | 2.2-RHCUIN02-1300 | 254d | 0d | LABOUR [500 h] | EE | 1 | C03a | TY1 | C03a | EIT02.2 |
| 2.2-RHCUIN02-1320 |  | Complete QA/QC document | 15d | 2026-07-21 | 2026-08-06 | 2.2-RHCUIN02-1310 | 254d |  | LABOUR [907.72 h] | EE | 1 | C03a | TY1 | C03a | EIT02.2 |
|  | 8 | **Cable Termination Primary Cable** |  | 2026-10-05 | 2026-12-01 |  |  |  |  |  |  |  |  |  |  |
| 2.2-RHCUIN02-1000 |  | Cable Termination/Glanding | 25d | 2026-10-05 | 2026-11-02 | 2.2-RHCUIN01-1080 | 154d | 0d | LABOUR [3000 h] | EE | 1 | C03a | TY1 | C03a | EIT02.2 |
| 2.2-RHCUIN02-1010 |  | punch clear | 10d | 2026-11-03 | 2026-11-13 | 2.2-RHCUIN02-1000 | 154d | 0d | LABOUR [500 h] | EE | 1 | C03a | TY1 | C03a | EIT02.2 |
| 2.2-RHCUIN02-1020 |  | Complete QA/QC document | 15d | 2026-11-14 | 2026-12-01 | 2.2-RHCUIN02-1010 | 154d |  | LABOUR [907.72 h] | EE | 1 | C03a | TY1 | C03a | EIT02.2 |
|  | 9 | **Cable Termination Secondary Cable** |  | 2026-10-05 | 2026-12-01 |  |  |  |  |  |  |  |  |  |  |
| 2.2-RHCUIN02-1030 |  | Cable Termination/Glanding | 25d | 2026-10-05 | 2026-11-02 | 2.2-RHCUIN01-1110 | 94d | 0d | LABOUR [3000 h] | EE | 1 | C03a | TY1 | C03a | EIT02.2 |
| 2.2-RHCUIN02-1040 |  | punch clear | 10d | 2026-11-03 | 2026-11-13 | 2.2-RHCUIN02-1030 | 94d | 0d | LABOUR [500 h] | EE | 1 | C03a | TY1 | C03a | EIT02.2 |
| 2.2-RHCUIN02-1050 |  | Complete QA/QC document | 15d | 2026-11-14 | 2026-12-01 | 2.2-RHCUIN02-1040 | 94d | 0d | LABOUR [907.72 h] | EE | 1 | C03a | TY1 | C03a | EIT02.2 |

| ID | WBS | Activity | Duration | Start | Finish | Predecessors | Total float | Free float | Calendar | Resources | Disciplines | Main Activity | WBS | Types | EIT WBS | EIT PKG |
| --- | --- | --- | --- | --- | --- | --- | --- | --- | --- | --- | --- | --- | --- | --- | --- | --- |
|  | 4 | **Instrument Calibration** |  | 2026-06-10 | 2026-07-14 |  |  |  |  |  |  |  |  |  |  |  |
| 2.2-RHCUIN05-1000 |  | Calibration of Gauges | 30d | 2026-06-10 | 2026-07-14 | 2.2-RHCUIN01-1000 | 212d | 0d |  | LABOUR [3000 h] | EE | 1 | C03a | TY1 | C03c | EIT02.2 |
| 2.2-RHCUIN05-1050 |  | Calibration of Transmitters/Switches | 30d | 2026-06-10 | 2026-07-14 | 2.2-RHCUIN05-1000 SS | 212d | 0d |  | LABOUR [4396.55 h] |  |  |  |  |  |  |
|  | 1 | **Gauges** |  | 2026-06-10 | 2026-07-25 |  |  |  |  |  |  |  |  |  |  |  |
| 2.2-RHCUIN04-1000 |  | D.P Pressure Gauge Installation | 10d | 2026-06-10 | 2026-06-20 | 2.2-RHCUIN05-1000 SS | 264d | 0d |  | LABOUR [750 h] |  |  |  |  |  |  |
| 2.2-RHCUIN04-1010 |  | Pressure Gauge Installation | 10d | 2026-06-22 | 2026-07-02 | 2.2-RHCUIN04-1000 | 264d | 0d |  | LABOUR [750 h] | EE | 1 | C03a | TY1 | C03c | EIT02.2 |
| 2.2-RHCUIN04-1020 |  | Level Gauge Installation | 10d | 2026-07-03 | 2026-07-14 | 2.2-RHCUIN04-1010 | 264d | 0d |  | LABOUR [1000 h] | EE | 1 | C03a | TY1 | C03c | EIT02.2 |
| 2.2-RHCUIN04-1030 |  | Clear punch | 5d | 2026-07-15 | 2026-07-20 | 2.2-RHCUIN04-1020 | 264d | 0d |  | LABOUR [200 h] | EE | 1 | C03a | TY1 | C03c | EIT02.2 |
| 2.2-RHCUIN04-1040 |  | Complete QA/QC document | 5d | 2026-07-21 | 2026-07-25 | 2.2-RHCUIN04-1030 | 264d |  |  | LABOUR [296.58 h] | EE | 1 | C03a | TY1 | C03c | EIT02.2 |
|  | 6 | **Transmitters/Switches** |  | 2026-06-10 | 2026-08-13 |  |  |  |  |  |  |  |  |  |  |  |
| 2.2-RHCUIN04-1050 |  | Install support / bracket | 10d | 2026-06-10 | 2026-06-20 | 2.2-RHCUIN05-1050 SS | 212d | 0d |  | LABOUR [300 h] | EE | 1 | C03a | TY1 | C03c | EIT02.2 |
| 2.2-RHCUIN04-1060 |  | Pressure transmitters Installation | 10d | 2026-06-22 | 2026-07-02 | 2.2-RHCUIN04-1050 | 212d | 0d |  | LABOUR [500 h] | EE | 1 | C03a | TY1 | C03c | EIT02.2 |
| 2.2-RHCUIN04-1070 |  | D.P. Transmitters - HART Installation | 10d | 2026-07-03 | 2026-07-14 | 2.2-RHCUIN04-1060 | 212d | 0d |  | LABOUR [500 h] | EE | 1 | C03a | TY1 | C03c | EIT02.2 |
| 2.2-RHCUIN04-1080 |  | Temperature Transmitters Installation | 10d | 2026-07-15 | 2026-07-25 | 2.2-RHCUIN04-1070 | 248d | 0d |  | LABOUR [500 h] |  |  |  |  |  |  |
| 2.2-RHCUIN04-1090 |  | Level Switch Installation | 10d | 2026-07-27 | 2026-08-06 | 2.2-RHCUIN04-1080 | 248d | 0d |  | LABOUR [500 h] |  |  |  |  |  |  |
| 2.2-RHCUIN04-1100 |  | Clear punch | 2d | 2026-08-07 | 2026-08-08 | 2.2-RHCUIN04-1090 | 248d | 0d |  | LABOUR [200 h] |  |  |  |  |  |  |
| 2.2-RHCUIN04-1110 |  | Complete QA/QC document | 4d | 2026-08-10 | 2026-08-13 | 2.2-RHCUIN04-1100 | 248d |  |  | LABOUR [496.58 h] |  |  |  |  |  |  |
|  | 11 | **Instrument Junction Box Installation** |  | 2026-06-22 | 2026-07-18 |  |  |  |  |  |  |  |  |  |  |  |
| 2.2-RHCUIN04-1120 |  | Install support / bracket | 10d | 2026-06-22 | 2026-07-02 | 2.2-RHCUIN04-1050 | 270d | 0d |  | LABOUR [1000 h] | EE | 1 | C03a | TY1 | C03c | EIT02.2 |
| 2.2-RHCUIN04-1130 |  | Instrument Junction Box Installation | 10d | 2026-07-03 | 2026-07-14 | 2.2-RHCUIN04-1120 | 270d | 0d |  | LABOUR [1500 h] | EE | 1 | C03a | TY1 | C03c | EIT02.2 |
| 2.2-RHCUIN04-1140 |  | Clear punch | 2d | 2026-07-15 | 2026-07-16 | 2.2-RHCUIN04-1130 | 270d | 0d |  | LABOUR [300 h] | EE | 1 | C03a | TY1 | C03c | EIT02.2 |
| 2.2-RHCUIN04-1150 |  | Complete QA/QC document | 2d | 2026-07-17 | 2026-07-18 | 2.2-RHCUIN04-1140 | 270d |  |  | LABOUR [196.58 h] | EE | 1 | C03a | TY1 | C03c | EIT02.2 |
|  | 5 | **Tubing** |  | 2026-07-15 | 2026-09-24 |  |  |  |  |  |  |  |  |  |  |  |
| 2.2-RHCUIN07-1000 |  | Instrument Hook up Tubing Installation | 20d | 2026-07-15 | 2026-08-06 | 2.2-RHCUIN04-1060, 2.2-RHCUIN04-1070 | 212d | 0d |  | LABOUR [100 h] |  |  |  |  | C03c | EIT02.2 |
| 2.2-RHCUIN07-1010 |  | Leak Test | 20d | 2026-08-07 | 2026-08-29 | 2.2-RHCUIN07-1000 | 212d | 0d |  | LABOUR [30 h] |  |  |  |  | C03c | EIT02.2 |
| 2.2-RHCUIN07-1020 |  | Clear Punch | 10d | 2026-08-31 | 2026-09-10 | 2.2-RHCUIN07-1010 | 212d | 0.1d |  | LABOUR [20 h] |  |  |  |  | C03c | EIT02.2 |
| 2.2-RHCUIN07-1030 |  | Complete QA/QC document | 15d | 2026-09-11 | 2026-09-24 | 2.2-RHCUIN07-1020 | 269.25d |  | 7 - Day Workweek (No Holidays) | LABOUR [29.2 h] |  |  |  |  | C03c | EIT02.2 |

| ID | WBS | Activity | Duration | Start | Finish | Predecessors | Total float | Free float | Resources | EIT WBS | EIT PKG | Disciplines | Main Activity | WBS | Types |
| --- | --- | --- | --- | --- | --- | --- | --- | --- | --- | --- | --- | --- | --- | --- | --- |
|  | 7 | **Instrument Loop Check** |  | 2026-12-02 | 2027-02-09 |  |  |  |  |  |  |  |  |  |  |
| 2.2-RHCUIN00-1000 |  | Instrument Loop check | 30d | 2026-12-02 | 2027-01-05 | 2.2-RHCUIN02-1050 | 94d | 0d | LABOUR [3000 h] | C03c | EIT02.2 |  |  |  |  |
| 2.2-RHCUIN00-1010 |  | Clear Punch | 15d | 2027-01-06 | 2027-01-22 | 2.2-RHCUIN00-1000 | 94d | 0d | LABOUR [1000 h] | C03c | EIT02.2 |  |  |  |  |
| 2.2-RHCUIN00-1020 |  | Complete QA/QC document | 15d | 2027-01-23 | 2027-02-09 | 2.2-RHCUIN00-1010 | 94d |  | LABOUR [1281.31 h] | C03c | EIT02.2 |  |  |  |  |
|  | 5 | **Telecommunication** |  | 2026-06-10 | 2026-12-18 |  |  |  |  |  |  |  |  |  |  |
|  | 3 | **Telecom** |  | 2026-06-10 | 2026-12-18 |  |  |  |  |  |  |  |  |  |  |
|  | 3 | **Telecom Cable Tray/Ladder Installation** |  | 2026-06-10 | 2026-08-29 |  |  |  |  |  |  |  |  |  |  |
| 2.2-RHCUTE03-1000 |  | Install support / bracket | 50d | 2026-06-10 | 2026-08-06 | 2.2-RHCUIN03-1000 | 139d | 0d | LABOUR [3 h] | C03a | EIT02.2 | EE | 1 | C03a | TY1 |
| 2.2-RHCUTE03-1010 |  | Install Ladder / Tray | 50d | 2026-06-10 | 2026-08-06 | 2.2-RHCUTE03-1020 SS | 139d | 0d | LABOUR [77 h] | C03a | EIT02.2 | EE | 1 | C03a | TY1 |
| 2.2-RHCUTE03-1020 |  | Steel Conduits for Cable tray | 50d | 2026-06-10 | 2026-08-06 | 2.2-RHCUTE03-1000 SS | 139d | 0d | LABOUR [3 h] | C03a | EIT02.2 | EE | 1 | C03a | TY1 |
| 2.2-RHCUTE03-1030 |  | punch clear | 5d | 2026-08-07 | 2026-08-12 | 2.2-RHCUTE03-1010, 2.2-RHCUTE03-1020 | 139d | 0d | LABOUR [75 h] | C03a | EIT02.2 | EE | 1 | C03a | TY1 |
| 2.2-RHCUTE03-1040 |  | Complete QA/QC document | 15d | 2026-08-13 | 2026-08-29 | 2.2-RHCUTE03-1030 | 139d | 0d | LABOUR [75 h] | C03a | EIT02.2 | EE | 1 | C03a | TY1 |
|  | 1 | **AG Telecommunication Cable Installation** |  | 2026-08-31 | 2026-11-02 |  |  |  |  |  |  |  |  |  |  |
| 2.2-RHCUTE01-1000 |  | Above Ground Pull Cable | 30d | 2026-08-31 | 2026-10-03 | 2.2-RHCUTE03-1040 | 139d | 0d | LABOUR [1000 h] | C03a | EIT02.2 | EE | 1 | C03a | TY1 |
| 2.2-RHCUTE01-1010 |  | Megger & Continuity test | 10d | 2026-10-05 | 2026-10-15 | 2.2-RHCUTE01-1000 | 139d | 0d | LABOUR [200 h] | C03a | EIT02.2 | EE | 1 | C03a | TY1 |
| 2.2-RHCUTE01-1020 |  | Complete QA/QC document | 15d | 2026-10-16 | 2026-11-02 | 2.2-RHCUTE01-1010 | 139d | 0d | LABOUR [100 h] | C03a | EIT02.2 | EE | 1 | C03a | TY1 |
|  | 4 | **Telecommunication Termination / Glanding** |  | 2026-11-03 | 2026-12-18 |  |  |  |  |  |  |  |  |  |  |
| 2.2-RHCUTE02-1000 |  | Cable Termination/Glanding | 20d | 2026-11-03 | 2026-11-25 | 2.2-RHCUTE01-1020 | 139d | 0d | LABOUR [200 h] | C03a | EIT02.2 | EE | 1 | C03a | TY1 |
| 2.2-RHCUTE02-1010 |  | Clear punch | 10d | 2026-11-26 | 2026-12-07 | 2.2-RHCUTE02-1000 | 139d | 0d | LABOUR [100 h] | C03a | EIT02.2 | EE | 1 | C03a | TY1 |
| 2.2-RHCUTE02-1020 |  | Complete QA/QC document | 10d | 2026-12-08 | 2026-12-18 | 2.2-RHCUTE02-1010 | 139d |  | LABOUR [233.99 h] | C03a | EIT02.2 | EE | 1 | C03a | TY1 |
|  | 2 | **Telecommunication Equipment Installation** |  | 2026-08-31 | 2026-11-02 |  |  |  |  |  |  |  |  |  |  |
| 2.2-RHCUTE04-1000 |  | Telecom Equpiment Installation | 30d | 2026-08-31 | 2026-10-03 | 2.2-RHCUTE03-1040 | 179d | 0d | LABOUR [120 h] | C03a | EIT02.2 | EE | 1 | C03a | TY1 |
| 2.2-RHCUTE04-1010 |  | Clear Punch | 10d | 2026-10-05 | 2026-10-15 | 2.2-RHCUTE04-1000 | 179d | 0d | LABOUR [30 h] | C03a | EIT02.2 | EE | 1 | C03a | TY1 |
| 2.2-RHCUTE04-1020 |  | Complete QA/QC document | 15d | 2026-10-16 | 2026-11-02 | 2.2-RHCUTE04-1010 | 179d |  | LABOUR [40.57 h] | C03a | EIT02.2 | EE | 1 | C03a | TY1 |

| ID | WBS | Activity | Duration | Start | Finish | Predecessors | Total float | Free float | Resources | EIT WBS | EIT PKG |
| --- | --- | --- | --- | --- | --- | --- | --- | --- | --- | --- | --- |
|  | 2 | **RHCU ZONE 2** |  | 2026-05-06 | 2027-04-20 |  |  |  |  |  |  |
|  | 1 | **Electrical Works** |  | 2026-05-06 | 2027-02-17 |  |  |  |  |  |  |
|  | 6 | **Cable trench Excavation buried** |  | 2026-05-06 | 2026-07-20 |  |  |  |  |  |  |
|  | 8 | **CO3-ETD-386/695/285/284/809/253/251/252/808/352/289/291/313/290/373** |  | 2026-05-06 | 2026-06-15 |  |  |  |  |  |  |
| 2.2-RHCUEE09-1020 |  | Cable trench Excavation | 30d | 2026-05-06 | 2026-06-09 | 2.2-RHCUEE09-1000 | 87.9d | 0d | LABOUR | C03c | EIT02.2 |
| 2.2-RHCUEE09-1030 |  | Sand Filling Compaction | 5d | 2026-06-10 | 2026-06-15 | 2.2-RHCUEE09-1020 | 299d |  | LABOUR | C03c | EIT02.2 |
|  | 1 | **C03-ETD-812/254/811/288/631/397/802/832/286/322/307/308/309/672/304/305/815** |  | 2026-06-10 | 2026-07-20 |  |  |  |  |  |  |
| 2.2-RHCUEE09-1040 |  | Cable trench Excavation | 30d | 2026-06-10 | 2026-07-14 | 2.2-RHCUEE09-1020 | 196d | 0d | LABOUR | C03c | EIT02.2 |
| 2.2-RHCUEE09-1050 |  | Sand Filling Compaction | 5d | 2026-07-15 | 2026-07-20 | 2.2-RHCUEE09-1040 | 269d |  | LABOUR | C03c | EIT02.2 |
|  | 8 | **Cable Laying Direct buried** |  | 2026-06-10 | 2026-10-13 |  |  |  |  |  |  |
|  | 8 | **CO3-ETD-386/695/285/284/809/253/251/252/808/352/289/291/313/290/373** |  | 2026-06-10 | 2026-09-08 |  |  |  |  |  |  |
| 2.2-RHCUEE01-1415 |  | Sand Filling First layer | 4d | 2026-06-10 | 2026-06-13 | 2.2-RHCUEE09-1020 | 87.9d | 0d | LABOUR [100 h] |  |  |
| 2.2-RHCUEE01-1420 |  | Cable Laying | 30d | 2026-06-15 | 2026-07-18 | 2.2-RHCUEE01-1415 | 87.9d | 0d | LABOUR [1500 h] | C03c | EIT02.2 |
| 2.2-RHCUEE01-1430 |  | Megger & Continuity test | 5d | 2026-07-20 | 2026-07-24 | 2.2-RHCUEE01-1420 | 226d | 0d | LABOUR [100 h] | C03c | EIT02.2 |
| 2.2-RHCUEE01-1440 |  | punch Clear | 5d | 2026-07-25 | 2026-07-30 | 2.2-RHCUEE01-1430 | 226d | 0d | LABOUR [100 h] | C03c | EIT02.2 |
| 2.2-RHCUEE01-1450 |  | Sand Filling Compaction | 4d | 2026-07-31 | 2026-08-04 | 2.2-RHCUEE01-1440 | 226d | 0d | LABOUR [100 h] |  |  |
| 2.2-RHCUEE01-1460 |  | Complete QA/QC document | 10d | 2026-08-05 | 2026-08-15 | 2.2-RHCUEE01-1450 | 226d | 0d | LABOUR [100 h] | C03c | EIT02.2 |
| 2.2-RHCUEE01-1470 |  | Back Filling | 20d | 2026-08-17 | 2026-09-08 | 2.2-RHCUEE01-1460 | 226d |  | LABOUR [680.7 h] | C03c | EIT02.2 |
|  | 1 | **C03-ETD-812/254/811/288/631/397/802/832/286/322/307/308/309/672/304/305/815** |  | 2026-07-15 | 2026-10-13 |  |  |  |  |  |  |
| 2.2-RHCUEE01-1550 |  | Sand Filling First layer | 4d | 2026-07-15 | 2026-07-18 | 2.2-RHCUEE09-1040 | 196d | 0d | LABOUR [100 h] |  |  |
| 2.2-RHCUEE01-1660 |  | Cable Laying | 30d | 2026-07-20 | 2026-08-22 | 2.2-RHCUEE01-1550 | 196d | 0d | LABOUR [1500 h] | C03c | EIT02.2 |
| 2.2-RHCUEE01-1670 |  | Megger & Continuity test | 5d | 2026-08-24 | 2026-08-28 | 2.2-RHCUEE01-1660 | 196d | 0d | LABOUR [100 h] | C03c | EIT02.2 |
| 2.2-RHCUEE01-1680 |  | punch Clear | 5d | 2026-08-29 | 2026-09-03 | 2.2-RHCUEE01-1670 | 196d | 0d | LABOUR [100 h] | C03c | EIT02.2 |
| 2.2-RHCUEE01-1690 |  | Sand Filling Compaction | 4d | 2026-09-04 | 2026-09-08 | 2.2-RHCUEE01-1680 | 196d | 0d | LABOUR [100 h] |  |  |
| 2.2-RHCUEE01-1700 |  | Complete QA/QC document | 10d | 2026-09-09 | 2026-09-19 | 2.2-RHCUEE01-1690 | 196d | 0d | LABOUR [100 h] | C03c | EIT02.2 |
| 2.2-RHCUEE01-1710 |  | Back Filling | 20d | 2026-09-21 | 2026-10-13 | 2.2-RHCUEE01-1700 | 196d |  | LABOUR [680.7 h] | C03c | EIT02.2 |

| ID | WBS | Activity | Duration | Start | Finish | Predecessors | Total float | Free float | Resources | EIT WBS | EIT PKG | Disciplines | Main Activity | WBS | Types |
| --- | --- | --- | --- | --- | --- | --- | --- | --- | --- | --- | --- | --- | --- | --- | --- |
|  | 13 | **Cable Laying Concrete Trench** |  | 2026-06-15 | 2026-10-30 |  |  |  |  |  |  |  |  |  |  |
|  | 1 | **C03-ETC-484/536/219/245/483/237/544/236/235/284/538/201/552/290/507** |  | 2026-06-15 | 2026-09-14 |  |  |  |  |  |  |  |  |  |  |
| 2.2-RHCUEE01-1480 |  | Cable Laying | 35d | 2026-06-15 | 2026-07-24 | 2.2-RHCUEE01-1420 SS | 87.9d | 0d | LABOUR [1500 h] | C03c | EIT02.2 |  |  |  |  |
| 2.2-RHCUEE01-1490 |  | Megger & Continuity test | 5d | 2026-07-25 | 2026-07-30 | 2.2-RHCUEE01-1480 | 221d | 0d | LABOUR [100 h] | C03c | EIT02.2 |  |  |  |  |
| 2.2-RHCUEE01-1500 |  | punch Clear | 5d | 2026-07-31 | 2026-08-05 | 2.2-RHCUEE01-1490 | 221d | 0d | LABOUR [100 h] | C03c | EIT02.2 |  |  |  |  |
| 2.2-RHCUEE01-1510 |  | Sand Filling Compaction | 4d | 2026-08-06 | 2026-08-10 | 2.2-RHCUEE01-1500 | 221d | 0d | LABOUR [100 h] |  |  |  |  |  |  |
| 2.2-RHCUEE01-1520 |  | Complete QA/QC document | 10d | 2026-08-11 | 2026-08-21 | 2.2-RHCUEE01-1510 | 221d | 0d | LABOUR [100 h] | C03c | EIT02.2 |  |  |  |  |
| 2.2-RHCUEE01-1530 |  | Back Filling | 20d | 2026-08-22 | 2026-09-14 | 2.2-RHCUEE01-1520 | 221d |  | LABOUR [780.7 h] | C03c | EIT02.2 |  |  |  |  |
|  | 2 | **CO3-ETC-213/561/416/250/238/246/202/247/285** |  | 2026-07-25 | 2026-10-30 |  |  |  |  |  |  |  |  |  |  |
| 2.2-RHCUEE01-1540 |  | Cable Laying | 40d | 2026-07-25 | 2026-09-09 | 2.2-RHCUEE01-1480 | 87.9d | 0d | LABOUR [1500 h] | C03c | EIT02.2 |  |  |  |  |
| 2.2-RHCUEE01-1560 |  | Megger & Continuity test | 5d | 2026-09-10 | 2026-09-15 | 2.2-RHCUEE01-1540 | 87.9d | 0d | LABOUR [100 h] | C03c | EIT02.2 |  |  |  |  |
| 2.2-RHCUEE01-1570 |  | punch Clear | 5d | 2026-09-16 | 2026-09-21 | 2.2-RHCUEE01-1560 | 87.9d | 0d | LABOUR [100 h] | C03c | EIT02.2 |  |  |  |  |
| 2.2-RHCUEE01-1580 |  | Sand Filling Compaction | 4d | 2026-09-22 | 2026-09-25 | 2.2-RHCUEE01-1570 | 87.9d | 0d | LABOUR [100 h] |  |  |  |  |  |  |
| 2.2-RHCUEE01-1590 |  | Complete QA/QC document | 10d | 2026-09-26 | 2026-10-07 | 2.2-RHCUEE01-1580 | 87.9d | 0d | LABOUR [100 h] | C03c | EIT02.2 |  |  |  |  |
| 2.2-RHCUEE01-1600 |  | Back Filling | 20d | 2026-10-08 | 2026-10-30 | 2.2-RHCUEE01-1590 | 87.9d | 0d | LABOUR [780.7 h] | C03c | EIT02.2 |  |  |  |  |
|  | 1 | **Electrical Cable Tray/Ladder Installation** |  | 2026-05-06 | 2026-08-12 |  |  |  |  |  |  |  |  |  |  |
| 2.2-RHCUEE03-1050 |  | Install support / bracket | 60d | 2026-05-06 | 2026-07-14 | 2.2-RHCUEE09-1020 SS | 109d | 0d | LABOUR [1000 h] | C03a | EIT02.2 | EE | 1 | C03a | TY1 |
| 2.2-RHCUEE03-1060 |  | Install Ladder / Tray | 60d | 2026-05-06 | 2026-07-14 | 2.2-RHCUEE03-1050 SS | 121d | 0d | LABOUR [5000 h] | C03a | EIT02.2 | EE | 1 | C03a | TY1 |
| 2.2-RHCUEE03-1070 |  | Install Conduits | 60d | 2026-05-06 | 2026-07-14 | 2.2-RHCUEE03-1060 SS | 249d | 0d | LABOUR [1000 h] | C03a | EIT02.2 | EE | 1 | C03a | TY1 |
| 2.2-RHCUEE03-1080 |  | Clear punch | 10d | 2026-07-15 | 2026-07-25 | 2.2-RHCUEE03-1070, 2.2-RHCUEE03-1060 | 249d | 0d | LABOUR [500 h] | C03a | EIT02.2 | EE | 1 | C03a | TY1 |
| 2.2-RHCUEE03-1090 |  | Complete QA/QC document | 15d | 2026-07-27 | 2026-08-12 | 2.2-RHCUEE03-1080 | 249d |  | LABOUR [1229.78 h] | C03a | EIT02.2 | EE | 1 | C03a | TY1 |
|  | 9 | **AG Cable Pull LV Cable** |  | 2026-07-15 | 2026-10-21 |  |  |  |  |  |  |  |  |  |  |
| 2.2-RHCUEE01-1330 |  | Pull Cable | 60d | 2026-07-15 | 2026-09-22 | 2.2-RHCUEE03-1060 | 121d | 0d | LABOUR [2000 h] | C03a | EIT02.2 | EE | 1 | C03a | TY1 |
| 2.2-RHCUEE01-1340 |  | Megger & Continuity test | 10d | 2026-09-23 | 2026-10-03 | 2.2-RHCUEE01-1330 | 134d | 0d | LABOUR [300 h] | C03a | EIT02.2 | EE | 1 | C03a | TY1 |
| 2.2-RHCUEE01-1350 |  | Complete QA/QC document | 15d | 2026-10-05 | 2026-10-21 | 2.2-RHCUEE01-1340 | 134d | 0d | LABOUR [380.7 h] | C03a | EIT02.2 | EE | 1 | C03a | TY1 |

| ID | WBS | Activity | Duration | Start | Finish | Predecessors | Total float | Free float | Resources | Disciplines | Main Activity | WBS | Types | EIT WBS | EIT PKG |
| --- | --- | --- | --- | --- | --- | --- | --- | --- | --- | --- | --- | --- | --- | --- | --- |
|  | 10 | **AG Cable Pull Control Cable** |  | 2026-07-15 | 2026-10-21 |  |  |  |  |  |  |  |  |  |  |
| 2.2-RHCUEE01-1360 |  | Pull Cable | 60d | 2026-07-15 | 2026-09-22 | 2.2-RHCUEE01-1330 SS | 121d | 0d | LABOUR [2000 h] | EE | 1 | C03a | TY1 | C03a | EIT02.2 |
| 2.2-RHCUEE01-1370 |  | Megger & Continuity test | 10d | 2026-09-23 | 2026-10-03 | 2.2-RHCUEE01-1360 | 134d | 0d | LABOUR [300 h] | EE | 1 | C03a | TY1 | C03a | EIT02.2 |
| 2.2-RHCUEE01-1380 |  | Complete QA/QC document | 15d | 2026-10-05 | 2026-10-21 | 2.2-RHCUEE01-1370 | 134d | 0d | LABOUR [380.7 h] | EE | 1 | C03a | TY1 | C03a | EIT02.2 |
|  | 11 | **AG Lighting Cable** |  | 2026-07-15 | 2026-11-19 |  |  |  |  |  |  |  |  |  |  |
| 2.2-RHCUEE01-1390 |  | Pull Cable | 60d | 2026-07-15 | 2026-09-22 | 2.2-RHCUEE01-1360 SS | 121d | 0d | LABOUR [2000 h] | EE | 1 | C03a | TY1 | C03a | EIT02.2 |
| 2.2-RHCUEE01-1400 |  | Megger & Continuity test | 30d | 2026-09-23 | 2026-10-27 | 2.2-RHCUEE01-1390 | 121d | 0d | LABOUR [300 h] | EE | 1 | C03a | TY1 | C03a | EIT02.2 |
| 2.2-RHCUEE01-1410 |  | Complete QA/QC document | 20d | 2026-10-28 | 2026-11-19 | 2.2-RHCUEE01-1400 | 121d | 0d | LABOUR [380.7 h] | EE | 1 | C03a | TY1 | C03a | EIT02.2 |
|  | 4 | **Electrical Cable Termination / Glanding** |  | 2026-10-22 | 2027-01-08 |  |  |  |  |  |  |  |  |  |  |
|  | 1 | **Termination MV Cable** |  | 2026-10-31 | 2026-12-22 |  |  |  |  |  |  |  |  |  |  |
| 2.2-RHCUEE02-1120 |  | Cable Termination/Glanding | 30d | 2026-10-31 | 2026-12-04 | 2.2-RHCUEE01-1600 | 87.9d | 0d | LABOUR [2000 h] | EE | 1 | C03a | TY1 | C03a | EIT02.2 |
| 2.2-RHCUEE02-1130 |  | Clear punch | 5d | 2026-12-05 | 2026-12-10 | 2.2-RHCUEE02-1120 | 87.9d | 0d | LABOUR [300 h] | EE | 1 | C03a | TY1 | C03a | EIT02.2 |
| 2.2-RHCUEE02-1140 |  | Complete QA/QC document | 10d | 2026-12-11 | 2026-12-22 | 2.2-RHCUEE02-1130 | 87.9d | 0d | LABOUR [339.6 h] | EE | 1 | C03a | TY1 | C03a | EIT02.2 |
|  | 2 | **Termination LV Cable** |  | 2026-10-22 | 2026-12-24 |  |  |  |  |  |  |  |  |  |  |
| 2.2-RHCUEE02-1150 |  | Cable Termination/Glanding | 30d | 2026-10-22 | 2026-11-25 | 2.2-RHCUEE01-1350 | 134d | 0d | LABOUR [2000 h] | EE | 1 | C03a | TY1 | C03a | EIT02.2 |
| 2.2-RHCUEE02-1160 |  | Clear punch | 10d | 2026-11-26 | 2026-12-07 | 2.2-RHCUEE02-1150 | 134d | 0d | LABOUR [300 h] | EE | 1 | C03a | TY1 | C03a | EIT02.2 |
| 2.2-RHCUEE02-1170 |  | Complete QA/QC document | 15d | 2026-12-08 | 2026-12-24 | 2.2-RHCUEE02-1160 | 134d |  | LABOUR [339.6 h] | EE | 1 | C03a | TY1 | C03a | EIT02.2 |
|  | 3 | **Termination Control Cable** |  | 2026-10-22 | 2026-12-24 |  |  |  |  |  |  |  |  |  |  |
| 2.2-RHCUEE02-1180 |  | Cable Termination/Glanding | 30d | 2026-10-22 | 2026-11-25 | 2.2-RHCUEE01-1380 | 134d | 0d | LABOUR [2000 h] | EE | 1 | C03a | TY1 | C03a | EIT02.2 |
| 2.2-RHCUEE02-1190 |  | Clear punch | 10d | 2026-11-26 | 2026-12-07 | 2.2-RHCUEE02-1180 | 134d | 0d | LABOUR [300 h] | EE | 1 | C03a | TY1 | C03a | EIT02.2 |
| 2.2-RHCUEE02-1200 |  | Complete QA/QC document | 15d | 2026-12-08 | 2026-12-24 | 2.2-RHCUEE02-1190 | 134d |  | LABOUR [339.6 h] | EE | 1 | C03a | TY1 | C03a | EIT02.2 |
|  | 4 | **Termination Lighting Cable** |  | 2026-11-20 | 2027-01-08 |  |  |  |  |  |  |  |  |  |  |
| 2.2-RHCUEE02-1210 |  | Cable Termination/Glanding | 28d | 2026-11-20 | 2026-12-22 | 2.2-RHCUEE01-1410 | 121d | 0d | LABOUR [2000 h] | EE | 1 | C03a | TY1 | C03a | EIT02.2 |
| 2.2-RHCUEE02-1220 |  | Clear punch | 5d | 2026-12-23 | 2026-12-28 | 2.2-RHCUEE02-1210 | 121d | 0d | LABOUR [300 h] | EE | 1 | C03a | TY1 | C03a | EIT02.2 |
| 2.2-RHCUEE02-1230 |  | Complete QA/QC document | 10d | 2026-12-29 | 2027-01-08 | 2.2-RHCUEE02-1220 | 121d |  | LABOUR [339.6 h] | EE | 1 | C03a | TY1 | C03a | EIT02.2 |

| ID | WBS | Activity | Duration | Start | Finish | Predecessors | Total float | Free float | Calendar | Resources | Disciplines | Main Activity | WBS | Types | EIT WBS | EIT PKG |
| --- | --- | --- | --- | --- | --- | --- | --- | --- | --- | --- | --- | --- | --- | --- | --- | --- |
|  | 7 | **Electrical Earthing / Lightning Installation** |  | 2026-05-06 | 2026-09-16 |  |  |  |  |  |  |  |  |  |  |  |
| 2.2-RHCUEE06-1030 |  | Install Equipment Earthing / Inspection PIT / Install earthing pull and Connecttion | 90d | 2026-05-06 | 2026-08-18 | 2.2-RHCUEE03-1050 SS | 219d | 0d |  | LABOUR [3000 h] | EE | 1 | C03a | TY1 | C03a | EIT02.2 |
| 2.2-RHCUEE06-1040 |  | Punch Clear | 10d | 2026-08-19 | 2026-08-29 | 2.2-RHCUEE06-1030 | 219d | 0d |  | LABOUR [500 h] | EE | 1 | C03a | TY1 | C03a | EIT02.2 |
| 2.2-RHCUEE06-1050 |  | Complete QA/QC document | 15d | 2026-08-31 | 2026-09-16 | 2.2-RHCUEE06-1040 | 219d |  |  | LABOUR [763.82 h] | EE | 1 | C03a | TY1 | C03a | EIT02.2 |
|  | 5 | **Lighting Fixture Installation** |  | 2026-07-15 | 2026-09-28 |  |  |  |  |  |  |  |  |  |  |  |
| 2.2-RHCUEE05-1080 |  | Install support / bracket / Pole | 40d | 2026-07-15 | 2026-08-29 | 2.2-RHCUEE03-1050 | 109d | 0d |  | LABOUR [500 h] | EE | 1 | C03a | TY1 | C03a | EIT02.2 |
| 2.2-RHCUEE05-1090 |  | lighting fixture | 40d | 2026-07-15 | 2026-08-29 | 2.2-RHCUEE05-1080 SS | 209d | 0d |  | LABOUR [1500 h] | EE | 1 | C03a | TY1 | C03a | EIT02.2 |
| 2.2-RHCUEE05-1100 |  | Clear punch | 10d | 2026-08-31 | 2026-09-10 | 2.2-RHCUEE05-1090 | 209d | 0d |  | LABOUR [50 h] | EE | 1 | C03a | TY1 | C03a | EIT02.2 |
| 2.2-RHCUEE05-1110 |  | Complete QA/QC document | 15d | 2026-09-11 | 2026-09-28 | 2.2-RHCUEE05-1100 | 209d |  |  | LABOUR [116.75 h] |  |  |  |  |  |  |
|  | 12 | **Small Power Equipment Installation** |  | 2026-07-15 | 2026-09-28 |  |  |  |  |  |  |  |  |  |  |  |
| 2.2-RHCUEE05-1120 |  | Install support / bracket | 40d | 2026-07-15 | 2026-08-29 | 2.2-RHCUEE05-1080 SS | 109d | 0d |  | LABOUR [500 h] | EE | 1 | C03a | TY1 | C03a | EIT02.2 |
| 2.2-RHCUEE05-1130 |  | Install Distribution panel, convenience outlet | 40d | 2026-07-15 | 2026-08-29 | 2.2-RHCUEE05-1120 SS | 209d | 0d |  | LABOUR [1500 h] | EE | 1 | C03a | TY1 | C03a | EIT02.2 |
| 2.2-RHCUEE05-1140 |  | Clear punch | 10d | 2026-08-31 | 2026-09-10 | 2.2-RHCUEE05-1130 | 209d | 0d |  | LABOUR [50 h] | EE | 1 | C03a | TY1 | C03a | EIT02.2 |
| 2.2-RHCUEE05-1150 |  | Complete QA/QC document | 15d | 2026-09-11 | 2026-09-28 | 2.2-RHCUEE05-1140 | 209d |  |  | LABOUR [116.75 h] |  |  |  |  |  |  |
|  | 2 | **Motor Solo Run** |  | 2026-12-23 | 2027-02-17 |  |  |  |  |  |  |  |  |  |  |  |
| 2.2-RHCUEE00-1040 |  | Motor solo run | 25d | 2026-12-23 | 2027-01-20 | 2.2-RHCUEE02-1140 | 87.9d | 0.1d |  | LABOUR |  |  |  |  | C03a | EIT02.2 |
| 2.2-RHCUEE00-1050 |  | Punch Clear | 10d | 2027-01-21 | 2027-01-30 | 2.2-RHCUEE00-1040 | 112d | 0d | 7 - Day Workweek (No Holidays) | LABOUR |  |  |  |  | C03a | EIT02.2 |
| 2.2-RHCUEE00-1060 |  | Complete QA/QC document | 15d | 2027-01-30 | 2027-02-17 | 2.2-RHCUEE00-1050 | 87.8d |  |  | LABOUR |  |  |  |  | C03a | EIT02.2 |
|  | 3 | **Instrument Works** |  | 2026-06-10 | 2027-04-20 |  |  |  |  |  |  |  |  |  |  |  |
|  | 10 | **Cable Laying concrete Trench** |  | 2026-06-10 | 2026-10-03 |  |  |  |  |  |  |  |  |  |  |  |
|  | 3 | **C03-JTR-278/271/272/275/273/274/276/265/263** |  | 2026-06-10 | 2026-10-03 |  |  |  |  |  |  |  |  |  |  |  |
| 2.2-RHCUIN01-1180 |  | Cable Laying | 50d | 2026-06-10 | 2026-08-06 | 2.2-RHCUIN01-1000 | 0d |  |  | LABOUR [10000 h] |  |  |  |  | C03a | EIT02.2 |
| 2.2-RHCUIN01-1190 |  | Megger & Continuity test | 5d | 2026-08-07 | 2026-08-12 | 2.2-RHCUIN01-1180 | 204d | 0d |  | LABOUR [200 h] |  |  |  |  | C03a | EIT02.2 |
| 2.2-RHCUIN01-1200 |  | Clear punch | 5d | 2026-08-13 | 2026-08-18 | 2.2-RHCUIN01-1190 | 204d | 0d |  | LABOUR [300 h] |  |  |  |  | C03a | EIT02.2 |
| 2.2-RHCUIN01-1210 |  | Sand Filling compaction | 10d | 2026-08-19 | 2026-08-29 | 2.2-RHCUIN01-1200 | 234d |  |  | LABOUR [500 h] |  |  |  |  |  |  |
| 2.2-RHCUIN01-1220 |  | Complete QA/QC document | 10d | 2026-08-19 | 2026-08-29 | 2.2-RHCUIN01-1200 | 204d | 0d |  | LABOUR [500 h] |  |  |  |  | C03a | EIT02.2 |
| 2.2-RHCUIN01-1230 |  | Back Filling | 30d | 2026-08-31 | 2026-10-03 | 2.2-RHCUIN01-1220 | 204d |  |  | LABOUR [3970.51 h] |  |  |  |  | C03a | EIT02.2 |

| ID | WBS | Activity | Duration | Start | Finish | Predecessors | Total float | Free float | Resources | Disciplines | Main Activity | WBS | Types | EIT WBS | EIT PKG |
| --- | --- | --- | --- | --- | --- | --- | --- | --- | --- | --- | --- | --- | --- | --- | --- |
|  | 3 | **Instrument Cable Tray/Ladder Installation** |  | 2026-06-10 | 2026-09-16 |  |  |  |  |  |  |  |  |  |  |
| 2.2-RHCUIN03-1050 |  | Install support / bracket | 60d | 2026-06-10 | 2026-08-18 | 2.2-RHCUIN01-1180 SS | 34d | 0d | LABOUR [3 h] | EE | 1 | C03a | TY1 | C03a | EIT02.2 |
| 2.2-RHCUIN03-1060 |  | Install Ladder / Tray | 60d | 2026-06-10 | 2026-08-18 | 2.2-RHCUIN03-1070 SS | 34d | 0d | LABOUR [77 h] | EE | 1 | C03a | TY1 | C03a | EIT02.2 |
| 2.2-RHCUIN03-1070 |  | Steel Conduits for Cable tray | 60d | 2026-06-10 | 2026-08-18 | 2.2-RHCUIN03-1050 SS | 34d | 0d | LABOUR [3 h] | EE | 1 | C03a | TY1 | C03a | EIT02.2 |
| 2.2-RHCUIN03-1080 |  | punch clear | 10d | 2026-08-19 | 2026-08-29 | 2.2-RHCUIN03-1060, 2.2-RHCUIN03-1070 | 34d | 0d | LABOUR [75 h] | EE | 1 | C03a | TY1 | C03a | EIT02.2 |
| 2.2-RHCUIN03-1090 |  | Complete QA/QC document | 15d | 2026-08-31 | 2026-09-16 | 2.2-RHCUIN03-1080 | 34d | 0d | LABOUR [75 h] | EE | 1 | C03a | TY1 | C03a | EIT02.2 |
|  | 8 | **AG Cable Pull Primary Cable** |  | 2026-09-17 | 2026-12-12 |  |  |  |  |  |  |  |  |  |  |
| 2.2-RHCUIN01-1120 |  | Pull Cable | 50d | 2026-09-17 | 2026-11-13 | 2.2-RHCUIN03-1090 | 94d | 0d | LABOUR [14000 h] | EE | 1 | C03a | TY1 | C03a | EIT02.2 |
| 2.2-RHCUIN01-1130 |  | Megger & Continuity test | 10d | 2026-11-14 | 2026-11-25 | 2.2-RHCUIN01-1120 | 94d | 0d | LABOUR [500 h] | EE | 1 | C03a | TY1 | C03a | EIT02.2 |
| 2.2-RHCUIN01-1140 |  | Complete QA/QC document | 15d | 2026-11-26 | 2026-12-12 | 2.2-RHCUIN01-1130 | 94d | 0d | LABOUR [970.51 h] | EE | 1 | C03a | TY1 | C03a | EIT02.2 |
|  | 9 | **AG Cable Pull Secondary Cable** |  | 2026-09-17 | 2026-12-12 |  |  |  |  |  |  |  |  |  |  |
| 2.2-RHCUIN01-1150 |  | Pull Cable | 50d | 2026-09-17 | 2026-11-13 | 2.2-RHCUIN03-1090 | 34d | 0d | LABOUR [14000 h] | EE | 1 | C03a | TY1 | C03a | EIT02.2 |
| 2.2-RHCUIN01-1160 |  | Megger & Continuity test | 10d | 2026-11-14 | 2026-11-25 | 2.2-RHCUIN01-1150 | 34d | 0d | LABOUR [500 h] | EE | 1 | C03a | TY1 | C03a | EIT02.2 |
| 2.2-RHCUIN01-1170 |  | Complete QA/QC document | 15d | 2026-11-26 | 2026-12-12 | 2.2-RHCUIN01-1160 | 34d | 0d | LABOUR [970.51 h] | EE | 1 | C03a | TY1 | C03a | EIT02.2 |
|  | 2 | **Instrument Cable Termination / Glanding** |  | 2026-08-07 | 2027-02-09 |  |  |  |  |  |  |  |  |  |  |
|  | 1 | **UG Cable Termination Cable** |  | 2026-08-07 | 2026-10-03 |  |  |  |  |  |  |  |  |  |  |
| 2.2-RHCUIN02-1330 |  | Cable Termination/Glanding | 25d | 2026-08-07 | 2026-09-04 | 2.2-RHCUIN01-1180 | 204d | 0d | LABOUR [3000 h] | EE | 1 | C03a | TY1 | C03a | EIT02.2 |
| 2.2-RHCUIN02-1340 |  | punch clear | 10d | 2026-09-05 | 2026-09-16 | 2.2-RHCUIN02-1330 | 204d | 0d | LABOUR [500 h] | EE | 1 | C03a | TY1 | C03a | EIT02.2 |
| 2.2-RHCUIN02-1350 |  | Complete QA/QC document | 15d | 2026-09-17 | 2026-10-03 | 2.2-RHCUIN02-1340 | 204d |  | LABOUR [907.72 h] | EE | 1 | C03a | TY1 | C03a | EIT02.2 |
|  | 8 | **Cable Termination Primary Cable** |  | 2026-12-14 | 2027-02-09 |  |  |  |  |  |  |  |  |  |  |
| 2.2-RHCUIN02-1060 |  | Cable Termination/Glanding | 25d | 2026-12-14 | 2027-01-11 | 2.2-RHCUIN01-1140 | 94d | 0d | LABOUR [3000 h] | EE | 1 | C03a | TY1 | C03a | EIT02.2 |
| 2.2-RHCUIN02-1070 |  | punch clear | 10d | 2027-01-12 | 2027-01-22 | 2.2-RHCUIN02-1060 | 94d | 0d | LABOUR [500 h] | EE | 1 | C03a | TY1 | C03a | EIT02.2 |
| 2.2-RHCUIN02-1080 |  | Complete QA/QC document | 15d | 2027-01-23 | 2027-02-09 | 2.2-RHCUIN02-1070 | 94d |  | LABOUR [907.72 h] | EE | 1 | C03a | TY1 | C03a | EIT02.2 |
|  | 9 | **Cable Termination Secondary Cable** |  | 2026-12-14 | 2027-02-09 |  |  |  |  |  |  |  |  |  |  |
| 2.2-RHCUIN02-1090 |  | Cable Termination/Glanding | 25d | 2026-12-14 | 2027-01-11 | 2.2-RHCUIN01-1170 | 34d | 0d | LABOUR [3000 h] | EE | 1 | C03a | TY1 | C03a | EIT02.2 |
| 2.2-RHCUIN02-1100 |  | punch clear | 10d | 2027-01-12 | 2027-01-22 | 2.2-RHCUIN02-1090 | 34d | 0d | LABOUR [500 h] | EE | 1 | C03a | TY1 | C03a | EIT02.2 |
| 2.2-RHCUIN02-1110 |  | Complete QA/QC document | 15d | 2027-01-23 | 2027-02-09 | 2.2-RHCUIN02-1100 | 34d | 0d | LABOUR [907.72 h] | EE | 1 | C03a | TY1 | C03a | EIT02.2 |

| ID | WBS | Activity | Duration | Start | Finish | Predecessors | Total float | Free float | Calendar | Resources | Disciplines | Main Activity | WBS | Types | EIT WBS | EIT PKG |
| --- | --- | --- | --- | --- | --- | --- | --- | --- | --- | --- | --- | --- | --- | --- | --- | --- |
|  | 4 | **Instrument Calibration** |  | 2026-08-07 | 2026-09-10 |  |  |  |  |  |  |  |  |  |  |  |
| 2.2-RHCUIN05-1010 |  | Calibration of Gauges | 30d | 2026-08-07 | 2026-09-10 | 2.2-RHCUIN01-1180 | 162d | 0d |  | LABOUR [3000 h] | EE | 1 | C03a | TY1 | C03c | EIT02.2 |
| 2.2-RHCUIN05-1060 |  | Calibration of Transmitters/Switches | 30d | 2026-08-07 | 2026-09-10 | 2.2-RHCUIN05-1010 SS | 224d |  |  | LABOUR [4396.55 h] |  |  |  |  |  |  |
|  | 1 | **Gauges** |  | 2026-08-07 | 2026-09-22 |  |  |  |  |  |  |  |  |  |  |  |
| 2.2-RHCUIN04-1155 |  | D.P Pressure Gauge Installation | 10d | 2026-08-07 | 2026-08-18 | 2.2-RHCUIN05-1010 SS | 162d | 0d |  | LABOUR [750 h] |  |  |  |  |  |  |
| 2.2-RHCUIN04-1160 |  | Pressure Gauge Installation | 10d | 2026-08-19 | 2026-08-29 | 2.2-RHCUIN04-1155 | 214d | 0d |  | LABOUR [750 h] | EE | 1 | C03a | TY1 | C03c | EIT02.2 |
| 2.2-RHCUIN04-1170 |  | Level Gauge Installation | 10d | 2026-08-31 | 2026-09-10 | 2.2-RHCUIN04-1160 | 214d | 0d |  | LABOUR [1000 h] | EE | 1 | C03a | TY1 | C03c | EIT02.2 |
| 2.2-RHCUIN04-1180 |  | Clear punch | 5d | 2026-09-11 | 2026-09-16 | 2.2-RHCUIN04-1170 | 214d | 0d |  | LABOUR [200 h] | EE | 1 | C03a | TY1 | C03c | EIT02.2 |
| 2.2-RHCUIN04-1190 |  | Complete QA/QC document | 5d | 2026-09-17 | 2026-09-22 | 2.2-RHCUIN04-1180 | 214d |  |  | LABOUR [296.58 h] | EE | 1 | C03a | TY1 | C03c | EIT02.2 |
|  | 6 | **Transmitters/Switches** |  | 2026-08-07 | 2026-10-13 |  |  |  |  |  |  |  |  |  |  |  |
| 2.2-RHCUIN04-1200 |  | Install support / bracket | 10d | 2026-08-07 | 2026-08-18 | 2.2-RHCUIN04-1155 SS | 162d | 0d |  | LABOUR [300 h] | EE | 1 | C03a | TY1 | C03c | EIT02.2 |
| 2.2-RHCUIN04-1210 |  | Pressure transmitters Installation | 10d | 2026-08-19 | 2026-08-29 | 2.2-RHCUIN04-1200 | 162d | 0d |  | LABOUR [500 h] | EE | 1 | C03a | TY1 | C03c | EIT02.2 |
| 2.2-RHCUIN04-1220 |  | D.P. Transmitters - HART Installation | 10d | 2026-08-31 | 2026-09-10 | 2.2-RHCUIN04-1210 | 162d | 0d |  | LABOUR [500 h] | EE | 1 | C03a | TY1 | C03c | EIT02.2 |
| 2.2-RHCUIN04-1230 |  | Temperature Transmitters Installation | 10d | 2026-09-11 | 2026-09-22 | 2.2-RHCUIN04-1220 | 196d | 0d |  | LABOUR [500 h] | EE | 1 | C03a | TY1 | C03c | EIT02.2 |
| 2.2-RHCUIN04-1280 |  | Level Switch Installation | 10d | 2026-09-23 | 2026-10-03 | 2.2-RHCUIN04-1230 | 196d | 0d |  | LABOUR [500 h] |  |  |  |  |  |  |
| 2.2-RHCUIN04-1290 |  | Clear Punch | 4d | 2026-10-05 | 2026-10-08 | 2.2-RHCUIN04-1280 | 196d | 0d |  | LABOUR [200 h] |  |  |  |  |  |  |
| 2.2-RHCUIN04-1300 |  | Complete QA/QC document | 4d | 2026-10-09 | 2026-10-13 | 2.2-RHCUIN04-1290 | 196d |  |  | LABOUR [496.58 h] |  |  |  |  |  |  |
|  | 11 | **Instrument Junction Box Installation** |  | 2026-08-19 | 2026-09-15 |  |  |  |  |  |  |  |  |  |  |  |
| 2.2-RHCUIN04-1240 |  | Install support / bracket | 10d | 2026-08-19 | 2026-08-29 | 2.2-RHCUIN04-1200 | 220d | 0d |  | LABOUR [1000 h] | EE | 1 | C03a | TY1 | C03c | EIT02.2 |
| 2.2-RHCUIN04-1250 |  | Instrument Junction Box Installation | 10d | 2026-08-31 | 2026-09-10 | 2.2-RHCUIN04-1240 | 220d | 0d |  | LABOUR [1500 h] | EE | 1 | C03a | TY1 | C03c | EIT02.2 |
| 2.2-RHCUIN04-1260 |  | Clear punch | 2d | 2026-09-11 | 2026-09-12 | 2.2-RHCUIN04-1250 | 220d | 0d |  | LABOUR [300 h] | EE | 1 | C03a | TY1 | C03c | EIT02.2 |
| 2.2-RHCUIN04-1270 |  | Complete QA/QC document | 2d | 2026-09-14 | 2026-09-15 | 2.2-RHCUIN04-1260 | 220d |  |  | LABOUR [196.58 h] | EE | 1 | C03a | TY1 | C03c | EIT02.2 |
|  | 5 | **Tubing** |  | 2026-09-11 | 2026-11-21 |  |  |  |  |  |  |  |  |  |  |  |
| 2.2-RHCUIN07-1040 |  | Instrument Hook up Tubing Installation | 20d | 2026-09-11 | 2026-10-03 | 2.2-RHCUIN04-1210, 2.2-RHCUIN04-1220 | 162d | 0d |  | LABOUR [100 h] |  |  |  |  | C03c | EIT02.2 |
| 2.2-RHCUIN07-1050 |  | Leak Test | 20d | 2026-10-05 | 2026-10-27 | 2.2-RHCUIN07-1040 | 162d | 0d |  | LABOUR [30 h] |  |  |  |  | C03c | EIT02.2 |
| 2.2-RHCUIN07-1060 |  | Clear Punch | 10d | 2026-10-28 | 2026-11-07 | 2.2-RHCUIN07-1050 | 162d | 0d |  | LABOUR [20 h] |  |  |  |  | C03c | EIT02.2 |
| 2.2-RHCUIN07-1070 |  | Complete QA/QC document | 15d | 2026-11-08 | 2026-11-21 | 2.2-RHCUIN07-1060 | 206.12d |  | 7 - Day Workweek (No Holidays) | LABOUR [29.2 h] |  |  |  |  | C03c | EIT02.2 |

| ID | WBS | Activity | Duration | Start | Finish | Predecessors | Total float | Free float | Resources | EIT WBS | EIT PKG | Disciplines | Main Activity | WBS | Types |
| --- | --- | --- | --- | --- | --- | --- | --- | --- | --- | --- | --- | --- | --- | --- | --- |
|  | 7 | **Instrument Loop Check** |  | 2027-02-10 | 2027-04-20 |  |  |  |  |  |  |  |  |  |  |
| 2.2-RHCUIN00-1030 |  | Instrument Loop check | 30d | 2027-02-10 | 2027-03-16 | 2.2-RHCUIN02-1110 | 34d | 0d | LABOUR [3000 h] | C03c | EIT02.2 |  |  |  |  |
| 2.2-RHCUIN00-1040 |  | Clear Punch | 15d | 2027-03-17 | 2027-04-02 | 2.2-RHCUIN00-1030 | 34d | 0d | LABOUR [1000 h] | C03c | EIT02.2 |  |  |  |  |
| 2.2-RHCUIN00-1050 |  | Complete QA/QC document | 15d | 2027-04-03 | 2027-04-20 | 2.2-RHCUIN00-1040 | 34d |  | LABOUR [1281.31 h] | C03c | EIT02.2 |  |  |  |  |
|  | 5 | **Telecommunication** |  | 2026-07-15 | 2027-01-22 |  |  |  |  |  |  |  |  |  |  |
|  | 3 | **Telecom** |  | 2026-07-15 | 2027-01-22 |  |  |  |  |  |  |  |  |  |  |
|  | 3 | **Telecom Cable Tray/Ladder Installation** |  | 2026-07-15 | 2026-10-03 |  |  |  |  |  |  |  |  |  |  |
| 2.2-RHCUTE03-1050 |  | Install support / bracket | 50d | 2026-07-15 | 2026-09-10 | 2.2-RHCUEE05-1120 SS | 109d | 0d | LABOUR [3 h] | C03a | EIT02.2 | EE | 1 | C03a | TY1 |
| 2.2-RHCUTE03-1060 |  | Install Ladder / Tray | 50d | 2026-07-15 | 2026-09-10 | 2.2-RHCUTE03-1070 SS | 109d | 0d | LABOUR [77 h] | C03a | EIT02.2 | EE | 1 | C03a | TY1 |
| 2.2-RHCUTE03-1070 |  | Steel Conduits for Cable tray | 50d | 2026-07-15 | 2026-09-10 | 2.2-RHCUTE03-1050 SS | 109d | 0d | LABOUR [3 h] | C03a | EIT02.2 | EE | 1 | C03a | TY1 |
| 2.2-RHCUTE03-1080 |  | punch clear | 5d | 2026-09-11 | 2026-09-16 | 2.2-RHCUTE03-1060, 2.2-RHCUTE03-1070 | 109d | 0d | LABOUR [75 h] | C03a | EIT02.2 | EE | 1 | C03a | TY1 |
| 2.2-RHCUTE03-1090 |  | Complete QA/QC document | 15d | 2026-09-17 | 2026-10-03 | 2.2-RHCUTE03-1080 | 109d | 0d | LABOUR [75 h] | C03a | EIT02.2 | EE | 1 | C03a | TY1 |
|  | 1 | **AG Telecommunication Cable Installation** |  | 2026-10-05 | 2026-12-07 |  |  |  |  |  |  |  |  |  |  |
| 2.2-RHCUTE01-1030 |  | Above Ground Pull Cable | 30d | 2026-10-05 | 2026-11-07 | 2.2-RHCUTE03-1090 | 109d | 0d | LABOUR [1300 h] | C03a | EIT02.2 | EE | 1 | C03a | TY1 |
| 2.2-RHCUTE01-1040 |  | Megger & Continuity test | 10d | 2026-11-09 | 2026-11-19 | 2.2-RHCUTE01-1030 | 109d | 0d | LABOUR [200 h] | C03a | EIT02.2 | EE | 1 | C03a | TY1 |
| 2.2-RHCUTE01-1050 |  | Complete QA/QC document | 15d | 2026-11-20 | 2026-12-07 | 2.2-RHCUTE01-1040 | 109d | 0d | LABOUR [100 h] | C03a | EIT02.2 | EE | 1 | C03a | TY1 |
|  | 4 | **Telecommunication Termination / Glanding** |  | 2026-12-08 | 2027-01-22 |  |  |  |  |  |  |  |  |  |  |
| 2.2-RHCUTE02-1030 |  | Cable Termination/Glanding | 20d | 2026-12-08 | 2026-12-30 | 2.2-RHCUTE01-1050 | 109d | 0d | LABOUR [200 h] | C03a | EIT02.2 | EE | 1 | C03a | TY1 |
| 2.2-RHCUTE02-1040 |  | Clear punch | 10d | 2026-12-31 | 2027-01-11 | 2.2-RHCUTE02-1030 | 109d | 0d | LABOUR [100 h] | C03a | EIT02.2 | EE | 1 | C03a | TY1 |
| 2.2-RHCUTE02-1050 |  | Complete QA/QC document | 10d | 2027-01-12 | 2027-01-22 | 2.2-RHCUTE02-1040 | 109d |  | LABOUR [233.99 h] | C03a | EIT02.2 | EE | 1 | C03a | TY1 |
|  | 2 | **Telecommunication Equipment Installation** |  | 2026-10-05 | 2026-12-07 |  |  |  |  |  |  |  |  |  |  |
| 2.2-RHCUTE04-1030 |  | Telecom Equpiment Installation | 30d | 2026-10-05 | 2026-11-07 | 2.2-RHCUTE01-1030 SS | 149d | 0d | LABOUR [120 h] | C03a | EIT02.2 | EE | 1 | C03a | TY1 |
| 2.2-RHCUTE04-1040 |  | Clear Punch | 10d | 2026-11-09 | 2026-11-19 | 2.2-RHCUTE04-1030 | 149d | 0d | LABOUR [30 h] | C03a | EIT02.2 | EE | 1 | C03a | TY1 |
| 2.2-RHCUTE04-1050 |  | Complete QA/QC document | 15d | 2026-11-20 | 2026-12-07 | 2.2-RHCUTE04-1040 | 149d |  | LABOUR [40.57 h] | C03a | EIT02.2 | EE | 1 | C03a | TY1 |

| ID | WBS | Activity | Duration | Start | Finish | Predecessors | Total float | Free float | Resources | EIT WBS | EIT PKG |
| --- | --- | --- | --- | --- | --- | --- | --- | --- | --- | --- | --- |
|  | 3 | **RHCU ZONE 3** |  | 2026-05-06 | 2027-05-29 |  |  |  |  |  |  |
|  | 1 | **Electrical Works** |  | 2026-05-06 | 2027-01-11 |  |  |  |  |  |  |
|  | 6 | **Cable trench Excavation buried** |  | 2026-05-06 | 2026-08-24 |  |  |  |  |  |  |
|  | 8 | **C03-ETD-642/385/810/638/283/376/316/302/702/337/336/639/353/350/354/318** |  | 2026-05-06 | 2026-06-15 |  |  |  |  |  |  |
| 2.2-RHCUEE09-1060 |  | Cable trench Excavation | 30d | 2026-05-06 | 2026-06-09 | 2.2-RHCUEE09-1020 SS | 109d | 0d | LABOUR | C03c | EIT02.2 |
| 2.2-RHCUEE09-1070 |  | Sand Filling Compaction | 5d | 2026-06-10 | 2026-06-15 | 2.2-RHCUEE09-1060 | 299d |  | LABOUR | C03c | EIT02.2 |
|  | 1 | **C03-ETD-293/270/333/296/276//275/277/266/269/279/369/264/280/368/319/320** |  | 2026-06-10 | 2026-07-20 |  |  |  |  |  |  |
| 2.2-RHCUEE09-1080 |  | Cable trench Excavation | 30d | 2026-06-10 | 2026-07-14 | 2.2-RHCUEE09-1060 | 239d | 0d | LABOUR | C03c | EIT02.2 |
| 2.2-RHCUEE09-1090 |  | Sand Filling Compaction | 5d | 2026-07-15 | 2026-07-20 | 2.2-RHCUEE09-1080 | 269d |  | LABOUR | C03c | EIT02.2 |
|  | 2 | **C03-ETD-366/256/257/260/259/321/210** |  | 2026-07-15 | 2026-08-24 |  |  |  |  |  |  |
| 2.2-RHCUEE09-1100 |  | Cable trench Excavation | 30d | 2026-07-15 | 2026-08-18 | 2.2-RHCUEE09-1080 | 239d | 0d | LABOUR | C03c | EIT02.2 |
| 2.2-RHCUEE09-1110 |  | Sand Filling Compaction | 5d | 2026-08-19 | 2026-08-24 | 2.2-RHCUEE09-1100 | 239d |  | LABOUR | C03c | EIT02.2 |
|  | 8 | **Cable Laying Direct buried** |  | 2026-06-10 | 2026-09-08 |  |  |  |  |  |  |
|  | 8 | **C03-ETD-642/385/810/638/283/376/316/302/702/337/336/639/353/350/354/318** |  | 2026-06-10 | 2026-09-08 |  |  |  |  |  |  |
| 2.2-RHCUEE01-1805 |  | Sand Filling First layer | 4d | 2026-06-10 | 2026-06-13 | 2.2-RHCUEE09-1060 | 186.9d | 0d | LABOUR [100 h] |  |  |
| 2.2-RHCUEE01-1810 |  | Cable Laying | 30d | 2026-06-15 | 2026-07-18 | 2.2-RHCUEE01-1805 | 186.9d | 0d | LABOUR [800 h] | C03c | EIT02.2 |
| 2.2-RHCUEE01-1820 |  | Megger & Continuity test | 5d | 2026-07-20 | 2026-07-24 | 2.2-RHCUEE01-1810 | 226d | 0d | LABOUR [50 h] | C03c | EIT02.2 |
| 2.2-RHCUEE01-1830 |  | punch Clear | 5d | 2026-07-25 | 2026-07-30 | 2.2-RHCUEE01-1820 | 226d | 0d | LABOUR [50 h] | C03c | EIT02.2 |
| 2.2-RHCUEE01-1840 |  | Sand Filling Compaction | 4d | 2026-07-31 | 2026-08-04 | 2.2-RHCUEE01-1830 | 226d | 0d | LABOUR [50 h] |  |  |
| 2.2-RHCUEE01-1850 |  | Complete QA/QC document | 10d | 2026-08-05 | 2026-08-15 | 2.2-RHCUEE01-1840 | 226d | 0d | LABOUR [100 h] | C03c | EIT02.2 |
| 2.2-RHCUEE01-3420 |  | Back Filling | 20d | 2026-08-17 | 2026-09-08 | 2.2-RHCUEE01-1850 | 226d |  | LABOUR [555.9 h] | C03c | EIT02.2 |
|  | 1 | **C03-ETD-293/270/333/296/276//275/277/266/269/279/369/264/280/368/319/320** |  | 2026-06-15 | 2026-09-08 |  |  |  |  |  |  |
| 2.2-RHCUEE01-1990 |  | Cable Laying | 30d | 2026-06-15 | 2026-07-18 | 2.2-RHCUEE01-1810 SS | 186.9d | 0d | LABOUR [800 h] | C03c | EIT02.2 |
| 2.2-RHCUEE01-1885 |  | Sand Filling First layer | 4d | 2026-07-15 | 2026-07-18 | 2.2-RHCUEE09-1080 | 270d |  | LABOUR [100 h] |  |  |
| 2.2-RHCUEE01-2000 |  | Megger & Continuity test | 5d | 2026-07-20 | 2026-07-24 | 2.2-RHCUEE01-1990 | 226d | 0d | LABOUR [50 h] | C03c | EIT02.2 |
| 2.2-RHCUEE01-2010 |  | punch Clear | 5d | 2026-07-25 | 2026-07-30 | 2.2-RHCUEE01-2000 | 226d | 0d | LABOUR [50 h] | C03c | EIT02.2 |
| 2.2-RHCUEE01-2020 |  | Sand Filling Compaction | 4d | 2026-07-31 | 2026-08-04 | 2.2-RHCUEE01-2010 | 226d | 0d | LABOUR [50 h] |  |  |
| 2.2-RHCUEE01-2030 |  | Complete QA/QC document | 10d | 2026-08-05 | 2026-08-15 | 2.2-RHCUEE01-2020 | 226d | 0d | LABOUR [100 h] | C03c | EIT02.2 |
| 2.2-RHCUEE01-2040 |  | Back Filling | 20d | 2026-08-17 | 2026-09-08 | 2.2-RHCUEE01-2030 | 226d |  | LABOUR [555.9 h] | C03c | EIT02.2 |

| ID | WBS | Activity | Duration | Start | Finish | Predecessors | Total float | Free float | Resources | EIT WBS | EIT PKG |
| --- | --- | --- | --- | --- | --- | --- | --- | --- | --- | --- | --- |
|  | 2 | **C03-ETD-366/256/257/260/259/321/210** |  | 2026-06-15 | 2026-09-08 |  |  |  |  |  |  |
| 2.2-RHCUEE01-2050 |  | Cable Laying | 30d | 2026-06-15 | 2026-07-18 | 2.2-RHCUEE01-1990 SS | 186.9d | 0d | LABOUR [800 h] | C03c | EIT02.2 |
| 2.2-RHCUEE01-2060 |  | Megger & Continuity test | 5d | 2026-07-20 | 2026-07-24 | 2.2-RHCUEE01-2050 | 226d | 0d | LABOUR [50 h] | C03c | EIT02.2 |
| 2.2-RHCUEE01-2070 |  | punch Clear | 5d | 2026-07-25 | 2026-07-30 | 2.2-RHCUEE01-2060 | 226d | 0d | LABOUR [50 h] | C03c | EIT02.2 |
| 2.2-RHCUEE01-2080 |  | Sand Filling Compaction | 4d | 2026-07-31 | 2026-08-04 | 2.2-RHCUEE01-2070 | 226d | 0d | LABOUR [50 h] |  |  |
| 2.2-RHCUEE01-2090 |  | Complete QA/QC document | 10d | 2026-08-05 | 2026-08-15 | 2.2-RHCUEE01-2080 | 226d | 0d | LABOUR [100 h] | C03c | EIT02.2 |
| 2.2-RHCUEE01-2100 |  | Back Filling | 20d | 2026-08-17 | 2026-09-08 | 2.2-RHCUEE01-2090 | 226d |  | LABOUR [555.9 h] | C03c | EIT02.2 |
| 2.2-RHCUEE01-2045 |  | Sand Filling First layer | 4d | 2026-08-19 | 2026-08-22 | 2.2-RHCUEE09-1100 | 240d |  | LABOUR [100 h] |  |  |
|  | 13 | **Cable Laying Concrete Trench** |  | 2026-05-06 | 2026-09-25 |  |  |  |  |  |  |
|  | 1 | **C03-ETC-268/204/539/440/212/578/540/207/415/441/442/443/501/444/583/445/581** |  | 2026-05-06 | 2026-07-13 |  |  |  |  |  |  |
| 2.2-RHCUEE01-1870 |  | Cable Laying | 20d | 2026-05-06 | 2026-05-28 | 2.2-RHCUEE09-1060 SS | 275d | 0d | LABOUR [1000 h] | C03c | EIT02.2 |
| 2.2-RHCUEE01-1880 |  | Megger & Continuity test | 5d | 2026-05-29 | 2026-06-03 | 2.2-RHCUEE01-1870 | 275d | 0d | LABOUR [50 h] | C03c | EIT02.2 |
| 2.2-RHCUEE01-1890 |  | punch Clear | 5d | 2026-06-04 | 2026-06-09 | 2.2-RHCUEE01-1880 | 275d | 0d | LABOUR [50 h] | C03c | EIT02.2 |
| 2.2-RHCUEE01-1900 |  | Sand Filling Compaction | 4d | 2026-06-10 | 2026-06-13 | 2.2-RHCUEE01-1890 | 275d | 0d | LABOUR [50 h] |  |  |
| 2.2-RHCUEE01-1910 |  | Complete QA/QC document | 5d | 2026-06-15 | 2026-06-19 | 2.2-RHCUEE01-1900 | 275d | 0d | LABOUR [100 h] | C03c | EIT02.2 |
| 2.2-RHCUEE01-1920 |  | Back Filling | 20d | 2026-06-20 | 2026-07-13 | 2.2-RHCUEE01-1910 | 275d |  | LABOUR [455.91 h] | C03c | EIT02.2 |
|  | 2 | **C03-ETC-291/292/227/229/485/584/282/615/283/605/221/220/298/386/270/228/459** |  | 2026-05-06 | 2026-07-13 |  |  |  |  |  |  |
| 2.2-RHCUEE01-1930 |  | Cable Laying | 20d | 2026-05-06 | 2026-05-28 | 2.2-RHCUEE01-1870 SS | 275d | 0d | LABOUR [1000 h] | C03c | EIT02.2 |
| 2.2-RHCUEE01-1940 |  | Megger & Continuity test | 5d | 2026-05-29 | 2026-06-03 | 2.2-RHCUEE01-1930 | 275d | 0d | LABOUR [50 h] | C03c | EIT02.2 |
| 2.2-RHCUEE01-1950 |  | punch Clear | 5d | 2026-06-04 | 2026-06-09 | 2.2-RHCUEE01-1940 | 275d | 0d | LABOUR [50 h] | C03c | EIT02.2 |
| 2.2-RHCUEE01-1960 |  | Sand Filling Compaction | 4d | 2026-06-10 | 2026-06-13 | 2.2-RHCUEE01-1950 | 275d | 0d | LABOUR [50 h] |  |  |
| 2.2-RHCUEE01-1970 |  | Complete QA/QC document | 5d | 2026-06-15 | 2026-06-19 | 2.2-RHCUEE01-1960 | 275d | 0d | LABOUR [100 h] | C03c | EIT02.2 |
| 2.2-RHCUEE01-1980 |  | Back Filling | 20d | 2026-06-20 | 2026-07-13 | 2.2-RHCUEE01-1970 | 275d |  | LABOUR [455.91 h] | C03c | EIT02.2 |
|  | 3 | **C03-ETC-208/206/391/395/389/393/392/394/396/397/456/611/457/462/463/466/464** |  | 2026-07-20 | 2026-09-25 |  |  |  |  |  |  |
| 2.2-RHCUEE01-2110 |  | Cable Laying | 20d | 2026-07-20 | 2026-08-11 | 2.2-RHCUEE01-2050 | 211d | 0d | LABOUR [1000 h] | C03c | EIT02.2 |
| 2.2-RHCUEE01-2120 |  | Megger & Continuity test | 5d | 2026-08-12 | 2026-08-17 | 2.2-RHCUEE01-2110 | 211d | 0d | LABOUR [50 h] | C03c | EIT02.2 |
| 2.2-RHCUEE01-2130 |  | punch Clear | 5d | 2026-08-18 | 2026-08-22 | 2.2-RHCUEE01-2120 | 211d | 0d | LABOUR [50 h] | C03c | EIT02.2 |
| 2.2-RHCUEE01-2140 |  | Sand Filling Compaction | 4d | 2026-08-24 | 2026-08-27 | 2.2-RHCUEE01-2130 | 211d | 0d | LABOUR [50 h] |  |  |
| 2.2-RHCUEE01-2150 |  | Complete QA/QC document | 5d | 2026-08-28 | 2026-09-02 | 2.2-RHCUEE01-2140 | 211d | 0d | LABOUR [100 h] | C03c | EIT02.2 |
| 2.2-RHCUEE01-2160 |  | Back Filling | 20d | 2026-09-03 | 2026-09-25 | 2.2-RHCUEE01-2150 | 211d |  | LABOUR [455.91 h] | C03c | EIT02.2 |

| ID | WBS | Activity | Duration | Start | Finish | Predecessors | Total float | Free float | Resources | EIT WBS | EIT PKG | Disciplines | Main Activity | WBS | Types |
| --- | --- | --- | --- | --- | --- | --- | --- | --- | --- | --- | --- | --- | --- | --- | --- |
|  | 4 | **C03-ETC-468/564/467/465/460/461/458/453/455/454/264/210/207/234/260/268/400** |  | 2026-07-20 | 2026-09-25 |  |  |  |  |  |  |  |  |  |  |
| 2.2-RHCUEE01-2170 |  | Cable Laying | 20d | 2026-07-20 | 2026-08-11 | 2.2-RHCUEE01-2110 SS | 211d | 0d | LABOUR [1000 h] | C03c | EIT02.2 |  |  |  |  |
| 2.2-RHCUEE01-2180 |  | Megger & Continuity test | 5d | 2026-08-12 | 2026-08-17 | 2.2-RHCUEE01-2170 | 211d | 0d | LABOUR [50 h] | C03c | EIT02.2 |  |  |  |  |
| 2.2-RHCUEE01-2190 |  | punch Clear | 5d | 2026-08-18 | 2026-08-22 | 2.2-RHCUEE01-2180 | 211d | 0d | LABOUR [50 h] | C03c | EIT02.2 |  |  |  |  |
| 2.2-RHCUEE01-2200 |  | Sand Filling Compaction | 4d | 2026-08-24 | 2026-08-27 | 2.2-RHCUEE01-2190 | 211d | 0d | LABOUR [50 h] |  |  |  |  |  |  |
| 2.2-RHCUEE01-2210 |  | Complete QA/QC document | 5d | 2026-08-28 | 2026-09-02 | 2.2-RHCUEE01-2200 | 211d | 0d | LABOUR [100 h] | C03c | EIT02.2 |  |  |  |  |
| 2.2-RHCUEE01-2220 |  | Back Filling | 20d | 2026-09-03 | 2026-09-25 | 2.2-RHCUEE01-2210 | 211d |  | LABOUR [455.91 h] | C03c | EIT02.2 |  |  |  |  |
|  | 5 | **C03-ETC-399/451/452/398/459/206/208** |  | 2026-06-15 | 2026-08-21 |  |  |  |  |  |  |  |  |  |  |
| 2.2-RHCUEE01-2230 |  | Cable Laying | 20d | 2026-06-15 | 2026-07-07 | 2.2-RHCUEE01-2050 SS | 186.9d | 0d | LABOUR [200 h] | C03c | EIT02.2 |  |  |  |  |
| 2.2-RHCUEE01-2240 |  | Megger & Continuity test | 5d | 2026-07-08 | 2026-07-13 | 2.2-RHCUEE01-2230 | 241d | 0d | LABOUR [50 h] | C03c | EIT02.2 |  |  |  |  |
| 2.2-RHCUEE01-2250 |  | punch Clear | 5d | 2026-07-14 | 2026-07-18 | 2.2-RHCUEE01-2240 | 241d | 0d | LABOUR [50 h] | C03c | EIT02.2 |  |  |  |  |
| 2.2-RHCUEE01-2260 |  | Sand Filling Compaction | 4d | 2026-07-20 | 2026-07-23 | 2.2-RHCUEE01-2250 | 241d | 0d | LABOUR [50 h] |  |  |  |  |  |  |
| 2.2-RHCUEE01-2270 |  | Complete QA/QC document | 5d | 2026-07-24 | 2026-07-29 | 2.2-RHCUEE01-2260 | 241d | 0d | LABOUR [100 h] | C03c | EIT02.2 |  |  |  |  |
| 2.2-RHCUEE01-2280 |  | Back Filling | 20d | 2026-07-30 | 2026-08-21 | 2.2-RHCUEE01-2270 | 241d |  | LABOUR [455.91 h] | C03c | EIT02.2 |  |  |  |  |
|  | 1 | **Electrical Cable Tray/Ladder Installation** |  | 2026-05-06 | 2026-08-12 |  |  |  |  |  |  |  |  |  |  |
| 2.2-RHCUEE03-1100 |  | Install support / bracket | 60d | 2026-05-06 | 2026-07-14 | 2.2-RHCUEE09-1060 SS | 109d | 0d | LABOUR [1000 h] | C03a | EIT02.2 | EE | 1 | C03a | TY1 |
| 2.2-RHCUEE03-1110 |  | Install Ladder / Tray | 60d | 2026-05-06 | 2026-07-14 | 2.2-RHCUEE03-1100 SS | 119d | 0d | LABOUR [5000 h] | C03a | EIT02.2 | EE | 1 | C03a | TY1 |
| 2.2-RHCUEE03-1120 |  | Install Conduits | 60d | 2026-05-06 | 2026-07-14 | 2.2-RHCUEE03-1110 SS | 249d | 0d | LABOUR [1000 h] | C03a | EIT02.2 | EE | 1 | C03a | TY1 |
| 2.2-RHCUEE03-1130 |  | Clear punch | 10d | 2026-07-15 | 2026-07-25 | 2.2-RHCUEE03-1120, 2.2-RHCUEE03-1110 | 249d | 0d | LABOUR [500 h] | C03a | EIT02.2 | EE | 1 | C03a | TY1 |
| 2.2-RHCUEE03-1140 |  | Complete QA/QC document | 15d | 2026-07-27 | 2026-08-12 | 2.2-RHCUEE03-1130 | 249d |  | LABOUR [1229.78 h] | C03a | EIT02.2 | EE | 1 | C03a | TY1 |
|  | 9 | **AG Cable Pull LV Cable** |  | 2026-07-15 | 2026-10-21 |  |  |  |  |  |  |  |  |  |  |
| 2.2-RHCUEE01-1720 |  | Pull Cable | 60d | 2026-07-15 | 2026-09-22 | 2.2-RHCUEE03-1110 | 119d | 0d | LABOUR [1400 h] | C03a | EIT02.2 | EE | 1 | C03a | TY1 |
| 2.2-RHCUEE01-1730 |  | Megger & Continuity test | 10d | 2026-09-23 | 2026-10-03 | 2.2-RHCUEE01-1720 | 134d | 0d | LABOUR [100 h] | C03a | EIT02.2 | EE | 1 | C03a | TY1 |
| 2.2-RHCUEE01-1740 |  | Complete QA/QC document | 15d | 2026-10-05 | 2026-10-21 | 2.2-RHCUEE01-1730 | 134d | 0d | LABOUR [205.91 h] | C03a | EIT02.2 | EE | 1 | C03a | TY1 |

| ID | WBS | Activity | Duration | Start | Finish | Predecessors | Total float | Free float | Resources | Disciplines | Main Activity | WBS | Types | EIT WBS | EIT PKG |
| --- | --- | --- | --- | --- | --- | --- | --- | --- | --- | --- | --- | --- | --- | --- | --- |
|  | 10 | **AG Cable Pull Control Cable** |  | 2026-07-15 | 2026-10-21 |  |  |  |  |  |  |  |  |  |  |
| 2.2-RHCUEE01-1750 |  | Pull Cable | 60d | 2026-07-15 | 2026-09-22 | 2.2-RHCUEE01-1720 SS | 119d | 0d | LABOUR [1400 h] | EE | 1 | C03a | TY1 | C03a | EIT02.2 |
| 2.2-RHCUEE01-1760 |  | Megger & Continuity test | 10d | 2026-09-23 | 2026-10-03 | 2.2-RHCUEE01-1750 | 189d | 0d | LABOUR [100 h] | EE | 1 | C03a | TY1 | C03a | EIT02.2 |
| 2.2-RHCUEE01-1770 |  | Complete QA/QC document | 15d | 2026-10-05 | 2026-10-21 | 2.2-RHCUEE01-1760 | 189d |  | LABOUR [205.91 h] | EE | 1 | C03a | TY1 | C03a | EIT02.2 |
|  | 11 | **AG Lighting Cable** |  | 2026-07-15 | 2026-11-19 |  |  |  |  |  |  |  |  |  |  |
| 2.2-RHCUEE01-1780 |  | Pull Cable | 60d | 2026-07-15 | 2026-09-22 | 2.2-RHCUEE01-1750 SS | 119d | 0d | LABOUR [1400 h] | EE | 1 | C03a | TY1 | C03a | EIT02.2 |
| 2.2-RHCUEE01-1790 |  | Megger & Continuity test | 30d | 2026-09-23 | 2026-10-27 | 2.2-RHCUEE01-1780 | 119d | 0d | LABOUR [100 h] | EE | 1 | C03a | TY1 | C03a | EIT02.2 |
| 2.2-RHCUEE01-1800 |  | Complete QA/QC document | 20d | 2026-10-28 | 2026-11-19 | 2.2-RHCUEE01-1790 | 119d | 0d | LABOUR [205.91 h] | EE | 1 | C03a | TY1 | C03a | EIT02.2 |
|  | 4 | **Electrical Cable Termination / Glanding** |  | 2026-07-08 | 2027-01-11 |  |  |  |  |  |  |  |  |  |  |
|  | 1 | **Termination MV Cable** |  | 2026-07-08 | 2026-08-28 |  |  |  |  |  |  |  |  |  |  |
| 2.2-RHCUEE02-1240 |  | Cable Termination/Glanding | 30d | 2026-07-08 | 2026-08-11 | 2.2-RHCUEE01-2230 | 186.9d | 0d | LABOUR [1800 h] | EE | 1 | C03a | TY1 | C03a | EIT02.2 |
| 2.2-RHCUEE02-1250 |  | Clear punch | 5d | 2026-08-12 | 2026-08-17 | 2.2-RHCUEE02-1240 | 186.9d | 0d | LABOUR [200 h] | EE | 1 | C03a | TY1 | C03a | EIT02.2 |
| 2.2-RHCUEE02-1260 |  | Complete QA/QC document | 10d | 2026-08-18 | 2026-08-28 | 2.2-RHCUEE02-1250 | 186.9d | 0d | LABOUR [639.63 h] | EE | 1 | C03a | TY1 | C03a | EIT02.2 |
|  | 2 | **Termination LV Cable** |  | 2026-10-22 | 2026-12-24 |  |  |  |  |  |  |  |  |  |  |
| 2.2-RHCUEE02-1270 |  | Cable Termination/Glanding | 30d | 2026-10-22 | 2026-11-25 | 2.2-RHCUEE01-1740 | 134d | 0d | LABOUR [1800 h] | EE | 1 | C03a | TY1 | C03a | EIT02.2 |
| 2.2-RHCUEE02-1280 |  | Clear punch | 10d | 2026-11-26 | 2026-12-07 | 2.2-RHCUEE02-1270 | 134d | 0d | LABOUR [200 h] | EE | 1 | C03a | TY1 | C03a | EIT02.2 |
| 2.2-RHCUEE02-1290 |  | Complete QA/QC document | 15d | 2026-12-08 | 2026-12-24 | 2.2-RHCUEE02-1280 | 134d |  | LABOUR [639.63 h] | EE | 1 | C03a | TY1 | C03a | EIT02.2 |
|  | 3 | **Termination Control Cable** |  | 2026-10-22 | 2026-12-24 |  |  |  |  |  |  |  |  |  |  |
| 2.2-RHCUEE02-1300 |  | Cable Termination/Glanding | 30d | 2026-10-22 | 2026-11-25 | 2.2-RHCUEE02-1270 SS | 134d | 0d | LABOUR [1800 h] | EE | 1 | C03a | TY1 | C03a | EIT02.2 |
| 2.2-RHCUEE02-1310 |  | Clear punch | 10d | 2026-11-26 | 2026-12-07 | 2.2-RHCUEE02-1300 | 134d | 0d | LABOUR [200 h] | EE | 1 | C03a | TY1 | C03a | EIT02.2 |
| 2.2-RHCUEE02-1320 |  | Complete QA/QC document | 15d | 2026-12-08 | 2026-12-24 | 2.2-RHCUEE02-1310 | 134d |  | LABOUR [639.63 h] | EE | 1 | C03a | TY1 | C03a | EIT02.2 |
|  | 4 | **Termination Lighting Cable** |  | 2026-11-20 | 2027-01-11 |  |  |  |  |  |  |  |  |  |  |
| 2.2-RHCUEE02-1330 |  | Cable Termination/Glanding | 30d | 2026-11-20 | 2026-12-24 | 2.2-RHCUEE01-1800 | 119d | 0d | LABOUR [1800 h] | EE | 1 | C03a | TY1 | C03a | EIT02.2 |
| 2.2-RHCUEE02-1340 |  | Clear punch | 5d | 2026-12-25 | 2026-12-30 | 2.2-RHCUEE02-1330 | 119d | 0d | LABOUR [200 h] | EE | 1 | C03a | TY1 | C03a | EIT02.2 |
| 2.2-RHCUEE02-1350 |  | Complete QA/QC document | 10d | 2026-12-31 | 2027-01-11 | 2.2-RHCUEE02-1340 | 119d |  | LABOUR [639.63 h] | EE | 1 | C03a | TY1 | C03a | EIT02.2 |

| ID | WBS | Activity | Duration | Start | Finish | Predecessors | Total float | Free float | Calendar | Resources | Disciplines | Main Activity | WBS | Types | EIT WBS | EIT PKG |
| --- | --- | --- | --- | --- | --- | --- | --- | --- | --- | --- | --- | --- | --- | --- | --- | --- |
|  | 7 | **Electrical Earthing / Lightning Installation** |  | 2026-05-06 | 2026-08-12 |  |  |  |  |  |  |  |  |  |  |  |
| 2.2-RHCUEE06-1060 |  | Install Equipment Earthing / Inspection PIT / Install earthing pull and Connecttion | 60d | 2026-05-06 | 2026-07-14 | 2.2-RHCUEE03-1100 SS | 249d | 0d |  | LABOUR [3000 h] | EE | 1 | C03a | TY1 | C03a | EIT02.2 |
| 2.2-RHCUEE06-1070 |  | Punch Clear | 10d | 2026-07-15 | 2026-07-25 | 2.2-RHCUEE06-1060 | 249d | 0d |  | LABOUR [500 h] | EE | 1 | C03a | TY1 | C03a | EIT02.2 |
| 2.2-RHCUEE06-1080 |  | Complete QA/QC document | 15d | 2026-07-27 | 2026-08-12 | 2.2-RHCUEE06-1070 | 249d |  |  | LABOUR [763.82 h] | EE | 1 | C03a | TY1 | C03a | EIT02.2 |
|  | 5 | **Lighting Fixture Installation** |  | 2026-07-15 | 2026-09-28 |  |  |  |  |  |  |  |  |  |  |  |
| 2.2-RHCUEE05-1160 |  | Install support / bracket / Pole | 40d | 2026-07-15 | 2026-08-29 | 2.2-RHCUEE03-1100 | 109d | 0d |  | LABOUR [500 h] | EE | 1 | C03a | TY1 | C03a | EIT02.2 |
| 2.2-RHCUEE05-1170 |  | lighting fixture | 40d | 2026-07-15 | 2026-08-29 | 2.2-RHCUEE05-1160 SS | 209d | 0d |  | LABOUR [1500 h] | EE | 1 | C03a | TY1 | C03a | EIT02.2 |
| 2.2-RHCUEE05-1180 |  | Clear punch | 10d | 2026-08-31 | 2026-09-10 | 2.2-RHCUEE05-1170 | 209d | 0d |  | LABOUR [50 h] | EE | 1 | C03a | TY1 | C03a | EIT02.2 |
| 2.2-RHCUEE05-1190 |  | Complete QA/QC document | 15d | 2026-09-11 | 2026-09-28 | 2.2-RHCUEE05-1180 | 209d |  |  | LABOUR [116.75 h] | EE | 1 | C03a | TY1 | C03a | EIT02.2 |
|  | 12 | **Small Power Equipment Installation** |  | 2026-07-15 | 2026-09-28 |  |  |  |  |  |  |  |  |  |  |  |
| 2.2-RHCUEE05-1200 |  | Install support / bracket | 40d | 2026-07-15 | 2026-08-29 | 2.2-RHCUEE05-1160 SS | 109d | 0d |  | LABOUR [500 h] | EE | 1 | C03a | TY1 | C03a | EIT02.2 |
| 2.2-RHCUEE05-1210 |  | Install Distribution panel, convenience outlet | 40d | 2026-07-15 | 2026-08-29 | 2.2-RHCUEE05-1200 SS | 209d | 0d |  | LABOUR [1500 h] | EE | 1 | C03a | TY1 | C03a | EIT02.2 |
| 2.2-RHCUEE05-1220 |  | Clear punch | 10d | 2026-08-31 | 2026-09-10 | 2.2-RHCUEE05-1210 | 209d | 0d |  | LABOUR [50 h] | EE | 1 | C03a | TY1 | C03a | EIT02.2 |
| 2.2-RHCUEE05-1230 |  | Complete QA/QC document | 15d | 2026-09-11 | 2026-09-28 | 2.2-RHCUEE05-1220 | 209d |  |  | LABOUR [116.75 h] | EE | 1 | C03a | TY1 | C03a | EIT02.2 |
|  | 2 | **Motor Solo Run** |  | 2026-08-29 | 2026-10-23 |  |  |  |  |  |  |  |  |  |  |  |
| 2.2-RHCUEE00-1070 |  | Motor solo run | 25d | 2026-08-29 | 2026-09-26 | 2.2-RHCUEE02-1260 | 186.9d | 0d |  | LABOUR |  |  |  |  | C03a | EIT02.2 |
| 2.2-RHCUEE00-1080 |  | Punch Clear | 10d | 2026-09-27 | 2026-10-06 | 2.2-RHCUEE00-1070 | 238.38d | 0d | 7 - Day Workweek (No Holidays) | LABOUR |  |  |  |  | C03a | EIT02.2 |
| 2.2-RHCUEE00-1090 |  | Complete QA/QC document | 15d | 2026-10-06 | 2026-10-23 | 2.2-RHCUEE00-1080 | 187.7d |  |  | LABOUR |  |  |  |  | C03a | EIT02.2 |
|  | 3 | **Instrument Works** |  | 2026-08-07 | 2027-05-29 |  |  |  |  |  |  |  |  |  |  |  |
|  | 10 | **Cable Laying concrete Trench** |  | 2026-08-07 | 2026-11-30 |  |  |  |  |  |  |  |  |  |  |  |
|  | 3 | **C03-JTR-327/328/329/330/311/312/314/313/315/316/317/318** |  | 2026-08-07 | 2026-11-30 |  |  |  |  |  |  |  |  |  |  |  |
| 2.2-RHCUIN01-1300 |  | Cable Laying | 49d | 2026-08-07 | 2026-10-02 | 2.2-RHCUIN01-1180 | 0d |  |  | LABOUR [9000 h] |  |  |  |  | C03a | EIT02.2 |
| 2.2-RHCUIN01-1310 |  | Megger & Continuity test | 5d | 2026-10-03 | 2026-10-08 | 2.2-RHCUIN01-1300 | 155d | 0d |  | LABOUR [500 h] |  |  |  |  | C03a | EIT02.2 |
| 2.2-RHCUIN01-1320 |  | Clear punch | 5d | 2026-10-09 | 2026-10-14 | 2.2-RHCUIN01-1310 | 155d | 0d |  | LABOUR [200 h] |  |  |  |  | C03a | EIT02.2 |
| 2.2-RHCUIN01-1330 |  | Sand Filling compaction | 10d | 2026-10-15 | 2026-10-26 | 2.2-RHCUIN01-1320 | 185d |  |  | LABOUR [300 h] |  |  |  |  |  |  |
| 2.2-RHCUIN01-1340 |  | Complete QA/QC document | 10d | 2026-10-15 | 2026-10-26 | 2.2-RHCUIN01-1320 | 155d | 0d |  | LABOUR [500 h] |  |  |  |  | C03a | EIT02.2 |
| 2.2-RHCUIN01-1350 |  | Back Filling | 30d | 2026-10-27 | 2026-11-30 | 2.2-RHCUIN01-1340 | 155d |  |  | LABOUR [4970.5 h] |  |  |  |  | C03a | EIT02.2 |

| ID | WBS | Activity | Duration | Start | Finish | Predecessors | Total float | Free float | Resources | Disciplines | Main Activity | WBS | Types | EIT WBS | EIT PKG |
| --- | --- | --- | --- | --- | --- | --- | --- | --- | --- | --- | --- | --- | --- | --- | --- |
|  | 3 | **Instrument Cable Tray/Ladder Installation** |  | 2026-08-07 | 2026-11-13 |  |  |  |  |  |  |  |  |  |  |
| 2.2-RHCUIN03-1100 |  | Install support / bracket | 60d | 2026-08-07 | 2026-10-15 | 2.2-RHCUIN01-1300 SS | 0d |  | LABOUR [1000 h] | EE | 1 | C03a | TY1 | C03a | EIT02.2 |
| 2.2-RHCUIN03-1110 |  | Install Ladder / Tray | 60d | 2026-08-07 | 2026-10-15 | 2.2-RHCUIN03-1120 SS | 0d |  | LABOUR [3000 h] | EE | 1 | C03a | TY1 | C03a | EIT02.2 |
| 2.2-RHCUIN03-1120 |  | Steel Conduits for Cable tray | 60d | 2026-08-07 | 2026-10-15 | 2.2-RHCUIN03-1100 SS | 0d |  | LABOUR [1000 h] | EE | 1 | C03a | TY1 | C03a | EIT02.2 |
| 2.2-RHCUIN03-1130 |  | punch clear | 10d | 2026-10-16 | 2026-10-27 | 2.2-RHCUIN03-1110, 2.2-RHCUIN03-1120 | 0d |  | LABOUR [200 h] | EE | 1 | C03a | TY1 | C03a | EIT02.2 |
| 2.2-RHCUIN03-1140 |  | Complete QA/QC document | 15d | 2026-10-28 | 2026-11-13 | 2.2-RHCUIN03-1130 | 0d |  | LABOUR [392.97 h] |  |  |  |  |  |  |
|  | 8 | **AG Cable Pull Primary Cable** |  | 2026-11-14 | 2027-02-09 |  |  |  |  |  |  |  |  |  |  |
| 2.2-RHCUIN01-1240 |  | Pull Cable | 50d | 2026-11-14 | 2027-01-11 | 2.2-RHCUIN03-1140 | 0d |  | LABOUR [14000 h] | EE | 1 | C03a | TY1 | C03a | EIT02.2 |
| 2.2-RHCUIN01-1250 |  | Megger & Continuity test | 10d | 2027-01-12 | 2027-01-22 | 2.2-RHCUIN01-1240 | 44d | 0d | LABOUR [500 h] | EE | 1 | C03a | TY1 | C03a | EIT02.2 |
| 2.2-RHCUIN01-1260 |  | Complete QA/QC document | 15d | 2027-01-23 | 2027-02-09 | 2.2-RHCUIN01-1250 | 44d | 0d | LABOUR [970.5 h] | EE | 1 | C03a | TY1 | C03a | EIT02.2 |
|  | 9 | **AG Cable Pull Secondary Cable** |  | 2026-11-14 | 2027-02-09 |  |  |  |  |  |  |  |  |  |  |
| 2.2-RHCUIN01-1270 |  | Pull Cable | 50d | 2026-11-14 | 2027-01-11 | 2.2-RHCUIN01-1240 SS | 0d |  | LABOUR [14000 h] | EE | 1 | C03a | TY1 | C03a | EIT02.2 |
| 2.2-RHCUIN01-1280 |  | Megger & Continuity test | 10d | 2027-01-12 | 2027-01-22 | 2.2-RHCUIN01-1270 | 0d |  | LABOUR [400 h] | EE | 1 | C03a | TY1 | C03a | EIT02.2 |
| 2.2-RHCUIN01-1290 |  | Complete QA/QC document | 15d | 2027-01-23 | 2027-02-09 | 2.2-RHCUIN01-1280 | 0d |  | LABOUR [970.5 h] | EE | 1 | C03a | TY1 | C03a | EIT02.2 |
|  | 2 | **Instrument Cable Termination / Glanding** |  | 2026-10-03 | 2027-04-08 |  |  |  |  |  |  |  |  |  |  |
|  | 1 | **UG Cable Termination Cable** |  | 2026-10-03 | 2026-11-30 |  |  |  |  |  |  |  |  |  |  |
| 2.2-RHCUIN02-1360 |  | Cable Termination/Glanding | 25d | 2026-10-03 | 2026-10-31 | 2.2-RHCUIN01-1300 | 155d | 0d | LABOUR [3000 h] | EE | 1 | C03a | TY1 | C03a | EIT02.2 |
| 2.2-RHCUIN02-1370 |  | punch clear | 10d | 2026-11-02 | 2026-11-12 | 2.2-RHCUIN02-1360 | 155d | 0d | LABOUR [500 h] | EE | 1 | C03a | TY1 | C03a | EIT02.2 |
| 2.2-RHCUIN02-1380 |  | Complete QA/QC document | 15d | 2026-11-13 | 2026-11-30 | 2.2-RHCUIN02-1370 | 155d |  | LABOUR [907.72 h] | EE | 1 | C03a | TY1 | C03a | EIT02.2 |
|  | 8 | **Cable Termination Primary Cable** |  | 2027-02-10 | 2027-04-08 |  |  |  |  |  |  |  |  |  |  |
| 2.2-RHCUIN02-1120 |  | Cable Termination/Glanding | 25d | 2027-02-10 | 2027-03-10 | 2.2-RHCUIN01-1260 | 44d | 0d | LABOUR [3000 h] | EE | 1 | C03a | TY1 | C03a | EIT02.2 |
| 2.2-RHCUIN02-1130 |  | punch clear | 10d | 2027-03-11 | 2027-03-22 | 2.2-RHCUIN02-1120 | 44d | 0d | LABOUR [500 h] | EE | 1 | C03a | TY1 | C03a | EIT02.2 |
| 2.2-RHCUIN02-1140 |  | Complete QA/QC document | 15d | 2027-03-23 | 2027-04-08 | 2.2-RHCUIN02-1130 | 44d |  | LABOUR [907.72 h] | EE | 1 | C03a | TY1 | C03a | EIT02.2 |
|  | 9 | **Cable Termination Secondary Cable** |  | 2027-02-10 | 2027-04-08 |  |  |  |  |  |  |  |  |  |  |
| 2.2-RHCUIN02-1150 |  | Cable Termination/Glanding | 25d | 2027-02-10 | 2027-03-10 | 2.2-RHCUIN01-1290 | 0d |  | LABOUR [3000 h] | EE | 1 | C03a | TY1 | C03a | EIT02.2 |
| 2.2-RHCUIN02-1160 |  | punch clear | 10d | 2027-03-11 | 2027-03-22 | 2.2-RHCUIN02-1150 | 0d |  | LABOUR [500 h] | EE | 1 | C03a | TY1 | C03a | EIT02.2 |
| 2.2-RHCUIN02-1170 |  | Complete QA/QC document | 15d | 2027-03-23 | 2027-04-08 | 2.2-RHCUIN02-1160 | 0d |  | LABOUR [907.72 h] | EE | 1 | C03a | TY1 | C03a | EIT02.2 |

| ID | WBS | Activity | Duration | Start | Finish | Predecessors | Total float | Free float | Calendar | Resources | Disciplines | Main Activity | WBS | Types | EIT WBS | EIT PKG |
| --- | --- | --- | --- | --- | --- | --- | --- | --- | --- | --- | --- | --- | --- | --- | --- | --- |
|  | 4 | **Instrument Calibration** |  | 2026-10-03 | 2026-11-06 |  |  |  |  |  |  |  |  |  |  |  |
| 2.2-RHCUIN05-1020 |  | Calibration of Gauges | 30d | 2026-10-03 | 2026-11-06 | 2.2-RHCUIN01-1300 | 113d | 0d |  | LABOUR [3000 h] | EE | 1 | C03a | TY1 | C03c | EIT02.2 |
| 2.2-RHCUIN05-1070 |  | Calibration of Transmitters/Switches | 30d | 2026-10-03 | 2026-11-06 | 2.2-RHCUIN05-1020 SS | 175d |  |  | LABOUR [4396.55 h] |  |  |  |  |  |  |
|  | 1 | **Gauges** |  | 2026-10-03 | 2026-11-18 |  |  |  |  |  |  |  |  |  |  |  |
| 2.2-RHCUIN04-1305 |  | D.P Pressure Gauge Installation | 10d | 2026-10-03 | 2026-10-14 | 2.2-RHCUIN05-1020 SS | 113d | 0d |  | LABOUR [750 h] |  |  |  |  |  |  |
| 2.2-RHCUIN04-1310 |  | Pressure Gauge Installation | 10d | 2026-10-15 | 2026-10-26 | 2.2-RHCUIN04-1305 | 165d | 0d |  | LABOUR [750 h] |  |  |  |  |  |  |
| 2.2-RHCUIN04-1320 |  | Level Gauge Installation | 10d | 2026-10-27 | 2026-11-06 | 2.2-RHCUIN04-1310 | 165d | 0d |  | LABOUR [1000 h] |  |  |  |  |  |  |
| 2.2-RHCUIN04-1330 |  | Clear punch | 5d | 2026-11-07 | 2026-11-12 | 2.2-RHCUIN04-1320 | 165d | 0d |  | LABOUR [200 h] |  |  |  |  |  |  |
| 2.2-RHCUIN04-1340 |  | Complete QA/QC document | 5d | 2026-11-13 | 2026-11-18 | 2.2-RHCUIN04-1330 | 165d |  |  | LABOUR [296.58 h] |  |  |  |  |  |  |
|  | 6 | **Transmitters/Switches** |  | 2026-10-03 | 2026-12-11 |  |  |  |  |  |  |  |  |  |  |  |
| 2.2-RHCUIN04-1350 |  | Install support / bracket | 10d | 2026-10-03 | 2026-10-14 | 2.2-RHCUIN04-1305 SS | 113d | 0d |  | LABOUR [300 h] |  |  |  |  |  |  |
| 2.2-RHCUIN04-1360 |  | Pressure transmitters Installation | 10d | 2026-10-15 | 2026-10-26 | 2.2-RHCUIN04-1350 | 113d | 0d |  | LABOUR [500 h] |  |  |  |  |  |  |
| 2.2-RHCUIN04-1370 |  | D.P. Transmitters - HART Installation | 10d | 2026-10-27 | 2026-11-06 | 2.2-RHCUIN04-1360 | 113d | 0d |  | LABOUR [500 h] |  |  |  |  |  |  |
| 2.2-RHCUIN04-1380 |  | Temperature Transmitters Installation | 10d | 2026-11-07 | 2026-11-18 | 2.2-RHCUIN04-1370 | 145d | 0d |  | LABOUR [500 h] |  |  |  |  |  |  |
| 2.2-RHCUIN04-1430 |  | Level Switch Installation | 10d | 2026-11-19 | 2026-11-30 | 2.2-RHCUIN04-1380 | 145d | 0d |  | LABOUR [500 h] |  |  |  |  |  |  |
| 2.2-RHCUIN04-1440 |  | Clear punch | 5d | 2026-12-01 | 2026-12-05 | 2.2-RHCUIN04-1430 | 145d | 0d |  | LABOUR [200 h] |  |  |  |  |  |  |
| 2.2-RHCUIN04-1450 |  | Complete QA/QC document | 5d | 2026-12-07 | 2026-12-11 | 2.2-RHCUIN04-1440 | 145d |  |  | LABOUR [496.58 h] |  |  |  |  |  |  |
|  | 11 | **Instrument Junction Box Installation** |  | 2026-10-15 | 2026-11-11 |  |  |  |  |  |  |  |  |  |  |  |
| 2.2-RHCUIN04-1390 |  | Install support / bracket | 10d | 2026-10-15 | 2026-10-26 | 2.2-RHCUIN04-1350 | 171d | 0d |  | LABOUR [1000 h] |  |  |  |  |  |  |
| 2.2-RHCUIN04-1400 |  | Instrument Junction Box Installation | 10d | 2026-10-27 | 2026-11-06 | 2.2-RHCUIN04-1390 | 171d | 0d |  | LABOUR [1500 h] | EE | 1 | C03a | TY1 | C03c | EIT02.2 |
| 2.2-RHCUIN04-1410 |  | Clear punch | 2d | 2026-11-07 | 2026-11-09 | 2.2-RHCUIN04-1400 | 171d | 0d |  | LABOUR [300 h] | EE | 1 | C03a | TY1 | C03c | EIT02.2 |
| 2.2-RHCUIN04-1420 |  | Complete QA/QC document | 2d | 2026-11-10 | 2026-11-11 | 2.2-RHCUIN04-1410 | 171d |  |  | LABOUR [196.58 h] | EE | 1 | C03a | TY1 | C03c | EIT02.2 |
|  | 5 | **Tubing** |  | 2026-11-07 | 2027-01-18 |  |  |  |  |  |  |  |  |  |  |  |
| 2.2-RHCUIN07-1080 |  | Instrument Hook up Tubing Installation | 20d | 2026-11-07 | 2026-11-30 | 2.2-RHCUIN04-1360, 2.2-RHCUIN04-1370 | 113d | 0d |  | LABOUR [100 h] |  |  |  |  | C03c | EIT02.2 |
| 2.2-RHCUIN07-1090 |  | Leak Test | 20d | 2026-12-01 | 2026-12-23 | 2.2-RHCUIN07-1080 | 113d | 0d |  | LABOUR [30 h] |  |  |  |  | C03c | EIT02.2 |
| 2.2-RHCUIN07-1100 |  | Clear Punch | 10d | 2026-12-24 | 2027-01-04 | 2.2-RHCUIN07-1090 | 113d | 0.1d |  | LABOUR [20 h] |  |  |  |  | C03c | EIT02.2 |
| 2.2-RHCUIN07-1110 |  | Complete QA/QC document | 15d | 2027-01-05 | 2027-01-18 | 2.2-RHCUIN07-1100 | 143d |  | 7 - Day Workweek (No Holidays) | LABOUR [29.2 h] |  |  |  |  | C03c | EIT02.2 |

| ID | WBS | Activity | Duration | Start | Finish | Predecessors | Total float | Free float | Resources | EIT WBS | EIT PKG | Disciplines | Main Activity | WBS | Types |
| --- | --- | --- | --- | --- | --- | --- | --- | --- | --- | --- | --- | --- | --- | --- | --- |
|  | 7 | **Instrument Loop Check** |  | 2027-04-09 | 2027-05-29 |  |  |  |  |  |  |  |  |  |  |
| 2.2-RHCUIN00-1060 |  | Instrument Loop check | 25d | 2027-04-09 | 2027-05-07 | 2.2-RHCUIN02-1170 | 0d |  | LABOUR [3000 h] | C03c | EIT02.2 |  |  |  |  |
| 2.2-RHCUIN00-1070 |  | Clear Punch | 10d | 2027-05-08 | 2027-05-19 | 2.2-RHCUIN00-1060 | 0d |  | LABOUR [1000 h] | C03c | EIT02.2 |  |  |  |  |
| 2.2-RHCUIN00-1080 |  | Complete QA/QC document | 9d | 2027-05-20 | 2027-05-29 | 2.2-RHCUIN00-1070 | 0d |  | LABOUR [1281.31 h] | C03c | EIT02.2 |  |  |  |  |
|  | 5 | **Telecommunication** |  | 2026-07-15 | 2027-01-22 |  |  |  |  |  |  |  |  |  |  |
|  | 3 | **Telecom** |  | 2026-07-15 | 2027-01-22 |  |  |  |  |  |  |  |  |  |  |
|  | 3 | **Telecom Cable Tray/Ladder Installation** |  | 2026-07-15 | 2026-10-03 |  |  |  |  |  |  |  |  |  |  |
| 2.2-RHCUTE03-1100 |  | Install support / bracket | 50d | 2026-07-15 | 2026-09-10 | 2.2-RHCUEE05-1200 SS | 109d | 0d | LABOUR [3 h] | C03a | EIT02.2 | EE | 1 | C03a | TY1 |
| 2.2-RHCUTE03-1110 |  | Install Ladder / Tray | 50d | 2026-07-15 | 2026-09-10 | 2.2-RHCUTE03-1120 SS | 109d | 0d | LABOUR [77 h] | C03a | EIT02.2 | EE | 1 | C03a | TY1 |
| 2.2-RHCUTE03-1120 |  | Steel Conduits for Cable tray | 50d | 2026-07-15 | 2026-09-10 | 2.2-RHCUTE03-1100 SS | 109d | 0d | LABOUR [3 h] | C03a | EIT02.2 | EE | 1 | C03a | TY1 |
| 2.2-RHCUTE03-1130 |  | punch clear | 5d | 2026-09-11 | 2026-09-16 | 2.2-RHCUTE03-1110, 2.2-RHCUTE03-1120 | 109d | 0d | LABOUR [75 h] | C03a | EIT02.2 | EE | 1 | C03a | TY1 |
| 2.2-RHCUTE03-1140 |  | Complete QA/QC document | 15d | 2026-09-17 | 2026-10-03 | 2.2-RHCUTE03-1130 | 109d | 0d | LABOUR [150 h] |  |  |  |  |  |  |
|  | 1 | **AG Telecommunication Cable Installation** |  | 2026-10-05 | 2026-12-07 |  |  |  |  |  |  |  |  |  |  |
| 2.2-RHCUTE01-1060 |  | Pull Cable | 30d | 2026-10-05 | 2026-11-07 | 2.2-RHCUTE03-1140 | 109d | 0d | LABOUR [1000 h] | C03a | EIT02.2 | EE | 1 | C03a | TY1 |
| 2.2-RHCUTE01-1070 |  | Megger & Continuity test | 10d | 2026-11-09 | 2026-11-19 | 2.2-RHCUTE01-1060 | 109d | 0d | LABOUR [200 h] | C03a | EIT02.2 | EE | 1 | C03a | TY1 |
| 2.2-RHCUTE01-1080 |  | Complete QA/QC document | 15d | 2026-11-20 | 2026-12-07 | 2.2-RHCUTE01-1070 | 109d | 0d | LABOUR [100 h] | C03a | EIT02.2 | EE | 1 | C03a | TY1 |
|  | 4 | **Telecommunication Termination / Glanding** |  | 2026-12-08 | 2027-01-22 |  |  |  |  |  |  |  |  |  |  |
| 2.2-RHCUTE02-1060 |  | Cable Termination/Glanding | 20d | 2026-12-08 | 2026-12-30 | 2.2-RHCUTE01-1080 | 109d | 0d | LABOUR [200 h] | C03a | EIT02.2 | EE | 1 | C03a | TY1 |
| 2.2-RHCUTE02-1070 |  | Clear punch | 10d | 2026-12-31 | 2027-01-11 | 2.2-RHCUTE02-1060 | 109d | 0d | LABOUR [100 h] | C03a | EIT02.2 | EE | 1 | C03a | TY1 |
| 2.2-RHCUTE02-1080 |  | Complete QA/QC document | 10d | 2027-01-12 | 2027-01-22 | 2.2-RHCUTE02-1070 | 109d |  | LABOUR [233.99 h] | C03a | EIT02.2 | EE | 1 | C03a | TY1 |
|  | 2 | **Telecommunication Equipment Installation** |  | 2026-10-05 | 2026-12-07 |  |  |  |  |  |  |  |  |  |  |
| 2.2-RHCUTE04-1060 |  | Telecom Equpiment Installation | 30d | 2026-10-05 | 2026-11-07 | 2.2-RHCUTE03-1140 | 149d | 0d | LABOUR [120 h] | C03a | EIT02.2 | EE | 1 | C03a | TY1 |
| 2.2-RHCUTE04-1070 |  | Clear Punch | 10d | 2026-11-09 | 2026-11-19 | 2.2-RHCUTE04-1060 | 149d | 0d | LABOUR [30 h] | C03a | EIT02.2 | EE | 1 | C03a | TY1 |
| 2.2-RHCUTE04-1080 |  | Complete QA/QC document | 15d | 2026-11-20 | 2026-12-07 | 2.2-RHCUTE04-1070 | 149d |  | LABOUR [40.57 h] | C03a | EIT02.2 | EE | 1 | C03a | TY1 |

| ID | WBS | Activity | Duration | Start | Finish | Predecessors | Total float | Free float | Resources | EIT WBS | EIT PKG |
| --- | --- | --- | --- | --- | --- | --- | --- | --- | --- | --- | --- |
|  | 4 | **RHCU ZONE 4** |  | 2026-04-01 | 2027-01-22 |  |  |  |  |  |  |
|  | 1 | **Electrical Works** |  | 2026-04-01 | 2027-01-19 |  |  |  |  |  |  |
|  | 6 | **Cable trench Excavation buried** |  | 2026-04-01 | 2026-05-11 |  |  |  |  |  |  |
|  | 8 | **C03-ETD-358/360/254/361/301/303/362/312/334/364/827/339/876/877/365/327** |  | 2026-04-01 | 2026-05-11 |  |  |  |  |  |  |
| 2.2-RHCUEE09-1120 |  | Cable trench Excavation | 30d | 2026-04-01 | 2026-05-05 | 2.2-RHCUEE09-1000 SS | 87.9d | 0d | LABOUR | C03c | EIT02.2 |
| 2.2-RHCUEE09-1130 |  | Sand Filling Compaction | 5d | 2026-05-06 | 2026-05-11 | 2.2-RHCUEE09-1120 | 329d |  | LABOUR | C03c | EIT02.2 |
|  | 8 | **Cable Laying Direct buried** |  | 2026-05-06 | 2026-08-15 |  |  |  |  |  |  |
|  | 8 | **C03-ETD-358/360/254/361/301/303/362/312/334/364/827/339/876/877/365/327** |  | 2026-05-06 | 2026-08-15 |  |  |  |  |  |  |
| 2.2-RHCUEE01-2375 |  | Sand Filling First layer | 4d | 2026-05-06 | 2026-05-09 | 2.2-RHCUEE09-1120 | 112.9d | 0d | LABOUR [100 h] |  |  |
| 2.2-RHCUEE01-2380 |  | Cable Laying | 40d | 2026-05-11 | 2026-06-25 | 2.2-RHCUEE01-2375 | 112.9d | 0d | LABOUR [1000 h] | C03c | EIT02.2 |
| 2.2-RHCUEE01-2390 |  | Megger & Continuity test | 5d | 2026-06-26 | 2026-07-01 | 2.2-RHCUEE01-2380 | 246d | 0d | LABOUR [200 h] | C03c | EIT02.2 |
| 2.2-RHCUEE01-2400 |  | punch Clear | 5d | 2026-07-02 | 2026-07-07 | 2.2-RHCUEE01-2390 | 246d | 0d | LABOUR [200 h] | C03c | EIT02.2 |
| 2.2-RHCUEE01-2410 |  | Sand Filling Compaction | 4d | 2026-07-08 | 2026-07-11 | 2.2-RHCUEE01-2400 | 246d | 0d | LABOUR [200 h] |  |  |
| 2.2-RHCUEE01-2420 |  | Complete QA/QC document | 10d | 2026-07-13 | 2026-07-23 | 2.2-RHCUEE01-2410 | 246d | 0d | LABOUR [200 h] | C03c | EIT02.2 |
| 2.2-RHCUEE01-2430 |  | Back Filling | 20d | 2026-07-24 | 2026-08-15 | 2.2-RHCUEE01-2420 | 246d |  | LABOUR [780.7 h] | C03c | EIT02.2 |
|  | 13 | **Cable Laying Concrete Trench** |  | 2026-05-11 | 2026-10-01 |  |  |  |  |  |  |
|  | 1 | **C03-ETC-205/229/222/239/224/507/290/223/441/317/442/443/501/444/445/502** |  | 2026-05-11 | 2026-08-15 |  |  |  |  |  |  |
| 2.2-RHCUEE01-2440 |  | Cable Laying | 40d | 2026-05-11 | 2026-06-25 | 2.2-RHCUEE01-2380 SS | 112.9d | 0d | LABOUR [1100 h] | C03c | EIT02.2 |
| 2.2-RHCUEE01-2450 |  | Megger & Continuity test | 5d | 2026-06-26 | 2026-07-01 | 2.2-RHCUEE01-2440 | 246d | 0d | LABOUR [200 h] | C03c | EIT02.2 |
| 2.2-RHCUEE01-2460 |  | punch Clear | 5d | 2026-07-02 | 2026-07-07 | 2.2-RHCUEE01-2450 | 246d | 0d | LABOUR [200 h] | C03c | EIT02.2 |
| 2.2-RHCUEE01-2470 |  | Sand Filling Compaction | 4d | 2026-07-08 | 2026-07-11 | 2.2-RHCUEE01-2460 | 246d | 0d | LABOUR [200 h] |  |  |
| 2.2-RHCUEE01-2480 |  | Complete QA/QC document | 10d | 2026-07-13 | 2026-07-23 | 2.2-RHCUEE01-2470 | 246d | 0d | LABOUR [200 h] | C03c | EIT02.2 |
| 2.2-RHCUEE01-2490 |  | Back Filling | 20d | 2026-07-24 | 2026-08-15 | 2.2-RHCUEE01-2480 | 246d |  | LABOUR [780.7 h] | C03c | EIT02.2 |
|  | 2 | **C03-ETC-291/292/227/229/485/584/282/615/283/605/221/220/298/386/270/228/459** |  | 2026-05-11 | 2026-08-15 |  |  |  |  |  |  |
| 2.2-RHCUEE01-2500 |  | Cable Laying | 40d | 2026-05-11 | 2026-06-25 | 2.2-RHCUEE01-2440 SS | 112.9d | 0d | LABOUR [1100 h] | C03c | EIT02.2 |
| 2.2-RHCUEE01-2520 |  | Megger & Continuity test | 5d | 2026-06-26 | 2026-07-01 | 2.2-RHCUEE01-2500 | 246d | 0d | LABOUR [200 h] | C03c | EIT02.2 |
| 2.2-RHCUEE01-2530 |  | punch Clear | 5d | 2026-07-02 | 2026-07-07 | 2.2-RHCUEE01-2520 | 246d | 0d | LABOUR [200 h] | C03c | EIT02.2 |
| 2.2-RHCUEE01-2540 |  | Sand Filling Compaction | 4d | 2026-07-08 | 2026-07-11 | 2.2-RHCUEE01-2530 | 246d | 0d | LABOUR [200 h] |  |  |
| 2.2-RHCUEE01-2550 |  | Complete QA/QC document | 10d | 2026-07-13 | 2026-07-23 | 2.2-RHCUEE01-2540 | 246d | 0d | LABOUR [200 h] | C03c | EIT02.2 |
| 2.2-RHCUEE01-2560 |  | Back Filling | 20d | 2026-07-24 | 2026-08-15 | 2.2-RHCUEE01-2550 | 246d |  | LABOUR [780.7 h] | C03c | EIT02.2 |

| ID | WBS | Activity | Duration | Start | Finish | Predecessors | Total float | Free float | Resources | EIT WBS | EIT PKG | Disciplines | Main Activity | WBS | Types |
| --- | --- | --- | --- | --- | --- | --- | --- | --- | --- | --- | --- | --- | --- | --- | --- |
|  | 3 | **C03-ETC-583/581/291/292/485/265/497** |  | 2026-06-26 | 2026-10-01 |  |  |  |  |  |  |  |  |  |  |
| 2.2-RHCUEE01-2680 |  | Cable Laying | 40d | 2026-06-26 | 2026-08-11 | 2.2-RHCUEE01-2500 | 112.9d | 0d | LABOUR [1100 h] | C03c | EIT02.2 |  |  |  |  |
| 2.2-RHCUEE01-2690 |  | Megger & Continuity test | 5d | 2026-08-12 | 2026-08-17 | 2.2-RHCUEE01-2680 | 112.9d | 0d | LABOUR [200 h] | C03c | EIT02.2 |  |  |  |  |
| 2.2-RHCUEE01-2700 |  | punch Clear | 5d | 2026-08-18 | 2026-08-22 | 2.2-RHCUEE01-2690 | 112.9d | 0d | LABOUR [200 h] | C03c | EIT02.2 |  |  |  |  |
| 2.2-RHCUEE01-2710 |  | Sand Filling Compaction | 4d | 2026-08-24 | 2026-08-27 | 2.2-RHCUEE01-2700 | 112.9d | 0d | LABOUR [200 h] |  |  |  |  |  |  |
| 2.2-RHCUEE01-2720 |  | Complete QA/QC document | 10d | 2026-08-28 | 2026-09-08 | 2.2-RHCUEE01-2710 | 112.9d | 0d | LABOUR [200 h] | C03c | EIT02.2 |  |  |  |  |
| 2.2-RHCUEE01-2730 |  | Back Filling | 20d | 2026-09-09 | 2026-10-01 | 2.2-RHCUEE01-2720 | 112.9d | 0d | LABOUR [780.7 h] | C03c | EIT02.2 |  |  |  |  |
|  | 1 | **Electrical Cable Tray/Ladder Installation** |  | 2026-05-06 | 2026-08-12 |  |  |  |  |  |  |  |  |  |  |
| 2.2-RHCUEE03-1150 |  | Install support / bracket | 60d | 2026-05-06 | 2026-07-14 | 2.2-RHCUEE09-1120 | 109d | 0d | LABOUR [1000 h] | C03a | EIT02.2 | EE | 1 | C03a | TY1 |
| 2.2-RHCUEE03-1160 |  | Install Ladder / Tray | 60d | 2026-05-06 | 2026-07-14 | 2.2-RHCUEE03-1150 SS | 119d | 0d | LABOUR [5000 h] | C03a | EIT02.2 | EE | 1 | C03a | TY1 |
| 2.2-RHCUEE03-1170 |  | Install Conduits | 60d | 2026-05-06 | 2026-07-14 | 2.2-RHCUEE03-1160 SS | 249d | 0d | LABOUR [1000 h] | C03a | EIT02.2 | EE | 1 | C03a | TY1 |
| 2.2-RHCUEE03-1180 |  | Clear punch | 10d | 2026-07-15 | 2026-07-25 | 2.2-RHCUEE03-1170, 2.2-RHCUEE03-1160 | 249d | 0d | LABOUR [500 h] | C03a | EIT02.2 | EE | 1 | C03a | TY1 |
| 2.2-RHCUEE03-1190 |  | Complete QA/QC document | 15d | 2026-07-27 | 2026-08-12 | 2.2-RHCUEE03-1180 | 249d |  | LABOUR [1229.78 h] | C03a | EIT02.2 | EE | 1 | C03a | TY1 |
|  | 9 | **AG Cable Pull LV Cable** |  | 2026-07-15 | 2026-10-21 |  |  |  |  |  |  |  |  |  |  |
| 2.2-RHCUEE01-2290 |  | Pull Cable | 60d | 2026-07-15 | 2026-09-22 | 2.2-RHCUEE03-1160 | 119d | 0d | LABOUR [1826 h] | C03a | EIT02.2 | EE | 1 | C03a | TY1 |
| 2.2-RHCUEE01-2300 |  | Megger & Continuity test | 10d | 2026-09-23 | 2026-10-03 | 2.2-RHCUEE01-2290 | 134d | 0d | LABOUR [1826 h] | C03a | EIT02.2 | EE | 1 | C03a | TY1 |
| 2.2-RHCUEE01-2310 |  | Complete QA/QC document | 15d | 2026-10-05 | 2026-10-21 | 2.2-RHCUEE01-2300 | 134d | 0d | LABOUR [150 h] | C03a | EIT02.2 | EE | 1 | C03a | TY1 |
|  | 10 | **AG Cable Pull Control Cable** |  | 2026-07-15 | 2026-10-21 |  |  |  |  |  |  |  |  |  |  |
| 2.2-RHCUEE01-2320 |  | Pull Cable | 60d | 2026-07-15 | 2026-09-22 | 2.2-RHCUEE01-2290 SS | 119d | 0d | LABOUR [1826 h] | C03a | EIT02.2 | EE | 1 | C03a | TY1 |
| 2.2-RHCUEE01-2330 |  | Megger & Continuity test | 10d | 2026-09-23 | 2026-10-03 | 2.2-RHCUEE01-2320 | 134d | 0d | LABOUR [1826 h] | C03a | EIT02.2 | EE | 1 | C03a | TY1 |
| 2.2-RHCUEE01-2340 |  | Complete QA/QC document | 15d | 2026-10-05 | 2026-10-21 | 2.2-RHCUEE01-2330 | 134d | 0d | LABOUR [150 h] | C03a | EIT02.2 | EE | 1 | C03a | TY1 |
|  | 11 | **AG Lighting Cable** |  | 2026-07-15 | 2026-11-19 |  |  |  |  |  |  |  |  |  |  |
| 2.2-RHCUEE01-2350 |  | Pull Cable | 60d | 2026-07-15 | 2026-09-22 | 2.2-RHCUEE01-2320 SS | 119d | 0d | LABOUR [1826 h] | C03a | EIT02.2 | EE | 1 | C03a | TY1 |
| 2.2-RHCUEE01-2360 |  | Megger & Continuity test | 30d | 2026-09-23 | 2026-10-27 | 2.2-RHCUEE01-2350 | 119d | 0d | LABOUR [1826 h] | C03a | EIT02.2 | EE | 1 | C03a | TY1 |
| 2.2-RHCUEE01-2370 |  | Complete QA/QC document | 20d | 2026-10-28 | 2026-11-19 | 2.2-RHCUEE01-2360 | 119d | 0d | LABOUR [200 h] | C03a | EIT02.2 | EE | 1 | C03a | TY1 |

| ID | WBS | Activity | Duration | Start | Finish | Predecessors | Total float | Free float | Resources | Disciplines | Main Activity | WBS | Types | EIT WBS | EIT PKG |
| --- | --- | --- | --- | --- | --- | --- | --- | --- | --- | --- | --- | --- | --- | --- | --- |
|  | 4 | **Electrical Cable Termination / Glanding** |  | 2026-10-02 | 2027-01-11 |  |  |  |  |  |  |  |  |  |  |
|  | 1 | **Termination MV Cable** |  | 2026-10-02 | 2026-11-23 |  |  |  |  |  |  |  |  |  |  |
| 2.2-RHCUEE02-1360 |  | Cable Termination/Glanding | 30d | 2026-10-02 | 2026-11-05 | 2.2-RHCUEE01-2730 | 112.9d | 0d | LABOUR [1800 h] | EE | 1 | C03a | TY1 | C03a | EIT02.2 |
| 2.2-RHCUEE02-1370 |  | Clear punch | 5d | 2026-11-06 | 2026-11-11 | 2.2-RHCUEE02-1360 | 112.9d | 0d | LABOUR [200 h] | EE | 1 | C03a | TY1 | C03a | EIT02.2 |
| 2.2-RHCUEE02-1380 |  | Complete QA/QC document | 10d | 2026-11-12 | 2026-11-23 | 2.2-RHCUEE02-1370 | 112.9d | 0d | LABOUR [639.63 h] | EE | 1 | C03a | TY1 | C03a | EIT02.2 |
|  | 2 | **Termination LV Cable** |  | 2026-10-22 | 2026-12-24 |  |  |  |  |  |  |  |  |  |  |
| 2.2-RHCUEE02-1390 |  | Cable Termination/Glanding | 30d | 2026-10-22 | 2026-11-25 | 2.2-RHCUEE01-2310 | 134d | 0d | LABOUR [1800 h] | EE | 1 | C03a | TY1 | C03a | EIT02.2 |
| 2.2-RHCUEE02-1400 |  | Clear punch | 10d | 2026-11-26 | 2026-12-07 | 2.2-RHCUEE02-1390 | 134d | 0d | LABOUR [200 h] | EE | 1 | C03a | TY1 | C03a | EIT02.2 |
| 2.2-RHCUEE02-1410 |  | Complete QA/QC document | 15d | 2026-12-08 | 2026-12-24 | 2.2-RHCUEE02-1400 | 134d |  | LABOUR [639.63 h] | EE | 1 | C03a | TY1 | C03a | EIT02.2 |
|  | 3 | **Termination Control Cable** |  | 2026-10-22 | 2026-12-24 |  |  |  |  |  |  |  |  |  |  |
| 2.2-RHCUEE02-1420 |  | Cable Termination/Glanding | 30d | 2026-10-22 | 2026-11-25 | 2.2-RHCUEE01-2340 | 134d | 0d | LABOUR [1800 h] | EE | 1 | C03a | TY1 | C03a | EIT02.2 |
| 2.2-RHCUEE02-1430 |  | Clear punch | 10d | 2026-11-26 | 2026-12-07 | 2.2-RHCUEE02-1420 | 134d | 0d | LABOUR [200 h] | EE | 1 | C03a | TY1 | C03a | EIT02.2 |
| 2.2-RHCUEE02-1440 |  | Complete QA/QC document | 15d | 2026-12-08 | 2026-12-24 | 2.2-RHCUEE02-1430 | 134d |  | LABOUR [639.63 h] | EE | 1 | C03a | TY1 | C03a | EIT02.2 |
|  | 4 | **Termination Lighting Cable** |  | 2026-11-20 | 2027-01-11 |  |  |  |  |  |  |  |  |  |  |
| 2.2-RHCUEE02-1450 |  | Cable Termination/Glanding | 30d | 2026-11-20 | 2026-12-24 | 2.2-RHCUEE01-2370 | 119d | 0d | LABOUR [1800 h] | EE | 1 | C03a | TY1 | C03a | EIT02.2 |
| 2.2-RHCUEE02-1460 |  | Clear punch | 5d | 2026-12-25 | 2026-12-30 | 2.2-RHCUEE02-1450 | 119d | 0d | LABOUR [200 h] | EE | 1 | C03a | TY1 | C03a | EIT02.2 |
| 2.2-RHCUEE02-1470 |  | Complete QA/QC document | 10d | 2026-12-31 | 2027-01-11 | 2.2-RHCUEE02-1460 | 119d |  | LABOUR [639.63 h] | EE | 1 | C03a | TY1 | C03a | EIT02.2 |
|  | 7 | **Electrical Earthing / Lightning Installation** |  | 2026-05-06 | 2026-08-12 |  |  |  |  |  |  |  |  |  |  |
| 2.2-RHCUEE06-1090 |  | Install Equipment Earthing / Inspection PIT / Install earthing pull and Connecttion | 60d | 2026-05-06 | 2026-07-14 | 2.2-RHCUEE03-1150 SS | 249d | 0d | LABOUR [3000 h] | EE | 1 | C03a | TY1 | C03a | EIT02.2 |
| 2.2-RHCUEE06-1100 |  | Punch Clear | 10d | 2026-07-15 | 2026-07-25 | 2.2-RHCUEE06-1090 | 249d | 0d | LABOUR [500 h] | EE | 1 | C03a | TY1 | C03a | EIT02.2 |
| 2.2-RHCUEE06-1110 |  | Complete QA/QC document | 15d | 2026-07-27 | 2026-08-12 | 2.2-RHCUEE06-1100 | 249d |  | LABOUR [763.82 h] | EE | 1 | C03a | TY1 | C03a | EIT02.2 |
|  | 5 | **Lighting Fixture Installation** |  | 2026-07-15 | 2026-09-28 |  |  |  |  |  |  |  |  |  |  |
| 2.2-RHCUEE05-1240 |  | Install support / bracket / Pole | 40d | 2026-07-15 | 2026-08-29 | 2.2-RHCUEE03-1150 | 209d | 0d | LABOUR [500 h] | EE | 1 | C03a | TY1 | C03a | EIT02.2 |
| 2.2-RHCUEE05-1250 |  | lighting fixture | 40d | 2026-07-15 | 2026-08-29 | 2.2-RHCUEE05-1240 SS | 209d | 0d | LABOUR [1500 h] | EE | 1 | C03a | TY1 | C03a | EIT02.2 |
| 2.2-RHCUEE05-1260 |  | Clear punch | 10d | 2026-08-31 | 2026-09-10 | 2.2-RHCUEE05-1250 | 209d | 0d | LABOUR [50 h] | EE | 1 | C03a | TY1 | C03a | EIT02.2 |
| 2.2-RHCUEE05-1270 |  | Complete QA/QC document | 15d | 2026-09-11 | 2026-09-28 | 2.2-RHCUEE05-1260 | 209d |  | LABOUR [116.75 h] |  |  |  |  |  |  |

| ID | WBS | Activity | Duration | Start | Finish | Predecessors | Total float | Free float | Calendar | Resources | Disciplines | Main Activity | WBS | Types | EIT WBS | EIT PKG |
| --- | --- | --- | --- | --- | --- | --- | --- | --- | --- | --- | --- | --- | --- | --- | --- | --- |
|  | 12 | **Small Power Equipment Installation** |  | 2026-07-15 | 2026-09-28 |  |  |  |  |  |  |  |  |  |  |  |
| 2.2-RHCUEE05-1280 |  | Install support / bracket | 40d | 2026-07-15 | 2026-08-29 | 2.2-RHCUEE05-1240 SS | 209d | 0d |  | LABOUR [500 h] | EE | 1 | C03a | TY1 | C03a | EIT02.2 |
| 2.2-RHCUEE05-1290 |  | nstall Distribution panel, convenience outlet | 40d | 2026-07-15 | 2026-08-29 | 2.2-RHCUEE05-1280 SS | 209d | 0d |  | LABOUR [1500 h] | EE | 1 | C03a | TY1 | C03a | EIT02.2 |
| 2.2-RHCUEE05-1300 |  | Clear punch | 10d | 2026-08-31 | 2026-09-10 | 2.2-RHCUEE05-1290 | 209d | 0d |  | LABOUR [50 h] | EE | 1 | C03a | TY1 | C03a | EIT02.2 |
| 2.2-RHCUEE05-1310 |  | Complete QA/QC document | 15d | 2026-09-11 | 2026-09-28 | 2.2-RHCUEE05-1300 | 209d |  |  | LABOUR [116.75 h] |  |  |  |  |  |  |
|  | 2 | **Motor Solo Run** |  | 2026-11-24 | 2027-01-19 |  |  |  |  |  |  |  |  |  |  |  |
| 2.2-RHCUEE00-1100 |  | Motor solo run | 25d | 2026-11-24 | 2026-12-22 | 2.2-RHCUEE02-1380 | 112.9d | 0.1d |  | LABOUR |  |  |  |  | C03a | EIT02.2 |
| 2.2-RHCUEE00-1110 |  | Punch Clear | 10d | 2026-12-23 | 2027-01-01 | 2.2-RHCUEE00-1100 | 143.62d | 0d | 7 - Day Workweek (No Holidays) | LABOUR |  |  |  |  | C03a | EIT02.2 |
| 2.2-RHCUEE00-1120 |  | Complete QA/QC document | 15d | 2027-01-01 | 2027-01-19 | 2.2-RHCUEE00-1110 | 112.8d |  |  | LABOUR |  |  |  |  | C03a | EIT02.2 |
|  | 3 | **Instrument Works** |  | 2026-04-01 | 2027-01-21 |  |  |  |  |  |  |  |  |  |  |  |
|  | 10 | **Cable Laying concrete Trench** |  | 2026-04-01 | 2026-07-25 |  |  |  |  |  |  |  |  |  |  |  |
|  | 3 | **C03-JTR-201/202/203/204/205/215** |  | 2026-04-01 | 2026-07-25 |  |  |  |  |  |  |  |  |  |  |  |
| 2.2-RHCUIN01-1420 |  | Cable Laying | 50d | 2026-04-01 | 2026-05-28 | 2.2-RHCUIN01-1000 SS | 0d |  |  | LABOUR [9000 h] |  |  |  |  | C03a | EIT02.2 |
| 2.2-RHCUIN01-1430 |  | Megger & Continuity test | 5d | 2026-05-29 | 2026-06-03 | 2.2-RHCUIN01-1420 | 264d | 0d |  | LABOUR [500 h] |  |  |  |  | C03a | EIT02.2 |
| 2.2-RHCUIN01-1440 |  | Clear punch | 5d | 2026-06-04 | 2026-06-09 | 2.2-RHCUIN01-1430 | 264d | 0d |  | LABOUR [200 h] |  |  |  |  | C03a | EIT02.2 |
| 2.2-RHCUIN01-1450 |  | Sand Filling compaction | 10d | 2026-06-10 | 2026-06-20 | 2.2-RHCUIN01-1440 | 294d |  |  | LABOUR [300 h] |  |  |  |  |  |  |
| 2.2-RHCUIN01-1460 |  | Complete QA/QC document | 10d | 2026-06-10 | 2026-06-20 | 2.2-RHCUIN01-1440 | 264d | 0d |  | LABOUR [500 h] |  |  |  |  | C03a | EIT02.2 |
| 2.2-RHCUIN01-1470 |  | Back Filling | 30d | 2026-06-22 | 2026-07-25 | 2.2-RHCUIN01-1460 | 264d |  |  | LABOUR [4970.5 h] |  |  |  |  | C03a | EIT02.2 |
|  | 3 | **Instrument Cable Tray/Ladder Installation** |  | 2026-04-01 | 2026-07-08 |  |  |  |  |  |  |  |  |  |  |  |
| 2.2-RHCUIN03-1150 |  | Install support / bracket | 60d | 2026-04-01 | 2026-06-09 | 2.2-RHCUIN01-1420 SS | 110d | 0d |  | LABOUR [1000 h] | EE | 1 | C03a | TY1 | C03a | EIT02.2 |
| 2.2-RHCUIN03-1160 |  | Install Ladder / Tray | 60d | 2026-04-01 | 2026-06-09 | 2.2-RHCUIN03-1150 SS | 110d | 0d |  | LABOUR [3000 h] | EE | 1 | C03a | TY1 | C03a | EIT02.2 |
| 2.2-RHCUIN03-1170 |  | Install Conduits | 60d | 2026-04-01 | 2026-06-09 | 2.2-RHCUIN03-1160 SS | 110d | 0d |  | LABOUR [1000 h] | EE | 1 | C03a | TY1 | C03a | EIT02.2 |
| 2.2-RHCUIN03-1180 |  | Clear punch | 10d | 2026-06-10 | 2026-06-20 | 2.2-RHCUIN03-1170, 2.2-RHCUIN03-1160 | 110d | 0d |  | LABOUR [200 h] | EE | 1 | C03a | TY1 | C03a | EIT02.2 |
| 2.2-RHCUIN03-1190 |  | Complete QA/QC document | 15d | 2026-06-22 | 2026-07-08 | 2.2-RHCUIN03-1180 | 110d | 0d |  | LABOUR [392.97 h] | EE | 1 | C03a | TY1 | C03a | EIT02.2 |

| ID | WBS | Activity | Duration | Start | Finish | Predecessors | Total float | Free float | Resources | Disciplines | Main Activity | WBS | Types | EIT WBS | EIT PKG |
| --- | --- | --- | --- | --- | --- | --- | --- | --- | --- | --- | --- | --- | --- | --- | --- |
|  | 8 | **AG Cable Pull Primary Cable** |  | 2026-07-09 | 2026-10-03 |  |  |  |  |  |  |  |  |  |  |
| 2.2-RHCUIN01-1360 |  | Pull Cable | 50d | 2026-07-09 | 2026-09-04 | 2.2-RHCUIN03-1190 | 154d | 0d | LABOUR [14000 h] | EE | 1 | C03a | TY1 | C03a | EIT02.2 |
| 2.2-RHCUIN01-1370 |  | Megger & Continuity test | 10d | 2026-09-05 | 2026-09-16 | 2.2-RHCUIN01-1360 | 154d | 0d | LABOUR [500 h] | EE | 1 | C03a | TY1 | C03a | EIT02.2 |
| 2.2-RHCUIN01-1380 |  | Complete QA/QC document | 15d | 2026-09-17 | 2026-10-03 | 2.2-RHCUIN01-1370 | 154d | 0d | LABOUR [970.5 h] | EE | 1 | C03a | TY1 | C03a | EIT02.2 |
|  | 9 | **AG Cable Pull Secondary Cable** |  | 2026-07-09 | 2026-10-03 |  |  |  |  |  |  |  |  |  |  |
| 2.2-RHCUIN01-1390 |  | Pull Cable | 50d | 2026-07-09 | 2026-09-04 | 2.2-RHCUIN03-1190 | 110d | 0d | LABOUR [14000 h] | EE | 1 | C03a | TY1 | C03a | EIT02.2 |
| 2.2-RHCUIN01-1400 |  | Megger & Continuity test | 10d | 2026-09-05 | 2026-09-16 | 2.2-RHCUIN01-1390 | 110d | 0d | LABOUR [500 h] | EE | 1 | C03a | TY1 | C03a | EIT02.2 |
| 2.2-RHCUIN01-1410 |  | Complete QA/QC document | 15d | 2026-09-17 | 2026-10-03 | 2.2-RHCUIN01-1400 | 110d | 0d | LABOUR [970.5 h] | EE | 1 | C03a | TY1 | C03a | EIT02.2 |
|  | 2 | **Instrument Cable Termination / Glanding** |  | 2026-05-29 | 2026-12-01 |  |  |  |  |  |  |  |  |  |  |
|  | 1 | **UG Cable Termination Cable** |  | 2026-05-29 | 2026-07-25 |  |  |  |  |  |  |  |  |  |  |
| 2.2-RHCUIN02-1390 |  | Cable Termination/Glanding | 25d | 2026-05-29 | 2026-06-26 | 2.2-RHCUIN01-1420 | 264d | 0d | LABOUR [3000 h] | EE | 1 | C03a | TY1 | C03a | EIT02.2 |
| 2.2-RHCUIN02-1400 |  | punch clear | 10d | 2026-06-27 | 2026-07-08 | 2.2-RHCUIN02-1390 | 264d | 0d | LABOUR [500 h] | EE | 1 | C03a | TY1 | C03a | EIT02.2 |
| 2.2-RHCUIN02-1410 |  | Complete QA/QC document | 15d | 2026-07-09 | 2026-07-25 | 2.2-RHCUIN02-1400 | 264d |  | LABOUR [907.72 h] | EE | 1 | C03a | TY1 | C03a | EIT02.2 |
|  | 8 | **Cable Termination Primary Cable** |  | 2026-10-05 | 2026-12-01 |  |  |  |  |  |  |  |  |  |  |
| 2.2-RHCUIN02-1180 |  | Cable Termination/Glanding | 25d | 2026-10-05 | 2026-11-02 | 2.2-RHCUIN01-1380 | 154d | 0d | LABOUR [3000 h] | EE | 1 | C03a | TY1 | C03a | EIT02.2 |
| 2.2-RHCUIN02-1190 |  | punch clear | 10d | 2026-11-03 | 2026-11-13 | 2.2-RHCUIN02-1180 | 154d | 0d | LABOUR [500 h] | EE | 1 | C03a | TY1 | C03a | EIT02.2 |
| 2.2-RHCUIN02-1200 |  | Complete QA/QC document | 15d | 2026-11-14 | 2026-12-01 | 2.2-RHCUIN02-1190 | 154d |  | LABOUR [907.72 h] | EE | 1 | C03a | TY1 | C03a | EIT02.2 |
|  | 9 | **Cable Termination Secondary Cable** |  | 2026-10-05 | 2026-12-01 |  |  |  |  |  |  |  |  |  |  |
| 2.2-RHCUIN02-1210 |  | Cable Termination/Glanding | 25d | 2026-10-05 | 2026-11-02 | 2.2-RHCUIN01-1410 | 110d | 0d | LABOUR [3000 h] | EE | 1 | C03a | TY1 | C03a | EIT02.2 |
| 2.2-RHCUIN02-1220 |  | punch clear | 10d | 2026-11-03 | 2026-11-13 | 2.2-RHCUIN02-1210 | 110d | 0d | LABOUR [500 h] | EE | 1 | C03a | TY1 | C03a | EIT02.2 |
| 2.2-RHCUIN02-1230 |  | Complete QA/QC document | 15d | 2026-11-14 | 2026-12-01 | 2.2-RHCUIN02-1220 | 110d | 0d | LABOUR [907.72 h] | EE | 1 | C03a | TY1 | C03a | EIT02.2 |
|  | 4 | **Instrument Calibration** |  | 2026-05-29 | 2026-07-02 |  |  |  |  |  |  |  |  |  |  |
| 2.2-RHCUIN05-1030 |  | Calibration of Gauges | 30d | 2026-05-29 | 2026-07-02 | 2.2-RHCUIN01-1420 | 222d | 0d | LABOUR [3000 h] | EE | 1 | C03a | TY1 | C03c | EIT02.2 |
| 2.2-RHCUIN05-1080 |  | Calibration of Transmitters/Switches | 30d | 2026-05-29 | 2026-07-02 | 2.2-RHCUIN05-1030 SS | 222d | 0d | LABOUR [4396.55 h] |  |  |  |  |  |  |

| ID | WBS | Activity | Duration | Start | Finish | Predecessors | Total float | Free float | Calendar | Resources | Disciplines | Main Activity | WBS | Types | EIT WBS | EIT PKG |
| --- | --- | --- | --- | --- | --- | --- | --- | --- | --- | --- | --- | --- | --- | --- | --- | --- |
|  | 1 | **Gauges** |  | 2026-05-29 | 2026-07-14 |  |  |  |  |  |  |  |  |  |  |  |
| 2.2-RHCUIN04-1455 |  | D.P Pressure Gauge Installation | 10d | 2026-05-29 | 2026-06-09 | 2.2-RHCUIN05-1030 SS | 274d | 0d |  | LABOUR [750 h] |  |  |  |  |  |  |
| 2.2-RHCUIN04-1460 |  | Pressure Gauge Installation | 10d | 2026-06-10 | 2026-06-20 | 2.2-RHCUIN04-1455 | 274d | 0d |  | LABOUR [750 h] | EE | 1 | C03a | TY1 | C03c | EIT02.2 |
| 2.2-RHCUIN04-1470 |  | Level Gauge Installation | 10d | 2026-06-22 | 2026-07-02 | 2.2-RHCUIN04-1460 | 274d | 0d |  | LABOUR [1000 h] | EE | 1 | C03a | TY1 | C03c | EIT02.2 |
| 2.2-RHCUIN04-1480 |  | Clear punch | 5d | 2026-07-03 | 2026-07-08 | 2.2-RHCUIN04-1470 | 274d | 0d |  | LABOUR [200 h] | EE | 1 | C03a | TY1 | C03c | EIT02.2 |
| 2.2-RHCUIN04-1490 |  | Complete QA/QC document | 5d | 2026-07-09 | 2026-07-14 | 2.2-RHCUIN04-1480 | 274d | 20d |  | LABOUR [296.58 h] | EE | 1 | C03a | TY1 | C03c | EIT02.2 |
|  | 6 | **Transmitters/Switches** |  | 2026-05-29 | 2026-08-06 |  |  |  |  |  |  |  |  |  |  |  |
| 2.2-RHCUIN04-1500 |  | Install support / bracket | 10d | 2026-05-29 | 2026-06-09 | 2.2-RHCUIN05-1080 SS | 222d | 0d |  | LABOUR [300 h] | EE | 1 | C03a | TY1 | C03c | EIT02.2 |
| 2.2-RHCUIN04-1510 |  | Pressure transmitters Installation | 10d | 2026-06-10 | 2026-06-20 | 2.2-RHCUIN04-1500 | 222d | 0d |  | LABOUR [500 h] | EE | 1 | C03a | TY1 | C03c | EIT02.2 |
| 2.2-RHCUIN04-1520 |  | D.P. Transmitters - HART Installation | 10d | 2026-06-22 | 2026-07-02 | 2.2-RHCUIN04-1510 | 222d | 0d |  | LABOUR [500 h] | EE | 1 | C03a | TY1 | C03c | EIT02.2 |
| 2.2-RHCUIN04-1530 |  | Temperature Transmitters Installation | 10d | 2026-07-03 | 2026-07-14 | 2.2-RHCUIN04-1520 | 254d | 0d |  | LABOUR [500 h] | EE | 1 | C03a | TY1 | C03c | EIT02.2 |
| 2.2-RHCUIN04-1580 |  | Level Switch Installation | 10d | 2026-07-15 | 2026-07-25 | 2.2-RHCUIN04-1530 | 254d | 0d |  | LABOUR [500 h] |  |  |  |  |  |  |
| 2.2-RHCUIN04-1590 |  | Clear punch | 5d | 2026-07-27 | 2026-07-31 | 2.2-RHCUIN04-1580 | 254d | 0d |  | LABOUR [200 h] |  |  |  |  |  |  |
| 2.2-RHCUIN04-1600 |  | Complete QA/QC document | 5d | 2026-08-01 | 2026-08-06 | 2.2-RHCUIN04-1590, 2.2-RHCUIN04-1490 FF | 254d |  |  | LABOUR [496.58 h] |  |  |  |  |  |  |
|  | 11 | **Instrument Junction Box Installation** |  | 2026-06-10 | 2026-07-07 |  |  |  |  |  |  |  |  |  |  |  |
| 2.2-RHCUIN04-1540 |  | Install support / bracket | 10d | 2026-06-10 | 2026-06-20 | 2.2-RHCUIN04-1500 | 280d | 0d |  | LABOUR [1000 h] | EE | 1 | C03a | TY1 | C03c | EIT02.2 |
| 2.2-RHCUIN04-1550 |  | Instrument Junction Box Installation | 10d | 2026-06-22 | 2026-07-02 | 2.2-RHCUIN04-1540 | 280d | 0d |  | LABOUR [1500 h] | EE | 1 | C03a | TY1 | C03c | EIT02.2 |
| 2.2-RHCUIN04-1560 |  | Clear punch | 2d | 2026-07-03 | 2026-07-04 | 2.2-RHCUIN04-1550 | 280d | 0d |  | LABOUR [300 h] | EE | 1 | C03a | TY1 | C03c | EIT02.2 |
| 2.2-RHCUIN04-1570 |  | Complete QA/QC document | 2d | 2026-07-06 | 2026-07-07 | 2.2-RHCUIN04-1560 | 280d |  |  | LABOUR [196.58 h] | EE | 1 | C03a | TY1 | C03c | EIT02.2 |
|  | 5 | **Tubing** |  | 2026-07-03 | 2026-09-12 |  |  |  |  |  |  |  |  |  |  |  |
| 2.2-RHCUIN07-1120 |  | Instrument Hook up Tubing Installation | 20d | 2026-07-03 | 2026-07-25 | 2.2-RHCUIN04-1510, 2.2-RHCUIN04-1520 | 222d | 0d |  | LABOUR [100 h] |  |  |  |  | C03c | EIT02.2 |
| 2.2-RHCUIN07-1130 |  | Leak Test | 20d | 2026-07-27 | 2026-08-18 | 2.2-RHCUIN07-1120 | 222d | 0d |  | LABOUR [30 h] |  |  |  |  | C03c | EIT02.2 |
| 2.2-RHCUIN07-1140 |  | Clear Punch | 10d | 2026-08-19 | 2026-08-29 | 2.2-RHCUIN07-1130 | 222d | 0d |  | LABOUR [20 h] |  |  |  |  | C03c | EIT02.2 |
| 2.2-RHCUIN07-1150 |  | Complete QA/QC document | 15d | 2026-08-30 | 2026-09-12 | 2.2-RHCUIN07-1140 | 282.38d |  | 7 - Day Workweek (No Holidays) | LABOUR [29.2 h] |  |  |  |  | C03c | EIT02.2 |

| ID | WBS | Activity | Duration | Start | Finish | Predecessors | Total float | Free float | Resources | EIT WBS | EIT PKG | Disciplines | Main Activity | WBS | Types |
| --- | --- | --- | --- | --- | --- | --- | --- | --- | --- | --- | --- | --- | --- | --- | --- |
|  | 7 | **Instrument Loop Check** |  | 2026-12-02 | 2027-01-21 |  |  |  |  |  |  |  |  |  |  |
| 2.2-RHCUIN00-1090 |  | Instrument Loop check | 25d | 2026-12-02 | 2026-12-30 | 2.2-RHCUIN02-1230 | 110d | 0d | LABOUR [3000 h] | C03c | EIT02.2 |  |  |  |  |
| 2.2-RHCUIN00-1100 |  | Clear Punch | 10d | 2026-12-31 | 2027-01-11 | 2.2-RHCUIN00-1090 | 110d | 0d | LABOUR [1000 h] | C03c | EIT02.2 |  |  |  |  |
| 2.2-RHCUIN00-1110 |  | Complete QA/QC document | 9d | 2027-01-12 | 2027-01-21 | 2.2-RHCUIN00-1100 | 110d |  | LABOUR [1281.31 h] | C03c | EIT02.2 |  |  |  |  |
|  | 5 | **Telecommunication** |  | 2026-07-15 | 2027-01-22 |  |  |  |  |  |  |  |  |  |  |
|  | 3 | **Telecom** |  | 2026-07-15 | 2027-01-22 |  |  |  |  |  |  |  |  |  |  |
|  | 3 | **Telecom Cable Tray/Ladder Installation** |  | 2026-07-15 | 2026-10-03 |  |  |  |  |  |  |  |  |  |  |
| 2.2-RHCUTE03-1150 |  | Install support / bracket | 50d | 2026-07-15 | 2026-09-10 | 2.2-RHCUEE03-1150 | 109d | 0d | LABOUR [3 h] | C03a | EIT02.2 | EE | 1 | C03a | TY1 |
| 2.2-RHCUTE03-1160 |  | Install Ladder / Tray | 50d | 2026-07-15 | 2026-09-10 | 2.2-RHCUTE03-1150 SS | 109d | 0d | LABOUR [77 h] | C03a | EIT02.2 | EE | 1 | C03a | TY1 |
| 2.2-RHCUTE03-1170 |  | Conduit Install | 50d | 2026-07-15 | 2026-09-10 | 2.2-RHCUTE03-1150 SS | 224d |  | LABOUR [500 h] | C03a | EIT02.2 |  |  |  |  |
| 2.2-RHCUTE03-1180 |  | Clear punch | 5d | 2026-09-11 | 2026-09-16 | 2.2-RHCUTE03-1160 | 109d | 0d | LABOUR [75 h] | C03a | EIT02.2 | EE | 1 | C03a | TY1 |
| 2.2-RHCUTE03-1190 |  | Complete QA/QC document | 15d | 2026-09-17 | 2026-10-03 | 2.2-RHCUTE03-1180 | 109d | 0d | LABOUR [75 h] | C03a | EIT02.2 | EE | 1 | C03a | TY1 |
|  | 1 | **AG Telecommunication Cable Installation** |  | 2026-10-05 | 2026-12-07 |  |  |  |  |  |  |  |  |  |  |
| 2.2-RHCUTE01-1090 |  | Above Ground Pull Cable | 30d | 2026-10-05 | 2026-11-07 | 2.2-RHCUTE03-1190 | 109d | 0d | LABOUR [1000 h] | C03a | EIT02.2 | EE | 1 | C03a | TY1 |
| 2.2-RHCUTE01-1100 |  | Megger & Continuity test | 10d | 2026-11-09 | 2026-11-19 | 2.2-RHCUTE01-1090 | 109d | 0d | LABOUR [200 h] | C03a | EIT02.2 | EE | 1 | C03a | TY1 |
| 2.2-RHCUTE01-1110 |  | Complete QA/QC document | 15d | 2026-11-20 | 2026-12-07 | 2.2-RHCUTE01-1100 | 109d | 0d | LABOUR [100 h] | C03a | EIT02.2 | EE | 1 | C03a | TY1 |
|  | 4 | **Telecommunication Termination / Glanding** |  | 2026-12-08 | 2027-01-22 |  |  |  |  |  |  |  |  |  |  |
| 2.2-RHCUTE02-1090 |  | Cable Termination/Glanding | 20d | 2026-12-08 | 2026-12-30 | 2.2-RHCUTE01-1110 | 109d | 0d | LABOUR [200 h] | C03a | EIT02.2 | EE | 1 | C03a | TY1 |
| 2.2-RHCUTE02-1100 |  | Clear punch | 10d | 2026-12-31 | 2027-01-11 | 2.2-RHCUTE02-1090 | 109d | 0d | LABOUR [100 h] | C03a | EIT02.2 | EE | 1 | C03a | TY1 |
| 2.2-RHCUTE02-1110 |  | Complete QA/QC document | 10d | 2027-01-12 | 2027-01-22 | 2.2-RHCUTE02-1100 | 109d |  | LABOUR [233.99 h] | C03a | EIT02.2 | EE | 1 | C03a | TY1 |
|  | 2 | **Telecommunication Equipment Installation** |  | 2026-10-05 | 2026-12-07 |  |  |  |  |  |  |  |  |  |  |
| 2.2-RHCUTE04-1090 |  | Telecom Equpiment Installation | 30d | 2026-10-05 | 2026-11-07 | 2.2-RHCUTE03-1190 | 149d | 0d | LABOUR [120 h] | C03a | EIT02.2 | EE | 1 | C03a | TY1 |
| 2.2-RHCUTE04-1100 |  | Clear Punch | 10d | 2026-11-09 | 2026-11-19 | 2.2-RHCUTE04-1090 | 149d | 0d | LABOUR [30 h] | C03a | EIT02.2 | EE | 1 | C03a | TY1 |
| 2.2-RHCUTE04-1110 |  | Complete QA/QC document | 15d | 2026-11-20 | 2026-12-07 | 2.2-RHCUTE04-1100 | 149d |  | LABOUR [40.57 h] | C03a | EIT02.2 | EE | 1 | C03a | TY1 |

| ID | WBS | Activity | Duration | Start | Finish | Predecessors | Total float | Free float | Resources | EIT WBS | EIT PKG |
| --- | --- | --- | --- | --- | --- | --- | --- | --- | --- | --- | --- |
|  | 5 | **RHCU ZONE 5** |  | 2026-04-01 | 2027-05-29 |  |  |  |  |  |  |
|  | 1 | **Electrical Works** |  | 2026-04-01 | 2027-02-17 |  |  |  |  |  |  |
|  | 6 | **Cable trench Excavation buried** |  | 2026-04-01 | 2026-08-12 |  |  |  |  |  |  |
|  | 8 | **C03-ETD-816/395/875/346/809/706/482/859/461/324/838/860/632/826/396/304** |  | 2026-04-01 | 2026-05-11 |  |  |  |  |  |  |
| 2.2-RHCUEE09-1140 |  | Cable trench Excavation | 30d | 2026-04-01 | 2026-05-05 | 2.2-RHCUEE09-1120 SS | 87.9d | 0d | LABOUR | C03c | EIT02.2 |
| 2.2-RHCUEE09-1150 |  | Sand Filling Compaction | 5d | 2026-05-06 | 2026-05-11 | 2.2-RHCUEE09-1140 | 329d |  | LABOUR | C03c | EIT02.2 |
|  | 1 | **C03-ETD-671/387/372/334/335/337/805/648/833/396/347/837/870/871/820/678** |  | 2026-05-06 | 2026-06-15 |  |  |  |  |  |  |
| 2.2-RHCUEE09-1160 |  | Cable trench Excavation | 30d | 2026-05-06 | 2026-06-09 | 2.2-RHCUEE09-1140 | 87.9d | 0d | LABOUR | C03c | EIT02.2 |
| 2.2-RHCUEE09-1170 |  | Sand Filling Compaction | 5d | 2026-06-10 | 2026-06-15 | 2.2-RHCUEE09-1160 | 299d |  | LABOUR | C03c | EIT02.2 |
|  | 2 | **C03-ETD-338/323/841/835/834/842/836/349/307/306/874/341/829/825/486/693** |  | 2026-06-10 | 2026-07-20 |  |  |  |  |  |  |
| 2.2-RHCUEE09-1180 |  | Cable trench Excavation | 30d | 2026-06-10 | 2026-07-14 | 2.2-RHCUEE09-1160 | 87.9d | 0d | LABOUR | C03c | EIT02.2 |
| 2.2-RHCUEE09-1190 |  | Sand Filling Compaction | 5d | 2026-07-15 | 2026-07-20 | 2.2-RHCUEE09-1180 | 269d |  | LABOUR | C03c | EIT02.2 |
|  | 3 | **C03-ETD-703/675/662/821/486/861/807/828/692/831/689/873/342/668** |  | 2026-07-15 | 2026-08-12 |  |  |  |  |  |  |
| 2.2-RHCUEE09-1200 |  | Cable trench Excavation | 20d | 2026-07-15 | 2026-08-06 | 2.2-RHCUEE09-1180 | 87.9d | 0d | LABOUR | C03c | EIT02.2 |
| 2.2-RHCUEE09-1210 |  | Sand Filling Compaction | 5d | 2026-08-07 | 2026-08-12 | 2.2-RHCUEE09-1200 | 249d |  | LABOUR | C03c | EIT02.2 |
|  | 8 | **Cable Laying Direct buried** |  | 2026-05-06 | 2026-10-30 |  |  |  |  |  |  |
|  | 8 | **C03-ETD-816/395/875/346/809/706/482/859/461/324/838/860/632/826/396/304** |  | 2026-05-06 | 2026-08-15 |  |  |  |  |  |  |
| 2.2-RHCUEE01-2825 |  | Sand Filling First layer | 4d | 2026-05-06 | 2026-05-09 | 2.2-RHCUEE09-1140 | 246d | 0d | LABOUR [50 h] |  |  |
| 2.2-RHCUEE01-2830 |  | Cable Laying | 40d | 2026-05-11 | 2026-06-25 | 2.2-RHCUEE01-2825 | 246d | 0d | LABOUR [700 h] | C03c | EIT02.2 |
| 2.2-RHCUEE01-2840 |  | Megger & Continuity test | 5d | 2026-06-26 | 2026-07-01 | 2.2-RHCUEE01-2830 | 246d | 0d | LABOUR [50 h] | C03c | EIT02.2 |
| 2.2-RHCUEE01-2850 |  | punch Clear | 5d | 2026-07-02 | 2026-07-07 | 2.2-RHCUEE01-2840 | 246d | 0d | LABOUR [50 h] | C03c | EIT02.2 |
| 2.2-RHCUEE01-2860 |  | Sand Filling Compaction | 4d | 2026-07-08 | 2026-07-11 | 2.2-RHCUEE01-2850 | 246d | 0d | LABOUR [50 h] |  |  |
| 2.2-RHCUEE01-2870 |  | Complete QA/QC document | 10d | 2026-07-13 | 2026-07-23 | 2.2-RHCUEE01-2860 | 246d | 0d | LABOUR [100 h] | C03c | EIT02.2 |
| 2.2-RHCUEE01-2880 |  | Back Filling | 20d | 2026-07-24 | 2026-08-15 | 2.2-RHCUEE01-2870 | 246d |  | LABOUR [563.74 h] | C03c | EIT02.2 |

| ID | WBS | Activity | Duration | Start | Finish | Predecessors | Total float | Free float | Resources | EIT WBS | EIT PKG |
| --- | --- | --- | --- | --- | --- | --- | --- | --- | --- | --- | --- |
|  | 1 | **C03-ETD-671/387/372/334/335/337/805/648/833/396/347/837/870/871/820/678** |  | 2026-06-10 | 2026-09-19 |  |  |  |  |  |  |
| 2.2-RHCUEE01-2885 |  | Sand Filling First layer | 4d | 2026-06-10 | 2026-06-13 | 2.2-RHCUEE09-1160 | 216d | 0d | LABOUR [50 h] |  |  |
| 2.2-RHCUEE01-2890 |  | Cable Laying | 40d | 2026-06-15 | 2026-07-30 | 2.2-RHCUEE01-2885 | 216d | 0d | LABOUR [700 h] | C03c | EIT02.2 |
| 2.2-RHCUEE01-2900 |  | Megger & Continuity test | 5d | 2026-07-31 | 2026-08-05 | 2.2-RHCUEE01-2890 | 216d | 0d | LABOUR [50 h] | C03c | EIT02.2 |
| 2.2-RHCUEE01-2910 |  | punch Clear | 5d | 2026-08-06 | 2026-08-11 | 2.2-RHCUEE01-2900 | 216d | 0d | LABOUR [50 h] | C03c | EIT02.2 |
| 2.2-RHCUEE01-2920 |  | Sand Filling Compaction | 4d | 2026-08-12 | 2026-08-15 | 2.2-RHCUEE01-2910 | 216d | 0d | LABOUR [50 h] |  |  |
| 2.2-RHCUEE01-2930 |  | Complete QA/QC document | 10d | 2026-08-17 | 2026-08-27 | 2.2-RHCUEE01-2920 | 216d | 0d | LABOUR [100 h] | C03c | EIT02.2 |
| 2.2-RHCUEE01-2940 |  | Back Filling | 20d | 2026-08-28 | 2026-09-19 | 2.2-RHCUEE01-2930 | 216d |  | LABOUR [563.74 h] | C03c | EIT02.2 |
|  | 2 | **C03-ETD-338/323/841/835/834/842/836/349/307/306/874/341/829/825/486/693** |  | 2026-07-15 | 2026-10-24 |  |  |  |  |  |  |
| 2.2-RHCUEE01-2945 |  | Sand Filling First layer | 4d | 2026-07-15 | 2026-07-18 | 2.2-RHCUEE09-1180 | 186d | 0d | LABOUR [50 h] |  |  |
| 2.2-RHCUEE01-2950 |  | Cable Laying | 40d | 2026-07-20 | 2026-09-03 | 2.2-RHCUEE01-2945 | 186d | 0d | LABOUR [700 h] | C03c | EIT02.2 |
| 2.2-RHCUEE01-2960 |  | Megger & Continuity test | 5d | 2026-09-04 | 2026-09-09 | 2.2-RHCUEE01-2950 | 186d | 0d | LABOUR [50 h] | C03c | EIT02.2 |
| 2.2-RHCUEE01-2970 |  | punch Clear | 5d | 2026-09-10 | 2026-09-15 | 2.2-RHCUEE01-2960 | 186d | 0d | LABOUR [50 h] | C03c | EIT02.2 |
| 2.2-RHCUEE01-2980 |  | Sand Filling Compaction | 4d | 2026-09-16 | 2026-09-19 | 2.2-RHCUEE01-2970 | 186d | 0d | LABOUR [50 h] |  |  |
| 2.2-RHCUEE01-2990 |  | Complete QA/QC document | 10d | 2026-09-21 | 2026-10-01 | 2.2-RHCUEE01-2980 | 186d | 0d | LABOUR [100 h] | C03c | EIT02.2 |
| 2.2-RHCUEE01-3000 |  | Back Filling | 20d | 2026-10-02 | 2026-10-24 | 2.2-RHCUEE01-2990 | 186d |  | LABOUR [563.74 h] | C03c | EIT02.2 |
|  | 3 | **C03-ETD-703/675/662/821/486/861/807/828/692/831/689/873/342/668** |  | 2026-08-07 | 2026-10-30 |  |  |  |  |  |  |
| 2.2-RHCUEE01-3005 |  | Sand Filling First layer | 4d | 2026-08-07 | 2026-08-11 | 2.2-RHCUEE09-1200 | 87.9d | 0d | LABOUR [50 h] |  |  |
| 2.2-RHCUEE01-3010 |  | Cable Laying | 30d | 2026-08-12 | 2026-09-15 | 2.2-RHCUEE01-3005 | 87.9d | 0d | LABOUR [700 h] | C03c | EIT02.2 |
| 2.2-RHCUEE01-3020 |  | Megger & Continuity test | 5d | 2026-09-16 | 2026-09-21 | 2.2-RHCUEE01-3010 | 181d | 0d | LABOUR [50 h] | C03c | EIT02.2 |
| 2.2-RHCUEE01-3030 |  | punch Clear | 5d | 2026-09-22 | 2026-09-26 | 2.2-RHCUEE01-3020 | 181d | 0d | LABOUR [50 h] | C03c | EIT02.2 |
| 2.2-RHCUEE01-3040 |  | Sand Filling Compaction | 4d | 2026-09-28 | 2026-10-01 | 2.2-RHCUEE01-3030 | 181d | 0d | LABOUR [50 h] |  |  |
| 2.2-RHCUEE01-3050 |  | Complete QA/QC document | 5d | 2026-10-02 | 2026-10-07 | 2.2-RHCUEE01-3040 | 181d | 0d | LABOUR [100 h] | C03c | EIT02.2 |
| 2.2-RHCUEE01-3060 |  | Back Filling | 20d | 2026-10-08 | 2026-10-30 | 2.2-RHCUEE01-3050 | 181d |  | LABOUR [563.74 h] | C03c | EIT02.2 |

| ID | WBS | Activity | Duration | Start | Finish | Predecessors | Total float | Free float | Resources | EIT WBS | EIT PKG |
| --- | --- | --- | --- | --- | --- | --- | --- | --- | --- | --- | --- |
|  | 13 | **Cable Laying Concrete Trench** |  | 2026-05-11 | 2026-10-30 |  |  |  |  |  |  |
|  | 1 | **C03-ETC-582/228/270/233/822/549/261/259/231/242/243/253/490/491/260/506** |  | 2026-05-11 | 2026-08-15 |  |  |  |  |  |  |
| 2.2-RHCUEE01-3070 |  | Cable Laying | 40d | 2026-05-11 | 2026-06-25 | 2.2-RHCUEE01-2830 SS | 246d | 0d | LABOUR [800 h] | C03c | EIT02.2 |
| 2.2-RHCUEE01-3080 |  | Megger & Continuity test | 5d | 2026-06-26 | 2026-07-01 | 2.2-RHCUEE01-3070 | 246d | 0d | LABOUR [50 h] | C03c | EIT02.2 |
| 2.2-RHCUEE01-3090 |  | punch Clear | 5d | 2026-07-02 | 2026-07-07 | 2.2-RHCUEE01-3080 | 246d | 0d | LABOUR [50 h] | C03c | EIT02.2 |
| 2.2-RHCUEE01-3100 |  | Sand Filling Compaction | 4d | 2026-07-08 | 2026-07-11 | 2.2-RHCUEE01-3090 | 246d | 0d | LABOUR [50 h] |  |  |
| 2.2-RHCUEE01-3110 |  | Complete QA/QC document | 10d | 2026-07-13 | 2026-07-23 | 2.2-RHCUEE01-3100 | 246d | 0d | LABOUR [100 h] | C03c | EIT02.2 |
| 2.2-RHCUEE01-3120 |  | Back Filling | 20d | 2026-07-24 | 2026-08-15 | 2.2-RHCUEE01-3110 | 246d |  | LABOUR [513.74 h] | C03c | EIT02.2 |
|  | 2 | **C03-ETC-505/503/504/473/470/474/620/293/478/251/230/479/500/482/555/566** |  | 2026-06-15 | 2026-09-19 |  |  |  |  |  |  |
| 2.2-RHCUEE01-3130 |  | Cable Laying | 40d | 2026-06-15 | 2026-07-30 | 2.2-RHCUEE01-2890 SS | 216d | 0d | LABOUR [800 h] | C03c | EIT02.2 |
| 2.2-RHCUEE01-3140 |  | Megger & Continuity test | 5d | 2026-07-31 | 2026-08-05 | 2.2-RHCUEE01-3130 | 216d | 0d | LABOUR [50 h] | C03c | EIT02.2 |
| 2.2-RHCUEE01-3150 |  | punch Clear | 5d | 2026-08-06 | 2026-08-11 | 2.2-RHCUEE01-3140 | 216d | 0d | LABOUR [50 h] | C03c | EIT02.2 |
| 2.2-RHCUEE01-3160 |  | Sand Filling Compaction | 4d | 2026-08-12 | 2026-08-15 | 2.2-RHCUEE01-3150 | 216d | 0d | LABOUR [50 h] |  |  |
| 2.2-RHCUEE01-3170 |  | Complete QA/QC document | 10d | 2026-08-17 | 2026-08-27 | 2.2-RHCUEE01-3160 | 216d | 0d | LABOUR [100 h] | C03c | EIT02.2 |
| 2.2-RHCUEE01-3180 |  | Back Filling | 20d | 2026-08-28 | 2026-09-19 | 2.2-RHCUEE01-3170 | 216d |  | LABOUR [513.74 h] | C03c | EIT02.2 |
|  | 3 | **C03-ETC-480/252/486/575/508/576/255/568/254/570/572/571/573/574/569/567** |  | 2026-07-20 | 2026-10-24 |  |  |  |  |  |  |
| 2.2-RHCUEE01-3190 |  | Cable Laying | 40d | 2026-07-20 | 2026-09-03 | 2.2-RHCUEE01-2950 SS | 186d | 0d | LABOUR [800 h] | C03c | EIT02.2 |
| 2.2-RHCUEE01-3200 |  | Megger & Continuity test | 5d | 2026-09-04 | 2026-09-09 | 2.2-RHCUEE01-3190 | 186d | 0d | LABOUR [50 h] | C03c | EIT02.2 |
| 2.2-RHCUEE01-3210 |  | punch Clear | 5d | 2026-09-10 | 2026-09-15 | 2.2-RHCUEE01-3200 | 186d | 0d | LABOUR [50 h] | C03c | EIT02.2 |
| 2.2-RHCUEE01-3220 |  | Sand Filling Compaction | 4d | 2026-09-16 | 2026-09-19 | 2.2-RHCUEE01-3210 | 186d | 0d | LABOUR [50 h] |  |  |
| 2.2-RHCUEE01-3230 |  | Complete QA/QC document | 10d | 2026-09-21 | 2026-10-01 | 2.2-RHCUEE01-3220 | 186d | 0d | LABOUR [100 h] | C03c | EIT02.2 |
| 2.2-RHCUEE01-3240 |  | Back Filling | 20d | 2026-10-02 | 2026-10-24 | 2.2-RHCUEE01-3230 | 186d |  | LABOUR [513.74 h] | C03c | EIT02.2 |
|  | 4 | **C03-ETC-256/566/251/450/557/476/257/546/253/241/492/601/477/542/258/472** |  | 2026-08-12 | 2026-10-30 |  |  |  |  |  |  |
| 2.2-RHCUEE01-3250 |  | Cable Laying | 30d | 2026-08-12 | 2026-09-15 | 2.2-RHCUEE01-3010 SS | 87.9d | 0d | LABOUR [800 h] | C03c | EIT02.2 |
| 2.2-RHCUEE01-3260 |  | Megger & Continuity test | 5d | 2026-09-16 | 2026-09-21 | 2.2-RHCUEE01-3250 | 181d | 0d | LABOUR [50 h] | C03c | EIT02.2 |
| 2.2-RHCUEE01-3270 |  | punch Clear | 5d | 2026-09-22 | 2026-09-26 | 2.2-RHCUEE01-3260 | 181d | 0d | LABOUR [50 h] | C03c | EIT02.2 |
| 2.2-RHCUEE01-3280 |  | Sand Filling Compaction | 4d | 2026-09-28 | 2026-10-01 | 2.2-RHCUEE01-3270 | 181d | 0d | LABOUR [50 h] |  |  |
| 2.2-RHCUEE01-3290 |  | Complete QA/QC document | 5d | 2026-10-02 | 2026-10-07 | 2.2-RHCUEE01-3280 | 181d | 0d | LABOUR [100 h] | C03c | EIT02.2 |
| 2.2-RHCUEE01-3300 |  | Back Filling | 20d | 2026-10-08 | 2026-10-30 | 2.2-RHCUEE01-3290 | 181d |  | LABOUR [513.74 h] | C03c | EIT02.2 |

| ID | WBS | Activity | Duration | Start | Finish | Predecessors | Total float | Free float | Resources | EIT WBS | EIT PKG | Disciplines | Main Activity | WBS | Types |
| --- | --- | --- | --- | --- | --- | --- | --- | --- | --- | --- | --- | --- | --- | --- | --- |
|  | 5 | **C03-ETC-471/487/244/487/535/537/562/495/600/541/265/259/475/263/543/231/262/469/566** |  | 2026-08-12 | 2026-10-30 |  |  |  |  |  |  |  |  |  |  |
| 2.2-RHCUEE01-3310 |  | Cable Laying | 30d | 2026-08-12 | 2026-09-15 | 2.2-RHCUEE01-3250 SS | 87.9d | 0d | LABOUR [800 h] | C03c | EIT02.2 |  |  |  |  |
| 2.2-RHCUEE01-3320 |  | Megger & Continuity test | 5d | 2026-09-16 | 2026-09-21 | 2.2-RHCUEE01-3310 | 87.9d | 0d | LABOUR [50 h] | C03c | EIT02.2 |  |  |  |  |
| 2.2-RHCUEE01-3330 |  | punch Clear | 5d | 2026-09-22 | 2026-09-26 | 2.2-RHCUEE01-3320 | 87.9d | 0d | LABOUR [50 h] | C03c | EIT02.2 |  |  |  |  |
| 2.2-RHCUEE01-3340 |  | Sand Filling Compaction | 4d | 2026-09-28 | 2026-10-01 | 2.2-RHCUEE01-3330 | 87.9d | 0d | LABOUR [50 h] |  |  |  |  |  |  |
| 2.2-RHCUEE01-3350 |  | Complete QA/QC document | 5d | 2026-10-02 | 2026-10-07 | 2.2-RHCUEE01-3340 | 87.9d | 0d | LABOUR [100 h] | C03c | EIT02.2 |  |  |  |  |
| 2.2-RHCUEE01-3360 |  | Back Filling | 20d | 2026-10-08 | 2026-10-30 | 2.2-RHCUEE01-3350 | 87.9d | 0d | LABOUR [523.74 h] | C03c | EIT02.2 |  |  |  |  |
|  | 1 | **Electrical Cable Tray/Ladder Installation** |  | 2026-05-06 | 2026-08-12 |  |  |  |  |  |  |  |  |  |  |
| 2.2-RHCUEE03-1200 |  | Install support / bracket | 60d | 2026-05-06 | 2026-07-14 | 2.2-RHCUEE09-1140 | 109d | 0d | LABOUR [1000 h] | C03a | EIT02.2 | EE | 1 | C03a | TY1 |
| 2.2-RHCUEE03-1210 |  | Install Ladder / Tray | 60d | 2026-05-06 | 2026-07-14 | 2.2-RHCUEE03-1200 SS | 119d | 0d | LABOUR [5000 h] | C03a | EIT02.2 | EE | 1 | C03a | TY1 |
| 2.2-RHCUEE03-1220 |  | Install Conduits | 60d | 2026-05-06 | 2026-07-14 | 2.2-RHCUEE03-1210 SS | 249d | 0d | LABOUR [1000 h] | C03a | EIT02.2 | EE | 1 | C03a | TY1 |
| 2.2-RHCUEE03-1230 |  | Clear punch | 10d | 2026-07-15 | 2026-07-25 | 2.2-RHCUEE03-1220, 2.2-RHCUEE03-1210 | 249d | 0d | LABOUR [500 h] | C03a | EIT02.2 | EE | 1 | C03a | TY1 |
| 2.2-RHCUEE03-1240 |  | Complete QA/QC document | 15d | 2026-07-27 | 2026-08-12 | 2.2-RHCUEE03-1230 | 249d |  | LABOUR [1229.78 h] | C03a | EIT02.2 | EE | 1 | C03a | TY1 |
|  | 9 | **AG Cable Pull LV Cable** |  | 2026-07-15 | 2026-10-21 |  |  |  |  |  |  |  |  |  |  |
| 2.2-RHCUEE01-2740 |  | Pull Cable | 60d | 2026-07-15 | 2026-09-22 | 2.2-RHCUEE03-1210 | 119d | 0d | LABOUR [1826 h] | C03a | EIT02.2 | EE | 1 | C03a | TY1 |
| 2.2-RHCUEE01-2750 |  | Megger & Continuity test | 10d | 2026-09-23 | 2026-10-03 | 2.2-RHCUEE01-2740 | 134d | 0d | LABOUR [1826 h] | C03a | EIT02.2 | EE | 1 | C03a | TY1 |
| 2.2-RHCUEE01-2760 |  | Complete QA/QC document | 15d | 2026-10-05 | 2026-10-21 | 2.2-RHCUEE01-2750 | 134d | 0d | LABOUR [150 h] | C03a | EIT02.2 | EE | 1 | C03a | TY1 |
|  | 10 | **AG Cable Pull Control Cable** |  | 2026-07-15 | 2026-10-21 |  |  |  |  |  |  |  |  |  |  |
| 2.2-RHCUEE01-2770 |  | Pull Cable | 60d | 2026-07-15 | 2026-09-22 | 2.2-RHCUEE01-2740 SS | 119d | 0d | LABOUR [1826 h] | C03a | EIT02.2 | EE | 1 | C03a | TY1 |
| 2.2-RHCUEE01-2780 |  | Megger & Continuity test | 10d | 2026-09-23 | 2026-10-03 | 2.2-RHCUEE01-2770 | 134d | 0d | LABOUR [1826 h] | C03a | EIT02.2 | EE | 1 | C03a | TY1 |
| 2.2-RHCUEE01-2790 |  | Complete QA/QC document | 15d | 2026-10-05 | 2026-10-21 | 2.2-RHCUEE01-2780 | 134d | 0d | LABOUR [150 h] | C03a | EIT02.2 | EE | 1 | C03a | TY1 |
|  | 11 | **Lighting Cable** |  | 2026-07-15 | 2026-11-19 |  |  |  |  |  |  |  |  |  |  |
| 2.2-RHCUEE01-2800 |  | Pull Cable | 60d | 2026-07-15 | 2026-09-22 | 2.2-RHCUEE01-2770 SS | 119d | 0d | LABOUR [1826 h] | C03a | EIT02.2 | EE | 1 | C03a | TY1 |
| 2.2-RHCUEE01-2810 |  | Megger & Continuity test | 30d | 2026-09-23 | 2026-10-27 | 2.2-RHCUEE01-2800 | 119d | 0d | LABOUR [1826 h] | C03a | EIT02.2 | EE | 1 | C03a | TY1 |
| 2.2-RHCUEE01-2820 |  | Complete QA/QC document | 20d | 2026-10-28 | 2026-11-19 | 2.2-RHCUEE01-2810 | 119d | 0d | LABOUR [200 h] | C03a | EIT02.2 | EE | 1 | C03a | TY1 |

| ID | WBS | Activity | Duration | Start | Finish | Predecessors | Total float | Free float | Resources | Disciplines | Main Activity | WBS | Types | EIT WBS | EIT PKG |
| --- | --- | --- | --- | --- | --- | --- | --- | --- | --- | --- | --- | --- | --- | --- | --- |
|  | 4 | **Electrical Cable Termination / Glanding** |  | 2026-10-22 | 2027-01-11 |  |  |  |  |  |  |  |  |  |  |
|  | 1 | **Termination MV Cable** |  | 2026-10-31 | 2026-12-22 |  |  |  |  |  |  |  |  |  |  |
| 2.2-RHCUEE02-1480 |  | Cable Termination/Glanding | 30d | 2026-10-31 | 2026-12-04 | 2.2-RHCUEE01-3360 | 87.9d | 0d |  | EE | 1 | C03a | TY1 | C03a | EIT02.2 |
| 2.2-RHCUEE02-1490 |  | Clear punch | 5d | 2026-12-05 | 2026-12-10 | 2.2-RHCUEE02-1480 | 87.9d | 0d |  | EE | 1 | C03a | TY1 | C03a | EIT02.2 |
| 2.2-RHCUEE02-1500 |  | Complete QA/QC document | 10d | 2026-12-11 | 2026-12-22 | 2.2-RHCUEE02-1490 | 87.9d | 0d |  | EE | 1 | C03a | TY1 | C03a | EIT02.2 |
|  | 2 | **Termination LV Cable** |  | 2026-10-22 | 2026-12-24 |  |  |  |  |  |  |  |  |  |  |
| 2.2-RHCUEE02-1510 |  | Cable Termination/Glanding | 30d | 2026-10-22 | 2026-11-25 | 2.2-RHCUEE01-2760 | 134d | 0d |  | EE | 1 | C03a | TY1 | C03a | EIT02.2 |
| 2.2-RHCUEE02-1520 |  | Clear punch | 10d | 2026-11-26 | 2026-12-07 | 2.2-RHCUEE02-1510 | 134d | 0d |  | EE | 1 | C03a | TY1 | C03a | EIT02.2 |
| 2.2-RHCUEE02-1530 |  | Complete QA/QC document | 15d | 2026-12-08 | 2026-12-24 | 2.2-RHCUEE02-1520 | 134d |  |  | EE | 1 | C03a | TY1 | C03a | EIT02.2 |
|  | 3 | **Termination Control Cable** |  | 2026-10-22 | 2026-12-24 |  |  |  |  |  |  |  |  |  |  |
| 2.2-RHCUEE02-1540 |  | Cable Termination/Glanding | 30d | 2026-10-22 | 2026-11-25 | 2.2-RHCUEE01-2790 | 134d | 0d |  | EE | 1 | C03a | TY1 | C03a | EIT02.2 |
| 2.2-RHCUEE02-1550 |  | Clear punch | 10d | 2026-11-26 | 2026-12-07 | 2.2-RHCUEE02-1540 | 134d | 0d |  | EE | 1 | C03a | TY1 | C03a | EIT02.2 |
| 2.2-RHCUEE02-1560 |  | Complete QA/QC document | 15d | 2026-12-08 | 2026-12-24 | 2.2-RHCUEE02-1550 | 134d |  |  | EE | 1 | C03a | TY1 | C03a | EIT02.2 |
|  | 4 | **Termination Lighting Cable** |  | 2026-11-20 | 2027-01-11 |  |  |  |  |  |  |  |  |  |  |
| 2.2-RHCUEE02-1570 |  | Cable Termination/Glanding | 30d | 2026-11-20 | 2026-12-24 | 2.2-RHCUEE01-2820 | 119d | 0d |  | EE | 1 | C03a | TY1 | C03a | EIT02.2 |
| 2.2-RHCUEE02-1580 |  | Clear punch | 5d | 2026-12-25 | 2026-12-30 | 2.2-RHCUEE02-1570 | 119d | 0d |  | EE | 1 | C03a | TY1 | C03a | EIT02.2 |
| 2.2-RHCUEE02-1590 |  | Complete QA/QC document | 10d | 2026-12-31 | 2027-01-11 | 2.2-RHCUEE02-1580 | 119d |  |  | EE | 1 | C03a | TY1 | C03a | EIT02.2 |
|  | 7 | **Electrical Earthing / Lightning Installation** |  | 2026-05-06 | 2026-08-12 |  |  |  |  |  |  |  |  |  |  |
| 2.2-RHCUEE06-1120 |  | Install Equipment Earthing / Inspection PIT / Install earthing pull and Connecttion | 60d | 2026-05-06 | 2026-07-14 | 2.2-RHCUEE03-1200 SS | 209d | 0d | LABOUR [3000 h] | EE | 1 | C03a | TY1 | C03a | EIT02.2 |
| 2.2-RHCUEE06-1130 |  | Punch Clear | 10d | 2026-07-15 | 2026-07-25 | 2.2-RHCUEE06-1120 | 249d | 0d | LABOUR [500 h] | EE | 1 | C03a | TY1 | C03a | EIT02.2 |
| 2.2-RHCUEE06-1140 |  | Complete QA/QC document | 15d | 2026-07-27 | 2026-08-12 | 2.2-RHCUEE06-1130 | 249d |  | LABOUR [763.82 h] | EE | 1 | C03a | TY1 | C03a | EIT02.2 |
|  | 5 | **Lighting Fixture Installation** |  | 2026-07-15 | 2026-09-28 |  |  |  |  |  |  |  |  |  |  |
| 2.2-RHCUEE05-1320 |  | Install support / bracket / Pole | 40d | 2026-07-15 | 2026-08-29 | 2.2-RHCUEE06-1120 | 209d | 0d | LABOUR [500 h] | EE | 1 | C03a | TY1 | C03a | EIT02.2 |
| 2.2-RHCUEE05-1330 |  | lighting fixture | 40d | 2026-07-15 | 2026-08-29 | 2.2-RHCUEE05-1320 SS | 209d | 0d | LABOUR [1500 h] | EE | 1 | C03a | TY1 | C03a | EIT02.2 |
| 2.2-RHCUEE05-1340 |  | Clear punch | 10d | 2026-08-31 | 2026-09-10 | 2.2-RHCUEE05-1330 | 209d | 0d | LABOUR [50 h] | EE | 1 | C03a | TY1 | C03a | EIT02.2 |
| 2.2-RHCUEE05-1350 |  | Complete QA/QC document | 15d | 2026-09-11 | 2026-09-28 | 2.2-RHCUEE05-1340 | 209d |  | LABOUR [116.75 h] | EE | 1 | C03a | TY1 | C03a | EIT02.2 |

| ID | WBS | Activity | Duration | Start | Finish | Predecessors | Total float | Free float | Calendar | Resources | Disciplines | Main Activity | WBS | Types | EIT WBS | EIT PKG |
| --- | --- | --- | --- | --- | --- | --- | --- | --- | --- | --- | --- | --- | --- | --- | --- | --- |
|  | 12 | **Small Power Equipment Installation** |  | 2026-07-15 | 2026-09-28 |  |  |  |  |  |  |  |  |  |  |  |
| 2.2-RHCUEE05-1360 |  | Install support / bracket | 40d | 2026-07-15 | 2026-08-29 | 2.2-RHCUEE05-1320 SS | 209d | 0d |  | LABOUR [500 h] | EE | 1 | C03a | TY1 | C03a | EIT02.2 |
| 2.2-RHCUEE05-1370 |  | nstall Distribution panel, convenience outlet | 40d | 2026-07-15 | 2026-08-29 | 2.2-RHCUEE05-1360 SS | 209d | 0d |  | LABOUR [1500 h] | EE | 1 | C03a | TY1 | C03a | EIT02.2 |
| 2.2-RHCUEE05-1380 |  | Clear punch | 10d | 2026-08-31 | 2026-09-10 | 2.2-RHCUEE05-1370 | 209d | 0d |  | LABOUR [50 h] | EE | 1 | C03a | TY1 | C03a | EIT02.2 |
| 2.2-RHCUEE05-1390 |  | Complete QA/QC document | 15d | 2026-09-11 | 2026-09-28 | 2.2-RHCUEE05-1380 | 209d |  |  | LABOUR [116.75 h] | EE | 1 | C03a | TY1 | C03a | EIT02.2 |
|  | 2 | **Motor Solo Run** |  | 2026-12-23 | 2027-02-17 |  |  |  |  |  |  |  |  |  |  |  |
| 2.2-RHCUEE00-1130 |  | Motor solo run | 25d | 2026-12-23 | 2027-01-20 | 2.2-RHCUEE02-1500 | 87.9d | 0.1d |  | LABOUR |  |  |  |  | C03a | EIT02.2 |
| 2.2-RHCUEE00-1140 |  | Punch Clear | 10d | 2027-01-21 | 2027-01-30 | 2.2-RHCUEE00-1130 | 112d | 0d | 7 - Day Workweek (No Holidays) | LABOUR |  |  |  |  | C03a | EIT02.2 |
| 2.2-RHCUEE00-1150 |  | Complete QA/QC document | 15d | 2027-01-30 | 2027-02-17 | 2.2-RHCUEE00-1140 | 87.8d |  |  | LABOUR |  |  |  |  | C03a | EIT02.2 |
|  | 3 | **Instrument Works** |  | 2026-05-29 | 2027-05-29 |  |  |  |  |  |  |  |  |  |  |  |
|  | 10 | **Cable Laying concrete Trench** |  | 2026-05-29 | 2026-11-30 |  |  |  |  |  |  |  |  |  |  |  |
|  | 3 | **C03-JTR-221/228/405/222/231/224/225/238/402/403/382/362/376** |  | 2026-05-29 | 2026-09-04 |  |  |  |  |  |  |  |  |  |  |  |
| 2.2-RHCUIN01-1540 |  | Cable Laying | 35d | 2026-05-29 | 2026-07-08 | 2.2-RHCUIN01-1420 | 0d |  |  | LABOUR [350 h] |  |  |  |  | C03c | EIT02.2 |
| 2.2-RHCUIN01-1550 |  | Megger & Continuity test | 5d | 2026-07-09 | 2026-07-14 | 2.2-RHCUIN01-1540 | 229d | 0d |  | LABOUR [50 h] |  |  |  |  | C03c | EIT02.2 |
| 2.2-RHCUIN01-1560 |  | punch Clear | 5d | 2026-07-15 | 2026-07-20 | 2.2-RHCUIN01-1550 | 229d | 0d |  | LABOUR [50 h] |  |  |  |  | C03c | EIT02.2 |
| 2.2-RHCUIN01-1570 |  | Sand Filling Compaction | 10d | 2026-07-21 | 2026-07-31 | 2.2-RHCUIN01-1560 | 229d | 0d |  | LABOUR [100 h] |  |  |  |  |  |  |
| 2.2-RHCUIN01-1580 |  | Complete QA/QC document | 10d | 2026-07-21 | 2026-07-31 | 2.2-RHCUIN01-1570 SS | 229d | 0d |  | LABOUR [100 h] |  |  |  |  | C03c | EIT02.2 |
| 2.2-RHCUIN01-1590 |  | Back Filling | 30d | 2026-08-01 | 2026-09-04 | 2.2-RHCUIN01-1580 | 229d |  |  | LABOUR [300 h] |  |  |  |  | C03c | EIT02.2 |
|  | 1 | **C03-JTR-213/209/367/207/206/214/249/251/250/240/368/248/252/401** |  | 2026-07-09 | 2026-10-15 |  |  |  |  |  |  |  |  |  |  |  |
| 2.2-RHCUIN01-1600 |  | Cable Laying | 35d | 2026-07-09 | 2026-08-18 | 2.2-RHCUIN01-1540 | 154d | 0d |  | LABOUR [350 h] |  |  |  |  | C03c | EIT02.2 |
| 2.2-RHCUIN01-1610 |  | Megger & Continuity test | 5d | 2026-08-19 | 2026-08-24 | 2.2-RHCUIN01-1600 | 194d | 0d |  | LABOUR [50 h] |  |  |  |  | C03c | EIT02.2 |
| 2.2-RHCUIN01-1620 |  | punch Clear | 5d | 2026-08-25 | 2026-08-29 | 2.2-RHCUIN01-1610 | 194d | 0d |  | LABOUR [50 h] |  |  |  |  | C03c | EIT02.2 |
| 2.2-RHCUIN01-1630 |  | Sand Filling Compaction | 10d | 2026-08-31 | 2026-09-10 | 2.2-RHCUIN01-1620 | 194d | 0d |  | LABOUR [100 h] |  |  |  |  |  |  |
| 2.2-RHCUIN01-1640 |  | Complete QA/QC document | 10d | 2026-08-31 | 2026-09-10 | 2.2-RHCUIN01-1630 SS | 194d | 0d |  | LABOUR [100 h] |  |  |  |  | C03c | EIT02.2 |
| 2.2-RHCUIN01-1650 |  | Back Filling | 30d | 2026-09-11 | 2026-10-15 | 2.2-RHCUIN01-1640 | 194d |  |  | LABOUR [300 h] |  |  |  |  | C03c | EIT02.2 |

| ID | WBS | Activity | Duration | Start | Finish | Predecessors | Total float | Free float | Resources | EIT WBS | EIT PKG | Disciplines | Main Activity | WBS | Types |
| --- | --- | --- | --- | --- | --- | --- | --- | --- | --- | --- | --- | --- | --- | --- | --- |
|  | 2 | **C03-JTR-369/372/370/371/374/253/235/234/233/232/245/243/253** |  | 2026-08-19 | 2026-11-30 |  |  |  |  |  |  |  |  |  |  |
| 2.2-RHCUIN01-1660 |  | Cable Laying | 40d | 2026-08-19 | 2026-10-03 | 2.2-RHCUIN01-1600 | 154d | 0d | LABOUR [400 h] | C03c | EIT02.2 |  |  |  |  |
| 2.2-RHCUIN01-1670 |  | Megger & Continuity test | 5d | 2026-10-05 | 2026-10-09 | 2.2-RHCUIN01-1660 | 155d | 0d | LABOUR [50 h] | C03c | EIT02.2 |  |  |  |  |
| 2.2-RHCUIN01-1680 |  | punch Clear | 5d | 2026-10-10 | 2026-10-15 | 2.2-RHCUIN01-1670 | 155d | 0d | LABOUR [50 h] | C03c | EIT02.2 |  |  |  |  |
| 2.2-RHCUIN01-1690 |  | Sand Filling Compaction | 10d | 2026-10-16 | 2026-10-27 | 2.2-RHCUIN01-1680 | 155d | 0d | LABOUR [100 h] |  |  |  |  |  |  |
| 2.2-RHCUIN01-1700 |  | Complete QA/QC document | 10d | 2026-10-16 | 2026-10-27 | 2.2-RHCUIN01-1690 SS | 155d | 0d | LABOUR [100 h] | C03c | EIT02.2 |  |  |  |  |
| 2.2-RHCUIN01-1710 |  | Back Filling | 29d | 2026-10-28 | 2026-11-30 | 2.2-RHCUIN01-1700 | 155d |  | LABOUR [290 h] | C03c | EIT02.2 |  |  |  |  |
|  | 3 | **Instrument Cable Tray/Ladder Installation** |  | 2026-05-29 | 2026-09-04 |  |  |  |  |  |  |  |  |  |  |
| 2.2-RHCUIN03-1200 |  | Install support / bracket | 60d | 2026-05-29 | 2026-08-06 | 2.2-RHCUIN01-1540 SS | 0d |  | LABOUR [1000 h] | C03a | EIT02.2 | EE | 1 | C03a | TY1 |
| 2.2-RHCUIN03-1210 |  | Install Ladder / Tray | 60d | 2026-05-29 | 2026-08-06 | 2.2-RHCUIN03-1220 SS | 0d |  | LABOUR [3000 h] | C03a | EIT02.2 | EE | 1 | C03a | TY1 |
| 2.2-RHCUIN03-1220 |  | Steel Conduits for Cable tray | 60d | 2026-05-29 | 2026-08-06 | 2.2-RHCUIN03-1200 SS | 0d |  | LABOUR [1000 h] | C03a | EIT02.2 | EE | 1 | C03a | TY1 |
| 2.2-RHCUIN03-1230 |  | punch clear | 10d | 2026-08-07 | 2026-08-18 | 2.2-RHCUIN03-1210, 2.2-RHCUIN03-1220 | 0d |  | LABOUR [200 h] | C03a | EIT02.2 | EE | 1 | C03a | TY1 |
| 2.2-RHCUIN03-1240 |  | Complete QA/QC document | 15d | 2026-08-19 | 2026-09-04 | 2.2-RHCUIN03-1230 | 0d |  | LABOUR [392.97 h] | C03a | EIT02.2 | EE | 1 | C03a | TY1 |
|  | 8 | **AG Cable Pull Primary Cable** |  | 2026-09-05 | 2026-12-12 |  |  |  |  |  |  |  |  |  |  |
| 2.2-RHCUIN01-1480 |  | Pull Cable | 60d | 2026-09-05 | 2026-11-13 | 2.2-RHCUIN03-1240 | 0d |  | LABOUR [1826 h] | C03a | EIT02.2 | EE | 1 | C03a | TY1 |
| 2.2-RHCUIN01-1490 |  | Megger & Continuity test | 10d | 2026-11-14 | 2026-11-25 | 2.2-RHCUIN01-1480 | 94d | 0d | LABOUR [1826 h] | C03a | EIT02.2 | EE | 1 | C03a | TY1 |
| 2.2-RHCUIN01-1500 |  | Complete QA/QC document | 15d | 2026-11-26 | 2026-12-12 | 2.2-RHCUIN01-1490 | 94d | 0d | LABOUR [150 h] | C03a | EIT02.2 | EE | 1 | C03a | TY1 |
|  | 9 | **AG Cable Pull Secondary Cable** |  | 2026-09-05 | 2026-12-12 |  |  |  |  |  |  |  |  |  |  |
| 2.2-RHCUIN01-1510 |  | Pull Cable | 60d | 2026-09-05 | 2026-11-13 | 2.2-RHCUIN01-1480 SS | 0d |  | LABOUR [1826 h] | C03a | EIT02.2 | EE | 1 | C03a | TY1 |
| 2.2-RHCUIN01-1520 |  | Megger & Continuity test | 10d | 2026-11-14 | 2026-11-25 | 2.2-RHCUIN01-1510 | 0d |  | LABOUR [1826 h] | C03a | EIT02.2 | EE | 1 | C03a | TY1 |
| 2.2-RHCUIN01-1530 |  | Complete QA/QC document | 15d | 2026-11-26 | 2026-12-12 | 2.2-RHCUIN01-1520 | 0d |  | LABOUR [150 h] | C03a | EIT02.2 | EE | 1 | C03a | TY1 |
|  | 2 | **Instrument Cable Termination / Glanding** |  | 2026-10-05 | 2027-02-26 |  |  |  |  |  |  |  |  |  |  |
|  | 1 | **UG Cable Termination Cable** |  | 2026-10-05 | 2026-12-01 |  |  |  |  |  |  |  |  |  |  |
| 2.2-RHCUIN02-1420 |  | Cable Termination/Glanding | 25d | 2026-10-05 | 2026-11-02 | 2.2-RHCUIN01-1660 | 154d | 0d | LABOUR [3000 h] | C03a | EIT02.2 | EE | 1 | C03a | TY1 |
| 2.2-RHCUIN02-1430 |  | punch clear | 10d | 2026-11-03 | 2026-11-13 | 2.2-RHCUIN02-1420 | 154d | 0d | LABOUR [500 h] | C03a | EIT02.2 | EE | 1 | C03a | TY1 |
| 2.2-RHCUIN02-1440 |  | Complete QA/QC document | 15d | 2026-11-14 | 2026-12-01 | 2.2-RHCUIN02-1430 | 154d |  | LABOUR [907.72 h] | C03a | EIT02.2 | EE | 1 | C03a | TY1 |

| ID | WBS | Activity | Duration | Start | Finish | Predecessors | Total float | Free float | Resources | Disciplines | Main Activity | WBS | Types | EIT WBS | EIT PKG |
| --- | --- | --- | --- | --- | --- | --- | --- | --- | --- | --- | --- | --- | --- | --- | --- |
|  | 8 | **Cable Termination Primary Cable** |  | 2026-12-14 | 2027-02-09 |  |  |  |  |  |  |  |  |  |  |
| 2.2-RHCUIN02-1240 |  | Cable Termination/Glanding | 25d | 2026-12-14 | 2027-01-11 | 2.2-RHCUIN01-1500 | 94d | 0d | LABOUR [3000 h] | EE | 1 | C03a | TY1 | C03a | EIT02.2 |
| 2.2-RHCUIN02-1250 |  | punch clear | 10d | 2027-01-12 | 2027-01-22 | 2.2-RHCUIN02-1240 | 94d | 0d | LABOUR [500 h] | EE | 1 | C03a | TY1 | C03a | EIT02.2 |
| 2.2-RHCUIN02-1260 |  | Complete QA/QC document | 15d | 2027-01-23 | 2027-02-09 | 2.2-RHCUIN02-1250 | 94d |  | LABOUR [907.72 h] | EE | 1 | C03a | TY1 | C03a | EIT02.2 |
|  | 9 | **Cable Termination Secondary Cable** |  | 2026-12-14 | 2027-02-26 |  |  |  |  |  |  |  |  |  |  |
| 2.2-RHCUIN02-1270 |  | Cable Termination/Glanding | 35d | 2026-12-14 | 2027-01-22 | 2.2-RHCUIN01-1530 | 0d |  | LABOUR [3000 h] | EE | 1 | C03a | TY1 | C03a | EIT02.2 |
| 2.2-RHCUIN02-1280 |  | punch clear | 15d | 2027-01-23 | 2027-02-09 | 2.2-RHCUIN02-1270 | 0d |  | LABOUR [500 h] | EE | 1 | C03a | TY1 | C03a | EIT02.2 |
| 2.2-RHCUIN02-1290 |  | Complete QA/QC document | 15d | 2027-02-10 | 2027-02-26 | 2.2-RHCUIN02-1280 | 0d |  | LABOUR [907.72 h] | EE | 1 | C03a | TY1 | C03a | EIT02.2 |
|  | 4 | **Instrument Calibration** |  | 2026-07-09 | 2026-08-24 |  |  |  |  |  |  |  |  |  |  |
| 2.2-RHCUIN05-1040 |  | Calibration of Gauges | 40d | 2026-07-09 | 2026-08-24 | 2.2-RHCUIN01-1540 | 187d | 0d | LABOUR [3000 h] | EE | 1 | C03a | TY1 | C03c | EIT02.2 |
| 2.2-RHCUIN05-1090 |  | Calibration of Transmitters/Switches | 4d | 2026-07-09 | 2026-07-13 | 2.2-RHCUIN05-1040 SS | 187d | 0d | LABOUR [4396.55 h] |  |  |  |  |  |  |
|  | 1 | **Gauges** |  | 2026-07-09 | 2026-08-24 |  |  |  |  |  |  |  |  |  |  |
| 2.2-RHCUIN04-1605 |  | D.P Pressure Gauge Installation | 10d | 2026-07-09 | 2026-07-20 | 2.2-RHCUIN05-1040 SS | 239d | 0d | LABOUR [750 h] |  |  |  |  |  |  |
| 2.2-RHCUIN04-1610 |  | Pressure Gauge Installation | 10d | 2026-07-21 | 2026-07-31 | 2.2-RHCUIN04-1605 | 239d | 0d | LABOUR [750 h] | EE | 1 | C03a | TY1 | C03c | EIT02.2 |
| 2.2-RHCUIN04-1620 |  | Level Gauge Installation | 10d | 2026-08-01 | 2026-08-12 | 2.2-RHCUIN04-1610 | 239d | 0d | LABOUR [1000 h] | EE | 1 | C03a | TY1 | C03c | EIT02.2 |
| 2.2-RHCUIN04-1630 |  | Clear punch | 5d | 2026-08-13 | 2026-08-18 | 2.2-RHCUIN04-1620 | 239d | 0d | LABOUR [200 h] | EE | 1 | C03a | TY1 | C03c | EIT02.2 |
| 2.2-RHCUIN04-1640 |  | Complete QA/QC document | 5d | 2026-08-19 | 2026-08-24 | 2.2-RHCUIN04-1630 | 239d | 20d | LABOUR [296.58 h] | EE | 1 | C03a | TY1 | C03c | EIT02.2 |
|  | 6 | **Transmitters/Switches** |  | 2026-07-09 | 2026-09-16 |  |  |  |  |  |  |  |  |  |  |
| 2.2-RHCUIN04-1650 |  | Install support / bracket | 10d | 2026-07-09 | 2026-07-20 | 2.2-RHCUIN05-1090 SS | 187d | 0d | LABOUR [300 h] | EE | 1 | C03a | TY1 | C03c | EIT02.2 |
| 2.2-RHCUIN04-1660 |  | Pressure transmitters Installation | 10d | 2026-07-21 | 2026-07-31 | 2.2-RHCUIN04-1650 | 187d | 0d | LABOUR [500 h] | EE | 1 | C03a | TY1 | C03c | EIT02.2 |
| 2.2-RHCUIN04-1670 |  | D.P. Transmitters - HART Installation | 10d | 2026-08-01 | 2026-08-12 | 2.2-RHCUIN04-1660 | 187d | 0d | LABOUR [500 h] | EE | 1 | C03a | TY1 | C03c | EIT02.2 |
| 2.2-RHCUIN04-1680 |  | Temperature Transmitters Installation | 10d | 2026-08-13 | 2026-08-24 | 2.2-RHCUIN04-1670 | 219d | 0d | LABOUR [500 h] | EE | 1 | C03a | TY1 | C03c | EIT02.2 |
| 2.2-RHCUIN04-1730 |  | Level Switch Installation | 10d | 2026-08-25 | 2026-09-04 | 2.2-RHCUIN04-1680 | 219d | 0d | LABOUR [500 h] |  |  |  |  |  |  |
| 2.2-RHCUIN04-1740 |  | Clear punch | 5d | 2026-09-05 | 2026-09-10 | 2.2-RHCUIN04-1730 | 219d | 0d | LABOUR [200 h] |  |  |  |  |  |  |
| 2.2-RHCUIN04-1750 |  | Complete QA/QC document | 5d | 2026-09-11 | 2026-09-16 | 2.2-RHCUIN04-1740, 2.2-RHCUIN04-1640 FF | 219d |  | LABOUR [496.58 h] |  |  |  |  |  |  |

| ID | WBS | Activity | Duration | Start | Finish | Predecessors | Total float | Free float | Calendar | Resources | Disciplines | Main Activity | WBS | Types | EIT WBS | EIT PKG |
| --- | --- | --- | --- | --- | --- | --- | --- | --- | --- | --- | --- | --- | --- | --- | --- | --- |
|  | 11 | **Instrument Junction Box Installation** |  | 2026-07-21 | 2026-08-17 |  |  |  |  |  |  |  |  |  |  |  |
| 2.2-RHCUIN04-1690 |  | Install support / bracket | 10d | 2026-07-21 | 2026-07-31 | 2.2-RHCUIN04-1650 | 245d | 0d |  | LABOUR [1000 h] | EE | 1 | C03a | TY1 | C03c | EIT02.2 |
| 2.2-RHCUIN04-1700 |  | Instrument Junction Box Installation | 10d | 2026-08-01 | 2026-08-12 | 2.2-RHCUIN04-1690 | 245d | 0d |  | LABOUR [1500 h] | EE | 1 | C03a | TY1 | C03c | EIT02.2 |
| 2.2-RHCUIN04-1710 |  | Clear punch | 2d | 2026-08-13 | 2026-08-14 | 2.2-RHCUIN04-1700 | 245d | 0d |  | LABOUR [300 h] | EE | 1 | C03a | TY1 | C03c | EIT02.2 |
| 2.2-RHCUIN04-1720 |  | Complete QA/QC document | 2d | 2026-08-15 | 2026-08-17 | 2.2-RHCUIN04-1710 | 245d |  |  | LABOUR [196.58 h] | EE | 1 | C03a | TY1 | C03c | EIT02.2 |
|  | 5 | **Tubing** |  | 2026-08-13 | 2026-10-23 |  |  |  |  |  |  |  |  |  |  |  |
| 2.2-RHCUIN07-1160 |  | Instrument Hook up Tubing Installation | 20d | 2026-08-13 | 2026-09-04 | 2.2-RHCUIN04-1660, 2.2-RHCUIN04-1670 | 187d | 0d |  | LABOUR [100 h] |  |  |  |  | C03c | EIT02.2 |
| 2.2-RHCUIN07-1170 |  | Leak Test | 20d | 2026-09-05 | 2026-09-28 | 2.2-RHCUIN07-1160 | 187d | 0d |  | LABOUR [30 h] |  |  |  |  | C03c | EIT02.2 |
| 2.2-RHCUIN07-1180 |  | Clear Punch | 10d | 2026-09-29 | 2026-10-09 | 2.2-RHCUIN07-1170 | 187d | 0.1d |  | LABOUR [20 h] |  |  |  |  | C03c | EIT02.2 |
| 2.2-RHCUIN07-1190 |  | Complete QA/QC document | 15d | 2026-10-10 | 2026-10-23 | 2.2-RHCUIN07-1180 | 237.62d |  | 7 - Day Workweek (No Holidays) | LABOUR [29.2 h] |  |  |  |  | C03c | EIT02.2 |
|  | 7 | **Instrument Loop Check** |  | 2027-02-27 | 2027-05-29 |  |  |  |  |  |  |  |  |  |  |  |
| 2.2-RHCUIN00-1120 |  | Instrument Loop check | 50d | 2027-02-27 | 2027-04-26 | 2.2-RHCUIN02-1290 | 0d |  |  | LABOUR [3000 h] |  |  |  |  | C03c | EIT02.2 |
| 2.2-RHCUIN00-1130 |  | Clear Punch | 10d | 2027-04-27 | 2027-05-07 | 2.2-RHCUIN00-1120 | 0d |  |  | LABOUR [1000 h] |  |  |  |  | C03c | EIT02.2 |
| 2.2-RHCUIN00-1140 |  | Complete QA/QC document | 19d | 2027-05-08 | 2027-05-29 | 2.2-RHCUIN00-1130 | 0d |  |  | LABOUR [1281.31 h] |  |  |  |  | C03c | EIT02.2 |
|  | 5 | **Telecommunication** |  | 2026-07-15 | 2027-01-22 |  |  |  |  |  |  |  |  |  |  |  |
|  | 3 | **Telecom** |  | 2026-07-15 | 2027-01-22 |  |  |  |  |  |  |  |  |  |  |  |
|  | 3 | **Telecom Cable Tray/Ladder Installation** |  | 2026-07-15 | 2026-10-03 |  |  |  |  |  |  |  |  |  |  |  |
| 2.2-RHCUTE03-1200 |  | Install support / bracket | 50d | 2026-07-15 | 2026-09-10 | 2.2-RHCUEE03-1200 | 109d | 0d |  | LABOUR [3 h] | EE | 1 | C03a | TY1 | C03a | EIT02.2 |
| 2.2-RHCUTE03-1210 |  | Install Ladder / Tray | 50d | 2026-07-15 | 2026-09-10 | 2.2-RHCUTE03-1200 SS | 109d | 0d |  | LABOUR [77 h] | EE | 1 | C03a | TY1 | C03a | EIT02.2 |
| 2.2-RHCUTE03-1220 |  | Install Conduits | 50d | 2026-07-15 | 2026-09-10 | 2.2-RHCUTE03-1210 SS | 109d | 0d |  | LABOUR [3 h] | EE | 1 | C03a | TY1 | C03a | EIT02.2 |
| 2.2-RHCUTE03-1230 |  | Clear punch | 5d | 2026-09-11 | 2026-09-16 | 2.2-RHCUTE03-1220, 2.2-RHCUTE03-1210 | 109d | 0d |  | LABOUR [75 h] | EE | 1 | C03a | TY1 | C03a | EIT02.2 |
| 2.2-RHCUTE03-1240 |  | Complete QA/QC document | 15d | 2026-09-17 | 2026-10-03 | 2.2-RHCUTE03-1230 | 109d | 0d |  | LABOUR [75 h] | EE | 1 | C03a | TY1 | C03a | EIT02.2 |
|  | 1 | **AG Telecommunication Cable Installation** |  | 2026-10-05 | 2026-12-07 |  |  |  |  |  |  |  |  |  |  |  |
| 2.2-RHCUTE01-1120 |  | Above Ground Pull Cable | 30d | 2026-10-05 | 2026-11-07 | 2.2-RHCUTE03-1240 | 109d | 0d |  | LABOUR [1000 h] | EE | 1 | C03a | TY1 | C03a | EIT02.2 |
| 2.2-RHCUTE01-1130 |  | Megger & Continuity test | 10d | 2026-11-09 | 2026-11-19 | 2.2-RHCUTE01-1120 | 109d | 0d |  | LABOUR [200 h] | EE | 1 | C03a | TY1 | C03a | EIT02.2 |
| 2.2-RHCUTE01-1140 |  | Complete QA/QC document | 15d | 2026-11-20 | 2026-12-07 | 2.2-RHCUTE01-1130 | 109d | 0d |  | LABOUR [100 h] | EE | 1 | C03a | TY1 | C03a | EIT02.2 |

| ID | WBS | Activity | Duration | Start | Finish | Predecessors | Total float | Free float | Constraint | Resources | Disciplines | Main Activity | WBS | Types | EIT WBS | EIT PKG |
| --- | --- | --- | --- | --- | --- | --- | --- | --- | --- | --- | --- | --- | --- | --- | --- | --- |
|  | 4 | **Telecommunication Termination / Glanding** |  | 2026-12-08 | 2027-01-22 |  |  |  |  |  |  |  |  |  |  |  |
| 2.2-RHCUTE02-1120 |  | Cable Termination/Glanding | 20d | 2026-12-08 | 2026-12-30 | 2.2-RHCUTE01-1140, 2.2-RHCUTE01-1140 FF | 109d | 0d |  | LABOUR [200 h] | EE | 1 | C03a | TY1 | C03a | EIT02.2 |
| 2.2-RHCUTE02-1130 |  | Clear punch | 10d | 2026-12-31 | 2027-01-11 | 2.2-RHCUTE02-1120 | 109d | 0d |  | LABOUR [100 h] | EE | 1 | C03a | TY1 | C03a | EIT02.2 |
| 2.2-RHCUTE02-1140 |  | Complete QA/QC document | 10d | 2027-01-12 | 2027-01-22 | 2.2-RHCUTE02-1130 | 109d |  |  | LABOUR [233.99 h] | EE | 1 | C03a | TY1 | C03a | EIT02.2 |
|  | 2 | **Telecommunication Equipment Installation** |  | 2026-10-05 | 2026-12-07 |  |  |  |  |  |  |  |  |  |  |  |
| 2.2-RHCUTE04-1120 |  | Telecom Equpiment Installation | 30d | 2026-10-05 | 2026-11-07 | 2.2-RHCUTE03-1240 | 149d | 0d |  | LABOUR [120 h] | EE | 1 | C03a | TY1 | C03a | EIT02.2 |
| 2.2-RHCUTE04-1130 |  | Clear Punch | 10d | 2026-11-09 | 2026-11-19 | 2.2-RHCUTE04-1120 | 149d | 0d |  | LABOUR [30 h] | EE | 1 | C03a | TY1 | C03a | EIT02.2 |
| 2.2-RHCUTE04-1140 |  | Complete QA/QC document | 15d | 2026-11-20 | 2026-12-07 | 2.2-RHCUTE04-1130 | 149d |  |  | LABOUR [40.57 h] | EE | 1 | C03a | TY1 | C03a | EIT02.2 |
|  | 7 | **WBS : E06** |  | 2026-04-01 | 2026-05-27 |  |  |  |  |  |  |  |  |  |  |  |
|  | 4 | **Substation SS-077** |  | 2026-04-01 | 2026-05-27 |  |  |  |  |  |  |  |  |  |  |  |
|  | 1 | **Electrical** |  | 2026-04-01 | 2026-05-27 |  |  |  |  |  |  |  |  |  |  |  |
|  | 2 | **Electrical Equpiment Inspection Testing** |  | 2026-04-01 | 2026-05-27 |  |  |  |  |  |  |  |  |  |  |  |
|  | 5 | **Lighting Panel** |  | 2026-04-01 | 2026-04-11 |  |  |  |  |  |  |  |  |  |  |  |
|  | 9 | **S77E21-1 - Normal Lighting Distribution Board** |  | 2026-04-01 | 2026-04-11 |  |  |  |  |  |  |  |  |  |  |  |
| 2.2-SS077EE04-1000 |  | Inspection and Testing, Per-Commissionning | 5d | 2026-04-01 | 2026-04-06 |  | 314d | 0d | start on or after 2026-04-01 | LABOUR [3 h] | EE | 1 | C03a | TY1 | E06 | EIT02.1 |
| 2.2-SS077EE04-1010 |  | Clear punch | 2d | 2026-04-07 | 2026-04-08 | 2.2-SS077EE04-1000 | 315d | 0d |  | LABOUR [75 h] | EE | 1 | C03a | TY1 | E06 | EIT02.1 |
| 2.2-SS077EE04-1020 |  | Complete QA/QC document | 3d | 2026-04-09 | 2026-04-11 | 2.2-SS077EE04-1010 | 315d | 0d |  | LABOUR [75 h] | EE | 1 | C03a | TY1 | E06 | EIT02.1 |
|  | 1 | **HV/LV Switchgear** |  | 2026-04-09 | 2026-04-20 |  |  |  |  |  |  |  |  |  |  |  |
|  | 1 | **S77B2 11kV Switchgear Panel** |  | 2026-04-09 | 2026-04-20 |  |  |  |  |  |  |  |  |  |  |  |
| 2.2-SS077EE04-1030 |  | Inspection and Testing, Per-Commissionning | 5d | 2026-04-09 | 2026-04-14 | 2.2-SS077EE04-1020 SS | 315d | 0d |  | LABOUR [3 h] | EE | 1 | C03a | TY1 | E06 | EIT02.1 |
| 2.2-SS077EE04-1040 |  | Clear punch | 2d | 2026-04-15 | 2026-04-16 | 2.2-SS077EE04-1030 | 347d | 0d |  | LABOUR [75 h] | EE | 1 | C03a | TY1 | E06 | EIT02.1 |
| 2.2-SS077EE04-1050 |  | Complete QA/QC document | 3d | 2026-04-17 | 2026-04-20 | 2.2-SS077EE04-1040 | 347d |  |  | LABOUR [75 h] | EE | 1 | C03a | TY1 | E06 | EIT02.1 |
|  | 7 | **S77D2 3.3kV Switchgear Panel** |  | 2026-04-09 | 2026-04-20 |  |  |  |  |  |  |  |  |  |  |  |
| 2.2-SS077EE04-1060 |  | Inspection and Testing, Per-Commissionning | 5d | 2026-04-09 | 2026-04-14 | 2.2-SS077EE04-1030 SS | 315d | 0d |  | LABOUR [3 h] | EE | 1 | C03a | TY1 | E06 | EIT02.1 |
| 2.2-SS077EE04-1070 |  | Clear punch | 2d | 2026-04-15 | 2026-04-16 | 2.2-SS077EE04-1060 | 347d | 0d |  | LABOUR [75 h] | EE | 1 | C03a | TY1 | E06 | EIT02.1 |
| 2.2-SS077EE04-1080 |  | Complete QA/QC document | 3d | 2026-04-17 | 2026-04-20 | 2.2-SS077EE04-1070 | 347d |  |  | LABOUR [75 h] | EE | 1 | C03a | TY1 | E06 | EIT02.1 |

| ID | WBS | Activity | Duration | Start | Finish | Predecessors | Total float | Free float | Resources | Disciplines | Main Activity | WBS | Types | EIT WBS | EIT PKG |
| --- | --- | --- | --- | --- | --- | --- | --- | --- | --- | --- | --- | --- | --- | --- | --- |
|  | 11 | **S77E3 415V Switchgear Panel** |  | 2026-04-09 | 2026-04-20 |  |  |  |  |  |  |  |  |  |  |
| 2.2-SS077EE04-1090 |  | Inspection and Testing, Per-Commissionning | 5d | 2026-04-09 | 2026-04-14 | 2.2-SS077EE04-1060 SS | 315d | 0d | LABOUR [3 h] | EE | 1 | C03a | TY1 | E06 | EIT02.1 |
| 2.2-SS077EE04-1100 |  | Clear punch | 2d | 2026-04-15 | 2026-04-16 | 2.2-SS077EE04-1090 | 347d | 0d | LABOUR [75 h] | EE | 1 | C03a | TY1 | E06 | EIT02.1 |
| 2.2-SS077EE04-1110 |  | Complete QA/QC document | 3d | 2026-04-17 | 2026-04-20 | 2.2-SS077EE04-1100 | 347d |  | LABOUR [75 h] | EE | 1 | C03a | TY1 | E06 | EIT02.1 |
|  | 8 | **S77E4 415V Switchgear Panel** |  | 2026-04-09 | 2026-04-20 |  |  |  |  |  |  |  |  |  |  |
| 2.2-SS077EE04-1120 |  | Inspection and Testing, Per-Commissionning | 5d | 2026-04-09 | 2026-04-14 | 2.2-SS077EE04-1090 SS | 315d | 0d | LABOUR [3 h] | EE | 1 | C03a | TY1 | E06 | EIT02.1 |
| 2.2-SS077EE04-1130 |  | Clear punch | 2d | 2026-04-15 | 2026-04-16 | 2.2-SS077EE04-1120 | 347d | 0d | LABOUR [75 h] | EE | 1 | C03a | TY1 | E06 | EIT02.1 |
| 2.2-SS077EE04-1140 |  | Complete QA/QC document | 3d | 2026-04-17 | 2026-04-20 | 2.2-SS077EE04-1130 | 347d |  | LABOUR [75 h] | EE | 1 | C03a | TY1 | E06 | EIT02.1 |
|  | 3 | **S77E7 415V Switchgear Panel** |  | 2026-04-09 | 2026-04-20 |  |  |  |  |  |  |  |  |  |  |
| 2.2-SS077EE04-1150 |  | Inspection and Testing, Per-Commissionning | 5d | 2026-04-09 | 2026-04-14 | 2.2-SS077EE04-1120 SS | 315d | 0d | LABOUR [3 h] | EE | 1 | C03a | TY1 | E06 | EIT02.1 |
| 2.2-SS077EE04-1160 |  | Clear punch | 2d | 2026-04-15 | 2026-04-16 | 2.2-SS077EE04-1150 | 347d | 0d | LABOUR [75 h] | EE | 1 | C03a | TY1 | E06 | EIT02.1 |
| 2.2-SS077EE04-1170 |  | Complete QA/QC document | 3d | 2026-04-17 | 2026-04-20 | 2.2-SS077EE04-1160 | 347d |  | LABOUR [75 h] | EE | 1 | C03a | TY1 | E06 | EIT02.1 |
|  | 4 | **S77E21 415V Switchgear Panel** |  | 2026-04-09 | 2026-04-20 |  |  |  |  |  |  |  |  |  |  |
| 2.2-SS077EE04-1180 |  | Inspection and Testing, Per-Commissionning | 5d | 2026-04-09 | 2026-04-14 | 2.2-SS077EE04-1150 SS | 315d | 0d | LABOUR [3 h] | EE | 1 | C03a | TY1 | E06 | EIT02.1 |
| 2.2-SS077EE04-1190 |  | Clear punch | 2d | 2026-04-15 | 2026-04-16 | 2.2-SS077EE04-1180 | 347d | 0d | LABOUR [75 h] | EE | 1 | C03a | TY1 | E06 | EIT02.1 |
| 2.2-SS077EE04-1200 |  | Complete QA/QC document | 3d | 2026-04-17 | 2026-04-20 | 2.2-SS077EE04-1190 | 347d |  | LABOUR [75 h] | EE | 1 | C03a | TY1 | E06 | EIT02.1 |
|  | 12 | **S77B1-A8 PM-14702D (3000 kW) - Remain full function test** |  | 2026-04-09 | 2026-04-20 |  |  |  |  |  |  |  |  |  |  |
| 2.2-SS077EE04-1210 |  | Inspection and Testing, Per-Commissionning | 5d | 2026-04-09 | 2026-04-14 | 2.2-SS077EE04-1180 SS | 315d | 0d | LABOUR [3 h] | EE | 1 | C03a | TY1 | E06 | EIT02.1 |
| 2.2-SS077EE04-1220 |  | Clear punch | 2d | 2026-04-15 | 2026-04-16 | 2.2-SS077EE04-1210 | 347d | 0d | LABOUR [75 h] | EE | 1 | C03a | TY1 | E06 | EIT02.1 |
| 2.2-SS077EE04-1230 |  | Complete QA/QC document | 3d | 2026-04-17 | 2026-04-20 | 2.2-SS077EE04-1220 | 347d |  | LABOUR [75 h] | EE | 1 | C03a | TY1 | E06 | EIT02.1 |
|  | 9 | **S77D1-B7 PM-10719B (715kW) - Remain full function test** |  | 2026-04-09 | 2026-04-20 |  |  |  |  |  |  |  |  |  |  |
| 2.2-SS077EE04-1240 |  | Inspection and Testing, Per-Commissionning | 5d | 2026-04-09 | 2026-04-14 | 2.2-SS077EE04-1210 SS | 315d | 0d | LABOUR [3 h] | EE | 1 | C03a | TY1 | E06 | EIT02.1 |
| 2.2-SS077EE04-1250 |  | Clear punch | 2d | 2026-04-15 | 2026-04-16 | 2.2-SS077EE04-1240 | 315d | 0d | LABOUR [75 h] | EE | 1 | C03a | TY1 | E06 | EIT02.1 |
| 2.2-SS077EE04-1260 |  | Complete QA/QC document | 3d | 2026-04-17 | 2026-04-20 | 2.2-SS077EE04-1250 | 315d | 0d | LABOUR [75 h] | EE | 1 | C03a | TY1 | E06 | EIT02.1 |

| ID | WBS | Activity | Duration | Start | Finish | Predecessors | Total float | Free float | Resources | Disciplines | Main Activity | WBS | Types | EIT WBS | EIT PKG |
| --- | --- | --- | --- | --- | --- | --- | --- | --- | --- | --- | --- | --- | --- | --- | --- |
|  | 16 | **Variable Speed Drive** |  | 2026-04-17 | 2026-05-27 |  |  |  |  |  |  |  |  |  |  |
|  | 17 | **CV77E3** |  | 2026-04-17 | 2026-04-28 |  |  |  |  |  |  |  |  |  |  |
| 2.2-SS077EE04-1270 |  | Inspection and Testing, Per-Commissionning | 5d | 2026-04-17 | 2026-04-22 | 2.2-SS077EE04-1260 SS | 315d | 0d | LABOUR [3 h] | EE | 1 | C03a | TY1 | E06 | EIT02.1 |
| 2.2-SS077EE04-1280 |  | Clear punch | 2d | 2026-04-23 | 2026-04-24 | 2.2-SS077EE04-1270 | 340d | 0d | LABOUR [75 h] | EE | 1 | C03a | TY1 | E06 | EIT02.1 |
| 2.2-SS077EE04-1290 |  | Complete QA/QC document | 3d | 2026-04-25 | 2026-04-28 | 2.2-SS077EE04-1280 | 340d |  | LABOUR [75 h] | EE | 1 | C03a | TY1 | E06 | EIT02.1 |
|  | 6 | **CV77E4** |  | 2026-04-17 | 2026-04-28 |  |  |  |  |  |  |  |  |  |  |
| 2.2-SS077EE04-1300 |  | Inspection and Testing, Per-Commissionning | 5d | 2026-04-17 | 2026-04-22 | 2.2-SS077EE04-1270 SS | 315d | 0d | LABOUR [3 h] | EE | 1 | C03a | TY1 | E06 | EIT02.1 |
| 2.2-SS077EE04-1310 |  | Clear punch | 2d | 2026-04-23 | 2026-04-24 | 2.2-SS077EE04-1300 | 340d | 0d | LABOUR [75 h] | EE | 1 | C03a | TY1 | E06 | EIT02.1 |
| 2.2-SS077EE04-1320 |  | Complete QA/QC document | 3d | 2026-04-25 | 2026-04-28 | 2.2-SS077EE04-1310 | 340d |  | LABOUR [75 h] | EE | 1 | C03a | TY1 | E06 | EIT02.1 |
|  | 1 | **CV77E5** |  | 2026-04-17 | 2026-04-28 |  |  |  |  |  |  |  |  |  |  |
| 2.2-SS077EE04-1330 |  | Inspection and Testing, Per-Commissionning | 5d | 2026-04-17 | 2026-04-22 | 2.2-SS077EE04-1300 SS | 315d | 0d | LABOUR [3 h] | EE | 1 | C03a | TY1 | E06 | EIT02.1 |
| 2.2-SS077EE04-1340 |  | Clear punch | 2d | 2026-04-23 | 2026-04-24 | 2.2-SS077EE04-1330 | 340d | 0d | LABOUR [75 h] | EE | 1 | C03a | TY1 | E06 | EIT02.1 |
| 2.2-SS077EE04-1350 |  | Complete QA/QC document | 3d | 2026-04-25 | 2026-04-28 | 2.2-SS077EE04-1340 | 340d |  | LABOUR [75 h] | EE | 1 | C03a | TY1 | E06 | EIT02.1 |
|  | 2 | **CV77E6** |  | 2026-04-17 | 2026-04-28 |  |  |  |  |  |  |  |  |  |  |
| 2.2-SS077EE04-1360 |  | Inspection and Testing, Per-Commissionning | 5d | 2026-04-17 | 2026-04-22 | 2.2-SS077EE04-1330 SS | 315d | 0d | LABOUR [3 h] | EE | 1 | C03a | TY1 | E06 | EIT02.1 |
| 2.2-SS077EE04-1370 |  | Clear punch | 2d | 2026-04-23 | 2026-04-24 | 2.2-SS077EE04-1360 | 340d | 0d | LABOUR [75 h] | EE | 1 | C03a | TY1 | E06 | EIT02.1 |
| 2.2-SS077EE04-1380 |  | Complete QA/QC document | 3d | 2026-04-25 | 2026-04-28 | 2.2-SS077EE04-1370 | 340d |  | LABOUR [75 h] | EE | 1 | C03a | TY1 | E06 | EIT02.1 |
|  | 3 | **CV77E7** |  | 2026-04-17 | 2026-04-28 |  |  |  |  |  |  |  |  |  |  |
| 2.2-SS077EE04-1390 |  | Inspection and Testing, Per-Commissionning | 5d | 2026-04-17 | 2026-04-22 | 2.2-SS077EE04-1360 SS | 315d | 0d | LABOUR [3 h] | EE | 1 | C03a | TY1 | E06 | EIT02.1 |
| 2.2-SS077EE04-1400 |  | Clear punch | 2d | 2026-04-23 | 2026-04-24 | 2.2-SS077EE04-1390 | 340d | 0d | LABOUR [75 h] | EE | 1 | C03a | TY1 | E06 | EIT02.1 |
| 2.2-SS077EE04-1410 |  | Complete QA/QC document | 3d | 2026-04-25 | 2026-04-28 | 2.2-SS077EE04-1400 | 340d |  | LABOUR [75 h] | EE | 1 | C03a | TY1 | E06 | EIT02.1 |
|  | 4 | **CV77E8** |  | 2026-04-17 | 2026-04-28 |  |  |  |  |  |  |  |  |  |  |
| 2.2-SS077EE04-1420 |  | Inspection and Testing, Per-Commissionning | 5d | 2026-04-17 | 2026-04-22 | 2.2-SS077EE04-1390 SS | 315d | 0d | LABOUR [3 h] | EE | 1 | C03a | TY1 | E06 | EIT02.1 |
| 2.2-SS077EE04-1430 |  | Clear punch | 2d | 2026-04-23 | 2026-04-24 | 2.2-SS077EE04-1420 | 340d | 0d | LABOUR [75 h] | EE | 1 | C03a | TY1 | E06 | EIT02.1 |
| 2.2-SS077EE04-1440 |  | Complete QA/QC document | 3d | 2026-04-25 | 2026-04-28 | 2.2-SS077EE04-1430 | 340d |  | LABOUR [75 h] | EE | 1 | C03a | TY1 | E06 | EIT02.1 |

| ID | WBS | Activity | Duration | Start | Finish | Predecessors | Total float | Free float | Resources | Disciplines | Main Activity | WBS | Types | EIT WBS | EIT PKG |
| --- | --- | --- | --- | --- | --- | --- | --- | --- | --- | --- | --- | --- | --- | --- | --- |
|  | 5 | **CV77E9** |  | 2026-04-17 | 2026-04-28 |  |  |  |  |  |  |  |  |  |  |
| 2.2-SS077EE04-1450 |  | Inspection and Testing, Per-Commissionning | 5d | 2026-04-17 | 2026-04-22 | 2.2-SS077EE04-1420 SS | 315d | 0d | LABOUR [3 h] | EE | 1 | C03a | TY1 | E06 | EIT02.1 |
| 2.2-SS077EE04-1460 |  | Clear punch | 2d | 2026-04-23 | 2026-04-24 | 2.2-SS077EE04-1450 | 340d | 0d | LABOUR [75 h] | EE | 1 | C03a | TY1 | E06 | EIT02.1 |
| 2.2-SS077EE04-1470 |  | Complete QA/QC document | 3d | 2026-04-25 | 2026-04-28 | 2.2-SS077EE04-1460 | 340d |  | LABOUR [75 h] | EE | 1 | C03a | TY1 | E06 | EIT02.1 |
|  | 7 | **CV77E10** |  | 2026-04-23 | 2026-05-04 |  |  |  |  |  |  |  |  |  |  |
| 2.2-SS077EE04-1480 |  | Inspection and Testing, Per-Commissionning | 5d | 2026-04-23 | 2026-04-28 | 2.2-SS077EE04-1450 | 315d | 0d | LABOUR [3 h] | EE | 1 | C03a | TY1 | E06 | EIT02.1 |
| 2.2-SS077EE04-1490 |  | Clear punch | 2d | 2026-04-29 | 2026-04-30 | 2.2-SS077EE04-1480 | 335d | 0d | LABOUR [75 h] | EE | 1 | C03a | TY1 | E06 | EIT02.1 |
| 2.2-SS077EE04-1500 |  | Complete QA/QC document | 3d | 2026-05-01 | 2026-05-04 | 2.2-SS077EE04-1490 | 335d |  | LABOUR [75 h] | EE | 1 | C03a | TY1 | E06 | EIT02.1 |
|  | 8 | **CV77E11** |  | 2026-04-23 | 2026-05-04 |  |  |  |  |  |  |  |  |  |  |
| 2.2-SS077EE04-1510 |  | Inspection and Testing, Per-Commissionning | 5d | 2026-04-23 | 2026-04-28 | 2.2-SS077EE04-1480 SS | 315d | 0d | LABOUR [3 h] | EE | 1 | C03a | TY1 | E06 | EIT02.1 |
| 2.2-SS077EE04-1520 |  | Clear punch | 2d | 2026-04-29 | 2026-04-30 | 2.2-SS077EE04-1510 | 335d | 0d | LABOUR [75 h] | EE | 1 | C03a | TY1 | E06 | EIT02.1 |
| 2.2-SS077EE04-1530 |  | Complete QA/QC document | 3d | 2026-05-01 | 2026-05-04 | 2.2-SS077EE04-1520 | 335d |  | LABOUR [75 h] | EE | 1 | C03a | TY1 | E06 | EIT02.1 |
|  | 9 | **CV77E12** |  | 2026-04-23 | 2026-05-04 |  |  |  |  |  |  |  |  |  |  |
| 2.2-SS077EE04-1540 |  | Inspection and Testing, Per-Commissionning | 5d | 2026-04-23 | 2026-04-28 | 2.2-SS077EE04-1510 SS | 315d | 0d | LABOUR [3 h] | EE | 1 | C03a | TY1 | E06 | EIT02.1 |
| 2.2-SS077EE04-1550 |  | Clear punch | 2d | 2026-04-29 | 2026-04-30 | 2.2-SS077EE04-1540 | 335d | 0d | LABOUR [75 h] | EE | 1 | C03a | TY1 | E06 | EIT02.1 |
| 2.2-SS077EE04-1560 |  | Complete QA/QC document | 3d | 2026-05-01 | 2026-05-04 | 2.2-SS077EE04-1550 | 335d |  | LABOUR [75 h] | EE | 1 | C03a | TY1 | E06 | EIT02.1 |
|  | 10 | **CV77E13** |  | 2026-04-23 | 2026-05-04 |  |  |  |  |  |  |  |  |  |  |
| 2.2-SS077EE04-1570 |  | Inspection and Testing, Per-Commissionning | 5d | 2026-04-23 | 2026-04-28 | 2.2-SS077EE04-1540 SS | 315d | 0d | LABOUR [3 h] | EE | 1 | C03a | TY1 | E06 | EIT02.1 |
| 2.2-SS077EE04-1580 |  | Clear punch | 2d | 2026-04-29 | 2026-04-30 | 2.2-SS077EE04-1570 | 335d | 0d | LABOUR [75 h] | EE | 1 | C03a | TY1 | E06 | EIT02.1 |
| 2.2-SS077EE04-1590 |  | Complete QA/QC document | 3d | 2026-05-01 | 2026-05-04 | 2.2-SS077EE04-1580 | 335d |  | LABOUR [75 h] | EE | 1 | C03a | TY1 | E06 | EIT02.1 |
|  | 11 | **CV77E14** |  | 2026-04-29 | 2026-05-09 |  |  |  |  |  |  |  |  |  |  |
| 2.2-SS077EE04-1600 |  | Inspection and Testing, Per-Commissionning | 5d | 2026-04-29 | 2026-05-04 | 2.2-SS077EE04-1570 | 315d | 0d | LABOUR [3 h] | EE | 1 | C03a | TY1 | E06 | EIT02.1 |
| 2.2-SS077EE04-1610 |  | Clear punch | 2d | 2026-05-05 | 2026-05-06 | 2.2-SS077EE04-1600 | 330d | 0d | LABOUR [75 h] | EE | 1 | C03a | TY1 | E06 | EIT02.1 |
| 2.2-SS077EE04-1620 |  | Complete QA/QC document | 3d | 2026-05-07 | 2026-05-09 | 2.2-SS077EE04-1610 | 330d |  | LABOUR [75 h] | EE | 1 | C03a | TY1 | E06 | EIT02.1 |

| ID | WBS | Activity | Duration | Start | Finish | Predecessors | Total float | Free float | Resources | Disciplines | Main Activity | WBS | Types | EIT WBS | EIT PKG |
| --- | --- | --- | --- | --- | --- | --- | --- | --- | --- | --- | --- | --- | --- | --- | --- |
|  | 12 | **CV77E15** |  | 2026-04-29 | 2026-05-09 |  |  |  |  |  |  |  |  |  |  |
| 2.2-SS077EE04-1630 |  | Inspection and Testing, Per-Commissionning | 5d | 2026-04-29 | 2026-05-04 | 2.2-SS077EE04-1600 SS | 315d | 0d | LABOUR [3 h] | EE | 1 | C03a | TY1 | E06 | EIT02.1 |
| 2.2-SS077EE04-1640 |  | Clear punch | 2d | 2026-05-05 | 2026-05-06 | 2.2-SS077EE04-1630 | 330d | 0d | LABOUR [75 h] | EE | 1 | C03a | TY1 | E06 | EIT02.1 |
| 2.2-SS077EE04-1650 |  | Complete QA/QC document | 3d | 2026-05-07 | 2026-05-09 | 2.2-SS077EE04-1640 | 330d |  | LABOUR [75 h] | EE | 1 | C03a | TY1 | E06 | EIT02.1 |
|  | 13 | **CV77E16** |  | 2026-04-29 | 2026-05-09 |  |  |  |  |  |  |  |  |  |  |
| 2.2-SS077EE04-1660 |  | Inspection and Testing, Per-Commissionning | 5d | 2026-04-29 | 2026-05-04 | 2.2-SS077EE04-1630 SS | 315d | 0d | LABOUR [3 h] | EE | 1 | C03a | TY1 | E06 | EIT02.1 |
| 2.2-SS077EE04-1670 |  | Clear punch | 2d | 2026-05-05 | 2026-05-06 | 2.2-SS077EE04-1660 | 330d | 0d | LABOUR [75 h] | EE | 1 | C03a | TY1 | E06 | EIT02.1 |
| 2.2-SS077EE04-1680 |  | Complete QA/QC document | 3d | 2026-05-07 | 2026-05-09 | 2.2-SS077EE04-1670 | 330d |  | LABOUR [75 h] | EE | 1 | C03a | TY1 | E06 | EIT02.1 |
|  | 14 | **CV77E17** |  | 2026-04-29 | 2026-05-09 |  |  |  |  |  |  |  |  |  |  |
| 2.2-SS077EE04-1690 |  | Inspection and Testing, Per-Commissionning | 5d | 2026-04-29 | 2026-05-04 | 2.2-SS077EE04-1660 SS | 315d | 0d | LABOUR [3 h] | EE | 1 | C03a | TY1 | E06 | EIT02.1 |
| 2.2-SS077EE04-1700 |  | Clear punch | 2d | 2026-05-05 | 2026-05-06 | 2.2-SS077EE04-1690 | 330d | 0d | LABOUR [75 h] | EE | 1 | C03a | TY1 | E06 | EIT02.1 |
| 2.2-SS077EE04-1710 |  | Complete QA/QC document | 3d | 2026-05-07 | 2026-05-09 | 2.2-SS077EE04-1700 | 330d |  | LABOUR [75 h] | EE | 1 | C03a | TY1 | E06 | EIT02.1 |
|  | 15 | **CV77E18** |  | 2026-04-29 | 2026-05-09 |  |  |  |  |  |  |  |  |  |  |
| 2.2-SS077EE04-1720 |  | Inspection and Testing, Per-Commissionning | 5d | 2026-04-29 | 2026-05-04 | 2.2-SS077EE04-1690 SS | 315d | 0d | LABOUR [3 h] | EE | 1 | C03a | TY1 | E06 | EIT02.1 |
| 2.2-SS077EE04-1730 |  | Clear punch | 2d | 2026-05-05 | 2026-05-06 | 2.2-SS077EE04-1720 | 330d | 0d | LABOUR [75 h] | EE | 1 | C03a | TY1 | E06 | EIT02.1 |
| 2.2-SS077EE04-1740 |  | Complete QA/QC document | 3d | 2026-05-07 | 2026-05-09 | 2.2-SS077EE04-1730 | 330d |  | LABOUR [75 h] | EE | 1 | C03a | TY1 | E06 | EIT02.1 |
|  | 16 | **CV77E19** |  | 2026-04-29 | 2026-05-09 |  |  |  |  |  |  |  |  |  |  |
| 2.2-SS077EE04-1750 |  | Inspection and Testing, Per-Commissionning | 5d | 2026-04-29 | 2026-05-04 | 2.2-SS077EE04-1720 SS | 315d | 0d | LABOUR [3 h] | EE | 1 | C03a | TY1 | E06 | EIT02.1 |
| 2.2-SS077EE04-1760 |  | Clear punch | 2d | 2026-05-05 | 2026-05-06 | 2.2-SS077EE04-1750 | 330d | 0d | LABOUR [75 h] | EE | 1 | C03a | TY1 | E06 | EIT02.1 |
| 2.2-SS077EE04-1770 |  | Complete QA/QC document | 3d | 2026-05-07 | 2026-05-09 | 2.2-SS077EE04-1760 | 330d |  | LABOUR [75 h] | EE | 1 | C03a | TY1 | E06 | EIT02.1 |
|  | 18 | **CV77E20** |  | 2026-04-29 | 2026-05-09 |  |  |  |  |  |  |  |  |  |  |
| 2.2-SS077EE04-1780 |  | Inspection and Testing, Per-Commissionning | 5d | 2026-04-29 | 2026-05-04 | 2.2-SS077EE04-1750 SS | 315d | 0d | LABOUR [3 h] | EE | 1 | C03a | TY1 | E06 | EIT02.1 |
| 2.2-SS077EE04-1790 |  | Clear punch | 2d | 2026-05-05 | 2026-05-06 | 2.2-SS077EE04-1780 | 330d | 0d | LABOUR [75 h] | EE | 1 | C03a | TY1 | E06 | EIT02.1 |
| 2.2-SS077EE04-1800 |  | Complete QA/QC document | 3d | 2026-05-07 | 2026-05-09 | 2.2-SS077EE04-1790 | 330d |  | LABOUR [75 h] | EE | 1 | C03a | TY1 | E06 | EIT02.1 |

| ID | WBS | Activity | Duration | Start | Finish | Predecessors | Total float | Free float | Resources | Disciplines | Main Activity | WBS | Types | EIT WBS | EIT PKG |
| --- | --- | --- | --- | --- | --- | --- | --- | --- | --- | --- | --- | --- | --- | --- | --- |
|  | 19 | **CV77E21** |  | 2026-04-29 | 2026-05-09 |  |  |  |  |  |  |  |  |  |  |
| 2.2-SS077EE04-1810 |  | Inspection and Testing, Per-Commissionning | 5d | 2026-04-29 | 2026-05-04 | 2.2-SS077EE04-1780 SS | 315d | 0d | LABOUR [3 h] | EE | 1 | C03a | TY1 | E06 | EIT02.1 |
| 2.2-SS077EE04-1820 |  | Clear punch | 2d | 2026-05-05 | 2026-05-06 | 2.2-SS077EE04-1810 | 330d | 0d | LABOUR [75 h] | EE | 1 | C03a | TY1 | E06 | EIT02.1 |
| 2.2-SS077EE04-1830 |  | Complete QA/QC document | 3d | 2026-05-07 | 2026-05-09 | 2.2-SS077EE04-1820 | 330d |  | LABOUR [75 h] | EE | 1 | C03a | TY1 | E06 | EIT02.1 |
|  | 20 | **CV77E22** |  | 2026-04-29 | 2026-05-09 |  |  |  |  |  |  |  |  |  |  |
| 2.2-SS077EE04-1840 |  | Inspection and Testing, Per-Commissionning | 5d | 2026-04-29 | 2026-05-04 | 2.2-SS077EE04-1810 SS | 315d | 0d | LABOUR [3 h] | EE | 1 | C03a | TY1 | E06 | EIT02.1 |
| 2.2-SS077EE04-1850 |  | Clear punch | 2d | 2026-05-05 | 2026-05-06 | 2.2-SS077EE04-1840 | 330d | 0d | LABOUR [75 h] | EE | 1 | C03a | TY1 | E06 | EIT02.1 |
| 2.2-SS077EE04-1860 |  | Complete QA/QC document | 3d | 2026-05-07 | 2026-05-09 | 2.2-SS077EE04-1850 | 330d |  | LABOUR [75 h] | EE | 1 | C03a | TY1 | E06 | EIT02.1 |
|  | 21 | **CV77E23** |  | 2026-04-29 | 2026-05-09 |  |  |  |  |  |  |  |  |  |  |
| 2.2-SS077EE04-1870 |  | Inspection and Testing, Per-Commissionning | 5d | 2026-04-29 | 2026-05-04 | 2.2-SS077EE04-1840 SS | 315d | 0d | LABOUR [3 h] | EE | 1 | C03a | TY1 | E06 | EIT02.1 |
| 2.2-SS077EE04-1880 |  | Clear punch | 2d | 2026-05-05 | 2026-05-06 | 2.2-SS077EE04-1870 | 330d | 0d | LABOUR [75 h] | EE | 1 | C03a | TY1 | E06 | EIT02.1 |
| 2.2-SS077EE04-1890 |  | Complete QA/QC document | 3d | 2026-05-07 | 2026-05-09 | 2.2-SS077EE04-1880 | 330d |  | LABOUR [75 h] | EE | 1 | C03a | TY1 | E06 | EIT02.1 |
|  | 22 | **CV77E24** |  | 2026-04-29 | 2026-05-09 |  |  |  |  |  |  |  |  |  |  |
| 2.2-SS077EE04-1900 |  | Inspection and Testing, Per-Commissionning | 5d | 2026-04-29 | 2026-05-04 | 2.2-SS077EE04-1870 SS | 315d | 0d | LABOUR [3 h] | EE | 1 | C03a | TY1 | E06 | EIT02.1 |
| 2.2-SS077EE04-1910 |  | Clear punch | 2d | 2026-05-05 | 2026-05-06 | 2.2-SS077EE04-1900 | 330d | 0d | LABOUR [75 h] | EE | 1 | C03a | TY1 | E06 | EIT02.1 |
| 2.2-SS077EE04-1920 |  | Complete QA/QC document | 3d | 2026-05-07 | 2026-05-09 | 2.2-SS077EE04-1910 | 330d |  | LABOUR [75 h] | EE | 1 | C03a | TY1 | E06 | EIT02.1 |
|  | 23 | **CV77E25** |  | 2026-05-05 | 2026-05-15 |  |  |  |  |  |  |  |  |  |  |
| 2.2-SS077EE04-1930 |  | Inspection and Testing, Per-Commissionning | 5d | 2026-05-05 | 2026-05-09 | 2.2-SS077EE04-1900 | 315d | 0d | LABOUR [3 h] | EE | 1 | C03a | TY1 | E06 | EIT02.1 |
| 2.2-SS077EE04-1940 |  | Clear punch | 2d | 2026-05-11 | 2026-05-12 | 2.2-SS077EE04-1930 | 325d | 0d | LABOUR [75 h] | EE | 1 | C03a | TY1 | E06 | EIT02.1 |
| 2.2-SS077EE04-1950 |  | Complete QA/QC document | 3d | 2026-05-13 | 2026-05-15 | 2.2-SS077EE04-1940 | 325d |  | LABOUR [75 h] | EE | 1 | C03a | TY1 | E06 | EIT02.1 |
|  | 24 | **CV77E26** |  | 2026-05-11 | 2026-05-21 |  |  |  |  |  |  |  |  |  |  |
| 2.2-SS077EE04-1960 |  | Inspection and Testing, Per-Commissionning | 5d | 2026-05-11 | 2026-05-15 | 2.2-SS077EE04-1930 | 315d | 0d | LABOUR [3 h] | EE | 1 | C03a | TY1 | E06 | EIT02.1 |
| 2.2-SS077EE04-1970 |  | Clear punch | 2d | 2026-05-16 | 2026-05-18 | 2.2-SS077EE04-1960 | 320d | 0d | LABOUR [75 h] | EE | 1 | C03a | TY1 | E06 | EIT02.1 |
| 2.2-SS077EE04-1980 |  | Complete QA/QC document | 3d | 2026-05-19 | 2026-05-21 | 2.2-SS077EE04-1970 | 320d |  | LABOUR [75 h] | EE | 1 | C03a | TY1 | E06 | EIT02.1 |

| ID | WBS | Activity | Duration | Start | Finish | Predecessors | Total float | Free float | Resources | Disciplines | Main Activity | WBS | Types | EIT WBS | EIT PKG |
| --- | --- | --- | --- | --- | --- | --- | --- | --- | --- | --- | --- | --- | --- | --- | --- |
|  | 25 | **CV77E27** |  | 2026-05-11 | 2026-05-21 |  |  |  |  |  |  |  |  |  |  |
| 2.2-SS077EE04-1990 |  | Inspection and Testing, Per-Commissionning | 5d | 2026-05-11 | 2026-05-15 | 2.2-SS077EE04-1960 SS | 315d | 0d | LABOUR [3 h] | EE | 1 | C03a | TY1 | E06 | EIT02.1 |
| 2.2-SS077EE04-2000 |  | Clear punch | 2d | 2026-05-16 | 2026-05-18 | 2.2-SS077EE04-1990 | 320d | 0d | LABOUR [75 h] | EE | 1 | C03a | TY1 | E06 | EIT02.1 |
| 2.2-SS077EE04-2010 |  | Complete QA/QC document | 3d | 2026-05-19 | 2026-05-21 | 2.2-SS077EE04-2000 | 320d |  | LABOUR [75 h] | EE | 1 | C03a | TY1 | E06 | EIT02.1 |
|  | 26 | **CV77E28** |  | 2026-05-11 | 2026-05-21 |  |  |  |  |  |  |  |  |  |  |
| 2.2-SS077EE04-2020 |  | Inspection and Testing, Per-Commissionning | 5d | 2026-05-11 | 2026-05-15 | 2.2-SS077EE04-1990 SS | 315d | 0d | LABOUR [3 h] | EE | 1 | C03a | TY1 | E06 | EIT02.1 |
| 2.2-SS077EE04-2030 |  | Clear punch | 2d | 2026-05-16 | 2026-05-18 | 2.2-SS077EE04-2020 | 320d | 0d | LABOUR [75 h] | EE | 1 | C03a | TY1 | E06 | EIT02.1 |
| 2.2-SS077EE04-2040 |  | Complete QA/QC document | 3d | 2026-05-19 | 2026-05-21 | 2.2-SS077EE04-2030 | 320d |  | LABOUR [75 h] | EE | 1 | C03a | TY1 | E06 | EIT02.1 |
|  | 27 | **CV77E29** |  | 2026-05-16 | 2026-05-27 |  |  |  |  |  |  |  |  |  |  |
| 2.2-SS077EE04-2050 |  | Inspection and Testing, Per-Commissionning | 5d | 2026-05-16 | 2026-05-21 | 2.2-SS077EE04-2020 | 315d | 0d | LABOUR [3 h] | EE | 1 | C03a | TY1 | E06 | EIT02.1 |
| 2.2-SS077EE04-2060 |  | Clear punch | 2d | 2026-05-22 | 2026-05-23 | 2.2-SS077EE04-2050 | 315d | 0d | LABOUR [75 h] | EE | 1 | C03a | TY1 | E06 | EIT02.1 |
| 2.2-SS077EE04-2070 |  | Complete QA/QC document | 3d | 2026-05-25 | 2026-05-27 | 2.2-SS077EE04-2060 | 315d |  | LABOUR [75 h] | EE | 1 | C03a | TY1 | E06 | EIT02.1 |
|  | 28 | **CV77E30** |  | 2026-05-16 | 2026-05-27 |  |  |  |  |  |  |  |  |  |  |
| 2.2-SS077EE04-2080 |  | Inspection and Testing, Per-Commissionning | 5d | 2026-05-16 | 2026-05-21 | 2.2-SS077EE04-2050 SS | 315d | 0d | LABOUR [3 h] | EE | 1 | C03a | TY1 | E06 | EIT02.1 |
| 2.2-SS077EE04-2090 |  | Clear punch | 2d | 2026-05-22 | 2026-05-23 | 2.2-SS077EE04-2080 | 315d | 0d | LABOUR [75 h] | EE | 1 | C03a | TY1 | E06 | EIT02.1 |
| 2.2-SS077EE04-2100 |  | Complete QA/QC document | 3d | 2026-05-25 | 2026-05-27 | 2.2-SS077EE04-2090 | 315d |  | LABOUR [75 h] | EE | 1 | C03a | TY1 | E06 | EIT02.1 |
|  | 29 | **CV77E31** |  | 2026-05-16 | 2026-05-27 |  |  |  |  |  |  |  |  |  |  |
| 2.2-SS077EE04-2110 |  | Inspection and Testing, Per-Commissionning | 5d | 2026-05-16 | 2026-05-21 | 2.2-SS077EE04-2080 SS | 315d | 0d | LABOUR [3 h] | EE | 1 | C03a | TY1 | E06 | EIT02.1 |
| 2.2-SS077EE04-2120 |  | Clear punch | 2d | 2026-05-22 | 2026-05-23 | 2.2-SS077EE04-2110 | 315d | 0d | LABOUR [75 h] | EE | 1 | C03a | TY1 | E06 | EIT02.1 |
| 2.2-SS077EE04-2130 |  | Complete QA/QC document | 3d | 2026-05-25 | 2026-05-27 | 2.2-SS077EE04-2120 | 315d |  | LABOUR [75 h] | EE | 1 | C03a | TY1 | E06 | EIT02.1 |
|  | 30 | **CV77E32** |  | 2026-05-16 | 2026-05-27 |  |  |  |  |  |  |  |  |  |  |
| 2.2-SS077EE04-2140 |  | Inspection and Testing, Per-Commissionning | 5d | 2026-05-16 | 2026-05-21 | 2.2-SS077EE04-2110 SS | 315d | 0d | LABOUR [3 h] | EE | 1 | C03a | TY1 | E06 | EIT02.1 |
| 2.2-SS077EE04-2150 |  | Clear punch | 2d | 2026-05-22 | 2026-05-23 | 2.2-SS077EE04-2140 | 315d | 0d | LABOUR [75 h] | EE | 1 | C03a | TY1 | E06 | EIT02.1 |
| 2.2-SS077EE04-2160 |  | Complete QA/QC document | 3d | 2026-05-25 | 2026-05-27 | 2.2-SS077EE04-2150 | 315d |  | LABOUR [75 h] | EE | 1 | C03a | TY1 | E06 | EIT02.1 |

| ID | WBS | Activity | Duration | Start | Finish | Predecessors | Total float | Free float | Resources | Disciplines | Main Activity | WBS | Types | EIT WBS | EIT PKG |
| --- | --- | --- | --- | --- | --- | --- | --- | --- | --- | --- | --- | --- | --- | --- | --- |
|  | 31 | **CV77E33** |  | 2026-05-16 | 2026-05-27 |  |  |  |  |  |  |  |  |  |  |
| 2.2-SS077EE04-2170 |  | Inspection and Testing, Per-Commissionning | 5d | 2026-05-16 | 2026-05-21 | 2.2-SS077EE04-2140 SS | 315d | 0d | LABOUR [3 h] | EE | 1 | C03a | TY1 | E06 | EIT02.1 |
| 2.2-SS077EE04-2180 |  | Clear punch | 2d | 2026-05-22 | 2026-05-23 | 2.2-SS077EE04-2170 | 315d | 0d | LABOUR [75 h] | EE | 1 | C03a | TY1 | E06 | EIT02.1 |
| 2.2-SS077EE04-2190 |  | Complete QA/QC document | 3d | 2026-05-25 | 2026-05-27 | 2.2-SS077EE04-2180 | 315d |  | LABOUR [75 h] | EE | 1 | C03a | TY1 | E06 | EIT02.1 |
|  | 32 | **WBS : C05** |  | 2026-04-01 | 2026-05-28 |  |  |  |  |  |  |  |  |  |  |
|  | 4 | **Substation SS-097** |  | 2026-04-01 | 2026-05-28 |  |  |  |  |  |  |  |  |  |  |
|  | 2 | **Electrical** |  | 2026-04-01 | 2026-05-28 |  |  |  |  |  |  |  |  |  |  |
|  | 2 | **Electrical Equpiment Inspection Testing** |  | 2026-04-01 | 2026-05-28 |  |  |  |  |  |  |  |  |  |  |
|  | 5 | **Miscellaneous panels** |  | 2026-04-01 | 2026-04-11 |  |  |  |  |  |  |  |  |  |  |
|  | 9 | **S097-ELC-0301** |  | 2026-04-01 | 2026-04-11 |  |  |  |  |  |  |  |  |  |  |
| 2.2-SS097EE04-1000 |  | Inspection and Testing, Per-Commissionning | 5d | 2026-04-01 | 2026-04-06 | 2.2-SS077EE04-1000 SS | 314d | 0d | LABOUR [3 h] |  |  |  |  |  |  |
| 2.2-SS097EE04-1010 |  | Clear punch | 2d | 2026-04-07 | 2026-04-08 | 2.2-SS097EE04-1000 | 354d | 0d | LABOUR [75 h] |  |  |  |  |  |  |
| 2.2-SS097EE04-1020 |  | Complete QA/QC document | 3d | 2026-04-09 | 2026-04-11 | 2.2-SS097EE04-1010 | 354d |  | LABOUR [75 h] |  |  |  |  |  |  |
|  | 1 | **S097-ELC-0302** |  | 2026-04-01 | 2026-04-11 |  |  |  |  |  |  |  |  |  |  |
| 2.2-SS097EE04-1030 |  | Inspection and Testing, Per-Commissionning | 5d | 2026-04-01 | 2026-04-06 | 2.2-SS097EE04-1000 SS | 314d | 0d | LABOUR [3 h] |  |  |  |  |  |  |
| 2.2-SS097EE04-1040 |  | Clear punch | 2d | 2026-04-07 | 2026-04-08 | 2.2-SS097EE04-1030 | 354d | 0d | LABOUR [75 h] |  |  |  |  |  |  |
| 2.2-SS097EE04-1050 |  | Complete QA/QC document | 3d | 2026-04-09 | 2026-04-11 | 2.2-SS097EE04-1040 | 354d |  | LABOUR [75 h] |  |  |  |  |  |  |
|  | 2 | **S097-ELC-0303** |  | 2026-04-01 | 2026-04-11 |  |  |  |  |  |  |  |  |  |  |
| 2.2-SS097EE04-1060 |  | Inspection and Testing, Per-Commissionning | 5d | 2026-04-01 | 2026-04-06 | 2.2-SS097EE04-1030 SS | 314d | 0d | LABOUR [3 h] |  |  |  |  |  |  |
| 2.2-SS097EE04-1070 |  | Clear punch | 2d | 2026-04-07 | 2026-04-08 | 2.2-SS097EE04-1060 | 354d | 0d | LABOUR [75 h] |  |  |  |  |  |  |
| 2.2-SS097EE04-1080 |  | Complete QA/QC document | 3d | 2026-04-09 | 2026-04-11 | 2.2-SS097EE04-1070 | 354d |  | LABOUR [75 h] |  |  |  |  |  |  |
|  | 1 | **Elics Panels** |  | 2026-04-01 | 2026-04-11 |  |  |  |  |  |  |  |  |  |  |
|  | 1 | **E-S97-68-2** |  | 2026-04-01 | 2026-04-11 |  |  |  |  |  |  |  |  |  |  |
| 2.2-SS097EE04-1090 |  | Inspection and Testing, Per-Commissionning | 5d | 2026-04-01 | 2026-04-06 | 2.2-SS097EE04-1060 SS | 314d | 0d | LABOUR [3 h] |  |  |  |  |  |  |
| 2.2-SS097EE04-1100 |  | Clear punch | 2d | 2026-04-07 | 2026-04-08 | 2.2-SS097EE04-1090 | 354d | 0d | LABOUR [75 h] |  |  |  |  |  |  |
| 2.2-SS097EE04-1110 |  | Complete QA/QC document | 3d | 2026-04-09 | 2026-04-11 | 2.2-SS097EE04-1100 | 354d |  | LABOUR [75 h] |  |  |  |  |  |  |

| ID | WBS | Activity | Duration | Start | Finish | Predecessors | Total float | Free float | Resources |
| --- | --- | --- | --- | --- | --- | --- | --- | --- | --- |
|  | 7 | **E-S97-68-3** |  | 2026-04-01 | 2026-04-11 |  |  |  |  |
| 2.2-SS097EE04-1120 |  | Inspection and Testing, Per-Commissionning | 5d | 2026-04-01 | 2026-04-06 | 2.2-SS097EE04-1090 SS | 314d | 0d | LABOUR [3 h] |
| 2.2-SS097EE04-1130 |  | Clear punch | 2d | 2026-04-07 | 2026-04-08 | 2.2-SS097EE04-1120 | 354d | 0d | LABOUR [75 h] |
| 2.2-SS097EE04-1140 |  | Complete QA/QC document | 3d | 2026-04-09 | 2026-04-11 | 2.2-SS097EE04-1130 | 354d |  | LABOUR [75 h] |
|  | 3 | **Power Transformer** |  | 2026-04-01 | 2026-04-11 |  |  |  |  |
|  | 1 | **TR-KM-10702** |  | 2026-04-01 | 2026-04-11 |  |  |  |  |
| 2.2-SS097EE04-1150 |  | Inspection and Testing, Per-Commissionning | 5d | 2026-04-01 | 2026-04-06 | 2.2-SS097EE04-1120 SS | 314d | 0d | LABOUR [3 h] |
| 2.2-SS097EE04-1160 |  | Clear punch | 2d | 2026-04-07 | 2026-04-08 | 2.2-SS097EE04-1150 | 354d | 0d | LABOUR [75 h] |
| 2.2-SS097EE04-1170 |  | Complete QA/QC document | 3d | 2026-04-09 | 2026-04-11 | 2.2-SS097EE04-1160 | 354d |  | LABOUR [75 h] |
|  | 16 | **Variable Speed Drive** |  | 2026-04-01 | 2026-05-28 |  |  |  |  |
|  | 17 | **CV97D1** |  | 2026-04-01 | 2026-04-11 |  |  |  |  |
| 2.2-SS097EE04-1180 |  | Inspection and Testing, Per-Commissionning | 5d | 2026-04-01 | 2026-04-06 | 2.2-SS097EE04-1150 SS | 314d | 0d | LABOUR [3 h] |
| 2.2-SS097EE04-1190 |  | Clear punch | 2d | 2026-04-07 | 2026-04-08 | 2.2-SS097EE04-1180 | 354d | 0d | LABOUR [75 h] |
| 2.2-SS097EE04-1200 |  | Complete QA/QC document | 3d | 2026-04-09 | 2026-04-11 | 2.2-SS097EE04-1190 | 354d |  | LABOUR [75 h] |
|  | 6 | **CV97E2** |  | 2026-04-01 | 2026-04-11 |  |  |  |  |
| 2.2-SS097EE04-1210 |  | Inspection and Testing, Per-Commissionning | 5d | 2026-04-01 | 2026-04-06 | 2.2-SS097EE04-1180 SS | 314d | 0d | LABOUR [3 h] |
| 2.2-SS097EE04-1220 |  | Clear punch | 2d | 2026-04-07 | 2026-04-08 | 2.2-SS097EE04-1210 | 354d | 0d | LABOUR [75 h] |
| 2.2-SS097EE04-1230 |  | Complete QA/QC document | 3d | 2026-04-09 | 2026-04-11 | 2.2-SS097EE04-1220 | 354d |  | LABOUR [75 h] |
|  | 1 | **CV97E3** |  | 2026-04-01 | 2026-04-11 |  |  |  |  |
| 2.2-SS097EE04-1240 |  | Inspection and Testing, Per-Commissionning | 5d | 2026-04-01 | 2026-04-06 | 2.2-SS097EE04-1210 SS | 314d | 0d | LABOUR [3 h] |
| 2.2-SS097EE04-1250 |  | Clear punch | 2d | 2026-04-07 | 2026-04-08 | 2.2-SS097EE04-1240 | 354d | 0d | LABOUR [75 h] |
| 2.2-SS097EE04-1260 |  | Complete QA/QC document | 3d | 2026-04-09 | 2026-04-11 | 2.2-SS097EE04-1250 | 354d |  | LABOUR [75 h] |
|  | 2 | **CV97E4** |  | 2026-04-01 | 2026-04-11 |  |  |  |  |
| 2.2-SS097EE04-1270 |  | Inspection and Testing, Per-Commissionning | 5d | 2026-04-01 | 2026-04-06 | 2.2-SS097EE04-1240 SS | 314d | 0d | LABOUR [3 h] |
| 2.2-SS097EE04-1280 |  | Clear punch | 2d | 2026-04-07 | 2026-04-08 | 2.2-SS097EE04-1270 | 354d | 0d | LABOUR [75 h] |
| 2.2-SS097EE04-1290 |  | Complete QA/QC document | 3d | 2026-04-09 | 2026-04-11 | 2.2-SS097EE04-1280 | 354d |  | LABOUR [75 h] |

| ID | WBS | Activity | Duration | Start | Finish | Predecessors | Total float | Free float | Resources |
| --- | --- | --- | --- | --- | --- | --- | --- | --- | --- |
|  | 3 | **CV97E5** |  | 2026-04-01 | 2026-04-11 |  |  |  |  |
| 2.2-SS097EE04-1300 |  | Inspection and Testing, Per-Commissionning | 5d | 2026-04-01 | 2026-04-06 | 2.2-SS097EE04-1270 SS | 314d | 0d | LABOUR [3 h] |
| 2.2-SS097EE04-1310 |  | Clear punch | 2d | 2026-04-07 | 2026-04-08 | 2.2-SS097EE04-1300 | 354d | 0d | LABOUR [75 h] |
| 2.2-SS097EE04-1320 |  | Complete QA/QC document | 3d | 2026-04-09 | 2026-04-11 | 2.2-SS097EE04-1310 | 354d |  | LABOUR [75 h] |
|  | 4 | **CV97E6** |  | 2026-04-01 | 2026-04-11 |  |  |  |  |
| 2.2-SS097EE04-1330 |  | Inspection and Testing, Per-Commissionning | 5d | 2026-04-01 | 2026-04-06 | 2.2-SS097EE04-1300 SS | 314d | 0d | LABOUR [3 h] |
| 2.2-SS097EE04-1340 |  | Clear punch | 2d | 2026-04-07 | 2026-04-08 | 2.2-SS097EE04-1330 | 354d | 0d | LABOUR [75 h] |
| 2.2-SS097EE04-1350 |  | Complete QA/QC document | 3d | 2026-04-09 | 2026-04-11 | 2.2-SS097EE04-1340 | 354d |  | LABOUR [75 h] |
|  | 5 | **CV97E7** |  | 2026-04-01 | 2026-04-11 |  |  |  |  |
| 2.2-SS097EE04-1360 |  | Inspection and Testing, Per-Commissionning | 5d | 2026-04-01 | 2026-04-06 | 2.2-SS097EE04-1330 SS | 314d | 0d | LABOUR [3 h] |
| 2.2-SS097EE04-1370 |  | Clear punch | 2d | 2026-04-07 | 2026-04-08 | 2.2-SS097EE04-1360 | 354d | 0d | LABOUR [75 h] |
| 2.2-SS097EE04-1380 |  | Complete QA/QC document | 3d | 2026-04-09 | 2026-04-11 | 2.2-SS097EE04-1370 | 354d |  | LABOUR [75 h] |
|  | 7 | **CV97E8** |  | 2026-04-01 | 2026-04-11 |  |  |  |  |
| 2.2-SS097EE04-1390 |  | Inspection and Testing, Per-Commissionning | 5d | 2026-04-01 | 2026-04-06 | 2.2-SS097EE04-1360 SS | 314d | 0d | LABOUR [3 h] |
| 2.2-SS097EE04-1400 |  | Clear punch | 2d | 2026-04-07 | 2026-04-08 | 2.2-SS097EE04-1390 | 354d | 0d | LABOUR [75 h] |
| 2.2-SS097EE04-1410 |  | Complete QA/QC document | 3d | 2026-04-09 | 2026-04-11 | 2.2-SS097EE04-1400 | 354d |  | LABOUR [75 h] |
|  | 8 | **CV97E9** |  | 2026-04-01 | 2026-04-11 |  |  |  |  |
| 2.2-SS097EE04-1420 |  | Inspection and Testing, Per-Commissionning | 5d | 2026-04-01 | 2026-04-06 | 2.2-SS097EE04-1390 SS | 314d | 0d | LABOUR [3 h] |
| 2.2-SS097EE04-1430 |  | Clear punch | 2d | 2026-04-07 | 2026-04-08 | 2.2-SS097EE04-1420 | 354d | 0d | LABOUR [75 h] |
| 2.2-SS097EE04-1440 |  | Complete QA/QC document | 3d | 2026-04-09 | 2026-04-11 | 2.2-SS097EE04-1430 | 354d |  | LABOUR [75 h] |
|  | 9 | **CV97E10** |  | 2026-04-01 | 2026-04-11 |  |  |  |  |
| 2.2-SS097EE04-1450 |  | Inspection and Testing, Per-Commissionning | 5d | 2026-04-01 | 2026-04-06 | 2.2-SS097EE04-1420 SS | 314d | 0d | LABOUR [3 h] |
| 2.2-SS097EE04-1460 |  | Clear punch | 2d | 2026-04-07 | 2026-04-08 | 2.2-SS097EE04-1450 | 354d | 0d | LABOUR [75 h] |
| 2.2-SS097EE04-1470 |  | Complete QA/QC document | 3d | 2026-04-09 | 2026-04-11 | 2.2-SS097EE04-1460 | 354d |  | LABOUR [75 h] |

| ID | WBS | Activity | Duration | Start | Finish | Predecessors | Total float | Free float | Resources |
| --- | --- | --- | --- | --- | --- | --- | --- | --- | --- |
|  | 10 | **CV97E11** |  | 2026-04-01 | 2026-04-11 |  |  |  |  |
| 2.2-SS097EE04-1480 |  | Inspection and Testing, Per-Commissionning | 5d | 2026-04-01 | 2026-04-06 | 2.2-SS097EE04-1450 SS | 314d | 0d | LABOUR [3 h] |
| 2.2-SS097EE04-1490 |  | Clear punch | 2d | 2026-04-07 | 2026-04-08 | 2.2-SS097EE04-1480 | 354d | 0d | LABOUR [75 h] |
| 2.2-SS097EE04-1500 |  | Complete QA/QC document | 3d | 2026-04-09 | 2026-04-11 | 2.2-SS097EE04-1490 | 354d |  | LABOUR [75 h] |
|  | 11 | **CV97E12** |  | 2026-04-01 | 2026-04-11 |  |  |  |  |
| 2.2-SS097EE04-1510 |  | Inspection and Testing, Per-Commissionning | 5d | 2026-04-01 | 2026-04-06 | 2.2-SS097EE04-1480 SS | 314d | 0d | LABOUR [3 h] |
| 2.2-SS097EE04-1520 |  | Clear punch | 2d | 2026-04-07 | 2026-04-08 | 2.2-SS097EE04-1510 | 354d | 0d | LABOUR [75 h] |
| 2.2-SS097EE04-1530 |  | Complete QA/QC document | 3d | 2026-04-09 | 2026-04-11 | 2.2-SS097EE04-1520 | 354d |  | LABOUR [75 h] |
|  | 12 | **CV97E13** |  | 2026-04-01 | 2026-04-11 |  |  |  |  |
| 2.2-SS097EE04-1540 |  | Inspection and Testing, Per-Commissionning | 5d | 2026-04-01 | 2026-04-06 | 2.2-SS097EE04-1510 SS | 314d | 0d | LABOUR [3 h] |
| 2.2-SS097EE04-1550 |  | Clear punch | 2d | 2026-04-07 | 2026-04-08 | 2.2-SS097EE04-1540 | 354d | 0d | LABOUR [75 h] |
| 2.2-SS097EE04-1560 |  | Complete QA/QC document | 3d | 2026-04-09 | 2026-04-11 | 2.2-SS097EE04-1550 | 354d |  | LABOUR [75 h] |
|  | 13 | **CV97E14** |  | 2026-04-01 | 2026-04-11 |  |  |  |  |
| 2.2-SS097EE04-1570 |  | Inspection and Testing, Per-Commissionning | 5d | 2026-04-01 | 2026-04-06 | 2.2-SS097EE04-1540 SS | 314d | 0d | LABOUR [3 h] |
| 2.2-SS097EE04-1580 |  | Clear punch | 2d | 2026-04-07 | 2026-04-08 | 2.2-SS097EE04-1570 | 354d | 0d | LABOUR [75 h] |
| 2.2-SS097EE04-1590 |  | Complete QA/QC document | 3d | 2026-04-09 | 2026-04-11 | 2.2-SS097EE04-1580 | 354d |  | LABOUR [75 h] |
|  | 14 | **CV97E15** |  | 2026-04-01 | 2026-04-11 |  |  |  |  |
| 2.2-SS097EE04-1600 |  | Inspection and Testing, Per-Commissionning | 5d | 2026-04-01 | 2026-04-06 | 2.2-SS097EE04-1570 SS | 314d | 0d | LABOUR [3 h] |
| 2.2-SS097EE04-1610 |  | Clear punch | 2d | 2026-04-07 | 2026-04-08 | 2.2-SS097EE04-1600 | 354d | 0d | LABOUR [75 h] |
| 2.2-SS097EE04-1620 |  | Complete QA/QC document | 3d | 2026-04-09 | 2026-04-11 | 2.2-SS097EE04-1610 | 354d |  | LABOUR [75 h] |
|  | 15 | **CV97E16** |  | 2026-04-07 | 2026-04-17 |  |  |  |  |
| 2.2-SS097EE04-1630 |  | Inspection and Testing, Per-Commissionning | 5d | 2026-04-07 | 2026-04-11 | 2.2-SS097EE04-1600 | 314d | 0d | LABOUR [3 h] |
| 2.2-SS097EE04-1640 |  | Clear punch | 2d | 2026-04-13 | 2026-04-14 | 2.2-SS097EE04-1630 | 349d | 0d | LABOUR [75 h] |
| 2.2-SS097EE04-1650 |  | Complete QA/QC document | 3d | 2026-04-15 | 2026-04-17 | 2.2-SS097EE04-1640 | 349d |  | LABOUR [75 h] |

| ID | WBS | Activity | Duration | Start | Finish | Predecessors | Total float | Free float | Resources |
| --- | --- | --- | --- | --- | --- | --- | --- | --- | --- |
|  | 16 | **CV97E17** |  | 2026-04-07 | 2026-04-17 |  |  |  |  |
| 2.2-SS097EE04-1660 |  | Inspection and Testing, Per-Commissionning | 5d | 2026-04-07 | 2026-04-11 | 2.2-SS097EE04-1630 SS | 314d | 0d | LABOUR [3 h] |
| 2.2-SS097EE04-1670 |  | Clear punch | 2d | 2026-04-13 | 2026-04-14 | 2.2-SS097EE04-1660 | 349d | 0d | LABOUR [75 h] |
| 2.2-SS097EE04-1680 |  | Complete QA/QC document | 3d | 2026-04-15 | 2026-04-17 | 2.2-SS097EE04-1670 | 349d |  | LABOUR [75 h] |
|  | 18 | **CV97E18** |  | 2026-04-07 | 2026-04-17 |  |  |  |  |
| 2.2-SS097EE04-1690 |  | Inspection and Testing, Per-Commissionning | 5d | 2026-04-07 | 2026-04-11 | 2.2-SS097EE04-1660 SS | 314d | 0d | LABOUR [3 h] |
| 2.2-SS097EE04-1700 |  | Clear punch | 2d | 2026-04-13 | 2026-04-14 | 2.2-SS097EE04-1690 | 349d | 0d | LABOUR [75 h] |
| 2.2-SS097EE04-1710 |  | Complete QA/QC document | 3d | 2026-04-15 | 2026-04-17 | 2.2-SS097EE04-1700 | 349d |  | LABOUR [75 h] |
|  | 19 | **CV97E19** |  | 2026-04-07 | 2026-04-17 |  |  |  |  |
| 2.2-SS097EE04-1720 |  | Inspection and Testing, Per-Commissionning | 5d | 2026-04-07 | 2026-04-11 | 2.2-SS097EE04-1690 SS | 314d | 0d | LABOUR [3 h] |
| 2.2-SS097EE04-1730 |  | Clear punch | 2d | 2026-04-13 | 2026-04-14 | 2.2-SS097EE04-1720 | 349d | 0d | LABOUR [75 h] |
| 2.2-SS097EE04-1740 |  | Complete QA/QC document | 3d | 2026-04-15 | 2026-04-17 | 2.2-SS097EE04-1730 | 349d |  | LABOUR [75 h] |
|  | 20 | **CV97E20** |  | 2026-04-07 | 2026-04-17 |  |  |  |  |
| 2.2-SS097EE04-1750 |  | Inspection and Testing, Per-Commissionning | 5d | 2026-04-07 | 2026-04-11 | 2.2-SS097EE04-1720 SS | 314d | 0d | LABOUR [3 h] |
| 2.2-SS097EE04-1760 |  | Clear punch | 2d | 2026-04-13 | 2026-04-14 | 2.2-SS097EE04-1750 | 349d | 0d | LABOUR [75 h] |
| 2.2-SS097EE04-1770 |  | Complete QA/QC document | 3d | 2026-04-15 | 2026-04-17 | 2.2-SS097EE04-1760 | 349d |  | LABOUR [75 h] |
|  | 21 | **CV97E21** |  | 2026-04-13 | 2026-04-23 |  |  |  |  |
| 2.2-SS097EE04-1780 |  | Inspection and Testing, Per-Commissionning | 5d | 2026-04-13 | 2026-04-17 | 2.2-SS097EE04-1750 | 314d | 0d | LABOUR [3 h] |
| 2.2-SS097EE04-1790 |  | Clear punch | 2d | 2026-04-18 | 2026-04-20 | 2.2-SS097EE04-1780 | 344d | 0d | LABOUR [75 h] |
| 2.2-SS097EE04-1800 |  | Complete QA/QC document | 3d | 2026-04-21 | 2026-04-23 | 2.2-SS097EE04-1790 | 344d |  | LABOUR [75 h] |
|  | 22 | **CV97E22** |  | 2026-04-13 | 2026-04-23 |  |  |  |  |
| 2.2-SS097EE04-1810 |  | Inspection and Testing, Per-Commissionning | 5d | 2026-04-13 | 2026-04-17 | 2.2-SS097EE04-1780 SS | 314d | 0d | LABOUR [3 h] |
| 2.2-SS097EE04-1820 |  | Clear punch | 2d | 2026-04-18 | 2026-04-20 | 2.2-SS097EE04-1810 | 344d | 0d | LABOUR [75 h] |
| 2.2-SS097EE04-1830 |  | Complete QA/QC document | 3d | 2026-04-21 | 2026-04-23 | 2.2-SS097EE04-1820 | 344d |  | LABOUR [75 h] |

| ID | WBS | Activity | Duration | Start | Finish | Predecessors | Total float | Free float | Resources |
| --- | --- | --- | --- | --- | --- | --- | --- | --- | --- |
|  | 23 | **CV97E23** |  | 2026-04-13 | 2026-04-23 |  |  |  |  |
| 2.2-SS097EE04-1840 |  | Inspection and Testing, Per-Commissionning | 5d | 2026-04-13 | 2026-04-17 | 2.2-SS097EE04-1810 SS | 314d | 0d | LABOUR [3 h] |
| 2.2-SS097EE04-1850 |  | Clear punch | 2d | 2026-04-18 | 2026-04-20 | 2.2-SS097EE04-1840 | 344d | 0d | LABOUR [75 h] |
| 2.2-SS097EE04-1860 |  | Complete QA/QC document | 3d | 2026-04-21 | 2026-04-23 | 2.2-SS097EE04-1850 | 344d |  | LABOUR [75 h] |
|  | 24 | **CV97E24** |  | 2026-04-13 | 2026-04-23 |  |  |  |  |
| 2.2-SS097EE04-1870 |  | Inspection and Testing, Per-Commissionning | 5d | 2026-04-13 | 2026-04-17 | 2.2-SS097EE04-1840 SS | 314d | 0d | LABOUR [3 h] |
| 2.2-SS097EE04-1880 |  | Clear punch | 2d | 2026-04-18 | 2026-04-20 | 2.2-SS097EE04-1870 | 344d | 0d | LABOUR [75 h] |
| 2.2-SS097EE04-1890 |  | Complete QA/QC document | 3d | 2026-04-21 | 2026-04-23 | 2.2-SS097EE04-1880 | 344d |  | LABOUR [75 h] |
|  | 25 | **CV97E25** |  | 2026-04-13 | 2026-04-23 |  |  |  |  |
| 2.2-SS097EE04-1900 |  | Inspection and Testing, Per-Commissionning | 5d | 2026-04-13 | 2026-04-17 | 2.2-SS097EE04-1870 SS | 314d | 0d | LABOUR [3 h] |
| 2.2-SS097EE04-1910 |  | Clear punch | 2d | 2026-04-18 | 2026-04-20 | 2.2-SS097EE04-1900 | 344d | 0d | LABOUR [75 h] |
| 2.2-SS097EE04-1920 |  | Complete QA/QC document | 3d | 2026-04-21 | 2026-04-23 | 2.2-SS097EE04-1910 | 344d |  | LABOUR [75 h] |
|  | 26 | **CV97E26** |  | 2026-04-18 | 2026-04-29 |  |  |  |  |
| 2.2-SS097EE04-1930 |  | Inspection and Testing, Per-Commissionning | 5d | 2026-04-18 | 2026-04-23 | 2.2-SS097EE04-1900 | 314d | 0d | LABOUR [3 h] |
| 2.2-SS097EE04-1940 |  | Clear punch | 2d | 2026-04-24 | 2026-04-25 | 2.2-SS097EE04-1930 | 339d | 0d | LABOUR [75 h] |
| 2.2-SS097EE04-1950 |  | Complete QA/QC document | 3d | 2026-04-27 | 2026-04-29 | 2.2-SS097EE04-1940 | 339d |  | LABOUR [75 h] |
|  | 27 | **CV97E27** |  | 2026-04-24 | 2026-05-05 |  |  |  |  |
| 2.2-SS097EE04-1960 |  | Inspection and Testing, Per-Commissionning | 5d | 2026-04-24 | 2026-04-29 | 2.2-SS097EE04-1930 | 314d | 0d | LABOUR [3 h] |
| 2.2-SS097EE04-1970 |  | Clear punch | 2d | 2026-04-30 | 2026-05-01 | 2.2-SS097EE04-1960 | 334d | 0d | LABOUR [75 h] |
| 2.2-SS097EE04-1980 |  | Complete QA/QC document | 3d | 2026-05-02 | 2026-05-05 | 2.2-SS097EE04-1970 | 334d |  | LABOUR [75 h] |
|  | 28 | **CV97E28** |  | 2026-04-24 | 2026-05-05 |  |  |  |  |
| 2.2-SS097EE04-1990 |  | Inspection and Testing, Per-Commissionning | 5d | 2026-04-24 | 2026-04-29 | 2.2-SS097EE04-1960 SS | 314d | 0d | LABOUR [3 h] |
| 2.2-SS097EE04-2000 |  | Clear punch | 2d | 2026-04-30 | 2026-05-01 | 2.2-SS097EE04-1990 | 334d | 0d | LABOUR [75 h] |
| 2.2-SS097EE04-2010 |  | Complete QA/QC document | 3d | 2026-05-02 | 2026-05-05 | 2.2-SS097EE04-2000 | 334d |  | LABOUR [75 h] |

| ID | WBS | Activity | Duration | Start | Finish | Predecessors | Total float | Free float | Resources |
| --- | --- | --- | --- | --- | --- | --- | --- | --- | --- |
|  | 29 | **CV97E29** |  | 2026-04-24 | 2026-05-05 |  |  |  |  |
| 2.2-SS097EE04-2020 |  | Inspection and Testing, Per-Commissionning | 5d | 2026-04-24 | 2026-04-29 | 2.2-SS097EE04-1990 SS | 314d | 0d | LABOUR [3 h] |
| 2.2-SS097EE04-2030 |  | Clear punch | 2d | 2026-04-30 | 2026-05-01 | 2.2-SS097EE04-2020 | 334d | 0d | LABOUR [75 h] |
| 2.2-SS097EE04-2040 |  | Complete QA/QC document | 3d | 2026-05-02 | 2026-05-05 | 2.2-SS097EE04-2030 | 334d |  | LABOUR [75 h] |
|  | 30 | **CV97E30** |  | 2026-04-24 | 2026-05-05 |  |  |  |  |
| 2.2-SS097EE04-2050 |  | Inspection and Testing, Per-Commissionning | 5d | 2026-04-24 | 2026-04-29 | 2.2-SS097EE04-2020 SS | 314d | 0d | LABOUR [3 h] |
| 2.2-SS097EE04-2060 |  | Clear punch | 2d | 2026-04-30 | 2026-05-01 | 2.2-SS097EE04-2050 | 334d | 0d | LABOUR [75 h] |
| 2.2-SS097EE04-2070 |  | Complete QA/QC document | 3d | 2026-05-02 | 2026-05-05 | 2.2-SS097EE04-2060 | 334d |  | LABOUR [75 h] |
|  | 31 | **CV97E31** |  | 2026-04-30 | 2026-05-11 |  |  |  |  |
| 2.2-SS097EE04-2080 |  | Inspection and Testing, Per-Commissionning | 5d | 2026-04-30 | 2026-05-05 | 2.2-SS097EE04-2050 | 314d | 0d | LABOUR [3 h] |
| 2.2-SS097EE04-2090 |  | Clear punch | 2d | 2026-05-06 | 2026-05-07 | 2.2-SS097EE04-2080 | 329d | 0d | LABOUR [75 h] |
| 2.2-SS097EE04-2100 |  | Complete QA/QC document | 3d | 2026-05-08 | 2026-05-11 | 2.2-SS097EE04-2090 | 329d |  | LABOUR [75 h] |
|  | 32 | **CV97E34** |  | 2026-05-06 | 2026-05-16 |  |  |  |  |
| 2.2-SS097EE04-2110 |  | Inspection and Testing, Per-Commissionning | 5d | 2026-05-06 | 2026-05-11 | 2.2-SS097EE04-2080 | 314d | 0d | LABOUR [3 h] |
| 2.2-SS097EE04-2120 |  | Clear punch | 2d | 2026-05-12 | 2026-05-13 | 2.2-SS097EE04-2110 | 324d | 0d | LABOUR [75 h] |
| 2.2-SS097EE04-2130 |  | Complete QA/QC document | 3d | 2026-05-14 | 2026-05-16 | 2.2-SS097EE04-2120 | 324d |  | LABOUR [75 h] |
|  | 33 | **CV97E35** |  | 2026-05-12 | 2026-05-22 |  |  |  |  |
| 2.2-SS097EE04-2140 |  | Inspection and Testing, Per-Commissionning | 5d | 2026-05-12 | 2026-05-16 | 2.2-SS097EE04-2110 | 314d | 0d | LABOUR [3 h] |
| 2.2-SS097EE04-2150 |  | Clear punch | 2d | 2026-05-18 | 2026-05-19 | 2.2-SS097EE04-2140 | 319d | 0d | LABOUR [75 h] |
| 2.2-SS097EE04-2160 |  | Complete QA/QC document | 3d | 2026-05-20 | 2026-05-22 | 2.2-SS097EE04-2150 | 319d |  | LABOUR [75 h] |
|  | 34 | **CV97E36** |  | 2026-05-18 | 2026-05-28 |  |  |  |  |
| 2.2-SS097EE04-2170 |  | Inspection and Testing, Per-Commissionning | 5d | 2026-05-18 | 2026-05-22 | 2.2-SS097EE04-2140 | 314d | 0d | LABOUR [3 h] |
| 2.2-SS097EE04-2180 |  | Clear punch | 2d | 2026-05-23 | 2026-05-25 | 2.2-SS097EE04-2170 | 314d | 0d | LABOUR [75 h] |
| 2.2-SS097EE04-2190 |  | Complete QA/QC document | 3d | 2026-05-26 | 2026-05-28 | 2.2-SS097EE04-2180 | 314d |  | LABOUR [75 h] |

## Activity codes

| Code | Value | Meaning |
| --- | --- | --- |
| Disciplines | CO | Common |
| Disciplines | EE | Electrical |
| EIT PKG | EIT02.1 | Early Work |
| EIT PKG | EIT02.2 | Balance of Work |
| EIT WBS | B04 | O&U |
| EIT WBS | C03a | HCU3 |
| EIT WBS | C03b | RHCU |
| EIT WBS | C03c | SDA |
| EIT WBS | C05 | O&U, SS-097, SS-099 |
| EIT WBS | C07 | MCB3 |
| EIT WBS | E06 | Existing, SS-077 |
| EIT WBS | X01 | Common |
| Main Activity | 1 | Cable tray up to air Fin cooler HCU |
| Main Activity | 6 | Electrical Eqyuipment Installations Substation SS98 |
| Types | TY1 | Cable tray up to air Fin cooler |
| Types | TY10 | General |
| Types | TY3 | Electrical Eqyuipment |
| WBS | C03a | C03 a - HCU |
| WBS | Com | Key Milestone |
| WBS | Com1 | Submission of Document for Approval |
| WBS | WBSc053 | WBS-C05 Substation SS-098 |
