# EIT 2 : Schedule Level 4 : EIT2 080526

Schedule from Primavera P6, 2025-11-11 to 2027-06-08, data date 2026-05-15, A marks actual dates.

## Calendars

- 6days10hours: Mon-Sat 07:00-12:00, 13:00-18:00; Sun off. Exceptions (off unless hours are given): 2026-01-31 07:00-12:00, 13:00-18:00.
- 7 - Day Workweek (No Holidays): Mon-Fri 08:00-12:00, 13:00-18:00; Sat-Sun 08:00-12:00, 13:00-17:00.

## Resources

| Resource | Group | Notes |
| --- | --- | --- |
| LABOUR | labor | ï»¿ |
| Construction Material | material | ï»¿ |
| Cable Pull | equipment | ï»¿ |

## Schedule

| ID | WBS | Activity | Type | Duration | Start | Finish | Predecessors | Complete | Planned start | Planned finish | Total float | Free float | Constraint | Resources | On Schedule Indicator | %Completed | Disciplines | WBS | Types | EIT2 Main Activity | Phases | EIT WBS | EIT PKG | Main Activity | Areas |
| --- | --- | --- | --- | --- | --- | --- | --- | --- | --- | --- | --- | --- | --- | --- | --- | --- | --- | --- | --- | --- | --- | --- | --- | --- | --- |
|  | 3 | **EIT 2.1 : Schedule Level 4 : Clean Fuel Project (CFP)** |  |  | 2025-11-11 | 2026-07-09 |  |  |  |  |  |  |  |  |  |  |  |  |  |  |  |  |  |  |  |
|  | 1 | **Submission of Document for Approval** |  |  | 2025-11-11 | 2026-01-19 |  |  |  |  |  |  |  |  |  |  |  |  |  |  |  |  |  |  |  |
| COM1010 |  | HSE Plan |  | 32d | 2025-11-11 A | 2025-12-17 A |  | 100% |  |  |  |  |  |  | UDF_G3 | 0 | CO | Com1 | TY10 | Non | EIT2.1 | X01 | EIT02.1 |  |  |
| COM1020 |  | Quality Plan |  | 32d | 2025-11-11 A | 2025-12-17 A |  | 100% |  |  |  |  |  |  | UDF_G3 | 0 | CO | Com1 | TY10 | Non | EIT2.1 | X01 | EIT02.1 |  |  |
| COM1030 |  | Inspection and Test Plan |  | 32d | 2025-11-11 A | 2025-12-17 A |  | 100% |  |  |  |  |  |  | UDF_G3 | 0 | CO | Com1 | TY10 | Non | EIT2.1 | X01 | EIT02.1 |  |  |
| COM1040 |  | Method Statement and JSEA (i.e.) |  | 60d | 2025-11-11 A | 2026-01-19 A |  | 100% |  |  |  |  |  |  | UDF_G3 | 0 | CO | Com1 | TY10 | Non | EIT2.1 | X01 | EIT02.1 |  |  |
| COM1050 |  | Material Approve |  | 30d | 2025-11-11 A | 2025-12-15 A |  | 100% |  |  |  |  |  |  | UDF_G3 | 0 | CO | Com1 | TY10 | Non | EIT2.1 | X01 | EIT02.1 |  |  |
| COM1060 |  | Construction Measurements Report System (CMS) |  | 42.4d | 2025-11-11 A | 2025-12-30 A |  | 100% |  |  |  |  |  |  | UDF_G3 | 0 | CO | Com1 | TY10 | Non | EIT2.1 | X01 | EIT02.1 |  |  |
| COM1070 |  | Project Schedule L4 |  | 42d | 2025-11-11 A | 2025-12-29 A |  | 100% |  |  |  |  |  |  | UDF_G3 | 0 | CO | Com1 | TY10 | Non | EIT2.1 | X01 | EIT02.1 |  |  |
| COM1080 |  | Manpower Loading |  | 4d | 2025-11-11 A | 2025-11-14 A |  | 100% |  |  |  |  |  |  | UDF_G3 | 0 | CO | Com1 | TY10 | Non | EIT2.1 | X01 | EIT02.1 |  |  |
|  | 9 | **EIT-2.1 :Key Milestones** |  |  | 2025-11-11 | 2026-07-09 |  |  |  |  |  |  |  |  |  |  |  |  |  |  |  |  |  |  |  |
| MI1010 |  | Contract Award | milestone | 0d | 2025-11-11 A | 2025-11-11 A |  | 100% |  |  |  |  |  |  | UDF_G3 | 0 | CO | Com | TY10 | Non | EIT2.1 | X01 | EIT02.1 |  |  |
| MI1030 |  | Mobilization Key Person |  | 29d | 2025-11-11 A | 2025-12-13 A |  | 100% |  |  |  |  | finish on 2025-12-13 |  | UDF_G3 | 0 | CO | Com | TY10 | Non | EIT2.1 | X01 | EIT02.1 |  |  |
| MI1040 |  | Site Mobilization (i.e. Site office, IT System, Fabrication, Store) |  | 36d | 2025-11-11 A | 2025-12-22 A |  | 100% |  |  |  |  |  |  | UDF_G3 | 0 | CO | Com | TY10 | Non | EIT2.1 | X01 | EIT02.1 |  |  |
| MI1060 |  | EIT2.1 : WBS C05 : Verify Damaged System Cable Substation No. SS-098 (FAR-013) | milestone | 0d | 2026-05-15 | 2026-05-15 | 2.1-SS098INV-1020 FF |  |  |  | -88d | 334d | finish on 2026-01-31 |  | UDF_G3 | 0 | CO | Com | TY10 | Non | EIT2.1 | C05 | EIT02.1 |  |  |
| MI1110 |  | EIT2.1 : WBS B04 : Substation No. SS-118 Completed | milestone | 0d | 2026-05-15 | 2026-05-15 | 2.1-SS118EE04-1240 FF, 2.1-SS118EE04-1230, 2.1-SS118EE04-1220, 2.1-SS118EE04-1210, 2.1-SS118EE04-1200 |  |  |  | -64d | 334d | finish on 2026-02-28 |  | UDF_G3 | 0 | CO | Com | TY10 | Non | EIT2.1 | B04 | EIT02.1 |  |  |
| MI1100 |  | EIT2.1 : WBS E06 :Substation No. SS-077 Completed | milestone | 0d | 2026-06-15 | 2026-06-15 | 2.1-SS077EE04-1610 FF, 2.1-SS077EE04-1530, 2.1-SS077EE04-1540, 2.1-SS077EE04-1550, 2.1-SS077EE04-1600, 2.1-SS077EE04-1620, 2.1-SS077EE04-1630, 2.1-SS077EE04-1640, 2.1-SS077EE04-1650, 2.1-SS077EE04-1660, 2.1-SS077EE04-1670, 2.1-SS077EE04-1680, 2.1-SS077EE04-1690, 2.1-SS077EE04-1290, 2.1-SS077EE04-1560, 2.1-SS077EE04-1570, 2.1-SS077EE04-1580, 2.1-SS077EE04-1590, 2.1-SS077EE04-1340, 2.1-SS077EE04-1350, 2.1-SS077EE04-1700, 2.1-SS077EE04-1710 |  |  |  | -67d | 307d | finish on 2026-03-28 |  | UDF_G3 | 0 | CO | Com | TY10 | Non | EIT2.1 | E06 | EIT02.1 |  |  |
| MI1140 |  | EIT2.1 : WBS C03b : RHCU (Residue Hydrocracking Unit) | milestone | 0d | 2026-06-26 | 2026-06-26 | 2.1-RHCUTE01.1-1020 FF, 2.1-RHCUEE03-3200, 2.1-RHCUEE03-3210, 2.1-RHCUEE03-3220, 2.1-RHCUEE03-3230, 2.1-RHCUEE03-3240, 2.1-RHCUEE03-3250, 2.1-RHCUEE03-3260, 2.1-RHCUEE03-3270, 2.1-RHCUEE03-3280, 2.1-RHCUEE03-3290, 2.1-RHCUEE03-3300, 2.1-RHCUEE03-3310, 2.1-RHCUEE03-3320, 2.1-RHCUEE03-3330, 2.1-RHCUEE03-3340, 2.1-RHCUEE03-3350, 2.1-RHCUEE03-3360, 2.1-RHCUEE03-3370, 2.1-RHCUEE03-3380, 2.1-RHCUEE03-3390, 2.1-RHCUEE03-3400, 2.1-RHCUEE03-3410, 2.1-RHCUEE03-3420, 2.1-RHCUEE03-3430, 2.1-RHCUEE03-3440, 2.1-RHCUEE03-3450, 2.1-RHCUEE03-3460, 2.1-RHCUEE03-3470, 2.1-RHCUEE03-3480, 2.1-RHCUEE03-3490, 2.1-RHCUEE03-3500, 2.1-RHCUEE03-3510, 2.1-RHCUEE03-3520, 2.1-RHCUEE03-3530, 2.1-RHCUEE03-3540, 2.1-RHCUEE03-3550, 2.1-RHCUEE03-3560, 2.1-RHCUEE03-3570, 2.1-RHCUEE03-3580, 2.1-RHCUEE03-3590, 2.1-RHCUEE03-3600, 2.1-RHCUEE03-3610, 2.1-RHCUEE03-3620, 2.1-RHCUEE03-3630, 2.1-RHCUEE03-3640, 2.1-RHCUEE03-3650, 2.1-RHCUEE03-3660, 2.1-RHCUEE03-3670, 2.1-RHCUEE03-3680, 2.1-RHCUEE03-3690, 2.1-RHCUEE03-3700, 2.1-RHCUEE03-3710, 2.1-RHCUEE03-3720, 2.1-RHCUEE03-3730, 2.1-RHCUEE03-3740, 2.1-RHCUEE01-1120, 2.1-RHCUEE01-1130, 2.1-RHCUEE01-1140, 2.1-RHCUEE01-1070, 2.1-RHCUEE01-1080, 2.1-RHCUEE02-1080, 2.1-RHCUEE02-1090, 2.1-RHCUEE02-1100, 2.1-RHCUEE02-1110, 2.1-RHCUEE05-1050, 2.1-RHCUEE06-1060, 2.1-RHCUIN03-1040, 2.1-RHCUIN01-1100, 2.1-RHCUIN01-1110, 2.1-RHCUIN01-1120, 2.1-RHCUIN01-1130, 2.1-RHCUIN01-1140, 2.1-RHCUIN02-1100, 2.1-RHCUIN02-1110, 2.1-RHCUIN02-1120, 2.1-RHCUIN02-1130, 2.1-RHCUIN02-1140, 2.1-RHCUIN04-1030, 2.1-RHCUIN05-1010, 2.1-RHCUTE02-1020, 2.1-RHCUEE05-1060 |  |  |  | -75d | 297d | finish on 2026-03-31 |  | UDF_G3 | 0 | CO | Com | TY10 | Non | EIT2.1 | C03b | EIT02.1 |  |  |
| MI1080 |  | EIT2.1 : WBS C05 : Substation No. SS-098 (FAR-013) Completed | milestone | 0d | 2026-06-30 | 2026-06-30 | 2.1-SS098P-1000 FF, 2.1-SS098EE04-1140, 2.1-SS098EE04-1150, 2.1-SS098EE04-1160, 2.1-SS098EE04-1170, 2.1-SS098EE04-1180, 2.1-SS098IN04-1020, 2.1-SS098TE01-1020, 2.1-SS098TE02-1020, 2.1-SS097P-1000 |  |  |  | -94d | 294d | finish on 2026-03-12 |  | UDF_G3 | 0 | CO | Com | TY10 | Non | EIT2.1 | C05 | EIT02.1 |  |  |
| MI1090 |  | EIT2.1 : WBS C05 : Substation No. SS-097 Completed | milestone | 0d | 2026-06-30 | 2026-06-30 | 2.1-SS098P-1000 FF, 2.1-SS097EE04-1060, 2.1-SS097EE04-1070, 2.1-SS097EE04-1090, 2.1-SS097IN04-1020, 2.1-SS097TE01-1020, 2.1-SS097TE02-1020 |  |  |  | -94d | 294d | finish on 2026-03-12 |  | UDF_G3 | 0 | CO | Com | TY10 | Non | EIT2.1 | C05 | EIT02.1 |  |  |
| MI1150 |  | EIT2.1 : WBS C03c : SDA (Solvent De-Asphalting Unit) | milestone | 0d | 2026-07-07 | 2026-07-07 | 2.1-SDATE01.1-1020 FF, 2.1-SDAEE03-2120, 2.1-SDAEE03-2130, 2.1-SDAEE03-2140, 2.1-SDAEE03-2150, 2.1-SDAEE03-2160, 2.1-SDAEE03-2170, 2.1-SDAEE03-2180, 2.1-SDAEE03-2190, 2.1-SDAEE03-2200, 2.1-SDAEE03-2210, 2.1-SDAEE03-2220, 2.1-SDAEE03-2230, 2.1-SDAEE03-2240, 2.1-SDAEE03-2250, 2.1-SDAEE03-2260, 2.1-SDAEE03-2270, 2.1-SDAEE03-2280, 2.1-SDAEE03-2290, 2.1-SDAEE03-2300, 2.1-SDAEE03-2310, 2.1-SDAEE03-2320, 2.1-SDAEE03-2330, 2.1-SDAEE03-2340, 2.1-SDAEE03-2350, 2.1-SDAEE03-2360, 2.1-SDAEE03-2370, 2.1-SDAEE03-2380, 2.1-SDAEE03-2390, 2.1-SDAEE01-1120, 2.1-SDAEE01-1130, 2.1-SDAEE01-1140, 2.1-SDAEE01-1109, 2.1-SDAEE01-1080, 2.1-SDAEE02-1100, 2.1-SDAEE02-1110, 2.1-SDAEE02-1120, 2.1-SDAEE02-1130, 2.1-SDAEE02-1140, 2.1-SDAEE05-1030, 2.1-SDAEE06-1020, 2.1-SDAIN03-1040, 2.1-SDAIN01-1080, 2.1-SDAIN01-1090, 2.1-SDAIN01-1100, 2.1-SDAIN01-1110, 2.1-SDAIN02-1100, 2.1-SDAIN02-1110, 2.1-SDAIN02-1120, 2.1-SDAIN02-1130, 2.1-SDAIN04-1030, 2.1-SDAIN05-1010, 2.1-SDATE01-1020, 2.1-SDATE02-1020, 2.1-SDATE01.1-1020, 2.1-SDAEE01-1150 |  |  |  | -84d | 288d | finish on 2026-03-31 |  | UDF_G3 | 0 | CO | Com | TY10 | Non | EIT2.1 | C03c | EIT02.1 |  |  |
| MI1120 |  | EIT2.1 : WBS B07 : MCB-3 Completed | milestone | 0d | 2026-07-08 | 2026-07-08 | 2.1-MCB3EE05-1030 FF, 2.1-MCB3EE01-1060, 2.1-MCB3EE01-1070, 2.1-MCB3EE01-1080, 2.1-MCB3EE02-1060, 2.1-MCB3EE02-1070, 2.1-MCB3EE02-1080, 2.1-MCB3EE05-1030, 2.1-MCB3IN01-1110, 2.1-MCB3IN01-1090, 2.1-MCB3IN01-1100, 2.1-MCB3IN01-1080, 2.1-MCB3IN02-1110, 2.1-MCB3IN02-1080, 2.1-MCB3IN02-1090, 2.1-MCB3IN02-1100, 2.1-MCB3IN04-1020 |  |  |  | -100d | 287d | finish on 2026-03-13 |  | UDF_G3 | 0 | CO | Com | TY10 | Non | EIT2.1 | C07 | EIT02.1 |  |  |
| MI1130 |  | EIT2.1 : WBS C03a : HCU-3 (Hydrocracking Unit) | milestone | 0d | 2026-07-09 | 2026-07-09 | 2.1-HCUTE01.1-1020 FF, 2.1-HCUTE02-1020, 2.1-HCUTE01-1020, 2.1-HCUIN05-1010, 2.1-HCUIN04-1030, 2.1-HCUIN02-1140, 2.1-HCUIN02-1130, 2.1-HCUIN02-1120, 2.1-HCUIN02-1110, 2.1-HCUIN02-1100, 2.1-HCUIN01-1130, 2.1-HCUIN01-1140, 2.1-HCUIN01-1120, 2.1-HCUIN01-1110, 2.1-HCUIN01-1100, 2.1-HCUIN03-1040, 2.1-HCUEE06-1060, 2.1-HCUEE05-1040, 2.1-HCUEE02-1140, 2.1-HCUEE02-1130, 2.1-HCUEE02-1120, 2.1-HCUEE02-1110, 2.1-HCUEE02-1100, 2.1-HCUEE01-1080, 2.1-HCUEE01-1070, 2.1-HCUEE01-1140, 2.1-HCUEE01-1130, 2.1-HCUEE01-1120, 2.1-HCUEE05-1060 |  |  |  | -86d | 286d | finish on 2026-03-31 |  | UDF_G3 | 0 | CO | Com | TY10 | Non | EIT2.1 | C03a | EIT02.1 |  |  |
|  | 2 | **EIT2.1: : Construction Work** |  |  | 2025-12-12 | 2026-07-09 |  |  |  |  |  |  |  |  |  |  |  |  |  |  |  |  |  |  |  |
|  | 10 | **WBS : C03** |  |  | 2025-12-12 | 2026-07-09 |  |  |  |  |  |  |  |  |  |  |  |  |  |  |  |  |  |  |  |
|  | 2 | **WBS : C03a HCU-3 (Hydrocracking Unit)** |  |  | 2025-12-12 | 2026-07-09 |  |  |  |  |  |  |  |  |  |  |  |  |  |  |  |  |  |  |  |
|  | 6 | **Electrical** |  |  | 2025-12-12 | 2026-06-20 |  |  |  |  |  |  |  |  |  |  |  |  |  |  |  |  |  |  |  |
|  | 3 | **Electrical Cable Tray/Ladder Installation** |  |  | 2025-12-12 | 2026-02-17 |  |  |  |  |  |  |  |  |  |  |  |  |  |  |  |  |  |  |  |
|  | 1 | **Air Fin Cooler - EM-10629-1** |  |  | 2025-12-12 | 2026-02-06 |  |  |  |  |  |  |  |  |  |  |  |  |  |  |  |  |  |  |  |
| 2.1-HCUEE03-1000 |  | Install support / bracket |  | 20d | 2025-12-12 A | 2026-01-03 A | MI1040 SS+27d, MI1040 FS+27d | 100% |  |  |  |  |  | LABOUR [15 h]; Construction Material | UDF_G3 | 1 | EE | C03a | TY1 | Non | EIT2.1 | C03a | EIT02.1 | 1 | HCU |
| 2.1-HCUEE03-1090 |  | Install Ladder / Tray |  | 20d | 2026-01-05 A | 2026-01-28 A | 2.1-HCUEE03-1000 SS, 2.1-HCUEE03-1000 | 100% | 2026-01-05 | 2026-01-27 |  |  |  | LABOUR [30 h]; Construction Material | UDF_G3 | 1 | EE | C03a | TY1 | Non | EIT2.1 | C03a | EIT02.1 | 1 | HCU |
| 2.1-HCUEE03-1100 |  | Install Conduits |  | 20d | 2026-01-05 A | 2026-01-27 A | 2.1-HCUEE03-1090 SS | 100% |  |  |  |  |  | LABOUR [20 h]; Construction Material | UDF_G3 | 1 | EE | C03a | TY1 | Non | EIT2.1 | C03a | EIT02.1 | 1 | HCU |
| 2.1-HCUEE03-1270 |  | Clear punch |  | 6d | 2026-01-28 A | 2026-02-03 A | 2.1-HCUEE03-1100 SS, 2.1-HCUEE03-1090 SS, 2.1-HCUEE03-1100, 2.1-HCUEE03-1090 | 100% |  |  |  |  |  | LABOUR [10 h]; Construction Material | UDF_G3 | 1 | EE | C03a | TY1 | Non | EIT2.1 | C03a | EIT02.1 | 1 | HCU |
| 2.1-HCUEE03-1360 |  | Complete QA/QC document |  | 3d | 2026-02-04 A | 2026-02-06 A | 2.1-HCUEE03-1270 SS, 2.1-HCUEE03-1270 | 100% |  |  |  |  |  | LABOUR [7 h]; Construction Material | UDF_G3 | 1 | EE | C03a | TY1 | Non | EIT2.1 | C03a | EIT02.1 | 1 | HCU |

| ID | WBS | Activity | Duration | Start | Finish | Predecessors | Complete | Resources | On Schedule Indicator | %Completed | Disciplines | Main Activity | WBS | Types | EIT2 Main Activity | Areas | Phases | EIT WBS | EIT PKG |
| --- | --- | --- | --- | --- | --- | --- | --- | --- | --- | --- | --- | --- | --- | --- | --- | --- | --- | --- | --- |
|  | 2 | **Air Fin Cooler - EM-10726-1** |  | 2025-12-12 | 2026-02-06 |  |  |  |  |  |  |  |  |  |  |  |  |  |  |
| 2.1-HCUEE03-1010 |  | Install support / bracket | 20d | 2025-12-12 A | 2026-01-03 A | 2.1-HCUEE03-1000 SS | 100% | LABOUR [15 h]; Construction Material | UDF_G3 | 1 | EE | 1 | C03a | TY1 | Non | HCU | EIT2.1 | C03a | EIT02.1 |
| 2.1-HCUEE03-1110 |  | Install Ladder / Tray | 20d | 2026-01-05 A | 2026-01-27 A | 2.1-HCUEE03-1010 SS, 2.1-HCUEE03-1010 | 100% | LABOUR [30 h]; Construction Material | UDF_G3 | 1 | EE | 1 | C03a | TY1 | Non | HCU | EIT2.1 | C03a | EIT02.1 |
| 2.1-HCUEE03-1120 |  | Install Conduits | 20d | 2026-01-05 A | 2026-01-27 A | 2.1-HCUEE03-1110 SS | 100% | LABOUR [20 h]; Construction Material | UDF_G3 | 1 | EE | 1 | C03a | TY1 | Non | HCU | EIT2.1 | C03a | EIT02.1 |
| 2.1-HCUEE03-1280 |  | Clear punch | 6d | 2026-01-28 A | 2026-02-03 A | 2.1-HCUEE03-1120 SS, 2.1-HCUEE03-1110 SS, 2.1-HCUEE03-1120, 2.1-HCUEE03-1110 | 100% | LABOUR [10 h]; Construction Material | UDF_G3 | 1 | EE | 1 | C03a | TY1 | Non | HCU | EIT2.1 | C03a | EIT02.1 |
| 2.1-HCUEE03-1370 |  | Complete QA/QC document | 3d | 2026-02-04 A | 2026-02-06 A | 2.1-HCUEE03-1280 SS, 2.1-HCUEE03-1360 SS, 2.1-HCUEE03-1280, 2.1-HCUEE03-1360 FF | 100% | LABOUR [7 h]; Construction Material | UDF_G3 | 1 | EE | 1 | C03a | TY1 | Non | HCU | EIT2.1 | C03a | EIT02.1 |
|  | 3 | **Air Fin Cooler - EM-10726-5** |  | 2025-12-12 | 2026-02-06 |  |  |  |  |  |  |  |  |  |  |  |  |  |  |
| 2.1-HCUEE03-1020 |  | Install support / bracket | 20d | 2025-12-12 A | 2026-01-03 A | 2.1-HCUEE03-1010 SS | 100% | LABOUR [15 h]; Construction Material | UDF_G3 | 1 | EE | 1 | C03a | TY1 | Non | HCU | EIT2.1 | C03a | EIT02.1 |
| 2.1-HCUEE03-1130 |  | Install Ladder / Tray | 20d | 2026-01-05 A | 2026-01-27 A | 2.1-HCUEE03-1020 SS, 2.1-HCUEE03-1020 | 100% | LABOUR [30 h]; Construction Material | UDF_G3 | 1 | EE | 1 | C03a | TY1 | Non | HCU | EIT2.1 | C03a | EIT02.1 |
| 2.1-HCUEE03-1140 |  | Install Conduits | 20d | 2026-01-05 A | 2026-01-27 A | 2.1-HCUEE03-1130 SS | 100% | LABOUR [20 h]; Construction Material | UDF_G3 | 1 | EE | 1 | C03a | TY1 | Non | HCU | EIT2.1 | C03a | EIT02.1 |
| 2.1-HCUEE03-1290 |  | Clear punch | 6d | 2026-01-28 A | 2026-02-03 A | 2.1-HCUEE03-1140 SS, 2.1-HCUEE03-1130 SS, 2.1-HCUEE03-1140, 2.1-HCUEE03-1130 | 100% | LABOUR [10 h]; Construction Material | UDF_G3 | 1 | EE | 1 | C03a | TY1 | Non | HCU | EIT2.1 | C03a | EIT02.1 |
| 2.1-HCUEE03-1380 |  | Complete QA/QC document | 3d | 2026-02-04 A | 2026-02-06 A | 2.1-HCUEE03-1290 SS, 2.1-HCUEE03-1370 SS, 2.1-HCUEE03-1290, 2.1-HCUEE03-1370 FF | 100% | LABOUR [7 h]; Construction Material | UDF_G3 | 1 | EE | 1 | C03a | TY1 | Non | HCU | EIT2.1 | C03a | EIT02.1 |
|  | 4 | **Air Fin Cooler - EM-10643-1** |  | 2025-12-12 | 2026-02-06 |  |  |  |  |  |  |  |  |  |  |  |  |  |  |
| 2.1-HCUEE03-1030 |  | Install support / bracket | 20d | 2025-12-12 A | 2026-01-03 A | 2.1-HCUEE03-1020 SS | 100% | LABOUR [15 h]; Construction Material | UDF_G3 | 1 | EE | 1 | C03a | TY1 | Non | HCU | EIT2.1 | C03a | EIT02.1 |
| 2.1-HCUEE03-1150 |  | Install Ladder / Tray | 20d | 2026-01-05 A | 2026-01-27 A | 2.1-HCUEE03-1030 SS, 2.1-HCUEE03-1030 | 100% | LABOUR [30 h]; Construction Material | UDF_G3 | 1 | EE | 1 | C03a | TY1 | Non | HCU | EIT2.1 | C03a | EIT02.1 |
| 2.1-HCUEE03-1160 |  | Install Conduits | 20d | 2026-01-05 A | 2026-01-27 A | 2.1-HCUEE03-1150 SS | 100% | LABOUR [20 h]; Construction Material | UDF_G3 | 1 | EE | 1 | C03a | TY1 | Non | HCU | EIT2.1 | C03a | EIT02.1 |
| 2.1-HCUEE03-1300 |  | Clear punch | 6d | 2026-01-28 A | 2026-02-03 A | 2.1-HCUEE03-1160 SS, 2.1-HCUEE03-1150 SS, 2.1-HCUEE03-1160, 2.1-HCUEE03-1150 | 100% | LABOUR [10 h]; Construction Material | UDF_G3 | 1 | EE | 1 | C03a | TY1 | Non | HCU | EIT2.1 | C03a | EIT02.1 |
| 2.1-HCUEE03-1390 |  | Complete QA/QC document | 3d | 2026-02-04 A | 2026-02-06 A | 2.1-HCUEE03-1300 SS, 2.1-HCUEE03-1380 SS, 2.1-HCUEE03-1300, 2.1-HCUEE03-1380 FF | 100% | LABOUR [7 h]; Construction Material | UDF_G3 | 1 | EE | 1 | C03a | TY1 | Non | HCU | EIT2.1 | C03a | EIT02.1 |
|  | 5 | **Air Fin Cooler - EM-10643-7** |  | 2025-12-12 | 2026-02-06 |  |  |  |  |  |  |  |  |  |  |  |  |  |  |
| 2.1-HCUEE03-1040 |  | Install support / bracket | 20d | 2025-12-12 A | 2026-01-03 A | 2.1-HCUEE03-1030 SS | 100% | LABOUR [15 h]; Construction Material | UDF_G3 | 1 | EE | 1 | C03a | TY1 | Non | HCU | EIT2.1 | C03a | EIT02.1 |
| 2.1-HCUEE03-1170 |  | Install Ladder / Tray | 20d | 2026-01-05 A | 2026-01-27 A | 2.1-HCUEE03-1040 SS, 2.1-HCUEE03-1040 | 100% | LABOUR [30 h]; Construction Material | UDF_G3 | 1 | EE | 1 | C03a | TY1 | Non | HCU | EIT2.1 | C03a | EIT02.1 |
| 2.1-HCUEE03-1180 |  | Install Conduits | 20d | 2026-01-05 A | 2026-01-27 A | 2.1-HCUEE03-1170 SS | 100% | LABOUR [20 h]; Construction Material | UDF_G3 | 1 | EE | 1 | C03a | TY1 | Non | HCU | EIT2.1 | C03a | EIT02.1 |
| 2.1-HCUEE03-1310 |  | Clear punch | 6d | 2026-01-28 A | 2026-02-03 A | 2.1-HCUEE03-1180 SS, 2.1-HCUEE03-1170 SS, 2.1-HCUEE03-1180, 2.1-HCUEE03-1170 | 100% | Construction Material | UDF_G3 | 1 | EE | 1 | C03a | TY1 | Non | HCU | EIT2.1 | C03a | EIT02.1 |
| 2.1-HCUEE03-1400 |  | Complete QA/QC document | 3d | 2026-02-04 A | 2026-02-06 A | 2.1-HCUEE03-1310 SS, 2.1-HCUEE03-1390 SS, 2.1-HCUEE03-1310, 2.1-HCUEE03-1390 FF | 100% | Construction Material | UDF_G3 | 1 | EE | 1 | C03a | TY1 | Non | HCU | EIT2.1 | C03a | EIT02.1 |

| ID | WBS | Activity | Duration | Start | Finish | Predecessors | Complete | Resources | On Schedule Indicator | %Completed | Disciplines | Main Activity | WBS | Types | EIT2 Main Activity | Areas | Phases | EIT WBS | EIT PKG |
| --- | --- | --- | --- | --- | --- | --- | --- | --- | --- | --- | --- | --- | --- | --- | --- | --- | --- | --- | --- |
|  | 6 | **Air Fin Cooler - EM-10624-1** |  | 2025-12-12 | 2026-02-06 |  |  |  |  |  |  |  |  |  |  |  |  |  |  |
| 2.1-HCUEE03-1050 |  | Install support / bracket | 20d | 2025-12-12 A | 2026-01-03 A | 2.1-HCUEE03-1040 SS | 100% | Construction Material | UDF_G3 | 1 | EE | 1 | C03a | TY1 | Non | HCU | EIT2.1 | C03a | EIT02.1 |
| 2.1-HCUEE03-1190 |  | Install Ladder / Tray | 20d | 2026-01-05 A | 2026-01-27 A | 2.1-HCUEE03-1050 SS, 2.1-HCUEE03-1050 | 100% | Construction Material | UDF_G3 | 1 | EE | 1 | C03a | TY1 | Non | HCU | EIT2.1 | C03a | EIT02.1 |
| 2.1-HCUEE03-1200 |  | Install Conduits | 20d | 2026-01-05 A | 2026-01-27 A | 2.1-HCUEE03-1190 SS | 100% | Construction Material | UDF_G3 | 1 | EE | 1 | C03a | TY1 | Non | HCU | EIT2.1 | C03a | EIT02.1 |
| 2.1-HCUEE03-1320 |  | Clear punch | 6d | 2026-01-28 A | 2026-02-03 A | 2.1-HCUEE03-1200 SS, 2.1-HCUEE03-1190 SS, 2.1-HCUEE03-1200, 2.1-HCUEE03-1190 | 100% | Construction Material | UDF_G3 | 1 | EE | 1 | C03a | TY1 | Non | HCU | EIT2.1 | C03a | EIT02.1 |
| 2.1-HCUEE03-1410 |  | Complete QA/QC document | 3d | 2026-02-04 A | 2026-02-06 A | 2.1-HCUEE03-1320 SS, 2.1-HCUEE03-1400 SS, 2.1-HCUEE03-1320, 2.1-HCUEE03-1400 FF | 100% | Construction Material | UDF_G3 | 1 | EE | 1 | C03a | TY1 | Non | HCU | EIT2.1 | C03a | EIT02.1 |
|  | 7 | **Air Fin Cooler - EM-10639-1** |  | 2025-12-12 | 2026-02-06 |  |  |  |  |  |  |  |  |  |  |  |  |  |  |
| 2.1-HCUEE03-1060 |  | Install support / bracket | 20d | 2025-12-12 A | 2026-01-03 A | 2.1-HCUEE03-1050 SS | 100% | LABOUR [15 h]; Construction Material | UDF_G3 | 1 | EE | 1 | C03a | TY1 | Non | HCU | EIT2.1 | C03a | EIT02.1 |
| 2.1-HCUEE03-1210 |  | Install Ladder / Tray | 20d | 2026-01-05 A | 2026-01-27 A | 2.1-HCUEE03-1060 SS, 2.1-HCUEE03-1060 | 100% | LABOUR [30 h]; Construction Material | UDF_G3 | 1 | EE | 1 | C03a | TY1 | Non | HCU | EIT2.1 | C03a | EIT02.1 |
| 2.1-HCUEE03-1220 |  | Install Conduits | 20d | 2026-01-05 A | 2026-01-27 A | 2.1-HCUEE03-1210 SS | 100% | LABOUR [20 h]; Construction Material | UDF_G3 | 1 | EE | 1 | C03a | TY1 | Non | HCU | EIT2.1 | C03a | EIT02.1 |
| 2.1-HCUEE03-1330 |  | Clear punch | 6d | 2026-01-28 A | 2026-02-03 A | 2.1-HCUEE03-1220 SS, 2.1-HCUEE03-1210 SS, 2.1-HCUEE03-1220, 2.1-HCUEE03-1210 | 100% | LABOUR [10 h]; Construction Material | UDF_G3 | 1 | EE | 1 | C03a | TY1 | Non | HCU | EIT2.1 | C03a | EIT02.1 |
| 2.1-HCUEE03-1420 |  | Complete QA/QC document | 3d | 2026-02-04 A | 2026-02-06 A | 2.1-HCUEE03-1330 SS, 2.1-HCUEE03-1410 FF, 2.1-HCUEE03-1330 | 100% | LABOUR [7 h]; Construction Material | UDF_G3 | 1 | EE | 1 | C03a | TY1 | Non | HCU | EIT2.1 | C03a | EIT02.1 |
|  | 8 | **Air Fin Cooler - EM-10636-1** |  | 2025-12-12 | 2026-02-06 |  |  |  |  |  |  |  |  |  |  |  |  |  |  |
| 2.1-HCUEE03-1070 |  | Install support / bracket | 20d | 2025-12-12 A | 2026-01-03 A | 2.1-HCUEE03-1060 SS | 100% | LABOUR [15 h]; Construction Material | UDF_G3 | 1 | EE | 1 | C03a | TY1 | Non | HCU | EIT2.1 | C03a | EIT02.1 |
| 2.1-HCUEE03-1230 |  | Install Ladder / Tray | 20d | 2026-01-05 A | 2026-01-27 A | 2.1-HCUEE03-1070 SS, 2.1-HCUEE03-1070 | 100% | LABOUR [30 h]; Construction Material | UDF_G3 | 1 | EE | 1 | C03a | TY1 | Non | HCU | EIT2.1 | C03a | EIT02.1 |
| 2.1-HCUEE03-1240 |  | Install Conduits | 20d | 2026-01-05 A | 2026-01-27 A | 2.1-HCUEE03-1230 SS | 100% | LABOUR [20 h]; Construction Material | UDF_G3 | 1 | EE | 1 | C03a | TY1 | Non | HCU | EIT2.1 | C03a | EIT02.1 |
| 2.1-HCUEE03-1340 |  | Clear punch | 6d | 2026-01-28 A | 2026-02-03 A | 2.1-HCUEE03-1240 SS, 2.1-HCUEE03-1230 SS, 2.1-HCUEE03-1240, 2.1-HCUEE03-1230 | 100% | LABOUR [10 h]; Construction Material | UDF_G3 | 1 | EE | 1 | C03a | TY1 | Non | HCU | EIT2.1 | C03a | EIT02.1 |
| 2.1-HCUEE03-1430 |  | Complete QA/QC document | 3d | 2026-02-04 A | 2026-02-06 A | 2.1-HCUEE03-1340 SS, 2.1-HCUEE03-1420 SS, 2.1-HCUEE03-1340, 2.1-HCUEE03-1420 FF | 100% | LABOUR [7 h]; Construction Material | UDF_G3 | 1 | EE | 1 | C03a | TY1 | Non | HCU | EIT2.1 | C03a | EIT02.1 |
|  | 9 | **Air Fin Cooler - EM-10714-1** |  | 2025-12-12 | 2026-02-17 |  |  |  |  |  |  |  |  |  |  |  |  |  |  |
| 2.1-HCUEE03-1080 |  | Install support / bracket | 29d | 2025-12-12 A | 2026-01-14 A | 2.1-HCUEE03-1070 SS | 100% | LABOUR [15 h]; Construction Material | UDF_G3 | 1 | EE | 1 | C03a | TY1 | Non | HCU | EIT2.1 | C03a | EIT02.1 |
| 2.1-HCUEE03-1250 |  | Install Ladder / Tray | 20d | 2026-01-15 A | 2026-02-06 A | 2.1-HCUEE03-1080 SS, 2.1-HCUEE03-1080 | 100% | LABOUR [30 h]; Construction Material | UDF_G3 | 1 | EE | 1 | C03a | TY1 | Non | HCU | EIT2.1 | C03a | EIT02.1 |
| 2.1-HCUEE03-1260 |  | Install Conduits | 20d | 2026-01-15 A | 2026-02-06 A | 2.1-HCUEE03-1250 SS | 100% | LABOUR [20 h]; Construction Material | UDF_G3 | 1 | EE | 1 | C03a | TY1 | Non | HCU | EIT2.1 | C03a | EIT02.1 |
| 2.1-HCUEE03-1350 |  | Clear punch | 5.6d | 2026-02-07 A | 2026-02-13 A | 2.1-HCUEE03-1260 SS, 2.1-HCUEE03-1250 SS, 2.1-HCUEE03-1260, 2.1-HCUEE03-1250 | 100% | LABOUR [10 h]; Construction Material | UDF_G3 | 1 | EE | 1 | C03a | TY1 | Non | HCU | EIT2.1 | C03a | EIT02.1 |
| 2.1-HCUEE03-1440 |  | Complete QA/QC document | 3d | 2026-02-13 A | 2026-02-17 A | 2.1-HCUEE03-1350 SS, 2.1-HCUEE03-1430 SS, 2.1-HCUEE03-1350, 2.1-HCUEE03-1430 FF | 100% | LABOUR [7 h]; Construction Material | UDF_G3 | 1 | EE | 1 | C03a | TY1 | Non | HCU | EIT2.1 | C03a | EIT02.1 |

| ID | WBS | Activity | Duration | Start | Finish | Predecessors | Complete | Remaining | Planned start | Planned finish | Total float | Free float | Constraint | Resources | On Schedule Indicator | %Completed | Disciplines | Main Activity | WBS | Types | EIT2 Main Activity | Areas | Phases | EIT WBS | EIT PKG |
| --- | --- | --- | --- | --- | --- | --- | --- | --- | --- | --- | --- | --- | --- | --- | --- | --- | --- | --- | --- | --- | --- | --- | --- | --- | --- |
|  | 2 | **Electrical Cable Installation** |  | 2026-01-30 | 2026-06-15 |  |  |  |  |  |  |  |  |  |  |  |  |  |  |  |  |  |  |  |  |
|  | 1 | **Cable Pull MV Cable** |  | 2026-05-01 | 2026-06-15 |  |  |  |  |  |  |  |  |  |  |  |  |  |  |  |  |  |  |  |  |
| 2.1-HCUEE01-1000 |  | Pull Cable | 20d | 2026-05-01 A | 2026-06-06 | 2.1-HCUEE03-1070 SS+6d, 2.1-HCUEE03-1070 FS+6d | 2% | 20d | 2026-05-01 | 2026-05-23 | -70d | 0d |  | LABOUR [4000 h]; Construction Material [200] | UDF_G3 | 0 | EE | 1 | C03a | TY1 | Non | HCU | EIT2.1 | C03a | EIT02.1 |
| 2.1-HCUEE01-1090 |  | Megger & Continuity test | 4d | 2026-06-08 | 2026-06-11 | 2.1-HCUEE01-1000 |  |  |  |  | -65d | 0d |  | LABOUR [1000 h]; Construction Material [40] | UDF_G3 | 0 | EE | 1 | C03a | TY1 | Non | HCU | EIT2.1 | C03a | EIT02.1 |
| 2.1-HCUEE01-1120 |  | Complete QA/QC document | 3d | 2026-06-12 | 2026-06-15 | 2.1-HCUEE01-1090, 2.1-HCUEE03-1440 FF |  |  |  |  | -65d | 21d |  | LABOUR [1148.34 h]; Construction Material [30] | UDF_G3 | 0 | EE | 1 | C03a | TY1 | Non | HCU | EIT2.1 | C03a | EIT02.1 |
|  | 2 | **Cable Pull LV Cable** |  | 2026-01-30 | 2026-06-15 |  |  |  |  |  |  |  |  |  |  |  |  |  |  |  |  |  |  |  |  |
| 2.1-HCUEE01-1010 |  | Pull Cable | 20d | 2026-01-30 A | 2026-06-06 | 2.1-HCUEE01-1000 SS | 18% | 20d | 2026-01-30 | 2026-02-21 | -70d | 0d | start on or after 2026-01-30 | LABOUR [4000 h]; Construction Material [200] | UDF_G3 | 0 | EE | 1 | C03a | TY1 | Non | HCU | EIT2.1 | C03a | EIT02.1 |
| 2.1-HCUEE01-1100 |  | Megger & Continuity test | 4d | 2026-06-08 | 2026-06-11 | 2.1-HCUEE01-1010 |  |  |  |  | -65d | 0d |  | LABOUR [1000 h]; Construction Material [40] | UDF_G3 | 0 | EE | 1 | C03a | TY1 | Non | HCU | EIT2.1 | C03a | EIT02.1 |
| 2.1-HCUEE01-1130 |  | Complete QA/QC document | 3d | 2026-06-12 | 2026-06-15 | 2.1-HCUEE01-1100 |  |  |  |  | -65d | 21d |  | LABOUR [1148.34 h]; Construction Material [30] | UDF_G3 | 0 | EE | 1 | C03a | TY1 | Non | HCU | EIT2.1 | C03a | EIT02.1 |
|  | 3 | **Cable Pull Control Cable** |  | 2026-01-30 | 2026-06-15 |  |  |  |  |  |  |  |  |  |  |  |  |  |  |  |  |  |  |  |  |
| 2.1-HCUEE01-1020 |  | Pull Cable | 20d | 2026-01-30 A | 2026-06-06 | 2.1-HCUEE01-1010 SS | 13% | 20d | 2026-01-30 | 2026-02-21 | -70d | 0d | start on or after 2026-01-30 | LABOUR [4000 h]; Construction Material [200] | UDF_G3 | 0 | EE | 1 | C03a | TY1 | Non | HCU | EIT2.1 | C03a | EIT02.1 |
| 2.1-HCUEE01-1110 |  | Megger & Continuity test | 4d | 2026-06-08 | 2026-06-11 | 2.1-HCUEE01-1020 |  |  |  |  | -65d | 0d |  | LABOUR [1000 h]; Construction Material [40] | UDF_G3 | 0 | EE | 1 | C03a | TY1 | Non | HCU | EIT2.1 | C03a | EIT02.1 |
| 2.1-HCUEE01-1140 |  | Complete QA/QC document | 3d | 2026-06-12 | 2026-06-15 | 2.1-HCUEE01-1110 |  |  |  |  | -65d | 21d |  | LABOUR [1148.34 h]; Construction Material [30] | UDF_G3 | 0 | EE | 1 | C03a | TY1 | Non | HCU | EIT2.1 | C03a | EIT02.1 |
|  | 4 | **Serial Communication Cable** |  | 2026-05-15 | 2026-06-15 |  |  |  |  |  |  |  |  |  |  |  |  |  |  |  |  |  |  |  |  |
| 2.1-HCUEE01-1030 |  | Pull Cable | 20d | 2026-05-15 | 2026-06-06 | 2.1-HCUEE01-1020 SS |  |  |  |  | -70d | 0d | start on or after 2026-01-30 | LABOUR [4000 h]; Construction Material [200] | UDF_G3 | 0 | EE | 1 | C03a | TY1 | Non | HCU | EIT2.1 | C03a | EIT02.1 |
| 2.1-HCUEE01-1050 |  | Megger & Continuity test | 4d | 2026-06-08 | 2026-06-11 | 2.1-HCUEE01-1030 |  |  |  |  | -65d | 0d |  | LABOUR [1000 h]; Construction Material [40] | UDF_G3 | 0 | EE | 1 | C03a | TY1 | Non | HCU | EIT2.1 | C03a | EIT02.1 |
| 2.1-HCUEE01-1070 |  | Complete QA/QC document | 3d | 2026-06-12 | 2026-06-15 | 2.1-HCUEE01-1050 |  |  |  |  | -65d | 21d |  | LABOUR [1148.34 h]; Construction Material [30] | UDF_G3 | 0 | EE | 1 | C03a | TY1 | Non | HCU | EIT2.1 | C03a | EIT02.1 |
|  | 5 | **Cable Pull Instrument Cable** |  | 2026-05-15 | 2026-06-15 |  |  |  |  |  |  |  |  |  |  |  |  |  |  |  |  |  |  |  |  |
| 2.1-HCUEE01-1040 |  | Pull Cable | 20d | 2026-05-15 | 2026-06-06 | 2.1-HCUEE01-1030 SS |  |  |  |  | -65d | 0d | start on or after 2026-01-30 | LABOUR [4000 h]; Construction Material [200] | UDF_G3 | 0 | EE | 1 | C03a | TY1 | Non | HCU | EIT2.1 | C03a | EIT02.1 |
| 2.1-HCUEE01-1060 |  | Megger & Continuity test | 4d | 2026-06-08 | 2026-06-11 | 2.1-HCUEE01-1040 |  |  |  |  | -65d | 0d |  | LABOUR [1000 h]; Construction Material [40] | UDF_G3 | 0 | EE | 1 | C03a | TY1 | Non | HCU | EIT2.1 | C03a | EIT02.1 |
| 2.1-HCUEE01-1080 |  | Complete QA/QC document | 3d | 2026-06-12 | 2026-06-15 | 2.1-HCUEE01-1060 |  |  |  |  | -65d | 21d |  | LABOUR [1148.34 h]; Construction Material [30] | UDF_G3 | 0 | EE | 1 | C03a | TY1 | Non | HCU | EIT2.1 | C03a | EIT02.1 |
|  | 4 | **Electrical Cable Termination / Glanding** |  | 2026-02-23 | 2026-06-20 |  |  |  |  |  |  |  |  |  |  |  |  |  |  |  |  |  |  |  |  |
|  | 1 | **Termination MV Cable** |  | 2026-06-08 | 2026-06-20 |  |  |  |  |  |  |  |  |  |  |  |  |  |  |  |  |  |  |  |  |
| 2.1-HCUEE02-1000 |  | Cable Termination/Glanding | 5d | 2026-06-08 | 2026-06-12 | 2.1-HCUEE01-1000 SS, 2.1-HCUEE01-1000 |  |  |  |  | -70d | 0d |  | LABOUR [90 h]; Construction Material [50] | UDF_G3 | 0.1 | EE | 1 | C03a | TY1 | Non | HCU | EIT2.1 | C03a | EIT02.1 |
| 2.1-HCUEE02-1050 |  | Clear punch | 4d | 2026-06-13 | 2026-06-17 | 2.1-HCUEE02-1000 |  |  |  |  | -70d | 0d |  | LABOUR [20 h]; Construction Material [40] | UDF_G3 | 0 | EE | 1 | C03a | TY1 | Non | HCU | EIT2.1 | C03a | EIT02.1 |
| 2.1-HCUEE02-1100 |  | Complete QA/QC document | 3d | 2026-06-18 | 2026-06-20 | 2.1-HCUEE02-1050 |  |  |  |  | -70d | 16d |  | LABOUR [29.78 h]; Construction Material [30] | UDF_G3 | 0 | EE | 1 | C03a | TY1 | Non | HCU | EIT2.1 | C03a | EIT02.1 |

| ID | WBS | Activity | Duration | Start | Finish | Predecessors | Complete | Remaining | Planned start | Planned finish | Total float | Free float | Constraint | Resources | On Schedule Indicator | %Completed | Disciplines | Main Activity | WBS | Types | EIT2 Main Activity | Areas | Phases | EIT WBS | EIT PKG |
| --- | --- | --- | --- | --- | --- | --- | --- | --- | --- | --- | --- | --- | --- | --- | --- | --- | --- | --- | --- | --- | --- | --- | --- | --- | --- |
|  | 2 | **Termination LV Cable** |  | 2026-02-23 | 2026-05-28 |  |  |  |  |  |  |  |  |  |  |  |  |  |  |  |  |  |  |  |  |
| 2.1-HCUEE02-1010 |  | Cable Termination/Glanding | 5d | 2026-02-23 A | 2026-05-20 | 2.1-HCUEE01-1010 SS | 27% | 5d | 2026-02-23 | 2026-02-27 | -50d | 0d |  | LABOUR [90 h]; Construction Material [50] | UDF_G3 | 0.1 | EE | 1 | C03a | TY1 | Non | HCU | EIT2.1 | C03a | EIT02.1 |
| 2.1-HCUEE02-1060 |  | Clear punch | 4d | 2026-05-21 | 2026-05-25 | 2.1-HCUEE02-1010 |  |  |  |  | -50d | 0d |  | LABOUR [20 h]; Construction Material [40] | UDF_G3 | 0 | EE | 1 | C03a | TY1 | Non | HCU | EIT2.1 | C03a | EIT02.1 |
| 2.1-HCUEE02-1110 |  | Complete QA/QC document | 3d | 2026-05-26 | 2026-05-28 | 2.1-HCUEE02-1060 |  |  |  |  | -50d | 36d |  | LABOUR [20.78 h]; Construction Material [30] | UDF_G3 | 0 | EE | 1 | C03a | TY1 | Non | HCU | EIT2.1 | C03a | EIT02.1 |
|  | 3 | **Termination Control Cable** |  | 2026-02-23 | 2026-05-28 |  |  |  |  |  |  |  |  |  |  |  |  |  |  |  |  |  |  |  |  |
| 2.1-HCUEE02-1020 |  | Cable Termination/Glanding | 5d | 2026-02-23 A | 2026-05-20 | 2.1-HCUEE01-1020 SS | 30% | 5d | 2026-02-23 | 2026-02-27 | -50d | 0d |  | LABOUR [90 h]; Construction Material [50] | UDF_G3 | 0.1 | EE | 1 | C03a | TY1 | Non | HCU | EIT2.1 | C03a | EIT02.1 |
| 2.1-HCUEE02-1070 |  | Clear punch | 4d | 2026-05-21 | 2026-05-25 | 2.1-HCUEE02-1020 |  |  |  |  | -50d | 0d |  | LABOUR [20 h]; Construction Material [40] | UDF_G3 | 0 | EE | 1 | C03a | TY1 | Non | HCU | EIT2.1 | C03a | EIT02.1 |
| 2.1-HCUEE02-1120 |  | Complete QA/QC document | 3d | 2026-05-26 | 2026-05-28 | 2.1-HCUEE02-1070 |  |  |  |  | -50d | 36d |  | LABOUR [20.78 h]; Construction Material [30] | UDF_G3 | 0 | EE | 1 | C03a | TY1 | Non | HCU | EIT2.1 | C03a | EIT02.1 |
|  | 4 | **Termination Serial Communication Cable** |  | 2026-06-08 | 2026-06-20 |  |  |  |  |  |  |  |  |  |  |  |  |  |  |  |  |  |  |  |  |
| 2.1-HCUEE02-1030 |  | Cable Termination/Glanding | 5d | 2026-06-08 | 2026-06-12 | 2.1-HCUEE01-1030 SS, 2.1-HCUEE01-1030 |  |  |  |  | -70d | 0d |  | LABOUR [90 h]; Construction Material [50] | UDF_G3 | 0.1 | EE | 1 | C03a | TY1 | Non | HCU | EIT2.1 | C03a | EIT02.1 |
| 2.1-HCUEE02-1080 |  | Clear punch | 4d | 2026-06-13 | 2026-06-17 | 2.1-HCUEE02-1030 |  |  |  |  | -70d | 0d |  | LABOUR [20 h]; Construction Material [40] | UDF_G3 | 0 | EE | 1 | C03a | TY1 | Non | HCU | EIT2.1 | C03a | EIT02.1 |
| 2.1-HCUEE02-1130 |  | Complete QA/QC document | 3d | 2026-06-18 | 2026-06-20 | 2.1-HCUEE02-1080 |  |  |  |  | -70d | 16d |  | LABOUR [20.78 h]; Construction Material [30] | UDF_G3 | 0 | EE | 1 | C03a | TY1 | Non | HCU | EIT2.1 | C03a | EIT02.1 |
|  | 5 | **Termination Instrument Cable** |  | 2026-02-23 | 2026-05-28 |  |  |  |  |  |  |  |  |  |  |  |  |  |  |  |  |  |  |  |  |
| 2.1-HCUEE02-1040 |  | Cable Termination/Glanding | 5d | 2026-02-23 A | 2026-05-20 | 2.1-HCUEE01-1040 SS | 20% | 5d | 2026-02-23 | 2026-02-27 | -50d | 0d |  | LABOUR [90 h]; Construction Material [50] | UDF_G3 | 0.1 | EE | 1 | C03a | TY1 | Non | HCU | EIT2.1 | C03a | EIT02.1 |
| 2.1-HCUEE02-1090 |  | Clear punch | 4d | 2026-05-21 | 2026-05-25 | 2.1-HCUEE02-1040 |  |  |  |  | -50d | 0d |  | LABOUR [20 h]; Construction Material [40] | UDF_G3 | 0 | EE | 1 | C03a | TY1 | Non | HCU | EIT2.1 | C03a | EIT02.1 |
| 2.1-HCUEE02-1140 |  | Complete QA/QC document | 3d | 2026-05-26 | 2026-05-28 | 2.1-HCUEE02-1090 |  |  |  |  | -50d | 36d |  | LABOUR [20.78 h]; Construction Material [30] | UDF_G3 | 0 | EE | 1 | C03a | TY1 | Non | HCU | EIT2.1 | C03a | EIT02.1 |
|  | 5 | **Lighting & Small Power Equipment Installation** |  | 2026-01-26 | 2026-06-16 |  |  |  |  |  |  |  |  |  |  |  |  |  |  |  |  |  |  |  |  |
| 2.1-HCUEE05-1000 |  | Install support / bracket / Pole | 10d | 2026-01-26 A | 2026-05-26 |  | 88% | 10d | 2026-01-26 | 2026-02-05 | -86d | 0d | start on or after 2026-01-26 | LABOUR [5 h]; Construction Material [100] | UDF_G3 | 1 | EE | 1 | C03a | TY1 | Non | HCU | EIT2.1 | C03a | EIT02.1 |
| 2.1-HCUEE05-1020 |  | Install Distribution panel, lighting fitting ,convenience outlet | 20d | 2026-02-06 A | 2026-06-06 | 2.1-HCUEE05-1000 SS | 88% | 20d | 2026-02-06 | 2026-02-28 | -66d | 0d |  | LABOUR [15 h]; Construction Material [200] | UDF_G3 | 1 | EE | 1 | C03a | TY1 | Non | HCU | EIT2.1 | C03a | EIT02.1 |
| 2.1-HCUEE05-1030 |  | Clear punch | 5d | 2026-06-08 | 2026-06-12 | 2.1-HCUEE05-1020 |  |  |  |  | -66d | 0d |  | LABOUR [5 h]; Construction Material [50] | UDF_G3 | 0 | EE | 1 | C03a | TY1 | Non | HCU | EIT2.1 | C03a | EIT02.1 |
| 2.1-HCUEE05-1040 |  | Complete QA/QC document | 3d | 2026-06-13 | 2026-06-16 | 2.1-HCUEE05-1030 |  |  |  |  | -66d | 20d |  | LABOUR [8.89 h]; Construction Material [30] | UDF_G3 | 0 | EE | 1 | C03a | TY1 | Non | HCU | EIT2.1 | C03a | EIT02.1 |
|  | 9 | **Electrical Earthing / Lightning Installation** |  | 2026-02-02 | 2026-06-18 |  |  |  |  |  |  |  |  |  |  |  |  |  |  |  |  |  |  |  |  |
| 2.1-HCUEE05-1010 |  | Install Equipment Earthing / Inspection PIT / Install earthing pull and Connecttion | 30d | 2026-02-02 A | 2026-06-18 | 2.1-HCUEE05-1000 SS | 34% | 30d | 2026-02-02 | 2026-03-07 | -48d | 0d | start on or after 2026-02-02 | LABOUR [3000 h] | UDF_G3 |  | EE | 1 | C03a | TY1 | Non | HCU | EIT2.1 | C03a | EIT02.1 |
| 2.1-HCUEE06-1010 |  | Install Equipment Earthing / Inspection PIT / Install earthing pull and Connecttion | 30d | 2026-02-02 A | 2026-06-18 | 2.1-HCUEE05-1000 SS | 34% | 30d | 2026-02-02 | 2026-03-07 | -48d | 0d | start on or after 2026-02-02 | LABOUR [3000 h]; Construction Material [300] | UDF_G3 | 0.4 | EE | 1 | C03a | TY1 | Non | HCU | EIT2.1 | C03a | EIT02.1 |
| 2.1-HCUEE05-1050 |  | Punch listing | 5d | 2026-03-09 A | 2026-05-20 | 2.1-HCUEE05-1010 SS | 34% | 5d | 2026-03-09 | 2026-03-13 | -48d | 0d |  | LABOUR [500 h] | UDF_G3 |  | EE | 1 | C03a | TY1 | Non | HCU | EIT2.1 | C03a | EIT02.1 |
| 2.1-HCUEE06-1050 |  | Punch listing | 5d | 2026-03-09 A | 2026-05-20 | 2.1-HCUEE06-1010 SS | 34% | 5d | 2026-03-09 | 2026-03-13 | -48d | 0d |  | LABOUR [500 h]; Construction Material [50] | UDF_G3 | 0.4 | EE | 1 | C03a | TY1 | Non | HCU | EIT2.1 | C03a | EIT02.1 |
| 2.1-HCUEE05-1060 |  | Complete QA/QC document | 5d | 2026-05-21 | 2026-05-26 | 2.1-HCUEE05-1050 |  |  |  |  | -48d | 38d |  | LABOUR [980.58 h] | UDF_G3 |  | EE | 1 | C03a | TY1 | Non | HCU | EIT2.1 | C03a | EIT02.1 |
| 2.1-HCUEE06-1060 |  | Complete QA/QC document | 5d | 2026-05-21 | 2026-05-26 | 2.1-HCUEE06-1050 |  |  |  |  | -48d | 38d |  | LABOUR [980.58 h]; Construction Material [50] | UDF_G3 | 0 | EE | 1 | C03a | TY1 | Non | HCU | EIT2.1 | C03a | EIT02.1 |

| ID | WBS | Activity | Duration | Start | Finish | Predecessors | Complete | Remaining | Planned start | Planned finish | Total float | Free float | Constraint | Resources | On Schedule Indicator | %Completed | Disciplines | Main Activity | WBS | Types | EIT2 Main Activity | Areas | Phases | EIT WBS | EIT PKG |
| --- | --- | --- | --- | --- | --- | --- | --- | --- | --- | --- | --- | --- | --- | --- | --- | --- | --- | --- | --- | --- | --- | --- | --- | --- | --- |
|  | 2 | **Instrument** |  | 2026-01-26 | 2026-07-09 |  |  |  |  |  |  |  |  |  |  |  |  |  |  |  |  |  |  |  |  |
|  | 3 | **Instrument Cable Tray/Ladder Installation** |  | 2026-01-26 | 2026-06-17 |  |  |  |  |  |  |  |  |  |  |  |  |  |  |  |  |  |  |  |  |
| 2.1-HCUIN03-1000 |  | Install support / bracket | 10d | 2026-01-26 A | 2026-05-26 | 2.1-HCUEE05-1000 SS | 44% | 10d | 2026-01-26 | 2026-02-05 | -86d | 0d | start on or after 2026-01-26 | LABOUR [982 h]; Construction Material [100] | UDF_G3 | 0 | EE | 1 | C03a | TY1 | Non | HCU | EIT2.1 | C03a | EIT02.1 |
| 2.1-HCUIN03-1010 |  | Install Ladder / Tray | 20d | 2026-02-06 A | 2026-06-06 | 2.1-HCUIN03-1020 SS | 44% | 20d | 2026-02-06 | 2026-02-28 | -86d | 0d |  | LABOUR [400 h]; Construction Material [200] | UDF_G3 | 0 | EE | 1 | C03a | TY1 | Non | HCU | EIT2.1 | C03a | EIT02.1 |
| 2.1-HCUIN03-1020 |  | Steel Conduits for Cable tray | 20d | 2026-02-06 A | 2026-06-06 | 2.1-HCUIN03-1000 SS | 44% | 20d | 2026-02-06 | 2026-02-28 | -86d | 0d |  | LABOUR [100 h]; Construction Material [200] | UDF_G3 | 0 | EE | 1 | C03a | TY1 | Non | HCU | EIT2.1 | C03a | EIT02.1 |
| 2.1-HCUIN03-1030 |  | Clear punch | 6d | 2026-06-08 | 2026-06-13 | 2.1-HCUIN03-1010, 2.1-HCUIN03-1020 |  |  |  |  | -67d | 0d |  | LABOUR [50 h]; Construction Material [60] | UDF_G3 | 0 | EE | 1 | C03a | TY1 | Non | HCU | EIT2.1 | C03a | EIT02.1 |
| 2.1-HCUIN03-1040 |  | Complete QA/QC document | 3d | 2026-06-15 | 2026-06-17 | 2.1-HCUIN03-1030 |  |  |  |  | -67d | 19d |  | LABOUR [101.05 h]; Construction Material [30] | UDF_G3 | 0 | EE | 1 | C03a | TY1 | Non | HCU | EIT2.1 | C03a | EIT02.1 |
|  | 1 | **Instrument Cable Installation** |  | 2026-03-02 | 2026-07-04 |  |  |  |  |  |  |  |  |  |  |  |  |  |  |  |  |  |  |  |  |
|  | 8 | **Cable Pull Primary Cable** |  | 2026-03-02 | 2026-06-09 |  |  |  |  |  |  |  |  |  |  |  |  |  |  |  |  |  |  |  |  |
| 2.1-HCUIN01-1000 |  | Pull Cable | 15d | 2026-03-02 A | 2026-06-01 | 2.1-HCUIN03-1010 SS | 49% | 15d | 2026-03-02 | 2026-03-18 | -86d | 0d |  | LABOUR [2000 h]; Construction Material [150] | UDF_G3 | 0.1583 | EE | 1 | C03a | TY1 | Non | HCU | EIT2.1 | C03a | EIT02.1 |
| 2.1-HCUIN01-1050 |  | Megger & Continuity test | 4d | 2026-06-02 | 2026-06-05 | 2.1-HCUIN01-1000 SS, 2.1-HCUIN01-1000 |  |  |  |  | -60d | 0d |  | LABOUR [500 h]; Construction Material [40] | UDF_G3 | 0 | EE | 1 | C03a | TY1 | Non | HCU | EIT2.1 | C03a | EIT02.1 |
| 2.1-HCUIN01-1100 |  | Complete QA/QC document | 3d | 2026-06-06 | 2026-06-09 | 2.1-HCUIN01-1050 |  |  |  |  | -60d | 26d |  | LABOUR [620.17 h]; Construction Material [30] | UDF_G3 | 0 | EE | 1 | C03a | TY1 | Non | HCU | EIT2.1 | C03a | EIT02.1 |
|  | 5 | **Cable Pull Power Cable** |  | 2026-03-02 | 2026-06-09 |  |  |  |  |  |  |  |  |  |  |  |  |  |  |  |  |  |  |  |  |
| 2.1-HCUIN01-1010 |  | Pull Cable | 15d | 2026-03-02 A | 2026-06-01 | 2.1-HCUIN01-1000 SS | 20% | 15d | 2026-03-02 | 2026-03-18 | -86d | 0d |  | LABOUR [2000 h]; Construction Material | UDF_G3 | 0.1583 | EE | 1 | C03a | TY1 | Non | HCU | EIT2.1 | C03a | EIT02.1 |
| 2.1-HCUIN01-1060 |  | Megger & Continuity test | 4d | 2026-06-02 | 2026-06-05 | 2.1-HCUIN01-1010 SS, 2.1-HCUIN01-1010 |  |  |  |  | -60d | 0d |  | LABOUR [500 h]; Construction Material | UDF_G3 | 0 | EE | 1 | C03a | TY1 | Non | HCU | EIT2.1 | C03a | EIT02.1 |
| 2.1-HCUIN01-1110 |  | Complete QA/QC document | 3d | 2026-06-06 | 2026-06-09 | 2.1-HCUIN01-1060 |  |  |  |  | -60d | 26d |  | LABOUR [620.17 h]; Construction Material [30] | UDF_G3 | 0 | EE | 1 | C03a | TY1 | Non | HCU | EIT2.1 | C03a | EIT02.1 |
|  | 9 | **Cable Pull Secondary Cable** |  | 2026-03-02 | 2026-06-09 |  |  |  |  |  |  |  |  |  |  |  |  |  |  |  |  |  |  |  |  |
| 2.1-HCUIN01-1020 |  | Pull Cable | 15d | 2026-03-02 A | 2026-06-01 | 2.1-HCUIN01-1010 SS | 67% | 15d | 2026-03-02 | 2026-03-18 | -86d | 0d |  | LABOUR [2000 h]; Construction Material [150] | UDF_G3 | 0.1583 | EE | 1 | C03a | TY1 | Non | HCU | EIT2.1 | C03a | EIT02.1 |
| 2.1-HCUIN01-1070 |  | Megger & Continuity test | 4d | 2026-06-02 | 2026-06-05 | 2.1-HCUIN01-1020 SS, 2.1-HCUIN01-1020 |  |  |  |  | -86d | 0d |  | LABOUR [500 h]; Construction Material [40] | UDF_G3 | 0 | EE | 1 | C03a | TY1 | Non | HCU | EIT2.1 | C03a | EIT02.1 |
| 2.1-HCUIN01-1120 |  | Complete QA/QC document | 3d | 2026-06-06 | 2026-06-09 | 2.1-HCUIN01-1070 SS, 2.1-HCUIN01-1070 |  |  |  |  | -86d | 0d |  | LABOUR [620.17 h]; Construction Material [30] | UDF_G3 | 0 | EE | 1 | C03a | TY1 | Non | HCU | EIT2.1 | C03a | EIT02.1 |
|  | 2 | **Cable Pull Thermocouple Cable** |  | 2026-06-10 | 2026-07-04 |  |  |  |  |  |  |  |  |  |  |  |  |  |  |  |  |  |  |  |  |
| 2.1-HCUIN01-1040 |  | Pull Cable | 15d | 2026-06-10 | 2026-06-26 | 2.1-HCUIN01-1020 SS, 2.1-HCUIN01-1120 |  |  |  |  | -86d | 0d |  | LABOUR [2000 h]; Construction Material [150] | UDF_G3 | 0.1583 | EE | 1 | C03a | TY1 | Non | HCU | EIT2.1 | C03a | EIT02.1 |
| 2.1-HCUIN01-1090 |  | Megger & Continuity test | 4d | 2026-06-27 | 2026-07-01 | 2.1-HCUIN01-1040 SS, 2.1-HCUIN01-1040 |  |  |  |  | -82d | 0d |  | LABOUR [500 h]; Construction Material [40] | UDF_G3 | 0 | EE | 1 | C03a | TY1 | Non | HCU | EIT2.1 | C03a | EIT02.1 |
| 2.1-HCUIN01-1140 |  | Complete QA/QC document | 3d | 2026-07-02 | 2026-07-04 | 2.1-HCUIN01-1090 SS, 2.1-HCUIN01-1090 |  |  |  |  | -82d | 4d |  | LABOUR [620.17 h]; Construction Material [30] | UDF_G3 | 0 | EE | 1 | C03a | TY1 | Non | HCU | EIT2.1 | C03a | EIT02.1 |

| ID | WBS | Activity | Duration | Start | Finish | Predecessors | Complete | Remaining | Planned start | Planned finish | Total float | Free float | Resources | On Schedule Indicator | %Completed | Disciplines | Main Activity | WBS | Types | EIT2 Main Activity | Areas | Phases | EIT WBS | EIT PKG |
| --- | --- | --- | --- | --- | --- | --- | --- | --- | --- | --- | --- | --- | --- | --- | --- | --- | --- | --- | --- | --- | --- | --- | --- | --- |
|  | 1 | **Cable Pull LAN Cable** |  | 2026-06-10 | 2026-07-04 |  |  |  |  |  |  |  |  |  |  |  |  |  |  |  |  |  |  |  |
| 2.1-HCUIN01-1030 |  | Pull Cable | 15d | 2026-06-10 | 2026-06-26 | 2.1-HCUIN01-1040 SS |  |  |  |  | -86d | 0d | LABOUR [2000 h]; Construction Material [150] | UDF_G3 | 0.1583 | EE | 1 | C03a | TY1 | Non | HCU | EIT2.1 | C03a | EIT02.1 |
| 2.1-HCUIN01-1080 |  | Megger & Continuity test | 4d | 2026-06-27 | 2026-07-01 | 2.1-HCUIN01-1030 SS, 2.1-HCUIN01-1030 |  |  |  |  | -82d | 0d | LABOUR [500 h]; Construction Material [40] | UDF_G3 | 0 | EE | 1 | C03a | TY1 | Non | HCU | EIT2.1 | C03a | EIT02.1 |
| 2.1-HCUIN01-1130 |  | Complete QA/QC document | 3d | 2026-07-02 | 2026-07-04 | 2.1-HCUIN01-1080 SS, 2.1-HCUIN01-1080 |  |  |  |  | -82d | 4d | LABOUR [620.17 h]; Construction Material [30] | UDF_G3 | 0 | EE | 1 | C03a | TY1 | Non | HCU | EIT2.1 | C03a | EIT02.1 |
|  | 2 | **Instrument Cable Termination / Glanding** |  | 2026-03-19 | 2026-07-09 |  |  |  |  |  |  |  |  |  |  |  |  |  |  |  |  |  |  |  |
|  | 8 | **Cable Termination Primary Cable** |  | 2026-03-19 | 2026-05-27 |  |  |  |  |  |  |  |  |  |  |  |  |  |  |  |  |  |  |  |
| 2.1-HCUIN02-1000 |  | Cable Termination/Glanding | 5d | 2026-03-19 A | 2026-05-20 | 2.1-HCUIN01-1000 SS | 4% | 5d | 2026-03-19 | 2026-03-24 | -49d | 0d | LABOUR [400 h]; Construction Material [50] | UDF_G3 | 0.1 | EE | 1 | C03a | TY1 | Non | HCU | EIT2.1 | C03a | EIT02.1 |
| 2.1-HCUIN02-1050 |  | Clear punch | 4d | 2026-05-21 | 2026-05-25 | 2.1-HCUIN02-1000 |  |  |  |  | -49d | 0d | LABOUR [100 h]; Construction Material [40] | UDF_G3 | 0 | EE | 1 | C03a | TY1 | Non | HCU | EIT2.1 | C03a | EIT02.1 |
| 2.1-HCUIN02-1100 |  | Complete QA/QC document | 2d | 2026-05-26 | 2026-05-27 | 2.1-HCUIN02-1050 |  |  |  |  | -49d | 37d | LABOUR [117.26 h]; Construction Material [20] | UDF_G3 | 0 | EE | 1 | C03a | TY1 | Non | HCU | EIT2.1 | C03a | EIT02.1 |
|  | 5 | **Cable Termination Power Cable** |  | 2026-05-13 | 2026-06-13 |  |  |  |  |  |  |  |  |  |  |  |  |  |  |  |  |  |  |  |
| 2.1-HCUIN02-1010 |  | Cable Termination/Glanding | 5d | 2026-05-13 A | 2026-06-06 | 2.1-HCUIN01-1010 SS, 2.1-HCUIN01-1010 | 10% | 5d | 2026-05-26 | 2026-05-30 | -64d | 0d | LABOUR [400 h]; Construction Material [50] | UDF_G3 | 0.1 | EE | 1 | C03a | TY1 | Non | HCU | EIT2.1 | C03a | EIT02.1 |
| 2.1-HCUIN02-1060 |  | Clear punch | 4d | 2026-06-08 | 2026-06-11 | 2.1-HCUIN02-1010 |  |  |  |  | -64d | 0d | LABOUR [100 h]; Construction Material [40] | UDF_G3 | 0 | EE | 1 | C03a | TY1 | Non | HCU | EIT2.1 | C03a | EIT02.1 |
| 2.1-HCUIN02-1110 |  | Complete QA/QC document | 2d | 2026-06-12 | 2026-06-13 | 2.1-HCUIN02-1060 |  |  |  |  | -64d | 22d | LABOUR [117.26 h]; Construction Material [20] | UDF_G3 | 0 | EE | 1 | C03a | TY1 | Non | HCU | EIT2.1 | C03a | EIT02.1 |
|  | 9 | **Cable Termination Secondary Cable** |  | 2026-03-19 | 2026-05-27 |  |  |  |  |  |  |  |  |  |  |  |  |  |  |  |  |  |  |  |
| 2.1-HCUIN02-1020 |  | Cable Termination/Glanding | 5d | 2026-03-19 A | 2026-05-20 | 2.1-HCUIN01-1020 SS | 6% | 5d | 2026-03-19 | 2026-03-24 | -49d | 0d | LABOUR [400 h]; Construction Material [50] | UDF_G3 | 0.1 | EE | 1 | C03a | TY1 | Non | HCU | EIT2.1 | C03a | EIT02.1 |
| 2.1-HCUIN02-1070 |  | Clear punch | 4d | 2026-05-21 | 2026-05-25 | 2.1-HCUIN02-1020 SS, 2.1-HCUIN02-1020 |  |  |  |  | -49d | 0d | LABOUR [100 h]; Construction Material [40] | UDF_G3 | 0 | EE | 1 | C03a | TY1 | Non | HCU | EIT2.1 | C03a | EIT02.1 |
| 2.1-HCUIN02-1120 |  | Complete QA/QC document | 2d | 2026-05-26 | 2026-05-27 | 2.1-HCUIN02-1070 |  |  |  |  | -49d | 37d | LABOUR [117.26 h]; Construction Material [20] | UDF_G3 | 0 | EE | 1 | C03a | TY1 | Non | HCU | EIT2.1 | C03a | EIT02.1 |
|  | 2 | **Cable Termination Thermocouple Cable** |  | 2026-06-27 | 2026-07-09 |  |  |  |  |  |  |  |  |  |  |  |  |  |  |  |  |  |  |  |
| 2.1-HCUIN02-1030 |  | Cable Termination/Glanding | 5d | 2026-06-27 | 2026-07-02 | 2.1-HCUIN01-1040 SS, 2.1-HCUIN01-1040 |  |  |  |  | -86d | 0d | LABOUR [400 h]; Construction Material [50] | UDF_G3 | 0.1 | EE | 1 | C03a | TY1 | Non | HCU | EIT2.1 | C03a | EIT02.1 |
| 2.1-HCUIN02-1080 |  | Clear punch | 4d | 2026-07-03 | 2026-07-07 | 2.1-HCUIN02-1030 |  |  |  |  | -86d | 0d | LABOUR [100 h]; Construction Material [40] | UDF_G3 | 0 | EE | 1 | C03a | TY1 | Non | HCU | EIT2.1 | C03a | EIT02.1 |
| 2.1-HCUIN02-1130 |  | Complete QA/QC document | 2d | 2026-07-08 | 2026-07-09 | 2.1-HCUIN02-1080 |  |  |  |  | -86d | 0d | LABOUR [117.26 h]; Construction Material [20] | UDF_G3 | 0 | EE | 1 | C03a | TY1 | Non | HCU | EIT2.1 | C03a | EIT02.1 |
|  | 1 | **Cable Termination LAN Cable** |  | 2026-06-27 | 2026-07-09 |  |  |  |  |  |  |  |  |  |  |  |  |  |  |  |  |  |  |  |
| 2.1-HCUIN02-1040 |  | Cable Termination/Glanding | 5d | 2026-06-27 | 2026-07-02 | 2.1-HCUIN01-1030 SS, 2.1-HCUIN01-1030 |  |  |  |  | -86d | 0d | LABOUR [400 h]; Construction Material [50] | UDF_G3 | 0.1 | EE | 1 | C03a | TY1 | Non | HCU | EIT2.1 | C03a | EIT02.1 |
| 2.1-HCUIN02-1090 |  | Clear punch | 4d | 2026-07-03 | 2026-07-07 | 2.1-HCUIN02-1040 |  |  |  |  | -86d | 0d | LABOUR [100 h]; Construction Material [40] | UDF_G3 | 0 | EE | 1 | C03a | TY1 | Non | HCU | EIT2.1 | C03a | EIT02.1 |
| 2.1-HCUIN02-1140 |  | Complete QA/QC document | 2d | 2026-07-08 | 2026-07-09 | 2.1-HCUIN02-1090 |  |  |  |  | -86d | 0d | LABOUR [117.26 h]; Construction Material [20] | UDF_G3 | 0 | EE | 1 | C03a | TY1 | Non | HCU | EIT2.1 | C03a | EIT02.1 |

| ID | WBS | Activity | Duration | Start | Finish | Predecessors | Complete | Remaining | Planned start | Planned finish | Total float | Free float | Resources | On Schedule Indicator | %Completed | Disciplines | Main Activity | WBS | Types | EIT2 Main Activity | Areas | Phases | EIT WBS | EIT PKG |
| --- | --- | --- | --- | --- | --- | --- | --- | --- | --- | --- | --- | --- | --- | --- | --- | --- | --- | --- | --- | --- | --- | --- | --- | --- |
|  | 6 | **Instrument Equipment Installation** |  | 2026-01-26 | 2026-05-22 |  |  |  |  |  |  |  |  |  |  |  |  |  |  |  |  |  |  |  |
|  | 1 | **Analyser Instruments** |  | 2026-01-26 | 2026-05-22 |  |  |  |  |  |  |  |  |  |  |  |  |  |  |  |  |  |  |  |
| 2.1-HCUIN04-1000 |  | Install support / bracket | 10d | 2026-01-26 A | 2026-05-13 A | 2.1-HCUIN03-1000 SS | 100% |  | 2026-01-26 | 2026-02-05 |  |  | LABOUR [10 h]; Construction Material [100] | UDF_G3 | 0 | EE | 1 | C03a | TY1 | Non | HCU | EIT2.1 | C03a | EIT02.1 |
| 2.1-HCUIN04-1010 |  | Install Equipment | 20d | 2026-02-06 A | 2026-05-13 A | 2.1-HCUIN04-1000 SS | 100% |  | 2026-02-06 | 2026-02-28 |  |  | LABOUR [60 h]; Construction Material [200] | UDF_G3 | 0 | EE | 1 | C03a | TY1 | Non | HCU | EIT2.1 | C03a | EIT02.1 |
| 2.1-HCUIN04-1020 |  | Clear punch | 4d | 2026-05-15 | 2026-05-19 | 2.1-HCUIN04-1010 |  |  |  |  | -45d | 0d | LABOUR [5 h]; Construction Material [40] | UDF_G3 | 0 | EE | 1 | C03a | TY1 | Non | HCU | EIT2.1 | C03a | EIT02.1 |
| 2.1-HCUIN04-1030 |  | Complete QA/QC document | 3d | 2026-05-20 | 2026-05-22 | 2.1-HCUIN04-1020 |  |  |  |  | -45d | 41d | LABOUR [5.88 h]; Construction Material [30] | UDF_G3 | 0 | EE | 1 | C03a | TY1 | Non | HCU | EIT2.1 | C03a | EIT02.1 |
|  | 4 | **Instrument Calibration** |  | 2026-01-26 | 2026-06-18 |  |  |  |  |  |  |  |  |  |  |  |  |  |  |  |  |  |  |  |
| 2.1-HCUIN05-1000 |  | Calibration Equipment | 30d | 2026-01-26 A | 2026-06-18 | 2.1-HCUIN04-1000 SS | 27% | 30d | 2026-01-26 | 2026-02-28 | -44d | 0d | LABOUR [1800 h]; Construction Material [300] | UDF_G3 | 0 | EE | 1 | C03a | TY1 | Non | HCU | EIT2.1 | C03a | EIT02.1 |
| 2.1-HCUIN05-1010 |  | Complete QA/QC document | 6d | 2026-03-02 A | 2026-05-21 | 2.1-HCUIN05-1000 SS | 27% | 6d | 2026-03-02 | 2026-03-07 | -44d | 42d | LABOUR [512.28 h]; Construction Material [60] | UDF_G3 | 0 | EE | 1 | C03a | TY1 | Non | HCU | EIT2.1 | C03a | EIT02.1 |
|  | 5 | **Telecommunication** |  | 2026-03-02 | 2026-06-09 |  |  |  |  |  |  |  |  |  |  |  |  |  |  |  |  |  |  |  |
|  | 3 | **Telecom** |  | 2026-03-19 | 2026-06-09 |  |  |  |  |  |  |  |  |  |  |  |  |  |  |  |  |  |  |  |
|  | 1 | **Telecommunication Cable Installation** |  | 2026-05-08 | 2026-06-09 |  |  |  |  |  |  |  |  |  |  |  |  |  |  |  |  |  |  |  |
| 2.1-HCUTE01-1000 |  | Pull Cable | 15d | 2026-05-08 A | 2026-06-01 | 2.1-HCUIN01-1000 SS | 78% | 15d | 2026-05-08 | 2026-05-25 | -60d | 0d | LABOUR [900 h]; Construction Material [150] | UDF_G3 | 0 | EE | 1 | C03a | TY1 | Non | HCU | EIT2.1 | C03a | EIT02.1 |
| 2.1-HCUTE01-1010 |  | Megger & Continuity test | 4d | 2026-05-13 A | 2026-06-05 | 2.1-HCUTE01-1000 | 78% | 4d | 2026-05-26 | 2026-05-29 | -60d | 0d | LABOUR [50 h]; Construction Material [40] | UDF_G3 | 0 | EE | 1 | C03a | TY1 | Non | HCU | EIT2.1 | C03a | EIT02.1 |
| 2.1-HCUTE01-1020 |  | Complete QA/QC document | 3d | 2026-06-06 | 2026-06-09 | 2.1-HCUTE01-1010 |  |  |  |  | -60d | 26d | LABOUR [95.15 h]; Construction Material [30] | UDF_G3 | 0 | EE | 1 | C03a | TY1 | Non | HCU | EIT2.1 | C03a | EIT02.1 |
|  | 4 | **Telecommunication Termination / Glanding** |  | 2026-03-19 | 2026-03-30 |  |  |  |  |  |  |  |  |  |  |  |  |  |  |  |  |  |  |  |
| 2.1-HCUTE02-1000 |  | Cable Termination/Glanding (no CMS) | 5d | 2026-03-19 A | 2026-03-24 A | 2.1-HCUTE01-1000 | 100% |  |  |  |  |  | LABOUR [100 h]; Construction Material [50] | UDF_G3 | 0 | EE | 1 | C03a | TY1 | Non | HCU | EIT2.1 | C03a | EIT02.1 |
| 2.1-HCUTE02-1010 |  | Clear punch (no CMS) | 3d | 2026-03-25 A | 2026-03-27 A | 2.1-HCUTE02-1000 | 100% |  |  |  |  |  | LABOUR [10 h]; Construction Material [30] | UDF_G3 | 0 | EE | 1 | C03a | TY1 | Non | HCU | EIT2.1 | C03a | EIT02.1 |
| 2.1-HCUTE02-1020 |  | Complete QA/QC document (no CMS) | 2d | 2026-03-28 A | 2026-03-30 A | 2.1-HCUTE02-1010 | 100% |  |  |  |  |  | LABOUR [10 h]; Construction Material [20] | UDF_G3 | 0 | EE | 1 | C03a | TY1 | Non | HCU | EIT2.1 | C03a | EIT02.1 |
|  | 2 | **CCTV System** |  | 2026-03-02 | 2026-03-31 |  |  |  |  |  |  |  |  |  |  |  |  |  |  |  |  |  |  |  |
|  | 1 | **CCTV Cable Installation** |  | 2026-03-02 | 2026-03-31 |  |  |  |  |  |  |  |  |  |  |  |  |  |  |  |  |  |  |  |
| 2.1-HCUTE01.1-1000 |  | Pull Cable no CMS) | 19d | 2026-03-02 A | 2026-03-23 A | 2.1-HCUTE01-1000 SS | 100% |  |  |  |  |  | LABOUR [190 h]; Construction Material [190] | UDF_G3 | 0 | EE | 1 | C03a | TY1 | Non | HCU | EIT2.1 | C03a | EIT02.1 |
| 2.1-HCUTE01.1-1010 |  | Megger & Continuity test no CMS) | 4d | 2026-03-24 A | 2026-03-27 A | 2.1-HCUTE01.1-1000 | 100% |  |  |  |  |  | LABOUR [40 h]; Construction Material [40] | UDF_G3 | 0 | EE | 1 | C03a | TY1 | Non | HCU | EIT2.1 | C03a | EIT02.1 |
| 2.1-HCUTE01.1-1020 |  | Complete QA/QC document no CMS) | 3d | 2026-03-28 A | 2026-03-31 A | 2.1-HCUTE01.1-1010 | 100% |  |  |  |  |  | LABOUR [30 h]; Construction Material [30] | UDF_G3 | 0 | EE | 1 | C03a | TY1 | Non | HCU | EIT2.1 | C03a | EIT02.1 |

| ID | WBS | Activity | Duration | Start | Finish | Predecessors | Complete | Constraint | Resources | On Schedule Indicator | %Completed | Disciplines | Main Activity | WBS | Types | EIT2 Main Activity | Areas | Phases | EIT WBS | EIT PKG |
| --- | --- | --- | --- | --- | --- | --- | --- | --- | --- | --- | --- | --- | --- | --- | --- | --- | --- | --- | --- | --- |
|  | 3 | **WBS : C03b RHCU (Residue Hydrocracking Unit)** |  | 2026-01-19 | 2026-06-26 |  |  |  |  |  |  |  |  |  |  |  |  |  |  |  |
|  | 6 | **Electrical** |  | 2026-01-26 | 2026-06-26 |  |  |  |  |  |  |  |  |  |  |  |  |  |  |  |
|  | 3 | **Electrical Cable Tray/Ladder Installation** |  | 2026-01-26 | 2026-03-23 |  |  |  |  |  |  |  |  |  |  |  |  |  |  |  |
|  | 2 | **Air Fin Cooler - EM-10701-1** |  | 2026-01-26 | 2026-03-23 |  |  |  |  |  |  |  |  |  |  |  |  |  |  |  |
| 2.1-RHCUEE03-1000 |  | Install support / bracket | 20d | 2026-01-26 A | 2026-02-17 A |  | 100% | start on or after 2026-01-26 | LABOUR [3 h]; Construction Material | UDF_G3 | 1 | EE | 1 | C03a | TY1 | Non | RHCU | EIT2.1 | C03b | EIT02.1 |
| 2.1-RHCUEE03-1550 |  | Install Ladder / Tray | 20d | 2026-02-18 A | 2026-03-12 A | 2.1-RHCUEE03-1000 SS, 2.1-RHCUEE03-1000 | 100% |  | LABOUR [10 h]; Construction Material | UDF_G3 | 1 | EE | 1 | C03a | TY1 | Non | RHCU | EIT2.1 | C03b | EIT02.1 |
| 2.1-RHCUEE03-1560 |  | Install Conduits | 20d | 2026-02-18 A | 2026-03-12 A | 2.1-RHCUEE03-1550 SS | 100% |  | LABOUR [3 h]; Construction Material | UDF_G3 | 1 | EE | 1 | C03a | TY1 | Non | RHCU | EIT2.1 | C03b | EIT02.1 |
| 2.1-RHCUEE03-2650 |  | Clear punch | 6d | 2026-03-13 A | 2026-03-19 A | 2.1-RHCUEE03-1560 SS, 2.1-RHCUEE03-1550 SS, 2.1-RHCUEE03-1560, 2.1-RHCUEE03-1550 | 100% |  | LABOUR [3 h]; Construction Material | UDF_G3 | 1 | EE | 1 | C03a | TY1 | Non | RHCU | EIT2.1 | C03b | EIT02.1 |
| 2.1-RHCUEE03-3200 |  | Complete QA/QC document | 3d | 2026-03-20 A | 2026-03-23 A | 2.1-RHCUEE03-2650 SS, 2.1-RHCUEE03-2650 | 100% |  | LABOUR [3.29 h]; Construction Material | UDF_G3 | 1 | EE | 1 | C03a | TY1 | Non | RHCU | EIT2.1 | C03b | EIT02.1 |
|  | 1 | **Air Fin Cooler - EM-10701-2** |  | 2026-01-26 | 2026-03-23 |  |  |  |  |  |  |  |  |  |  |  |  |  |  |  |
| 2.1-RHCUEE03-1010 |  | Install support / bracket | 20d | 2026-01-26 A | 2026-02-17 A | 2.1-RHCUEE03-1000 SS | 100% |  | LABOUR [3 h]; Construction Material | UDF_G3 | 1 | EE | 1 | C03a | TY1 | Non | RHCU | EIT2.1 | C03b | EIT02.1 |
| 2.1-RHCUEE03-1570 |  | Install Ladder / Tray | 20d | 2026-02-18 A | 2026-03-12 A | 2.1-RHCUEE03-1010 SS, 2.1-RHCUEE03-1010 | 100% |  | LABOUR [10 h]; Construction Material | UDF_G3 | 1 | EE | 1 | C03a | TY1 | Non | RHCU | EIT2.1 | C03b | EIT02.1 |
| 2.1-RHCUEE03-1580 |  | Install Conduits | 20d | 2026-02-18 A | 2026-03-12 A | 2.1-RHCUEE03-1570 SS | 100% |  | LABOUR [3 h]; Construction Material | UDF_G3 | 1 | EE | 1 | C03a | TY1 | Non | RHCU | EIT2.1 | C03b | EIT02.1 |
| 2.1-RHCUEE03-2660 |  | Clear punch | 6d | 2026-03-13 A | 2026-03-19 A | 2.1-RHCUEE03-1580 SS, 2.1-RHCUEE03-1570 SS, 2.1-RHCUEE03-1580, 2.1-RHCUEE03-1570 | 100% |  | LABOUR [3 h]; Construction Material | UDF_G3 | 1 | EE | 1 | C03a | TY1 | Non | RHCU | EIT2.1 | C03b | EIT02.1 |
| 2.1-RHCUEE03-3210 |  | Complete QA/QC document | 3d | 2026-03-20 A | 2026-03-23 A | 2.1-RHCUEE03-2660 SS, 2.1-RHCUEE03-2660 | 100% |  | LABOUR [3.29 h]; Construction Material | UDF_G3 | 1 | EE | 1 | C03a | TY1 | Non | RHCU | EIT2.1 | C03b | EIT02.1 |
|  | 3 | **Air Fin Cooler - EM-10711-1** |  | 2026-01-26 | 2026-03-23 |  |  |  |  |  |  |  |  |  |  |  |  |  |  |  |
| 2.1-RHCUEE03-1020 |  | Install support / bracket | 20d | 2026-01-26 A | 2026-02-17 A | 2.1-RHCUEE03-1010 SS | 100% |  | LABOUR [3 h]; Construction Material | UDF_G3 | 1 | EE | 1 | C03a | TY1 | Non | RHCU | EIT2.1 | C03b | EIT02.1 |
| 2.1-RHCUEE03-1590 |  | Install Ladder / Tray | 20d | 2026-02-18 A | 2026-03-12 A | 2.1-RHCUEE03-1020 SS, 2.1-RHCUEE03-1020 | 100% |  | LABOUR [10 h]; Construction Material | UDF_G3 | 1 | EE | 1 | C03a | TY1 | Non | RHCU | EIT2.1 | C03b | EIT02.1 |
| 2.1-RHCUEE03-1600 |  | Install Conduits | 20d | 2026-02-18 A | 2026-03-12 A | 2.1-RHCUEE03-1590 SS | 100% |  | LABOUR [3 h]; Construction Material | UDF_G3 | 1 | EE | 1 | C03a | TY1 | Non | RHCU | EIT2.1 | C03b | EIT02.1 |
| 2.1-RHCUEE03-2670 |  | Clear punch | 6d | 2026-03-13 A | 2026-03-19 A | 2.1-RHCUEE03-1600 SS, 2.1-RHCUEE03-1590 SS, 2.1-RHCUEE03-1600, 2.1-RHCUEE03-1590 | 100% |  | LABOUR [3 h]; Construction Material | UDF_G3 | 1 | EE | 1 | C03a | TY1 | Non | RHCU | EIT2.1 | C03b | EIT02.1 |
| 2.1-RHCUEE03-3220 |  | Complete QA/QC document | 3d | 2026-03-20 A | 2026-03-23 A | 2.1-RHCUEE03-2670 SS, 2.1-RHCUEE03-2670 | 100% |  | LABOUR [3.29 h]; Construction Material | UDF_G3 | 1 | EE | 1 | C03a | TY1 | Non | RHCU | EIT2.1 | C03b | EIT02.1 |
|  | 10 | **Air Fin Cooler - EM-10711-2** |  | 2026-01-26 | 2026-03-23 |  |  |  |  |  |  |  |  |  |  |  |  |  |  |  |
| 2.1-RHCUEE03-1030 |  | Install support / bracket | 20d | 2026-01-26 A | 2026-02-17 A | 2.1-RHCUEE03-1020 SS | 100% |  | LABOUR [3 h]; Construction Material | UDF_G3 | 1 | EE | 1 | C03a | TY1 | Non | RHCU | EIT2.1 | C03b | EIT02.1 |
| 2.1-RHCUEE03-1610 |  | Install Ladder / Tray | 20d | 2026-02-18 A | 2026-03-12 A | 2.1-RHCUEE03-1030 SS, 2.1-RHCUEE03-1030 | 100% |  | LABOUR [10 h]; Construction Material | UDF_G3 | 1 | EE | 1 | C03a | TY1 | Non | RHCU | EIT2.1 | C03b | EIT02.1 |
| 2.1-RHCUEE03-1620 |  | Install Conduits | 20d | 2026-02-18 A | 2026-03-12 A | 2.1-RHCUEE03-1610 SS | 100% |  | LABOUR [3 h]; Construction Material | UDF_G3 | 1 | EE | 1 | C03a | TY1 | Non | RHCU | EIT2.1 | C03b | EIT02.1 |
| 2.1-RHCUEE03-2680 |  | Clear punch | 6d | 2026-03-13 A | 2026-03-19 A | 2.1-RHCUEE03-1620 SS, 2.1-RHCUEE03-1610 SS, 2.1-RHCUEE03-1620, 2.1-RHCUEE03-1610 | 100% |  | LABOUR [3 h]; Construction Material | UDF_G3 | 1 | EE | 1 | C03a | TY1 | Non | RHCU | EIT2.1 | C03b | EIT02.1 |
| 2.1-RHCUEE03-3230 |  | Complete QA/QC document | 3d | 2026-03-20 A | 2026-03-23 A | 2.1-RHCUEE03-2680 SS, 2.1-RHCUEE03-2680 | 100% |  | LABOUR [3.29 h]; Construction Material | UDF_G3 | 1 | EE | 1 | C03a | TY1 | Non | RHCU | EIT2.1 | C03b | EIT02.1 |

| ID | WBS | Activity | Duration | Start | Finish | Predecessors | Complete | Resources | On Schedule Indicator | %Completed | Disciplines | Main Activity | WBS | Types | EIT2 Main Activity | Areas | Phases | EIT WBS | EIT PKG |
| --- | --- | --- | --- | --- | --- | --- | --- | --- | --- | --- | --- | --- | --- | --- | --- | --- | --- | --- | --- |
|  | 4 | **Air Fin Cooler - EM-10729-1** |  | 2026-01-26 | 2026-03-23 |  |  |  |  |  |  |  |  |  |  |  |  |  |  |
| 2.1-RHCUEE03-1040 |  | Install support / bracket | 20d | 2026-01-26 A | 2026-02-17 A | 2.1-RHCUEE03-1030 SS | 100% | LABOUR [3 h]; Construction Material | UDF_G3 | 1 | EE | 1 | C03a | TY1 | Non | RHCU | EIT2.1 | C03b | EIT02.1 |
| 2.1-RHCUEE03-1630 |  | Install Ladder / Tray | 20d | 2026-02-18 A | 2026-03-12 A | 2.1-RHCUEE03-1040 SS, 2.1-RHCUEE03-1040 | 100% | LABOUR [10 h]; Construction Material | UDF_G3 | 1 | EE | 1 | C03a | TY1 | Non | RHCU | EIT2.1 | C03b | EIT02.1 |
| 2.1-RHCUEE03-1640 |  | Install Conduits | 20d | 2026-02-18 A | 2026-03-12 A | 2.1-RHCUEE03-1630 SS | 100% | LABOUR [3 h]; Construction Material | UDF_G3 | 1 | EE | 1 | C03a | TY1 | Non | RHCU | EIT2.1 | C03b | EIT02.1 |
| 2.1-RHCUEE03-2690 |  | Clear punch | 6d | 2026-03-13 A | 2026-03-19 A | 2.1-RHCUEE03-1640 SS, 2.1-RHCUEE03-1630 SS, 2.1-RHCUEE03-1640, 2.1-RHCUEE03-1630 | 100% | LABOUR [3 h]; Construction Material | UDF_G3 | 1 | EE | 1 | C03a | TY1 | Non | RHCU | EIT2.1 | C03b | EIT02.1 |
| 2.1-RHCUEE03-3240 |  | Complete QA/QC document | 3d | 2026-03-20 A | 2026-03-23 A | 2.1-RHCUEE03-2690 SS, 2.1-RHCUEE03-2690 | 100% | LABOUR [3.29 h]; Construction Material | UDF_G3 | 1 | EE | 1 | C03a | TY1 | Non | RHCU | EIT2.1 | C03b | EIT02.1 |
|  | 6 | **Air Fin Cooler - EM-10729-2** |  | 2026-01-26 | 2026-03-23 |  |  |  |  |  |  |  |  |  |  |  |  |  |  |
| 2.1-RHCUEE03-1050 |  | Install support / bracket | 20d | 2026-01-26 A | 2026-02-17 A | 2.1-RHCUEE03-1040 SS | 100% | LABOUR [3 h]; Construction Material | UDF_G3 | 1 | EE | 1 | C03a | TY1 | Non | RHCU | EIT2.1 | C03b | EIT02.1 |
| 2.1-RHCUEE03-1650 |  | Install Ladder / Tray | 20d | 2026-02-18 A | 2026-03-12 A | 2.1-RHCUEE03-1050 SS, 2.1-RHCUEE03-1050 | 100% | LABOUR [10 h]; Construction Material | UDF_G3 | 1 | EE | 1 | C03a | TY1 | Non | RHCU | EIT2.1 | C03b | EIT02.1 |
| 2.1-RHCUEE03-1660 |  | Install Conduits | 20d | 2026-02-18 A | 2026-03-12 A | 2.1-RHCUEE03-1650 SS | 100% | LABOUR [3 h]; Construction Material | UDF_G3 | 1 | EE | 1 | C03a | TY1 | Non | RHCU | EIT2.1 | C03b | EIT02.1 |
| 2.1-RHCUEE03-2700 |  | Clear punch | 6d | 2026-03-13 A | 2026-03-19 A | 2.1-RHCUEE03-1660 SS, 2.1-RHCUEE03-1650 SS, 2.1-RHCUEE03-1660, 2.1-RHCUEE03-1650 | 100% | LABOUR [3 h]; Construction Material | UDF_G3 | 1 | EE | 1 | C03a | TY1 | Non | RHCU | EIT2.1 | C03b | EIT02.1 |
| 2.1-RHCUEE03-3250 |  | Complete QA/QC document | 3d | 2026-03-20 A | 2026-03-23 A | 2.1-RHCUEE03-2700 SS, 2.1-RHCUEE03-2700 | 100% | LABOUR [3.29 h]; Construction Material | UDF_G3 | 1 | EE | 1 | C03a | TY1 | Non | RHCU | EIT2.1 | C03b | EIT02.1 |
|  | 12 | **Air Fin Cooler - EM-10606-1** |  | 2026-01-26 | 2026-03-23 |  |  |  |  |  |  |  |  |  |  |  |  |  |  |
| 2.1-RHCUEE03-1060 |  | Install support / bracket | 20d | 2026-01-26 A | 2026-02-17 A | 2.1-RHCUEE03-1050 SS | 100% | LABOUR [3 h]; Construction Material | UDF_G3 | 1 | EE | 1 | C03a | TY1 | Non | RHCU | EIT2.1 | C03b | EIT02.1 |
| 2.1-RHCUEE03-1670 |  | Install Ladder / Tray | 20d | 2026-02-18 A | 2026-03-12 A | 2.1-RHCUEE03-1060 SS, 2.1-RHCUEE03-1060 | 100% | LABOUR [10 h]; Construction Material | UDF_G3 | 1 | EE | 1 | C03a | TY1 | Non | RHCU | EIT2.1 | C03b | EIT02.1 |
| 2.1-RHCUEE03-1680 |  | Install Conduits | 20d | 2026-02-18 A | 2026-03-12 A | 2.1-RHCUEE03-1670 SS | 100% | LABOUR [3 h]; Construction Material | UDF_G3 | 1 | EE | 1 | C03a | TY1 | Non | RHCU | EIT2.1 | C03b | EIT02.1 |
| 2.1-RHCUEE03-2710 |  | Clear punch | 6d | 2026-03-13 A | 2026-03-19 A | 2.1-RHCUEE03-1680 SS, 2.1-RHCUEE03-1670 SS, 2.1-RHCUEE03-1680, 2.1-RHCUEE03-1670 | 100% | LABOUR [3 h]; Construction Material | UDF_G3 | 1 | EE | 1 | C03a | TY1 | Non | RHCU | EIT2.1 | C03b | EIT02.1 |
| 2.1-RHCUEE03-3260 |  | Complete QA/QC document | 3d | 2026-03-20 A | 2026-03-23 A | 2.1-RHCUEE03-2710 SS, 2.1-RHCUEE03-2710 | 100% | LABOUR [3.29 h]; Construction Material | UDF_G3 | 1 | EE | 1 | C03a | TY1 | Non | RHCU | EIT2.1 | C03b | EIT02.1 |
|  | 11 | **Air Fin Cooler - EM-10606-2** |  | 2026-01-26 | 2026-03-23 |  |  |  |  |  |  |  |  |  |  |  |  |  |  |
| 2.1-RHCUEE03-1070 |  | Install support / bracket | 20d | 2026-01-26 A | 2026-02-17 A | 2.1-RHCUEE03-1060 SS | 100% | LABOUR [3 h]; Construction Material | UDF_G3 | 0 | EE | 1 | C03a | TY1 | Non | RHCU | EIT2.1 | C03b | EIT02.1 |
| 2.1-RHCUEE03-1690 |  | Install Ladder / Tray | 20d | 2026-02-18 A | 2026-03-12 A | 2.1-RHCUEE03-1070 SS, 2.1-RHCUEE03-1070 | 100% | LABOUR [10 h]; Construction Material | UDF_G3 | 0 | EE | 1 | C03a | TY1 | Non | RHCU | EIT2.1 | C03b | EIT02.1 |
| 2.1-RHCUEE03-1700 |  | Install Conduits | 20d | 2026-02-18 A | 2026-03-12 A | 2.1-RHCUEE03-1690 SS | 100% | LABOUR [3 h]; Construction Material | UDF_G3 | 0 | EE | 1 | C03a | TY1 | Non | RHCU | EIT2.1 | C03b | EIT02.1 |
| 2.1-RHCUEE03-2720 |  | Clear punch | 6d | 2026-03-13 A | 2026-03-19 A | 2.1-RHCUEE03-1700 SS, 2.1-RHCUEE03-1690 SS, 2.1-RHCUEE03-1700, 2.1-RHCUEE03-1690 | 100% | LABOUR [3 h]; Construction Material | UDF_G3 | 0 | EE | 1 | C03a | TY1 | Non | RHCU | EIT2.1 | C03b | EIT02.1 |
| 2.1-RHCUEE03-3270 |  | Complete QA/QC document | 3d | 2026-03-20 A | 2026-03-23 A | 2.1-RHCUEE03-2720 SS, 2.1-RHCUEE03-2720 | 100% | LABOUR [3.29 h]; Construction Material | UDF_G3 | 0 | EE | 1 | C03a | TY1 | Non | RHCU | EIT2.1 | C03b | EIT02.1 |

| ID | WBS | Activity | Duration | Start | Finish | Predecessors | Complete | Resources | On Schedule Indicator | %Completed | Disciplines | Main Activity | WBS | Types | EIT2 Main Activity | Areas | Phases | EIT WBS | EIT PKG |
| --- | --- | --- | --- | --- | --- | --- | --- | --- | --- | --- | --- | --- | --- | --- | --- | --- | --- | --- | --- |
|  | 42 | **Air Fin Cooler - EM-10606-3** |  | 2026-01-26 | 2026-03-23 |  |  |  |  |  |  |  |  |  |  |  |  |  |  |
| 2.1-RHCUEE03-1080 |  | Install support / bracket | 20d | 2026-01-26 A | 2026-02-17 A | 2.1-RHCUEE03-1070 SS | 100% | LABOUR [3 h]; Construction Material | UDF_G3 | 0 | EE | 1 | C03a | TY1 | Non | RHCU | EIT2.1 | C03b | EIT02.1 |
| 2.1-RHCUEE03-1710 |  | Install Ladder / Tray | 20d | 2026-02-18 A | 2026-03-12 A | 2.1-RHCUEE03-1080 | 100% | LABOUR [10 h]; Construction Material | UDF_G3 | 0 | EE | 1 | C03a | TY1 | Non | RHCU | EIT2.1 | C03b | EIT02.1 |
| 2.1-RHCUEE03-1720 |  | Install Conduits | 20d | 2026-02-18 A | 2026-03-12 A | 2.1-RHCUEE03-1710 SS | 100% | LABOUR [3 h]; Construction Material | UDF_G3 | 0 | EE | 1 | C03a | TY1 | Non | RHCU | EIT2.1 | C03b | EIT02.1 |
| 2.1-RHCUEE03-2730 |  | Clear punch | 6d | 2026-03-13 A | 2026-03-19 A | 2.1-RHCUEE03-1720, 2.1-RHCUEE03-1710 | 100% | LABOUR [3 h]; Construction Material | UDF_G3 | 0 | EE | 1 | C03a | TY1 | Non | RHCU | EIT2.1 | C03b | EIT02.1 |
| 2.1-RHCUEE03-3280 |  | Complete QA/QC document | 3d | 2026-03-20 A | 2026-03-23 A | 2.1-RHCUEE03-2730 | 100% | LABOUR [3.29 h]; Construction Material | UDF_G3 | 0 | EE | 1 | C03a | TY1 | Non | RHCU | EIT2.1 | C03b | EIT02.1 |
|  | 55 | **Air Fin Cooler - EM-10606-4** |  | 2026-01-26 | 2026-03-23 |  |  |  |  |  |  |  |  |  |  |  |  |  |  |
| 2.1-RHCUEE03-1090 |  | Install support / bracket | 20d | 2026-01-26 A | 2026-02-17 A | 2.1-RHCUEE03-1080 SS | 100% | LABOUR [3 h]; Construction Material | UDF_G3 | 0 | EE | 1 | C03a | TY1 | Non | RHCU | EIT2.1 | C03b | EIT02.1 |
| 2.1-RHCUEE03-1730 |  | Install Ladder / Tray | 20d | 2026-02-18 A | 2026-03-12 A | 2.1-RHCUEE03-1090 | 100% | LABOUR [10 h]; Construction Material | UDF_G3 | 0 | EE | 1 | C03a | TY1 | Non | RHCU | EIT2.1 | C03b | EIT02.1 |
| 2.1-RHCUEE03-1740 |  | Install Conduits | 20d | 2026-02-18 A | 2026-03-12 A | 2.1-RHCUEE03-1730 SS | 100% | LABOUR [3 h]; Construction Material | UDF_G3 | 0 | EE | 1 | C03a | TY1 | Non | RHCU | EIT2.1 | C03b | EIT02.1 |
| 2.1-RHCUEE03-2740 |  | Clear punch | 6d | 2026-03-13 A | 2026-03-19 A | 2.1-RHCUEE03-1740, 2.1-RHCUEE03-1730 | 100% | LABOUR [3 h]; Construction Material | UDF_G3 | 0 | EE | 1 | C03a | TY1 | Non | RHCU | EIT2.1 | C03b | EIT02.1 |
| 2.1-RHCUEE03-3290 |  | Complete QA/QC document | 3d | 2026-03-20 A | 2026-03-23 A | 2.1-RHCUEE03-2740 | 100% | LABOUR [3.29 h]; Construction Material | UDF_G3 | 0 | EE | 1 | C03a | TY1 | Non | RHCU | EIT2.1 | C03b | EIT02.1 |
|  | 43 | **Air Fin Cooler - EM-10610-25** |  | 2026-01-26 | 2026-03-23 |  |  |  |  |  |  |  |  |  |  |  |  |  |  |
| 2.1-RHCUEE03-1100 |  | Install support / bracket | 20d | 2026-01-26 A | 2026-02-17 A | 2.1-RHCUEE03-1090 SS | 100% | LABOUR [3 h]; Construction Material | UDF_G3 | 0 | EE | 1 | C03a | TY1 | Non | RHCU | EIT2.1 | C03b | EIT02.1 |
| 2.1-RHCUEE03-1750 |  | Install Ladder / Tray | 20d | 2026-02-18 A | 2026-03-12 A | 2.1-RHCUEE03-1100 | 100% | LABOUR [10 h]; Construction Material | UDF_G3 | 0 | EE | 1 | C03a | TY1 | Non | RHCU | EIT2.1 | C03b | EIT02.1 |
| 2.1-RHCUEE03-1760 |  | Install Conduits | 20d | 2026-02-18 A | 2026-03-12 A | 2.1-RHCUEE03-1750 SS | 100% | LABOUR [3 h]; Construction Material | UDF_G3 | 0 | EE | 1 | C03a | TY1 | Non | RHCU | EIT2.1 | C03b | EIT02.1 |
| 2.1-RHCUEE03-2750 |  | Clear punch | 6d | 2026-03-13 A | 2026-03-19 A | 2.1-RHCUEE03-1760, 2.1-RHCUEE03-1750 | 100% | LABOUR [3 h]; Construction Material | UDF_G3 | 0 | EE | 1 | C03a | TY1 | Non | RHCU | EIT2.1 | C03b | EIT02.1 |
| 2.1-RHCUEE03-3300 |  | Complete QA/QC document | 3d | 2026-03-20 A | 2026-03-23 A | 2.1-RHCUEE03-2750 | 100% | LABOUR [3.29 h]; Construction Material | UDF_G3 | 0 | EE | 1 | C03a | TY1 | Non | RHCU | EIT2.1 | C03b | EIT02.1 |
|  | 56 | **Air Fin Cooler - EM-10610-26** |  | 2026-01-26 | 2026-03-23 |  |  |  |  |  |  |  |  |  |  |  |  |  |  |
| 2.1-RHCUEE03-1110 |  | Install support / bracket | 20d | 2026-01-26 A | 2026-02-17 A | 2.1-RHCUEE03-1100 SS | 100% | LABOUR [3 h]; Construction Material | UDF_G3 | 0 | EE | 1 | C03a | TY1 | Non | RHCU | EIT2.1 | C03b | EIT02.1 |
| 2.1-RHCUEE03-1770 |  | Install Ladder / Tray | 20d | 2026-02-18 A | 2026-03-12 A | 2.1-RHCUEE03-1110 | 100% | LABOUR [10 h]; Construction Material | UDF_G3 | 0 | EE | 1 | C03a | TY1 | Non | RHCU | EIT2.1 | C03b | EIT02.1 |
| 2.1-RHCUEE03-1780 |  | Install Conduits | 20d | 2026-02-18 A | 2026-03-12 A | 2.1-RHCUEE03-1770 SS | 100% | LABOUR [3 h]; Construction Material | UDF_G3 | 0 | EE | 1 | C03a | TY1 | Non | RHCU | EIT2.1 | C03b | EIT02.1 |
| 2.1-RHCUEE03-2760 |  | Clear punch | 6d | 2026-03-13 A | 2026-03-19 A | 2.1-RHCUEE03-1780, 2.1-RHCUEE03-1770 | 100% | LABOUR [3 h]; Construction Material | UDF_G3 | 0 | EE | 1 | C03a | TY1 | Non | RHCU | EIT2.1 | C03b | EIT02.1 |
| 2.1-RHCUEE03-3310 |  | Complete QA/QC document | 3d | 2026-03-20 A | 2026-03-23 A | 2.1-RHCUEE03-2760 | 100% | LABOUR [3.29 h]; Construction Material | UDF_G3 | 0 | EE | 1 | C03a | TY1 | Non | RHCU | EIT2.1 | C03b | EIT02.1 |

| ID | WBS | Activity | Duration | Start | Finish | Predecessors | Complete | Resources | On Schedule Indicator | %Completed | Disciplines | Main Activity | WBS | Types | EIT2 Main Activity | Areas | Phases | EIT WBS | EIT PKG |
| --- | --- | --- | --- | --- | --- | --- | --- | --- | --- | --- | --- | --- | --- | --- | --- | --- | --- | --- | --- |
|  | 44 | **Air Fin Cooler - EM-10610-27** |  | 2026-01-26 | 2026-03-20 |  |  |  |  |  |  |  |  |  |  |  |  |  |  |
| 2.1-RHCUEE03-1120 |  | Install support / bracket | 20d | 2026-01-26 A | 2026-02-17 A | 2.1-RHCUEE03-1110 SS | 100% | LABOUR [3 h]; Construction Material | UDF_G3 | 0 | EE | 1 | C03a | TY1 | Non | RHCU | EIT2.1 | C03b | EIT02.1 |
| 2.1-RHCUEE03-1790 |  | Install Ladder / Tray | 20d | 2026-02-18 A | 2026-03-12 A | 2.1-RHCUEE03-1120 | 100% | LABOUR [10 h]; Construction Material | UDF_G3 | 0 | EE | 1 | C03a | TY1 | Non | RHCU | EIT2.1 | C03b | EIT02.1 |
| 2.1-RHCUEE03-1800 |  | Install Conduits | 20d | 2026-02-18 A | 2026-03-12 A | 2.1-RHCUEE03-1790 SS | 100% | LABOUR [3 h]; Construction Material | UDF_G3 | 0 | EE | 1 | C03a | TY1 | Non | RHCU | EIT2.1 | C03b | EIT02.1 |
| 2.1-RHCUEE03-2770 |  | Clear punch | 6d | 2026-03-13 A | 2026-03-19 A | 2.1-RHCUEE03-1800, 2.1-RHCUEE03-1790 | 100% | LABOUR [3 h]; Construction Material | UDF_G3 | 0 | EE | 1 | C03a | TY1 | Non | RHCU | EIT2.1 | C03b | EIT02.1 |
| 2.1-RHCUEE03-3320 |  | Complete QA/QC document | 0d | 2026-03-20 A | 2026-03-20 A | 2.1-RHCUEE03-2770 | 100% | Construction Material | UDF_G3 | 0 | EE | 1 | C03a | TY1 | Non | RHCU | EIT2.1 | C03b | EIT02.1 |
|  | 57 | **Air Fin Cooler - EM-10610-28** |  | 2026-01-26 | 2026-03-23 |  |  |  |  |  |  |  |  |  |  |  |  |  |  |
| 2.1-RHCUEE03-1130 |  | Install support / bracket | 20d | 2026-01-26 A | 2026-02-17 A | 2.1-RHCUEE03-1120 SS | 100% | LABOUR [3 h]; Construction Material | UDF_G3 | 0 | EE | 1 | C03a | TY1 | Non | RHCU | EIT2.1 | C03b | EIT02.1 |
| 2.1-RHCUEE03-1810 |  | Install Ladder / Tray | 20d | 2026-02-18 A | 2026-03-12 A | 2.1-RHCUEE03-1130 | 100% | LABOUR [10 h]; Construction Material | UDF_G3 | 0 | EE | 1 | C03a | TY1 | Non | RHCU | EIT2.1 | C03b | EIT02.1 |
| 2.1-RHCUEE03-1820 |  | Install Conduits | 20d | 2026-02-18 A | 2026-03-12 A | 2.1-RHCUEE03-1810 SS | 100% | LABOUR [3 h]; Construction Material | UDF_G3 | 0 | EE | 1 | C03a | TY1 | Non | RHCU | EIT2.1 | C03b | EIT02.1 |
| 2.1-RHCUEE03-2780 |  | Clear punch | 6d | 2026-03-13 A | 2026-03-19 A | 2.1-RHCUEE03-1820, 2.1-RHCUEE03-1810 | 100% | LABOUR [3 h]; Construction Material | UDF_G3 | 0 | EE | 1 | C03a | TY1 | Non | RHCU | EIT2.1 | C03b | EIT02.1 |
| 2.1-RHCUEE03-3330 |  | Complete QA/QC document | 3d | 2026-03-20 A | 2026-03-23 A | 2.1-RHCUEE03-2780 | 100% | LABOUR [3.29 h]; Construction Material | UDF_G3 | 0 | EE | 1 | C03a | TY1 | Non | RHCU | EIT2.1 | C03b | EIT02.1 |
|  | 45 | **Air Fin Cooler - EM-10610-29** |  | 2026-01-26 | 2026-03-20 |  |  |  |  |  |  |  |  |  |  |  |  |  |  |
| 2.1-RHCUEE03-1140 |  | Install support / bracket | 20d | 2026-01-26 A | 2026-02-17 A | 2.1-RHCUEE03-1130 SS | 100% | LABOUR [3 h]; Construction Material | UDF_G3 | 0 | EE | 1 | C03a | TY1 | Non | RHCU | EIT2.1 | C03b | EIT02.1 |
| 2.1-RHCUEE03-1830 |  | Install Ladder / Tray | 20d | 2026-02-18 A | 2026-03-12 A | 2.1-RHCUEE03-1140 | 100% | LABOUR [10 h]; Construction Material | UDF_G3 | 0 | EE | 1 | C03a | TY1 | Non | RHCU | EIT2.1 | C03b | EIT02.1 |
| 2.1-RHCUEE03-1840 |  | Install Conduits | 20d | 2026-02-18 A | 2026-03-12 A | 2.1-RHCUEE03-1830 SS | 100% | LABOUR [3 h]; Construction Material | UDF_G3 | 0 | EE | 1 | C03a | TY1 | Non | RHCU | EIT2.1 | C03b | EIT02.1 |
| 2.1-RHCUEE03-2790 |  | Clear punch | 6d | 2026-03-13 A | 2026-03-19 A | 2.1-RHCUEE03-1840, 2.1-RHCUEE03-1830 | 100% | LABOUR [3 h]; Construction Material | UDF_G3 | 0 | EE | 1 | C03a | TY1 | Non | RHCU | EIT2.1 | C03b | EIT02.1 |
| 2.1-RHCUEE03-3340 |  | Complete QA/QC document | 0d | 2026-03-20 A | 2026-03-20 A | 2.1-RHCUEE03-2790 | 100% | Construction Material | UDF_G3 | 0 | EE | 1 | C03a | TY1 | Non | RHCU | EIT2.1 | C03b | EIT02.1 |
|  | 54 | **Air Fin Cooler - EM-10610-30** |  | 2026-01-26 | 2026-03-20 |  |  |  |  |  |  |  |  |  |  |  |  |  |  |
| 2.1-RHCUEE03-1150 |  | Install support / bracket | 20d | 2026-01-26 A | 2026-02-17 A | 2.1-RHCUEE03-1140 SS | 100% | LABOUR [3 h]; Construction Material | UDF_G3 | 0 | EE | 1 | C03a | TY1 | Non | RHCU | EIT2.1 | C03b | EIT02.1 |
| 2.1-RHCUEE03-1850 |  | Install Ladder / Tray | 20d | 2026-02-18 A | 2026-03-12 A | 2.1-RHCUEE03-1150 | 100% | LABOUR [10 h]; Construction Material | UDF_G3 | 0 | EE | 1 | C03a | TY1 | Non | RHCU | EIT2.1 | C03b | EIT02.1 |
| 2.1-RHCUEE03-1860 |  | Install Conduits | 20d | 2026-02-18 A | 2026-03-12 A | 2.1-RHCUEE03-1850 SS | 100% | LABOUR [3 h]; Construction Material | UDF_G3 | 0 | EE | 1 | C03a | TY1 | Non | RHCU | EIT2.1 | C03b | EIT02.1 |
| 2.1-RHCUEE03-2800 |  | Clear punch | 6d | 2026-03-13 A | 2026-03-19 A | 2.1-RHCUEE03-1860, 2.1-RHCUEE03-1850 | 100% | LABOUR [3 h]; Construction Material | UDF_G3 | 0 | EE | 1 | C03a | TY1 | Non | RHCU | EIT2.1 | C03b | EIT02.1 |
| 2.1-RHCUEE03-3350 |  | Complete QA/QC document | 0d | 2026-03-20 A | 2026-03-20 A | 2.1-RHCUEE03-2800 | 100% | Construction Material | UDF_G3 | 0 | EE | 1 | C03a | TY1 | Non | RHCU | EIT2.1 | C03b | EIT02.1 |

| ID | WBS | Activity | Duration | Start | Finish | Predecessors | Complete | Planned start | Planned finish | Resources | On Schedule Indicator | %Completed | Disciplines | Main Activity | WBS | Types | EIT2 Main Activity | Areas | Phases | EIT WBS | EIT PKG |
| --- | --- | --- | --- | --- | --- | --- | --- | --- | --- | --- | --- | --- | --- | --- | --- | --- | --- | --- | --- | --- | --- |
|  | 58 | **Air Fin Cooler - EM-10610-31** |  | 2026-01-26 | 2026-03-23 |  |  |  |  |  |  |  |  |  |  |  |  |  |  |  |  |
| 2.1-RHCUEE03-1160 |  | Install support / bracket | 20d | 2026-01-26 A | 2026-02-17 A | 2.1-RHCUEE03-1150 SS | 100% |  |  | LABOUR [3 h]; Construction Material | UDF_G3 | 0 | EE | 1 | C03a | TY1 | Non | RHCU | EIT2.1 | C03b | EIT02.1 |
| 2.1-RHCUEE03-1870 |  | Install Ladder / Tray | 20d | 2026-02-18 A | 2026-03-12 A | 2.1-RHCUEE03-1160 | 100% |  |  | LABOUR [10 h]; Construction Material | UDF_G3 | 0 | EE | 1 | C03a | TY1 | Non | RHCU | EIT2.1 | C03b | EIT02.1 |
| 2.1-RHCUEE03-1880 |  | Install Conduits | 20d | 2026-02-18 A | 2026-03-12 A | 2.1-RHCUEE03-1870 SS | 100% |  |  | LABOUR [3 h]; Construction Material | UDF_G3 | 0 | EE | 1 | C03a | TY1 | Non | RHCU | EIT2.1 | C03b | EIT02.1 |
| 2.1-RHCUEE03-2810 |  | Clear punch | 6d | 2026-03-13 A | 2026-03-19 A | 2.1-RHCUEE03-1880, 2.1-RHCUEE03-1870 | 100% |  |  | LABOUR [3 h]; Construction Material | UDF_G3 | 0 | EE | 1 | C03a | TY1 | Non | RHCU | EIT2.1 | C03b | EIT02.1 |
| 2.1-RHCUEE03-3360 |  | Complete QA/QC document | 3d | 2026-03-20 A | 2026-03-23 A | 2.1-RHCUEE03-2810 | 100% |  |  | LABOUR [3.29 h]; Construction Material | UDF_G3 | 0 | EE | 1 | C03a | TY1 | Non | RHCU | EIT2.1 | C03b | EIT02.1 |
|  | 46 | **Air Fin Cooler - EM-10610-32** |  | 2026-01-26 | 2026-03-23 |  |  |  |  |  |  |  |  |  |  |  |  |  |  |  |  |
| 2.1-RHCUEE03-1170 |  | Install support / bracket | 20d | 2026-01-26 A | 2026-02-17 A | 2.1-RHCUEE03-1160 SS | 100% |  |  | LABOUR [3 h]; Construction Material | UDF_G3 | 0 | EE | 1 | C03a | TY1 | Non | RHCU | EIT2.1 | C03b | EIT02.1 |
| 2.1-RHCUEE03-1890 |  | Install Ladder / Tray | 20d | 2026-02-18 A | 2026-03-12 A | 2.1-RHCUEE03-1170 | 100% |  |  | LABOUR [10 h]; Construction Material | UDF_G3 | 0 | EE | 1 | C03a | TY1 | Non | RHCU | EIT2.1 | C03b | EIT02.1 |
| 2.1-RHCUEE03-1900 |  | Install Conduits | 20d | 2026-02-18 A | 2026-03-12 A | 2.1-RHCUEE03-1890 SS | 100% |  |  | LABOUR [3 h]; Construction Material | UDF_G3 | 0 | EE | 1 | C03a | TY1 | Non | RHCU | EIT2.1 | C03b | EIT02.1 |
| 2.1-RHCUEE03-2820 |  | Clear punch | 6d | 2026-03-13 A | 2026-03-19 A | 2.1-RHCUEE03-1900, 2.1-RHCUEE03-1890 | 100% |  |  | LABOUR [3 h]; Construction Material | UDF_G3 | 0 | EE | 1 | C03a | TY1 | Non | RHCU | EIT2.1 | C03b | EIT02.1 |
| 2.1-RHCUEE03-3370 |  | Complete QA/QC document | 3d | 2026-03-20 A | 2026-03-23 A | 2.1-RHCUEE03-2820 | 100% |  |  | LABOUR [3.29 h]; Construction Material | UDF_G3 | 0 | EE | 1 | C03a | TY1 | Non | RHCU | EIT2.1 | C03b | EIT02.1 |
|  | 7 | **Air Fin Cooler - EM-10610-13** |  | 2026-01-26 | 2026-03-23 |  |  |  |  |  |  |  |  |  |  |  |  |  |  |  |  |
| 2.1-RHCUEE03-1180 |  | Install support / bracket | 20d | 2026-01-26 A | 2026-02-17 A | 2.1-RHCUEE03-1170 SS | 100% |  |  | LABOUR [3 h]; Construction Material | UDF_G3 | 0 | EE | 1 | C03a | TY1 | Non | RHCU | EIT2.1 | C03b | EIT02.1 |
| 2.1-RHCUEE03-1910 |  | Install Ladder / Tray | 20d | 2026-02-18 A | 2026-03-12 A | 2.1-RHCUEE03-1180 | 100% |  |  | LABOUR [10 h]; Construction Material | UDF_G3 | 0 | EE | 1 | C03a | TY1 | Non | RHCU | EIT2.1 | C03b | EIT02.1 |
| 2.1-RHCUEE03-1920 |  | Install Conduits | 20d | 2026-02-18 A | 2026-03-12 A | 2.1-RHCUEE03-1910 SS | 100% |  |  | LABOUR [3 h]; Construction Material | UDF_G3 | 0 | EE | 1 | C03a | TY1 | Non | RHCU | EIT2.1 | C03b | EIT02.1 |
| 2.1-RHCUEE03-2830 |  | Clear punch | 6d | 2026-03-13 A | 2026-03-20 A | 2.1-RHCUEE03-1920, 2.1-RHCUEE03-1910 | 100% | 2026-03-13 | 2026-03-19 | LABOUR [3 h]; Construction Material | UDF_G3 | 0 | EE | 1 | C03a | TY1 | Non | RHCU | EIT2.1 | C03b | EIT02.1 |
| 2.1-RHCUEE03-3380 |  | Complete QA/QC document | 3d | 2026-03-20 A | 2026-03-23 A | 2.1-RHCUEE03-2830 | 100% |  |  | LABOUR [3.29 h]; Construction Material | UDF_G3 | 0 | EE | 1 | C03a | TY1 | Non | RHCU | EIT2.1 | C03b | EIT02.1 |
|  | 59 | **Air Fin Cooler - EM-10610-14** |  | 2026-01-26 | 2026-02-18 |  |  |  |  |  |  |  |  |  |  |  |  |  |  |  |  |
| 2.1-RHCUEE03-1190 |  | Install support / bracket | 20d | 2026-01-26 A | 2026-02-17 A | 2.1-RHCUEE03-1180 SS | 100% |  |  | LABOUR [3 h]; Construction Material | UDF_G3 | 0 | EE | 1 | C03a | TY1 | Non | RHCU | EIT2.1 | C03b | EIT02.1 |
| 2.1-RHCUEE03-1930 |  | Install Ladder / Tray | 0d | 2026-02-18 A | 2026-02-18 A | 2.1-RHCUEE03-1190 | 100% |  |  | Construction Material | UDF_G3 | 0 | EE | 1 | C03a | TY1 | Non | RHCU | EIT2.1 | C03b | EIT02.1 |
| 2.1-RHCUEE03-1940 |  | Install Conduits | 0d | 2026-02-18 A | 2026-02-18 A | 2.1-RHCUEE03-1930 SS | 100% |  |  | Construction Material | UDF_G3 | 0 | EE | 1 | C03a | TY1 | Non | RHCU | EIT2.1 | C03b | EIT02.1 |
| 2.1-RHCUEE03-2840 |  | Clear punch | 0d | 2026-02-18 A | 2026-02-18 A | 2.1-RHCUEE03-1940, 2.1-RHCUEE03-1930 | 100% |  |  | Construction Material | UDF_G3 | 0 | EE | 1 | C03a | TY1 | Non | RHCU | EIT2.1 | C03b | EIT02.1 |
| 2.1-RHCUEE03-3390 |  | Complete QA/QC document | 0d | 2026-02-18 A | 2026-02-18 A | 2.1-RHCUEE03-2840 | 100% |  |  | Construction Material | UDF_G3 | 0 | EE | 1 | C03a | TY1 | Non | RHCU | EIT2.1 | C03b | EIT02.1 |

| ID | WBS | Activity | Duration | Start | Finish | Predecessors | Complete | Resources | On Schedule Indicator | %Completed | Disciplines | Main Activity | WBS | Types | EIT2 Main Activity | Areas | Phases | EIT WBS | EIT PKG |
| --- | --- | --- | --- | --- | --- | --- | --- | --- | --- | --- | --- | --- | --- | --- | --- | --- | --- | --- | --- |
|  | 47 | **Air Fin Cooler - EM-10610-15** |  | 2026-01-26 | 2026-01-26 |  |  |  |  |  |  |  |  |  |  |  |  |  |  |
| 2.1-RHCUEE03-1200 |  | Install support / bracket | 0d | 2026-01-26 A | 2026-01-26 A | 2.1-RHCUEE03-1190 SS | 100% | Construction Material | UDF_G3 | 0 | EE | 1 | C03a | TY1 | Non | RHCU | EIT2.1 | C03b | EIT02.1 |
| 2.1-RHCUEE03-1950 |  | Install Ladder / Tray | 0d | 2026-01-26 A | 2026-01-26 A | 2.1-RHCUEE03-1200 | 100% | Construction Material | UDF_G3 | 0 | EE | 1 | C03a | TY1 | Non | RHCU | EIT2.1 | C03b | EIT02.1 |
| 2.1-RHCUEE03-1960 |  | Install Conduits | 0d | 2026-01-26 A | 2026-01-26 A | 2.1-RHCUEE03-1950 SS | 100% | Construction Material | UDF_G3 | 0 | EE | 1 | C03a | TY1 | Non | RHCU | EIT2.1 | C03b | EIT02.1 |
| 2.1-RHCUEE03-2850 |  | Clear punch | 0d | 2026-01-26 A | 2026-01-26 A | 2.1-RHCUEE03-1960, 2.1-RHCUEE03-1950 | 100% | Construction Material | UDF_G3 | 0 | EE | 1 | C03a | TY1 | Non | RHCU | EIT2.1 | C03b | EIT02.1 |
| 2.1-RHCUEE03-3400 |  | Complete QA/QC document | 0d | 2026-01-26 A | 2026-01-26 A | 2.1-RHCUEE03-2850 | 100% | Construction Material | UDF_G3 | 0 | EE | 1 | C03a | TY1 | Non | RHCU | EIT2.1 | C03b | EIT02.1 |
|  | 60 | **Air Fin Cooler - EM-10610-16** |  | 2026-01-26 | 2026-01-26 |  |  |  |  |  |  |  |  |  |  |  |  |  |  |
| 2.1-RHCUEE03-1210 |  | Install support / bracket | 0d | 2026-01-26 A | 2026-01-26 A | 2.1-RHCUEE03-1200 SS | 100% | Construction Material | UDF_G3 | 0 | EE | 1 | C03a | TY1 | Non | RHCU | EIT2.1 | C03b | EIT02.1 |
| 2.1-RHCUEE03-1970 |  | Install Ladder / Tray | 0d | 2026-01-26 A | 2026-01-26 A | 2.1-RHCUEE03-1210 | 100% | Construction Material | UDF_G3 | 0 | EE | 1 | C03a | TY1 | Non | RHCU | EIT2.1 | C03b | EIT02.1 |
| 2.1-RHCUEE03-1980 |  | Install Conduits | 0d | 2026-01-26 A | 2026-01-26 A | 2.1-RHCUEE03-1970 SS | 100% | Construction Material | UDF_G3 | 0 | EE | 1 | C03a | TY1 | Non | RHCU | EIT2.1 | C03b | EIT02.1 |
| 2.1-RHCUEE03-2860 |  | Clear punch | 0d | 2026-01-26 A | 2026-01-26 A | 2.1-RHCUEE03-1980, 2.1-RHCUEE03-1970 | 100% | Construction Material | UDF_G3 | 0 | EE | 1 | C03a | TY1 | Non | RHCU | EIT2.1 | C03b | EIT02.1 |
| 2.1-RHCUEE03-3410 |  | Complete QA/QC document | 0d | 2026-01-26 A | 2026-01-26 A | 2.1-RHCUEE03-2860 | 100% | Construction Material | UDF_G3 | 0 | EE | 1 | C03a | TY1 | Non | RHCU | EIT2.1 | C03b | EIT02.1 |
|  | 48 | **Air Fin Cooler - EM-10610-17** |  | 2026-01-26 | 2026-01-26 |  |  |  |  |  |  |  |  |  |  |  |  |  |  |
| 2.1-RHCUEE03-1220 |  | Install support / bracket | 0d | 2026-01-26 A | 2026-01-26 A | 2.1-RHCUEE03-1210 SS | 100% | Construction Material | UDF_G3 | 0 | EE | 1 | C03a | TY1 | Non | RHCU | EIT2.1 | C03b | EIT02.1 |
| 2.1-RHCUEE03-1990 |  | Install Ladder / Tray | 0d | 2026-01-26 A | 2026-01-26 A | 2.1-RHCUEE03-1220 | 100% | Construction Material | UDF_G3 | 0 | EE | 1 | C03a | TY1 | Non | RHCU | EIT2.1 | C03b | EIT02.1 |
| 2.1-RHCUEE03-2000 |  | Install Conduits | 0d | 2026-01-26 A | 2026-01-26 A | 2.1-RHCUEE03-1990 SS | 100% | Construction Material | UDF_G3 | 0 | EE | 1 | C03a | TY1 | Non | RHCU | EIT2.1 | C03b | EIT02.1 |
| 2.1-RHCUEE03-2870 |  | Clear punch | 0d | 2026-01-26 A | 2026-01-26 A | 2.1-RHCUEE03-2000, 2.1-RHCUEE03-1990 | 100% | Construction Material | UDF_G3 | 0 | EE | 1 | C03a | TY1 | Non | RHCU | EIT2.1 | C03b | EIT02.1 |
| 2.1-RHCUEE03-3420 |  | Complete QA/QC document | 0d | 2026-01-26 A | 2026-01-26 A | 2.1-RHCUEE03-2870 | 100% | Construction Material | UDF_G3 | 0 | EE | 1 | C03a | TY1 | Non | RHCU | EIT2.1 | C03b | EIT02.1 |
|  | 61 | **Air Fin Cooler - EM-10610-18** |  | 2026-01-26 | 2026-01-26 |  |  |  |  |  |  |  |  |  |  |  |  |  |  |
| 2.1-RHCUEE03-1230 |  | Install support / bracket | 0d | 2026-01-26 A | 2026-01-26 A | 2.1-RHCUEE03-1220 SS | 100% | Construction Material | UDF_G3 | 0 | EE | 1 | C03a | TY1 | Non | RHCU | EIT2.1 | C03b | EIT02.1 |
| 2.1-RHCUEE03-2010 |  | Install Ladder / Tray | 0d | 2026-01-26 A | 2026-01-26 A | 2.1-RHCUEE03-1230 | 100% | Construction Material | UDF_G3 | 0 | EE | 1 | C03a | TY1 | Non | RHCU | EIT2.1 | C03b | EIT02.1 |
| 2.1-RHCUEE03-2020 |  | Install Conduits | 0d | 2026-01-26 A | 2026-01-26 A | 2.1-RHCUEE03-2010 SS | 100% | Construction Material | UDF_G3 | 0 | EE | 1 | C03a | TY1 | Non | RHCU | EIT2.1 | C03b | EIT02.1 |
| 2.1-RHCUEE03-2880 |  | Clear punch | 0d | 2026-01-26 A | 2026-01-26 A | 2.1-RHCUEE03-2020, 2.1-RHCUEE03-2010 | 100% | Construction Material | UDF_G3 | 0 | EE | 1 | C03a | TY1 | Non | RHCU | EIT2.1 | C03b | EIT02.1 |
| 2.1-RHCUEE03-3430 |  | Complete QA/QC document | 0d | 2026-01-26 A | 2026-01-26 A | 2.1-RHCUEE03-2880 | 100% | Construction Material | UDF_G3 | 0 | EE | 1 | C03a | TY1 | Non | RHCU | EIT2.1 | C03b | EIT02.1 |

| ID | WBS | Activity | Duration | Start | Finish | Predecessors | Complete | Resources | On Schedule Indicator | %Completed | Disciplines | Main Activity | WBS | Types | EIT2 Main Activity | Areas | Phases | EIT WBS | EIT PKG |
| --- | --- | --- | --- | --- | --- | --- | --- | --- | --- | --- | --- | --- | --- | --- | --- | --- | --- | --- | --- |
|  | 49 | **Air Fin Cooler - EM-10610-19** |  | 2026-01-26 | 2026-03-23 |  |  |  |  |  |  |  |  |  |  |  |  |  |  |
| 2.1-RHCUEE03-1240 |  | Install support / bracket | 20d | 2026-01-26 A | 2026-02-17 A | 2.1-RHCUEE03-1230 SS | 100% | LABOUR [3 h]; Construction Material | UDF_G3 | 0 | EE | 1 | C03a | TY1 | Non | RHCU | EIT2.1 | C03b | EIT02.1 |
| 2.1-RHCUEE03-2030 |  | Install Ladder / Tray | 20d | 2026-02-18 A | 2026-03-12 A | 2.1-RHCUEE03-1240 | 100% | LABOUR [10 h]; Construction Material | UDF_G3 | 0 | EE | 1 | C03a | TY1 | Non | RHCU | EIT2.1 | C03b | EIT02.1 |
| 2.1-RHCUEE03-2040 |  | Install Conduits | 20d | 2026-02-18 A | 2026-03-12 A | 2.1-RHCUEE03-2030 SS | 100% | LABOUR [3 h]; Construction Material | UDF_G3 | 0 | EE | 1 | C03a | TY1 | Non | RHCU | EIT2.1 | C03b | EIT02.1 |
| 2.1-RHCUEE03-2890 |  | Clear punch | 6d | 2026-03-13 A | 2026-03-19 A | 2.1-RHCUEE03-2040, 2.1-RHCUEE03-2030 | 100% | LABOUR [3 h]; Construction Material | UDF_G3 | 0 | EE | 1 | C03a | TY1 | Non | RHCU | EIT2.1 | C03b | EIT02.1 |
| 2.1-RHCUEE03-3440 |  | Complete QA/QC document | 3d | 2026-03-20 A | 2026-03-23 A | 2.1-RHCUEE03-2890 | 100% | LABOUR [3.29 h]; Construction Material | UDF_G3 | 0 | EE | 1 | C03a | TY1 | Non | RHCU | EIT2.1 | C03b | EIT02.1 |
|  | 62 | **Air Fin Cooler - EM-10610-20** |  | 2026-01-26 | 2026-03-23 |  |  |  |  |  |  |  |  |  |  |  |  |  |  |
| 2.1-RHCUEE03-1250 |  | Install support / bracket | 20d | 2026-01-26 A | 2026-02-17 A | 2.1-RHCUEE03-1240 SS | 100% | LABOUR [3 h]; Construction Material | UDF_G3 | 0 | EE | 1 | C03a | TY1 | Non | RHCU | EIT2.1 | C03b | EIT02.1 |
| 2.1-RHCUEE03-2050 |  | Install Ladder / Tray | 20d | 2026-02-18 A | 2026-03-12 A | 2.1-RHCUEE03-1250 | 100% | LABOUR [10 h]; Construction Material | UDF_G3 | 0 | EE | 1 | C03a | TY1 | Non | RHCU | EIT2.1 | C03b | EIT02.1 |
| 2.1-RHCUEE03-2060 |  | Install Conduits | 20d | 2026-02-18 A | 2026-03-12 A | 2.1-RHCUEE03-2050 SS | 100% | LABOUR [3 h]; Construction Material | UDF_G3 | 0 | EE | 1 | C03a | TY1 | Non | RHCU | EIT2.1 | C03b | EIT02.1 |
| 2.1-RHCUEE03-2900 |  | Clear punch | 6d | 2026-03-13 A | 2026-03-19 A | 2.1-RHCUEE03-2060, 2.1-RHCUEE03-2050 | 100% | LABOUR [3 h]; Construction Material | UDF_G3 | 0 | EE | 1 | C03a | TY1 | Non | RHCU | EIT2.1 | C03b | EIT02.1 |
| 2.1-RHCUEE03-3450 |  | Complete QA/QC document | 3d | 2026-03-20 A | 2026-03-23 A | 2.1-RHCUEE03-2900 | 100% | LABOUR [3.29 h]; Construction Material | UDF_G3 | 0 | EE | 1 | C03a | TY1 | Non | RHCU | EIT2.1 | C03b | EIT02.1 |
|  | 50 | **Air Fin Cooler - EM-10610-21** |  | 2026-01-26 | 2026-03-23 |  |  |  |  |  |  |  |  |  |  |  |  |  |  |
| 2.1-RHCUEE03-1260 |  | Install support / bracket | 20d | 2026-01-26 A | 2026-02-17 A | 2.1-RHCUEE03-1250 SS | 100% | LABOUR [3 h]; Construction Material | UDF_G3 | 0 | EE | 1 | C03a | TY1 | Non | RHCU | EIT2.1 | C03b | EIT02.1 |
| 2.1-RHCUEE03-2070 |  | Install Ladder / Tray | 20d | 2026-02-18 A | 2026-03-12 A | 2.1-RHCUEE03-1260 | 100% | LABOUR [10 h]; Construction Material | UDF_G3 | 0 | EE | 1 | C03a | TY1 | Non | RHCU | EIT2.1 | C03b | EIT02.1 |
| 2.1-RHCUEE03-2080 |  | Install Conduits | 20d | 2026-02-18 A | 2026-03-12 A | 2.1-RHCUEE03-2070 SS | 100% | LABOUR [3 h]; Construction Material | UDF_G3 | 0 | EE | 1 | C03a | TY1 | Non | RHCU | EIT2.1 | C03b | EIT02.1 |
| 2.1-RHCUEE03-2910 |  | Clear punch | 6d | 2026-03-13 A | 2026-03-19 A | 2.1-RHCUEE03-2080, 2.1-RHCUEE03-2070 | 100% | LABOUR [3 h]; Construction Material | UDF_G3 | 0 | EE | 1 | C03a | TY1 | Non | RHCU | EIT2.1 | C03b | EIT02.1 |
| 2.1-RHCUEE03-3460 |  | Complete QA/QC document | 3d | 2026-03-20 A | 2026-03-23 A | 2.1-RHCUEE03-2910 | 100% | LABOUR [3.29 h]; Construction Material | UDF_G3 | 0 | EE | 1 | C03a | TY1 | Non | RHCU | EIT2.1 | C03b | EIT02.1 |
|  | 63 | **Air Fin Cooler - EM-10610-22** |  | 2026-01-26 | 2026-03-23 |  |  |  |  |  |  |  |  |  |  |  |  |  |  |
| 2.1-RHCUEE03-1270 |  | Install support / bracket | 20d | 2026-01-26 A | 2026-02-17 A | 2.1-RHCUEE03-1260 SS | 100% | LABOUR [3 h]; Construction Material | UDF_G3 | 0 | EE | 1 | C03a | TY1 | Non | RHCU | EIT2.1 | C03b | EIT02.1 |
| 2.1-RHCUEE03-2090 |  | Install Ladder / Tray | 20d | 2026-02-18 A | 2026-03-12 A | 2.1-RHCUEE03-1270 | 100% | LABOUR [10 h]; Construction Material | UDF_G3 | 0 | EE | 1 | C03a | TY1 | Non | RHCU | EIT2.1 | C03b | EIT02.1 |
| 2.1-RHCUEE03-2100 |  | Install Conduits | 20d | 2026-02-18 A | 2026-03-12 A | 2.1-RHCUEE03-2090 SS | 100% | LABOUR [3 h]; Construction Material | UDF_G3 | 0 | EE | 1 | C03a | TY1 | Non | RHCU | EIT2.1 | C03b | EIT02.1 |
| 2.1-RHCUEE03-2920 |  | Clear punch | 6d | 2026-03-13 A | 2026-03-19 A | 2.1-RHCUEE03-2100, 2.1-RHCUEE03-2090 | 100% | LABOUR [3 h]; Construction Material | UDF_G3 | 0 | EE | 1 | C03a | TY1 | Non | RHCU | EIT2.1 | C03b | EIT02.1 |
| 2.1-RHCUEE03-3470 |  | Complete QA/QC document | 3d | 2026-03-20 A | 2026-03-23 A | 2.1-RHCUEE03-2920 | 100% | LABOUR [3.29 h]; Construction Material | UDF_G3 | 0 | EE | 1 | C03a | TY1 | Non | RHCU | EIT2.1 | C03b | EIT02.1 |

| ID | WBS | Activity | Duration | Start | Finish | Predecessors | Complete | Constraint | Resources | On Schedule Indicator | %Completed | Disciplines | Main Activity | WBS | Types | EIT2 Main Activity | Areas | Phases | EIT WBS | EIT PKG |
| --- | --- | --- | --- | --- | --- | --- | --- | --- | --- | --- | --- | --- | --- | --- | --- | --- | --- | --- | --- | --- |
|  | 51 | **Air Fin Cooler - EM-10610-23** |  | 2026-01-26 | 2026-03-23 |  |  |  |  |  |  |  |  |  |  |  |  |  |  |  |
| 2.1-RHCUEE03-1280 |  | Install support / bracket | 20d | 2026-01-26 A | 2026-02-17 A | 2.1-RHCUEE03-1270 SS | 100% |  | LABOUR [3 h]; Construction Material | UDF_G3 | 0 | EE | 1 | C03a | TY1 | Non | RHCU | EIT2.1 | C03b | EIT02.1 |
| 2.1-RHCUEE03-2110 |  | Install Ladder / Tray | 20d | 2026-02-18 A | 2026-03-12 A | 2.1-RHCUEE03-1280 | 100% |  | LABOUR [10 h]; Construction Material | UDF_G3 | 0 | EE | 1 | C03a | TY1 | Non | RHCU | EIT2.1 | C03b | EIT02.1 |
| 2.1-RHCUEE03-2120 |  | Install Conduits | 20d | 2026-02-18 A | 2026-03-12 A | 2.1-RHCUEE03-2110 SS | 100% |  | LABOUR [3 h]; Construction Material | UDF_G3 | 0 | EE | 1 | C03a | TY1 | Non | RHCU | EIT2.1 | C03b | EIT02.1 |
| 2.1-RHCUEE03-2930 |  | Clear punch | 6d | 2026-03-13 A | 2026-03-19 A | 2.1-RHCUEE03-2120, 2.1-RHCUEE03-2110 | 100% |  | LABOUR [3 h]; Construction Material | UDF_G3 | 0 | EE | 1 | C03a | TY1 | Non | RHCU | EIT2.1 | C03b | EIT02.1 |
| 2.1-RHCUEE03-3480 |  | Complete QA/QC document | 3d | 2026-03-20 A | 2026-03-23 A | 2.1-RHCUEE03-2930 | 100% |  | LABOUR [3.29 h]; Construction Material | UDF_G3 | 0 | EE | 1 | C03a | TY1 | Non | RHCU | EIT2.1 | C03b | EIT02.1 |
|  | 64 | **Air Fin Cooler - EM-10610-24** |  | 2026-01-26 | 2026-03-23 |  |  |  |  |  |  |  |  |  |  |  |  |  |  |  |
| 2.1-RHCUEE03-1290 |  | Install support / bracket | 20d | 2026-01-26 A | 2026-02-17 A | 2.1-RHCUEE03-1280 SS | 100% |  | LABOUR [3 h]; Construction Material | UDF_G3 | 0 | EE | 1 | C03a | TY1 | Non | RHCU | EIT2.1 | C03b | EIT02.1 |
| 2.1-RHCUEE03-2130 |  | Install Ladder / Tray | 20d | 2026-02-18 A | 2026-03-12 A | 2.1-RHCUEE03-1290 | 100% |  | LABOUR [10 h]; Construction Material | UDF_G3 | 0 | EE | 1 | C03a | TY1 | Non | RHCU | EIT2.1 | C03b | EIT02.1 |
| 2.1-RHCUEE03-2140 |  | Install Conduits | 20d | 2026-02-18 A | 2026-03-12 A | 2.1-RHCUEE03-2130 SS | 100% |  | LABOUR [3 h]; Construction Material | UDF_G3 | 0 | EE | 1 | C03a | TY1 | Non | RHCU | EIT2.1 | C03b | EIT02.1 |
| 2.1-RHCUEE03-2940 |  | Clear punch | 6d | 2026-03-13 A | 2026-03-19 A | 2.1-RHCUEE03-2140, 2.1-RHCUEE03-2130 | 100% |  | LABOUR [3 h]; Construction Material | UDF_G3 | 0 | EE | 1 | C03a | TY1 | Non | RHCU | EIT2.1 | C03b | EIT02.1 |
| 2.1-RHCUEE03-3490 |  | Complete QA/QC document | 3d | 2026-03-20 A | 2026-03-23 A | 2.1-RHCUEE03-2940 | 100% |  | LABOUR [3.29 h]; Construction Material | UDF_G3 | 0 | EE | 1 | C03a | TY1 | Non | RHCU | EIT2.1 | C03b | EIT02.1 |
|  | 52 | **Air Fin Cooler - EM-10610-10** |  | 2026-01-26 | 2026-03-23 |  |  |  |  |  |  |  |  |  |  |  |  |  |  |  |
| 2.1-RHCUEE03-1300 |  | Install support / bracket | 20d | 2026-01-26 A | 2026-02-17 A | 2.1-RHCUEE03-1290 SS | 100% | start on or after 2026-01-26 | LABOUR [3 h]; Construction Material | UDF_G3 | 0 | EE | 1 | C03a | TY1 | Non | RHCU | EIT2.1 | C03b | EIT02.1 |
| 2.1-RHCUEE03-2150 |  | Install Ladder / Tray | 20d | 2026-02-18 A | 2026-03-12 A | 2.1-RHCUEE03-1300 | 100% |  | LABOUR [10 h]; Construction Material | UDF_G3 | 0 | EE | 1 | C03a | TY1 | Non | RHCU | EIT2.1 | C03b | EIT02.1 |
| 2.1-RHCUEE03-2160 |  | Install Conduits | 20d | 2026-02-18 A | 2026-03-12 A | 2.1-RHCUEE03-2150 SS | 100% |  | LABOUR [3 h]; Construction Material | UDF_G3 | 0 | EE | 1 | C03a | TY1 | Non | RHCU | EIT2.1 | C03b | EIT02.1 |
| 2.1-RHCUEE03-2950 |  | Clear punch | 6d | 2026-03-13 A | 2026-03-19 A | 2.1-RHCUEE03-2160, 2.1-RHCUEE03-2150 | 100% |  | LABOUR [3 h]; Construction Material | UDF_G3 | 0 | EE | 1 | C03a | TY1 | Non | RHCU | EIT2.1 | C03b | EIT02.1 |
| 2.1-RHCUEE03-3500 |  | Complete QA/QC document | 3d | 2026-03-20 A | 2026-03-23 A | 2.1-RHCUEE03-2950 | 100% |  | LABOUR [3.29 h]; Construction Material | UDF_G3 | 0 | EE | 1 | C03a | TY1 | Non | RHCU | EIT2.1 | C03b | EIT02.1 |
|  | 65 | **Air Fin Cooler - EM-10610-11** |  | 2026-01-26 | 2026-03-23 |  |  |  |  |  |  |  |  |  |  |  |  |  |  |  |
| 2.1-RHCUEE03-1310 |  | Install support / bracket | 20d | 2026-01-26 A | 2026-02-17 A | 2.1-RHCUEE03-1300 SS | 100% |  | LABOUR [3 h]; Construction Material | UDF_G3 | 0 | EE | 1 | C03a | TY1 | Non | RHCU | EIT2.1 | C03b | EIT02.1 |
| 2.1-RHCUEE03-2170 |  | Install Ladder / Tray | 20d | 2026-02-18 A | 2026-03-12 A | 2.1-RHCUEE03-1310 | 100% |  | LABOUR [10 h]; Construction Material | UDF_G3 | 0 | EE | 1 | C03a | TY1 | Non | RHCU | EIT2.1 | C03b | EIT02.1 |
| 2.1-RHCUEE03-2180 |  | Install Conduits | 20d | 2026-02-18 A | 2026-03-12 A | 2.1-RHCUEE03-2170 SS | 100% |  | LABOUR [3 h]; Construction Material | UDF_G3 | 0 | EE | 1 | C03a | TY1 | Non | RHCU | EIT2.1 | C03b | EIT02.1 |
| 2.1-RHCUEE03-2960 |  | Clear punch | 6d | 2026-03-13 A | 2026-03-19 A | 2.1-RHCUEE03-2180, 2.1-RHCUEE03-2170 | 100% |  | LABOUR [3 h]; Construction Material | UDF_G3 | 0 | EE | 1 | C03a | TY1 | Non | RHCU | EIT2.1 | C03b | EIT02.1 |
| 2.1-RHCUEE03-3510 |  | Complete QA/QC document | 3d | 2026-03-20 A | 2026-03-23 A | 2.1-RHCUEE03-2960 | 100% |  | LABOUR [3.29 h]; Construction Material | UDF_G3 | 0 | EE | 1 | C03a | TY1 | Non | RHCU | EIT2.1 | C03b | EIT02.1 |

| ID | WBS | Activity | Duration | Start | Finish | Predecessors | Complete | Resources | On Schedule Indicator | %Completed | Disciplines | Main Activity | WBS | Types | EIT2 Main Activity | Areas | Phases | EIT WBS | EIT PKG |
| --- | --- | --- | --- | --- | --- | --- | --- | --- | --- | --- | --- | --- | --- | --- | --- | --- | --- | --- | --- |
|  | 53 | **Air Fin Cooler - EM-10610-12** |  | 2026-01-26 | 2026-03-23 |  |  |  |  |  |  |  |  |  |  |  |  |  |  |
| 2.1-RHCUEE03-1320 |  | Install support / bracket | 20d | 2026-01-26 A | 2026-02-17 A | 2.1-RHCUEE03-1310 SS | 100% | LABOUR [3 h]; Construction Material | UDF_G3 | 0 | EE | 1 | C03a | TY1 | Non | RHCU | EIT2.1 | C03b | EIT02.1 |
| 2.1-RHCUEE03-2190 |  | Install Ladder / Tray | 20d | 2026-02-18 A | 2026-03-12 A | 2.1-RHCUEE03-1320 | 100% | LABOUR [10 h]; Construction Material | UDF_G3 | 0 | EE | 1 | C03a | TY1 | Non | RHCU | EIT2.1 | C03b | EIT02.1 |
| 2.1-RHCUEE03-2200 |  | Install Conduits | 20d | 2026-02-18 A | 2026-03-12 A | 2.1-RHCUEE03-2190 SS | 100% | LABOUR [3 h]; Construction Material | UDF_G3 | 0 | EE | 1 | C03a | TY1 | Non | RHCU | EIT2.1 | C03b | EIT02.1 |
| 2.1-RHCUEE03-2970 |  | Clear punch | 6d | 2026-03-13 A | 2026-03-19 A | 2.1-RHCUEE03-2200, 2.1-RHCUEE03-2190 | 100% | LABOUR [3 h]; Construction Material | UDF_G3 | 0 | EE | 1 | C03a | TY1 | Non | RHCU | EIT2.1 | C03b | EIT02.1 |
| 2.1-RHCUEE03-3520 |  | Complete QA/QC document | 3d | 2026-03-20 A | 2026-03-23 A | 2.1-RHCUEE03-2970 | 100% | LABOUR [3.29 h]; Construction Material | UDF_G3 | 0 | EE | 1 | C03a | TY1 | Non | RHCU | EIT2.1 | C03b | EIT02.1 |
|  | 66 | **Air Fin Cooler - EM-10610-9** |  | 2026-01-26 | 2026-03-20 |  |  |  |  |  |  |  |  |  |  |  |  |  |  |
| 2.1-RHCUEE03-1330 |  | Install support / bracket | 20d | 2026-01-26 A | 2026-02-17 A | 2.1-RHCUEE03-1320 SS | 100% | LABOUR [3 h]; Construction Material | UDF_G3 | 0 | EE | 1 | C03a | TY1 | Non | RHCU | EIT2.1 | C03b | EIT02.1 |
| 2.1-RHCUEE03-2210 |  | Install Ladder / Tray | 20d | 2026-02-18 A | 2026-03-12 A | 2.1-RHCUEE03-1330 | 100% | LABOUR [10 h]; Construction Material | UDF_G3 | 0 | EE | 1 | C03a | TY1 | Non | RHCU | EIT2.1 | C03b | EIT02.1 |
| 2.1-RHCUEE03-2220 |  | Install Conduits | 20d | 2026-02-18 A | 2026-03-12 A | 2.1-RHCUEE03-2210 SS | 100% | LABOUR [3 h]; Construction Material | UDF_G3 | 0 | EE | 1 | C03a | TY1 | Non | RHCU | EIT2.1 | C03b | EIT02.1 |
| 2.1-RHCUEE03-2980 |  | Clear punch | 6d | 2026-03-13 A | 2026-03-19 A | 2.1-RHCUEE03-2220, 2.1-RHCUEE03-2210 | 100% | LABOUR [3 h]; Construction Material | UDF_G3 | 0 | EE | 1 | C03a | TY1 | Non | RHCU | EIT2.1 | C03b | EIT02.1 |
| 2.1-RHCUEE03-3530 |  | Complete QA/QC document | 0d | 2026-03-20 A | 2026-03-20 A | 2.1-RHCUEE03-2980 | 100% | Construction Material | UDF_G3 | 0 | EE | 1 | C03a | TY1 | Non | RHCU | EIT2.1 | C03b | EIT02.1 |
|  | 41 | **Air Fin Cooler - EM-10610-3** |  | 2026-01-26 | 2026-03-23 |  |  |  |  |  |  |  |  |  |  |  |  |  |  |
| 2.1-RHCUEE03-1340 |  | Install support / bracket | 20d | 2026-01-26 A | 2026-02-17 A | 2.1-RHCUEE03-1330 SS | 100% | LABOUR [3 h]; Construction Material | UDF_G3 | 0 | EE | 1 | C03a | TY1 | Non | RHCU | EIT2.1 | C03b | EIT02.1 |
| 2.1-RHCUEE03-2230 |  | Install Ladder / Tray | 20d | 2026-02-18 A | 2026-03-12 A | 2.1-RHCUEE03-1340 | 100% | LABOUR [10 h]; Construction Material | UDF_G3 | 0 | EE | 1 | C03a | TY1 | Non | RHCU | EIT2.1 | C03b | EIT02.1 |
| 2.1-RHCUEE03-2240 |  | Install Conduits | 20d | 2026-02-18 A | 2026-03-12 A | 2.1-RHCUEE03-2230 SS | 100% | LABOUR [3 h]; Construction Material | UDF_G3 | 0 | EE | 1 | C03a | TY1 | Non | RHCU | EIT2.1 | C03b | EIT02.1 |
| 2.1-RHCUEE03-2990 |  | Clear punch | 6d | 2026-03-13 A | 2026-03-19 A | 2.1-RHCUEE03-2240, 2.1-RHCUEE03-2230 | 100% | LABOUR [3 h]; Construction Material | UDF_G3 | 0 | EE | 1 | C03a | TY1 | Non | RHCU | EIT2.1 | C03b | EIT02.1 |
| 2.1-RHCUEE03-3540 |  | Complete QA/QC document | 3d | 2026-03-20 A | 2026-03-23 A | 2.1-RHCUEE03-2990 | 100% | LABOUR [3.29 h]; Construction Material | UDF_G3 | 0 | EE | 1 | C03a | TY1 | Non | RHCU | EIT2.1 | C03b | EIT02.1 |
|  | 28 | **Air Fin Cooler - EM-10610-4** |  | 2026-01-26 | 2026-03-23 |  |  |  |  |  |  |  |  |  |  |  |  |  |  |
| 2.1-RHCUEE03-1350 |  | Install support / bracket | 20d | 2026-01-26 A | 2026-02-17 A | 2.1-RHCUEE03-1340 SS | 100% | LABOUR [3 h]; Construction Material | UDF_G3 | 0 | EE | 1 | C03a | TY1 | Non | RHCU | EIT2.1 | C03b | EIT02.1 |
| 2.1-RHCUEE03-2250 |  | Install Ladder / Tray | 20d | 2026-02-18 A | 2026-03-12 A | 2.1-RHCUEE03-1350 | 100% | LABOUR [10 h]; Construction Material | UDF_G3 | 0 | EE | 1 | C03a | TY1 | Non | RHCU | EIT2.1 | C03b | EIT02.1 |
| 2.1-RHCUEE03-2260 |  | Install Conduits | 20d | 2026-02-18 A | 2026-03-12 A | 2.1-RHCUEE03-2250 SS | 100% | LABOUR [3 h]; Construction Material | UDF_G3 | 0 | EE | 1 | C03a | TY1 | Non | RHCU | EIT2.1 | C03b | EIT02.1 |
| 2.1-RHCUEE03-3000 |  | Clear punch | 6d | 2026-03-13 A | 2026-03-19 A | 2.1-RHCUEE03-2260, 2.1-RHCUEE03-2250 | 100% | LABOUR [3 h]; Construction Material | UDF_G3 | 0 | EE | 1 | C03a | TY1 | Non | RHCU | EIT2.1 | C03b | EIT02.1 |
| 2.1-RHCUEE03-3550 |  | Complete QA/QC document | 3d | 2026-03-20 A | 2026-03-23 A | 2.1-RHCUEE03-3000 | 100% | LABOUR [3.29 h]; Construction Material | UDF_G3 | 0 | EE | 1 | C03a | TY1 | Non | RHCU | EIT2.1 | C03b | EIT02.1 |

| ID | WBS | Activity | Duration | Start | Finish | Predecessors | Complete | Resources | On Schedule Indicator | %Completed | Disciplines | Main Activity | WBS | Types | EIT2 Main Activity | Areas | Phases | EIT WBS | EIT PKG |
| --- | --- | --- | --- | --- | --- | --- | --- | --- | --- | --- | --- | --- | --- | --- | --- | --- | --- | --- | --- |
|  | 29 | **Air Fin Cooler - EM-10610-5** |  | 2026-01-26 | 2026-03-23 |  |  |  |  |  |  |  |  |  |  |  |  |  |  |
| 2.1-RHCUEE03-1360 |  | Install support / bracket | 20d | 2026-01-26 A | 2026-02-17 A | 2.1-RHCUEE03-1350 SS | 100% | LABOUR [3 h]; Construction Material | UDF_G3 | 0 | EE | 1 | C03a | TY1 | Non | RHCU | EIT2.1 | C03b | EIT02.1 |
| 2.1-RHCUEE03-2270 |  | Install Ladder / Tray | 20d | 2026-02-18 A | 2026-03-12 A | 2.1-RHCUEE03-1360 | 100% | LABOUR [10 h]; Construction Material | UDF_G3 | 0 | EE | 1 | C03a | TY1 | Non | RHCU | EIT2.1 | C03b | EIT02.1 |
| 2.1-RHCUEE03-2280 |  | Install Conduits | 20d | 2026-02-18 A | 2026-03-12 A | 2.1-RHCUEE03-2270 SS | 100% | LABOUR [3 h]; Construction Material | UDF_G3 | 0 | EE | 1 | C03a | TY1 | Non | RHCU | EIT2.1 | C03b | EIT02.1 |
| 2.1-RHCUEE03-3010 |  | Clear punch | 6d | 2026-03-13 A | 2026-03-19 A | 2.1-RHCUEE03-2280, 2.1-RHCUEE03-2270 | 100% | LABOUR [3 h]; Construction Material | UDF_G3 | 0 | EE | 1 | C03a | TY1 | Non | RHCU | EIT2.1 | C03b | EIT02.1 |
| 2.1-RHCUEE03-3560 |  | Complete QA/QC document | 3d | 2026-03-20 A | 2026-03-23 A | 2.1-RHCUEE03-3010 | 100% | LABOUR [3.29 h]; Construction Material | UDF_G3 | 0 | EE | 1 | C03a | TY1 | Non | RHCU | EIT2.1 | C03b | EIT02.1 |
|  | 30 | **Air Fin Cooler - EM-10610-6** |  | 2026-01-26 | 2026-03-23 |  |  |  |  |  |  |  |  |  |  |  |  |  |  |
| 2.1-RHCUEE03-1370 |  | Install support / bracket | 20d | 2026-01-26 A | 2026-02-17 A | 2.1-RHCUEE03-1360 SS | 100% | LABOUR [3 h]; Construction Material | UDF_G3 | 0 | EE | 1 | C03a | TY1 | Non | RHCU | EIT2.1 | C03b | EIT02.1 |
| 2.1-RHCUEE03-2290 |  | Install Ladder / Tray | 20d | 2026-02-18 A | 2026-03-12 A | 2.1-RHCUEE03-1370 | 100% | LABOUR [10 h]; Construction Material | UDF_G3 | 0 | EE | 1 | C03a | TY1 | Non | RHCU | EIT2.1 | C03b | EIT02.1 |
| 2.1-RHCUEE03-2300 |  | Install Conduits | 20d | 2026-02-18 A | 2026-03-12 A | 2.1-RHCUEE03-2290 SS | 100% | LABOUR [3 h]; Construction Material | UDF_G3 | 0 | EE | 1 | C03a | TY1 | Non | RHCU | EIT2.1 | C03b | EIT02.1 |
| 2.1-RHCUEE03-3020 |  | Clear punch | 6d | 2026-03-13 A | 2026-03-19 A | 2.1-RHCUEE03-2300, 2.1-RHCUEE03-2290 | 100% | LABOUR [3 h]; Construction Material | UDF_G3 | 0 | EE | 1 | C03a | TY1 | Non | RHCU | EIT2.1 | C03b | EIT02.1 |
| 2.1-RHCUEE03-3570 |  | Complete QA/QC document | 3d | 2026-03-20 A | 2026-03-23 A | 2.1-RHCUEE03-3020 | 100% | LABOUR [3.29 h]; Construction Material | UDF_G3 | 0 | EE | 1 | C03a | TY1 | Non | RHCU | EIT2.1 | C03b | EIT02.1 |
|  | 31 | **Air Fin Cooler - EM-10610-7** |  | 2026-01-26 | 2026-03-23 |  |  |  |  |  |  |  |  |  |  |  |  |  |  |
| 2.1-RHCUEE03-1380 |  | Install support / bracket | 20d | 2026-01-26 A | 2026-02-17 A | 2.1-RHCUEE03-1370 SS | 100% | LABOUR [3 h]; Construction Material | UDF_G3 | 0 | EE | 1 | C03a | TY1 | Non | RHCU | EIT2.1 | C03b | EIT02.1 |
| 2.1-RHCUEE03-2310 |  | Install Ladder / Tray | 20d | 2026-02-18 A | 2026-03-12 A | 2.1-RHCUEE03-1380 | 100% | LABOUR [10 h]; Construction Material | UDF_G3 | 0 | EE | 1 | C03a | TY1 | Non | RHCU | EIT2.1 | C03b | EIT02.1 |
| 2.1-RHCUEE03-2320 |  | Install Conduits | 20d | 2026-02-18 A | 2026-03-12 A | 2.1-RHCUEE03-2310 SS | 100% | LABOUR [3 h]; Construction Material | UDF_G3 | 0 | EE | 1 | C03a | TY1 | Non | RHCU | EIT2.1 | C03b | EIT02.1 |
| 2.1-RHCUEE03-3030 |  | Clear punch | 6d | 2026-03-13 A | 2026-03-19 A | 2.1-RHCUEE03-2320, 2.1-RHCUEE03-2310 | 100% | LABOUR [3 h]; Construction Material | UDF_G3 | 0 | EE | 1 | C03a | TY1 | Non | RHCU | EIT2.1 | C03b | EIT02.1 |
| 2.1-RHCUEE03-3580 |  | Complete QA/QC document | 3d | 2026-03-20 A | 2026-03-23 A | 2.1-RHCUEE03-3030 | 100% | LABOUR [3.29 h]; Construction Material | UDF_G3 | 0 | EE | 1 | C03a | TY1 | Non | RHCU | EIT2.1 | C03b | EIT02.1 |
|  | 32 | **Air Fin Cooler - EM-10610-8** |  | 2026-01-26 | 2026-03-23 |  |  |  |  |  |  |  |  |  |  |  |  |  |  |
| 2.1-RHCUEE03-1390 |  | Install support / bracket | 20d | 2026-01-26 A | 2026-02-17 A | 2.1-RHCUEE03-1380 SS | 100% | LABOUR [3 h]; Construction Material | UDF_G3 | 0 | EE | 1 | C03a | TY1 | Non | RHCU | EIT2.1 | C03b | EIT02.1 |
| 2.1-RHCUEE03-2330 |  | Install Ladder / Tray | 20d | 2026-02-18 A | 2026-03-12 A | 2.1-RHCUEE03-1390 | 100% | LABOUR [10 h]; Construction Material | UDF_G3 | 0 | EE | 1 | C03a | TY1 | Non | RHCU | EIT2.1 | C03b | EIT02.1 |
| 2.1-RHCUEE03-2340 |  | Install Conduits | 20d | 2026-02-18 A | 2026-03-12 A | 2.1-RHCUEE03-2330 SS | 100% | LABOUR [3 h]; Construction Material | UDF_G3 | 0 | EE | 1 | C03a | TY1 | Non | RHCU | EIT2.1 | C03b | EIT02.1 |
| 2.1-RHCUEE03-3040 |  | Clear punch | 6d | 2026-03-13 A | 2026-03-19 A | 2.1-RHCUEE03-2340, 2.1-RHCUEE03-2330 | 100% | LABOUR [3 h]; Construction Material | UDF_G3 | 0 | EE | 1 | C03a | TY1 | Non | RHCU | EIT2.1 | C03b | EIT02.1 |
| 2.1-RHCUEE03-3590 |  | Complete QA/QC document | 3d | 2026-03-20 A | 2026-03-23 A | 2.1-RHCUEE03-3040 | 100% | LABOUR [3.29 h]; Construction Material | UDF_G3 | 0 | EE | 1 | C03a | TY1 | Non | RHCU | EIT2.1 | C03b | EIT02.1 |

| ID | WBS | Activity | Duration | Start | Finish | Predecessors | Complete | Resources | On Schedule Indicator | %Completed | Disciplines | Main Activity | WBS | Types | EIT2 Main Activity | Areas | Phases | EIT WBS | EIT PKG |
| --- | --- | --- | --- | --- | --- | --- | --- | --- | --- | --- | --- | --- | --- | --- | --- | --- | --- | --- | --- |
|  | 33 | **Air Fin Cooler - EM-10613-7** |  | 2026-01-26 | 2026-03-23 |  |  |  |  |  |  |  |  |  |  |  |  |  |  |
| 2.1-RHCUEE03-1400 |  | Install support / bracket | 20d | 2026-01-26 A | 2026-02-17 A | 2.1-RHCUEE03-1390 SS | 100% | LABOUR [3 h]; Construction Material | UDF_G3 | 0 | EE | 1 | C03a | TY1 | Non | RHCU | EIT2.1 | C03b | EIT02.1 |
| 2.1-RHCUEE03-2350 |  | Install Ladder / Tray | 20d | 2026-02-18 A | 2026-03-12 A | 2.1-RHCUEE03-1400 | 100% | LABOUR [10 h]; Construction Material | UDF_G3 | 0 | EE | 1 | C03a | TY1 | Non | RHCU | EIT2.1 | C03b | EIT02.1 |
| 2.1-RHCUEE03-2360 |  | Install Conduits | 20d | 2026-02-18 A | 2026-03-12 A | 2.1-RHCUEE03-2350 SS | 100% | LABOUR [3 h]; Construction Material | UDF_G3 | 0 | EE | 1 | C03a | TY1 | Non | RHCU | EIT2.1 | C03b | EIT02.1 |
| 2.1-RHCUEE03-3050 |  | Clear punch | 6d | 2026-03-13 A | 2026-03-19 A | 2.1-RHCUEE03-2360, 2.1-RHCUEE03-2350 | 100% | LABOUR [3 h]; Construction Material | UDF_G3 | 0 | EE | 1 | C03a | TY1 | Non | RHCU | EIT2.1 | C03b | EIT02.1 |
| 2.1-RHCUEE03-3600 |  | Complete QA/QC document | 3d | 2026-03-20 A | 2026-03-23 A | 2.1-RHCUEE03-3050 | 100% | LABOUR [3.29 h]; Construction Material | UDF_G3 | 0 | EE | 1 | C03a | TY1 | Non | RHCU | EIT2.1 | C03b | EIT02.1 |
|  | 34 | **Air Fin Cooler - EM-10613-8** |  | 2026-01-26 | 2026-03-23 |  |  |  |  |  |  |  |  |  |  |  |  |  |  |
| 2.1-RHCUEE03-1410 |  | Install support / bracket | 20d | 2026-01-26 A | 2026-02-17 A | 2.1-RHCUEE03-1400 SS | 100% | LABOUR [3 h]; Construction Material | UDF_G3 | 0 | EE | 1 | C03a | TY1 | Non | RHCU | EIT2.1 | C03b | EIT02.1 |
| 2.1-RHCUEE03-2370 |  | Install Ladder / Tray | 20d | 2026-02-18 A | 2026-03-12 A | 2.1-RHCUEE03-1410 | 100% | LABOUR [10 h]; Construction Material | UDF_G3 | 0 | EE | 1 | C03a | TY1 | Non | RHCU | EIT2.1 | C03b | EIT02.1 |
| 2.1-RHCUEE03-2380 |  | Install Conduits | 20d | 2026-02-18 A | 2026-03-12 A | 2.1-RHCUEE03-2370 SS | 100% | LABOUR [3 h]; Construction Material | UDF_G3 | 0 | EE | 1 | C03a | TY1 | Non | RHCU | EIT2.1 | C03b | EIT02.1 |
| 2.1-RHCUEE03-3060 |  | Clear punch | 6d | 2026-03-13 A | 2026-03-19 A | 2.1-RHCUEE03-2380, 2.1-RHCUEE03-2370 | 100% | LABOUR [3 h]; Construction Material | UDF_G3 | 0 | EE | 1 | C03a | TY1 | Non | RHCU | EIT2.1 | C03b | EIT02.1 |
| 2.1-RHCUEE03-3610 |  | Complete QA/QC document | 3d | 2026-03-20 A | 2026-03-23 A | 2.1-RHCUEE03-3060 | 100% | LABOUR [3.29 h]; Construction Material | UDF_G3 | 0 | EE | 1 | C03a | TY1 | Non | RHCU | EIT2.1 | C03b | EIT02.1 |
|  | 35 | **Air Fin Cooler - EM-10732-1** |  | 2026-01-26 | 2026-03-23 |  |  |  |  |  |  |  |  |  |  |  |  |  |  |
| 2.1-RHCUEE03-1420 |  | Install support / bracket | 20d | 2026-01-26 A | 2026-02-17 A | 2.1-RHCUEE03-1410 SS | 100% | LABOUR [3 h]; Construction Material | UDF_G3 | 0 | EE | 1 | C03a | TY1 | Non | RHCU | EIT2.1 | C03b | EIT02.1 |
| 2.1-RHCUEE03-2390 |  | Install Ladder / Tray | 20d | 2026-02-18 A | 2026-03-12 A | 2.1-RHCUEE03-1420 | 100% | LABOUR [10 h]; Construction Material | UDF_G3 | 0 | EE | 1 | C03a | TY1 | Non | RHCU | EIT2.1 | C03b | EIT02.1 |
| 2.1-RHCUEE03-2400 |  | Install Conduits | 20d | 2026-02-18 A | 2026-03-12 A | 2.1-RHCUEE03-2390 SS | 100% | LABOUR [3 h]; Construction Material | UDF_G3 | 0 | EE | 1 | C03a | TY1 | Non | RHCU | EIT2.1 | C03b | EIT02.1 |
| 2.1-RHCUEE03-3070 |  | Clear punch | 6d | 2026-03-13 A | 2026-03-19 A | 2.1-RHCUEE03-2400, 2.1-RHCUEE03-2390 | 100% | LABOUR [3 h]; Construction Material | UDF_G3 | 0 | EE | 1 | C03a | TY1 | Non | RHCU | EIT2.1 | C03b | EIT02.1 |
| 2.1-RHCUEE03-3620 |  | Complete QA/QC document | 3d | 2026-03-20 A | 2026-03-23 A | 2.1-RHCUEE03-3070 | 100% | LABOUR [3.29 h]; Construction Material | UDF_G3 | 0 | EE | 1 | C03a | TY1 | Non | RHCU | EIT2.1 | C03b | EIT02.1 |
|  | 36 | **Air Fin Cooler - EM-10732-2** |  | 2026-01-26 | 2026-03-23 |  |  |  |  |  |  |  |  |  |  |  |  |  |  |
| 2.1-RHCUEE03-1430 |  | Install support / bracket | 20d | 2026-01-26 A | 2026-02-17 A | 2.1-RHCUEE03-1420 SS | 100% | LABOUR [3 h]; Construction Material | UDF_G3 | 0 | EE | 1 | C03a | TY1 | Non | RHCU | EIT2.1 | C03b | EIT02.1 |
| 2.1-RHCUEE03-2410 |  | Install Ladder / Tray | 20d | 2026-02-18 A | 2026-03-12 A | 2.1-RHCUEE03-1430 | 100% | LABOUR [10 h]; Construction Material | UDF_G3 | 0 | EE | 1 | C03a | TY1 | Non | RHCU | EIT2.1 | C03b | EIT02.1 |
| 2.1-RHCUEE03-2420 |  | Install Conduits | 20d | 2026-02-18 A | 2026-03-12 A | 2.1-RHCUEE03-2410 SS | 100% | LABOUR [3 h]; Construction Material | UDF_G3 | 0 | EE | 1 | C03a | TY1 | Non | RHCU | EIT2.1 | C03b | EIT02.1 |
| 2.1-RHCUEE03-3080 |  | Clear punch | 6d | 2026-03-13 A | 2026-03-19 A | 2.1-RHCUEE03-2420, 2.1-RHCUEE03-2410 | 100% | LABOUR [3 h]; Construction Material | UDF_G3 | 0 | EE | 1 | C03a | TY1 | Non | RHCU | EIT2.1 | C03b | EIT02.1 |
| 2.1-RHCUEE03-3630 |  | Complete QA/QC document | 3d | 2026-03-20 A | 2026-03-23 A | 2.1-RHCUEE03-3080 | 100% | LABOUR [3.29 h]; Construction Material | UDF_G3 | 0 | EE | 1 | C03a | TY1 | Non | RHCU | EIT2.1 | C03b | EIT02.1 |

| ID | WBS | Activity | Duration | Start | Finish | Predecessors | Complete | Resources | On Schedule Indicator | %Completed | Disciplines | Main Activity | WBS | Types | EIT2 Main Activity | Areas | Phases | EIT WBS | EIT PKG |
| --- | --- | --- | --- | --- | --- | --- | --- | --- | --- | --- | --- | --- | --- | --- | --- | --- | --- | --- | --- |
|  | 37 | **Air Fin Cooler - EM-10613-1** |  | 2026-01-26 | 2026-03-23 |  |  |  |  |  |  |  |  |  |  |  |  |  |  |
| 2.1-RHCUEE03-1440 |  | Install support / bracket | 20d | 2026-01-26 A | 2026-02-17 A | 2.1-RHCUEE03-1430 SS | 100% | LABOUR [3 h]; Construction Material | UDF_G3 | 1 | EE | 1 | C03a | TY1 | Non | RHCU | EIT2.1 | C03b | EIT02.1 |
| 2.1-RHCUEE03-2430 |  | Install Ladder / Tray | 20d | 2026-02-18 A | 2026-03-12 A | 2.1-RHCUEE03-1440 SS, 2.1-RHCUEE03-1440 | 100% | LABOUR [10 h]; Construction Material | UDF_G3 | 1 | EE | 1 | C03a | TY1 | Non | RHCU | EIT2.1 | C03b | EIT02.1 |
| 2.1-RHCUEE03-2440 |  | Install Conduits | 20d | 2026-02-18 A | 2026-03-12 A | 2.1-RHCUEE03-2430 SS | 100% | LABOUR [3 h]; Construction Material | UDF_G3 | 1 | EE | 1 | C03a | TY1 | Non | RHCU | EIT2.1 | C03b | EIT02.1 |
| 2.1-RHCUEE03-3090 |  | Clear punch | 6d | 2026-03-13 A | 2026-03-19 A | 2.1-RHCUEE03-2440 SS, 2.1-RHCUEE03-2430 SS, 2.1-RHCUEE03-2440, 2.1-RHCUEE03-2430 | 100% | LABOUR [3 h]; Construction Material | UDF_G3 | 1 | EE | 1 | C03a | TY1 | Non | RHCU | EIT2.1 | C03b | EIT02.1 |
| 2.1-RHCUEE03-3640 |  | Complete QA/QC document | 3d | 2026-03-20 A | 2026-03-23 A | 2.1-RHCUEE03-3090 SS, 2.1-RHCUEE03-3090 | 100% | LABOUR [3.29 h]; Construction Material | UDF_G3 | 1 | EE | 1 | C03a | TY1 | Non | RHCU | EIT2.1 | C03b | EIT02.1 |
|  | 38 | **Air Fin Cooler - EM-10613-2** |  | 2026-01-26 | 2026-03-23 |  |  |  |  |  |  |  |  |  |  |  |  |  |  |
| 2.1-RHCUEE03-1450 |  | Install support / bracket | 20d | 2026-01-26 A | 2026-02-17 A | 2.1-RHCUEE03-1440 SS | 100% | LABOUR [3 h]; Construction Material | UDF_G3 | 1 | EE | 1 | C03a | TY1 | Non | RHCU | EIT2.1 | C03b | EIT02.1 |
| 2.1-RHCUEE03-2450 |  | Install Ladder / Tray | 20d | 2026-02-18 A | 2026-03-12 A | 2.1-RHCUEE03-1450 SS, 2.1-RHCUEE03-1450 | 100% | LABOUR [10 h]; Construction Material | UDF_G3 | 1 | EE | 1 | C03a | TY1 | Non | RHCU | EIT2.1 | C03b | EIT02.1 |
| 2.1-RHCUEE03-2460 |  | Install Conduits | 20d | 2026-02-18 A | 2026-03-12 A | 2.1-RHCUEE03-2450 SS | 100% | LABOUR [3 h]; Construction Material | UDF_G3 | 1 | EE | 1 | C03a | TY1 | Non | RHCU | EIT2.1 | C03b | EIT02.1 |
| 2.1-RHCUEE03-3100 |  | Clear punch | 6d | 2026-03-13 A | 2026-03-19 A | 2.1-RHCUEE03-2460 SS, 2.1-RHCUEE03-2450 SS, 2.1-RHCUEE03-2460, 2.1-RHCUEE03-2450 | 100% | LABOUR [3 h]; Construction Material | UDF_G3 | 1 | EE | 1 | C03a | TY1 | Non | RHCU | EIT2.1 | C03b | EIT02.1 |
| 2.1-RHCUEE03-3650 |  | Complete QA/QC document | 3d | 2026-03-20 A | 2026-03-23 A | 2.1-RHCUEE03-3100 SS, 2.1-RHCUEE03-3100 | 100% | LABOUR [3.29 h]; Construction Material | UDF_G3 | 1 | EE | 1 | C03a | TY1 | Non | RHCU | EIT2.1 | C03b | EIT02.1 |
|  | 39 | **Air Fin Cooler - EM-10613-3** |  | 2026-01-26 | 2026-03-23 |  |  |  |  |  |  |  |  |  |  |  |  |  |  |
| 2.1-RHCUEE03-1460 |  | Install support / bracket | 20d | 2026-01-26 A | 2026-02-17 A | 2.1-RHCUEE03-1450 SS | 100% | LABOUR [3 h]; Construction Material | UDF_G3 | 1 | EE | 1 | C03a | TY1 | Non | RHCU | EIT2.1 | C03b | EIT02.1 |
| 2.1-RHCUEE03-2470 |  | Install Ladder / Tray | 20d | 2026-02-18 A | 2026-03-12 A | 2.1-RHCUEE03-1460 SS, 2.1-RHCUEE03-1460 | 100% | LABOUR [10 h]; Construction Material | UDF_G3 | 1 | EE | 1 | C03a | TY1 | Non | RHCU | EIT2.1 | C03b | EIT02.1 |
| 2.1-RHCUEE03-2480 |  | Install Conduits | 20d | 2026-02-18 A | 2026-03-12 A | 2.1-RHCUEE03-2470 SS | 100% | LABOUR [3 h]; Construction Material | UDF_G3 | 1 | EE | 1 | C03a | TY1 | Non | RHCU | EIT2.1 | C03b | EIT02.1 |
| 2.1-RHCUEE03-3110 |  | Clear punch | 6d | 2026-03-13 A | 2026-03-19 A | 2.1-RHCUEE03-2480 SS, 2.1-RHCUEE03-2470 SS, 2.1-RHCUEE03-2480, 2.1-RHCUEE03-2470 | 100% | LABOUR [3 h]; Construction Material | UDF_G3 | 1 | EE | 1 | C03a | TY1 | Non | RHCU | EIT2.1 | C03b | EIT02.1 |
| 2.1-RHCUEE03-3660 |  | Complete QA/QC document | 3d | 2026-03-20 A | 2026-03-23 A | 2.1-RHCUEE03-3110 SS, 2.1-RHCUEE03-3110 | 100% | LABOUR [3.29 h]; Construction Material | UDF_G3 | 1 | EE | 1 | C03a | TY1 | Non | RHCU | EIT2.1 | C03b | EIT02.1 |
|  | 40 | **Air Fin Cooler - EM-10613-4** |  | 2026-01-26 | 2026-03-23 |  |  |  |  |  |  |  |  |  |  |  |  |  |  |
| 2.1-RHCUEE03-1470 |  | Install support / bracket | 20d | 2026-01-26 A | 2026-02-17 A | 2.1-RHCUEE03-1460 SS | 100% | LABOUR [3 h]; Construction Material | UDF_G3 | 1 | EE | 1 | C03a | TY1 | Non | RHCU | EIT2.1 | C03b | EIT02.1 |
| 2.1-RHCUEE03-2490 |  | Install Ladder / Tray | 20d | 2026-02-18 A | 2026-03-12 A | 2.1-RHCUEE03-1470 SS, 2.1-RHCUEE03-1470 | 100% | LABOUR [10 h]; Construction Material | UDF_G3 | 1 | EE | 1 | C03a | TY1 | Non | RHCU | EIT2.1 | C03b | EIT02.1 |
| 2.1-RHCUEE03-2500 |  | Install Conduits | 20d | 2026-02-18 A | 2026-03-12 A | 2.1-RHCUEE03-2490 SS | 100% | LABOUR [3 h]; Construction Material | UDF_G3 | 1 | EE | 1 | C03a | TY1 | Non | RHCU | EIT2.1 | C03b | EIT02.1 |
| 2.1-RHCUEE03-3120 |  | Clear punch | 6d | 2026-03-13 A | 2026-03-19 A | 2.1-RHCUEE03-2500 SS, 2.1-RHCUEE03-2490 SS, 2.1-RHCUEE03-2500, 2.1-RHCUEE03-2490 | 100% | LABOUR [3 h]; Construction Material | UDF_G3 | 1 | EE | 1 | C03a | TY1 | Non | RHCU | EIT2.1 | C03b | EIT02.1 |
| 2.1-RHCUEE03-3670 |  | Complete QA/QC document | 3d | 2026-03-20 A | 2026-03-23 A | 2.1-RHCUEE03-3120 SS, 2.1-RHCUEE03-3120 | 100% | LABOUR [3.29 h]; Construction Material | UDF_G3 | 1 | EE | 1 | C03a | TY1 | Non | RHCU | EIT2.1 | C03b | EIT02.1 |

| ID | WBS | Activity | Duration | Start | Finish | Predecessors | Complete | Resources | On Schedule Indicator | %Completed | Disciplines | Main Activity | WBS | Types | EIT2 Main Activity | Areas | Phases | EIT WBS | EIT PKG |
| --- | --- | --- | --- | --- | --- | --- | --- | --- | --- | --- | --- | --- | --- | --- | --- | --- | --- | --- | --- |
|  | 8 | **Air Fin Cooler - EM-10613-5** |  | 2026-01-26 | 2026-03-23 |  |  |  |  |  |  |  |  |  |  |  |  |  |  |
| 2.1-RHCUEE03-1480 |  | Install support / bracket | 20d | 2026-01-26 A | 2026-02-17 A | 2.1-RHCUEE03-1470 SS | 100% | LABOUR [3 h]; Construction Material | UDF_G3 | 1 | EE | 1 | C03a | TY1 | Non | RHCU | EIT2.1 | C03b | EIT02.1 |
| 2.1-RHCUEE03-2510 |  | Install Ladder / Tray | 20d | 2026-02-18 A | 2026-03-12 A | 2.1-RHCUEE03-1480 SS, 2.1-RHCUEE03-1480 | 100% | LABOUR [10 h]; Construction Material | UDF_G3 | 1 | EE | 1 | C03a | TY1 | Non | RHCU | EIT2.1 | C03b | EIT02.1 |
| 2.1-RHCUEE03-2520 |  | Install Conduits | 20d | 2026-02-18 A | 2026-03-12 A | 2.1-RHCUEE03-2510 SS | 100% | LABOUR [3 h]; Construction Material | UDF_G3 | 1 | EE | 1 | C03a | TY1 | Non | RHCU | EIT2.1 | C03b | EIT02.1 |
| 2.1-RHCUEE03-3130 |  | Clear punch | 6d | 2026-03-13 A | 2026-03-19 A | 2.1-RHCUEE03-2520 SS, 2.1-RHCUEE03-2510 SS, 2.1-RHCUEE03-2520, 2.1-RHCUEE03-2510 | 100% | LABOUR [3 h]; Construction Material | UDF_G3 | 1 | EE | 1 | C03a | TY1 | Non | RHCU | EIT2.1 | C03b | EIT02.1 |
| 2.1-RHCUEE03-3680 |  | Complete QA/QC document | 3d | 2026-03-20 A | 2026-03-23 A | 2.1-RHCUEE03-3130 SS, 2.1-RHCUEE03-3130 | 100% | LABOUR [3.29 h]; Construction Material | UDF_G3 | 1 | EE | 1 | C03a | TY1 | Non | RHCU | EIT2.1 | C03b | EIT02.1 |
|  | 13 | **Air Fin Cooler - EM-10613-6** |  | 2026-01-26 | 2026-03-23 |  |  |  |  |  |  |  |  |  |  |  |  |  |  |
| 2.1-RHCUEE03-1490 |  | Install support / bracket | 20d | 2026-01-26 A | 2026-02-17 A | 2.1-RHCUEE03-1480 SS | 100% | LABOUR [3 h]; Construction Material | UDF_G3 | 1 | EE | 1 | C03a | TY1 | Non | RHCU | EIT2.1 | C03b | EIT02.1 |
| 2.1-RHCUEE03-2530 |  | Install Ladder / Tray | 20d | 2026-02-18 A | 2026-03-12 A | 2.1-RHCUEE03-1490 SS, 2.1-RHCUEE03-1490 | 100% | LABOUR [10 h]; Construction Material | UDF_G3 | 1 | EE | 1 | C03a | TY1 | Non | RHCU | EIT2.1 | C03b | EIT02.1 |
| 2.1-RHCUEE03-2540 |  | Install Conduits | 20d | 2026-02-18 A | 2026-03-12 A | 2.1-RHCUEE03-2530 SS | 100% | LABOUR [3 h]; Construction Material | UDF_G3 | 1 | EE | 1 | C03a | TY1 | Non | RHCU | EIT2.1 | C03b | EIT02.1 |
| 2.1-RHCUEE03-3140 |  | Clear punch | 6d | 2026-03-13 A | 2026-03-19 A | 2.1-RHCUEE03-2540 SS, 2.1-RHCUEE03-2530 SS, 2.1-RHCUEE03-2540, 2.1-RHCUEE03-2530 | 100% | LABOUR [3 h]; Construction Material | UDF_G3 | 1 | EE | 1 | C03a | TY1 | Non | RHCU | EIT2.1 | C03b | EIT02.1 |
| 2.1-RHCUEE03-3690 |  | Complete QA/QC document | 3d | 2026-03-20 A | 2026-03-23 A | 2.1-RHCUEE03-3140 SS, 2.1-RHCUEE03-3140 | 100% | LABOUR [3.29 h]; Construction Material | UDF_G3 | 1 | EE | 1 | C03a | TY1 | Non | RHCU | EIT2.1 | C03b | EIT02.1 |
|  | 14 | **Air Fin Cooler - EM-10615-1** |  | 2026-01-26 | 2026-03-23 |  |  |  |  |  |  |  |  |  |  |  |  |  |  |
| 2.1-RHCUEE03-1500 |  | Install support / bracket | 20d | 2026-01-26 A | 2026-02-17 A | 2.1-RHCUEE03-1490 SS | 100% | LABOUR [3 h]; Construction Material | UDF_G3 | 0 | EE | 1 | C03a | TY1 | Non | RHCU | EIT2.1 | C03b | EIT02.1 |
| 2.1-RHCUEE03-2550 |  | Install Ladder / Tray | 20d | 2026-02-18 A | 2026-03-12 A | 2.1-RHCUEE03-1500 | 100% | LABOUR [10 h]; Construction Material | UDF_G3 | 0 | EE | 1 | C03a | TY1 | Non | RHCU | EIT2.1 | C03b | EIT02.1 |
| 2.1-RHCUEE03-2560 |  | Install Conduits | 20d | 2026-02-18 A | 2026-03-12 A | 2.1-RHCUEE03-2550 SS | 100% | LABOUR [3 h]; Construction Material | UDF_G3 | 0 | EE | 1 | C03a | TY1 | Non | RHCU | EIT2.1 | C03b | EIT02.1 |
| 2.1-RHCUEE03-3150 |  | Clear punch | 6d | 2026-03-13 A | 2026-03-19 A | 2.1-RHCUEE03-2560, 2.1-RHCUEE03-2550 | 100% | LABOUR [3 h]; Construction Material | UDF_G3 | 0 | EE | 1 | C03a | TY1 | Non | RHCU | EIT2.1 | C03b | EIT02.1 |
| 2.1-RHCUEE03-3700 |  | Complete QA/QC document | 3d | 2026-03-20 A | 2026-03-23 A | 2.1-RHCUEE03-3150 | 100% | LABOUR [3.29 h]; Construction Material | UDF_G3 | 0 | EE | 1 | C03a | TY1 | Non | RHCU | EIT2.1 | C03b | EIT02.1 |
|  | 20 | **Air Fin Cooler - EM-10615-2** |  | 2026-01-26 | 2026-03-23 |  |  |  |  |  |  |  |  |  |  |  |  |  |  |
| 2.1-RHCUEE03-1510 |  | Install support / bracket | 20d | 2026-01-26 A | 2026-02-17 A | 2.1-RHCUEE03-1500 SS | 100% | LABOUR [3 h]; Construction Material | UDF_G3 | 0 | EE | 1 | C03a | TY1 | Non | RHCU | EIT2.1 | C03b | EIT02.1 |
| 2.1-RHCUEE03-2570 |  | Install Ladder / Tray | 20d | 2026-02-18 A | 2026-03-12 A | 2.1-RHCUEE03-1510 | 100% | LABOUR [10 h]; Construction Material | UDF_G3 | 0 | EE | 1 | C03a | TY1 | Non | RHCU | EIT2.1 | C03b | EIT02.1 |
| 2.1-RHCUEE03-2580 |  | Install Conduits | 20d | 2026-02-18 A | 2026-03-12 A | 2.1-RHCUEE03-2570 SS | 100% | LABOUR [3 h]; Construction Material | UDF_G3 | 0 | EE | 1 | C03a | TY1 | Non | RHCU | EIT2.1 | C03b | EIT02.1 |
| 2.1-RHCUEE03-3160 |  | Clear punch | 6d | 2026-03-13 A | 2026-03-19 A | 2.1-RHCUEE03-2580, 2.1-RHCUEE03-2570 | 100% | LABOUR [3 h]; Construction Material | UDF_G3 | 0 | EE | 1 | C03a | TY1 | Non | RHCU | EIT2.1 | C03b | EIT02.1 |
| 2.1-RHCUEE03-3710 |  | Complete QA/QC document | 3d | 2026-03-20 A | 2026-03-23 A | 2.1-RHCUEE03-3160 | 100% | LABOUR [3.29 h]; Construction Material | UDF_G3 | 0 | EE | 1 | C03a | TY1 | Non | RHCU | EIT2.1 | C03b | EIT02.1 |

| ID | WBS | Activity | Duration | Start | Finish | Predecessors | Complete | Remaining | Planned start | Planned finish | Total float | Free float | Constraint | Resources | On Schedule Indicator | %Completed | Disciplines | Main Activity | WBS | Types | EIT2 Main Activity | Areas | Phases | EIT WBS | EIT PKG |
| --- | --- | --- | --- | --- | --- | --- | --- | --- | --- | --- | --- | --- | --- | --- | --- | --- | --- | --- | --- | --- | --- | --- | --- | --- | --- |
|  | 27 | **Air Fin Cooler - EM-10720-1** |  | 2026-01-26 | 2026-03-23 |  |  |  |  |  |  |  |  |  |  |  |  |  |  |  |  |  |  |  |  |
| 2.1-RHCUEE03-1520 |  | Install support / bracket | 20d | 2026-01-26 A | 2026-02-17 A | 2.1-RHCUEE03-1510 SS | 100% |  |  |  |  |  |  | LABOUR [3 h]; Construction Material | UDF_G3 | 0 | EE | 1 | C03a | TY1 | Non | RHCU | EIT2.1 | C03b | EIT02.1 |
| 2.1-RHCUEE03-2590 |  | Install Ladder / Tray | 20d | 2026-02-18 A | 2026-03-12 A | 2.1-RHCUEE03-1520 | 100% |  |  |  |  |  |  | LABOUR [10 h]; Construction Material | UDF_G3 | 0 | EE | 1 | C03a | TY1 | Non | RHCU | EIT2.1 | C03b | EIT02.1 |
| 2.1-RHCUEE03-2600 |  | Install Conduits | 20d | 2026-02-18 A | 2026-03-12 A | 2.1-RHCUEE03-2590 SS | 100% |  |  |  |  |  |  | LABOUR [3 h]; Construction Material | UDF_G3 | 0 | EE | 1 | C03a | TY1 | Non | RHCU | EIT2.1 | C03b | EIT02.1 |
| 2.1-RHCUEE03-3170 |  | Clear punch | 6d | 2026-03-13 A | 2026-03-19 A | 2.1-RHCUEE03-2600, 2.1-RHCUEE03-2590 | 100% |  |  |  |  |  |  | LABOUR [3 h]; Construction Material | UDF_G3 | 0 | EE | 1 | C03a | TY1 | Non | RHCU | EIT2.1 | C03b | EIT02.1 |
| 2.1-RHCUEE03-3720 |  | Complete QA/QC document | 3d | 2026-03-20 A | 2026-03-23 A | 2.1-RHCUEE03-3170 | 100% |  |  |  |  |  |  | LABOUR [3.29 h]; Construction Material | UDF_G3 | 0 | EE | 1 | C03a | TY1 | Non | RHCU | EIT2.1 | C03b | EIT02.1 |
|  | 21 | **Air Fin Cooler - EM-10720-2** |  | 2026-01-26 | 2026-03-23 |  |  |  |  |  |  |  |  |  |  |  |  |  |  |  |  |  |  |  |  |
| 2.1-RHCUEE03-1530 |  | Install support / bracket | 20d | 2026-01-26 A | 2026-02-17 A | 2.1-RHCUEE03-1520 SS | 100% |  |  |  |  |  |  | LABOUR [3 h]; Construction Material | UDF_G3 | 0 | EE | 1 | C03a | TY1 | Non | RHCU | EIT2.1 | C03b | EIT02.1 |
| 2.1-RHCUEE03-2610 |  | Install Ladder / Tray | 20d | 2026-02-18 A | 2026-03-12 A | 2.1-RHCUEE03-1530 | 100% |  |  |  |  |  |  | LABOUR [10 h]; Construction Material | UDF_G3 | 0 | EE | 1 | C03a | TY1 | Non | RHCU | EIT2.1 | C03b | EIT02.1 |
| 2.1-RHCUEE03-2620 |  | Install Conduits | 20d | 2026-02-18 A | 2026-03-12 A | 2.1-RHCUEE03-2610 SS | 100% |  |  |  |  |  |  | LABOUR [3 h]; Construction Material | UDF_G3 | 0 | EE | 1 | C03a | TY1 | Non | RHCU | EIT2.1 | C03b | EIT02.1 |
| 2.1-RHCUEE03-3180 |  | Clear punch | 6d | 2026-03-13 A | 2026-03-19 A | 2.1-RHCUEE03-2620, 2.1-RHCUEE03-2610 | 100% |  |  |  |  |  |  | LABOUR [3 h]; Construction Material | UDF_G3 | 0 | EE | 1 | C03a | TY1 | Non | RHCU | EIT2.1 | C03b | EIT02.1 |
| 2.1-RHCUEE03-3730 |  | Complete QA/QC document | 3d | 2026-03-20 A | 2026-03-23 A | 2.1-RHCUEE03-3180 | 100% |  |  |  |  |  |  | LABOUR [3.29 h]; Construction Material | UDF_G3 | 0 | EE | 1 | C03a | TY1 | Non | RHCU | EIT2.1 | C03b | EIT02.1 |
|  | 22 | **Air Fin Cooler - EM-10720-3** |  | 2026-01-26 | 2026-03-23 |  |  |  |  |  |  |  |  |  |  |  |  |  |  |  |  |  |  |  |  |
| 2.1-RHCUEE03-1540 |  | Install support / bracket | 20d | 2026-01-26 A | 2026-02-17 A | 2.1-RHCUEE03-1530 SS | 100% |  |  |  |  |  |  | LABOUR [3 h]; Construction Material | UDF_G3 | 0 | EE | 1 | C03a | TY1 | Non | RHCU | EIT2.1 | C03b | EIT02.1 |
| 2.1-RHCUEE03-2630 |  | Install Ladder / Tray | 20d | 2026-02-18 A | 2026-03-12 A | 2.1-RHCUEE03-1540 | 100% |  |  |  |  |  |  | LABOUR [10 h]; Construction Material | UDF_G3 | 0 | EE | 1 | C03a | TY1 | Non | RHCU | EIT2.1 | C03b | EIT02.1 |
| 2.1-RHCUEE03-2640 |  | Install Conduits | 20d | 2026-02-18 A | 2026-03-12 A | 2.1-RHCUEE03-2630 SS | 100% |  |  |  |  |  |  | LABOUR [3 h]; Construction Material | UDF_G3 | 0 | EE | 1 | C03a | TY1 | Non | RHCU | EIT2.1 | C03b | EIT02.1 |
| 2.1-RHCUEE03-3190 |  | Clear punch | 6d | 2026-03-13 A | 2026-03-19 A | 2.1-RHCUEE03-2640, 2.1-RHCUEE03-2630 | 100% |  |  |  |  |  |  | LABOUR [3 h]; Construction Material | UDF_G3 | 0 | EE | 1 | C03a | TY1 | Non | RHCU | EIT2.1 | C03b | EIT02.1 |
| 2.1-RHCUEE03-3740 |  | Complete QA/QC document | 3d | 2026-03-20 A | 2026-03-23 A | 2.1-RHCUEE03-3190 | 100% |  |  |  |  |  |  | LABOUR [3.29 h]; Construction Material | UDF_G3 | 0 | EE | 1 | C03a | TY1 | Non | RHCU | EIT2.1 | C03b | EIT02.1 |
|  | 2 | **Electrical Cable Installation** |  | 2026-02-09 | 2026-06-26 |  |  |  |  |  |  |  |  |  |  |  |  |  |  |  |  |  |  |  |  |
|  | 1 | **Cable Pull MV Cable** |  | 2026-05-15 | 2026-06-26 |  |  |  |  |  |  |  |  |  |  |  |  |  |  |  |  |  |  |  |  |
| 2.1-RHCUEE01-1000 |  | Pull Cable | 30d | 2026-05-15 | 2026-06-18 |  |  |  |  |  | -75d | 0d | start on or after 2026-02-09 | LABOUR [2400 h]; Construction Material [300] | UDF_G3 | 0 | EE | 1 | C03a | TY1 | Non | RHCU | EIT2.1 | C03b | EIT02.1 |
| 2.1-RHCUEE01-1090 |  | Megger & Continuity test | 4d | 2026-06-19 | 2026-06-23 | 2.1-RHCUEE01-1000 |  |  |  |  | -75d | 0d |  | LABOUR [600 h]; Construction Material [40] | UDF_G3 | 0 | EE | 1 | C03a | TY1 | Non | RHCU | EIT2.1 | C03b | EIT02.1 |
| 2.1-RHCUEE01-1120 |  | Complete QA/QC document | 3d | 2026-06-24 | 2026-06-26 | 2.1-RHCUEE01-1090 |  |  |  |  | -75d | 0d |  | LABOUR [470.77 h]; Construction Material [30] | UDF_G3 | 0 | EE | 1 | C03a | TY1 | Non | RHCU | EIT2.1 | C03b | EIT02.1 |
|  | 2 | **Cable Pull LV Cable** |  | 2026-02-09 | 2026-06-26 |  |  |  |  |  |  |  |  |  |  |  |  |  |  |  |  |  |  |  |  |
| 2.1-RHCUEE01-1010 |  | Pull Cable | 30d | 2026-02-09 A | 2026-06-18 |  | 17% | 30d | 2026-02-09 | 2026-03-14 | -75d | 0d | start on or after 2026-02-09 | LABOUR [2400 h]; Construction Material [300] | UDF_G3 | 0 | EE | 1 | C03a | TY1 | Non | RHCU | EIT2.1 | C03b | EIT02.1 |
| 2.1-RHCUEE01-1100 |  | Megger & Continuity test | 4d | 2026-06-19 | 2026-06-23 | 2.1-RHCUEE01-1010 |  |  |  |  | -75d | 0d |  | LABOUR [600 h]; Construction Material [40] | UDF_G3 | 0 | EE | 1 | C03a | TY1 | Non | RHCU | EIT2.1 | C03b | EIT02.1 |
| 2.1-RHCUEE01-1130 |  | Complete QA/QC document | 3d | 2026-06-24 | 2026-06-26 | 2.1-RHCUEE01-1100 |  |  |  |  | -75d | 0d |  | LABOUR [470.77 h]; Construction Material [30] | UDF_G3 | 0 | EE | 1 | C03a | TY1 | Non | RHCU | EIT2.1 | C03b | EIT02.1 |

| ID | WBS | Activity | Duration | Start | Finish | Predecessors | Complete | Remaining | Planned start | Planned finish | Total float | Free float | Constraint | Resources | On Schedule Indicator | %Completed | Disciplines | Main Activity | WBS | Types | EIT2 Main Activity | Areas | Phases | EIT WBS | EIT PKG |
| --- | --- | --- | --- | --- | --- | --- | --- | --- | --- | --- | --- | --- | --- | --- | --- | --- | --- | --- | --- | --- | --- | --- | --- | --- | --- |
|  | 3 | **Cable Pull Control Cable** |  | 2026-02-09 | 2026-06-26 |  |  |  |  |  |  |  |  |  |  |  |  |  |  |  |  |  |  |  |  |
| 2.1-RHCUEE01-1020 |  | Pull Cable | 30d | 2026-02-09 A | 2026-06-18 |  | 20% | 30d | 2026-02-09 | 2026-03-14 | -75d | 0d | start on or after 2026-02-09 | LABOUR [2400 h]; Construction Material [300] | UDF_G3 | 0 | EE | 1 | C03a | TY1 | Non | RHCU | EIT2.1 | C03b | EIT02.1 |
| 2.1-RHCUEE01-1110 |  | Megger & Continuity test | 4d | 2026-06-19 | 2026-06-23 | 2.1-RHCUEE01-1020 |  |  |  |  | -75d | 0d |  | LABOUR [600 h]; Construction Material [40] | UDF_G3 | 0 | EE | 1 | C03a | TY1 | Non | RHCU | EIT2.1 | C03b | EIT02.1 |
| 2.1-RHCUEE01-1140 |  | Complete QA/QC document | 3d | 2026-06-24 | 2026-06-26 | 2.1-RHCUEE01-1110 |  |  |  |  | -75d | 0d |  | LABOUR [470.77 h]; Construction Material [30] | UDF_G3 | 0 | EE | 1 | C03a | TY1 | Non | RHCU | EIT2.1 | C03b | EIT02.1 |
|  | 4 | **Serial Communication Cable** |  | 2026-05-15 | 2026-06-15 |  |  |  |  |  |  |  |  |  |  |  |  |  |  |  |  |  |  |  |  |
| 2.1-RHCUEE01-1030 |  | Pull Cable | 20d | 2026-05-15 | 2026-06-06 |  |  |  |  |  | -65d | 0d | start on or after 2026-02-12 | LABOUR [2400 h]; Construction Material [200] | UDF_G3 | 0 | EE | 1 | C03a | TY1 | Non | RHCU | EIT2.1 | C03b | EIT02.1 |
| 2.1-RHCUEE01-1050 |  | Megger & Continuity test | 4d | 2026-06-08 | 2026-06-11 | 2.1-RHCUEE01-1030 |  |  |  |  | -65d | 0d |  | LABOUR [600 h]; Construction Material [40] | UDF_G3 | 0 | EE | 1 | C03a | TY1 | Non | RHCU | EIT2.1 | C03b | EIT02.1 |
| 2.1-RHCUEE01-1070 |  | Complete QA/QC document | 3d | 2026-06-12 | 2026-06-15 | 2.1-RHCUEE01-1050 |  |  |  |  | -65d | 10d |  | LABOUR [470.77 h]; Construction Material [30] | UDF_G3 | 0 | EE | 1 | C03a | TY1 | Non | RHCU | EIT2.1 | C03b | EIT02.1 |
|  | 5 | **Cable Pull Instrument Cable** |  | 2026-05-15 | 2026-06-15 |  |  |  |  |  |  |  |  |  |  |  |  |  |  |  |  |  |  |  |  |
| 2.1-RHCUEE01-1040 |  | Pull Cable | 20d | 2026-05-15 | 2026-06-06 |  |  |  |  |  | -65d | 0d | start on or after 2026-02-12 | LABOUR [2400 h]; Construction Material [200] | UDF_G3 | 0 | EE | 1 | C03a | TY1 | Non | RHCU | EIT2.1 | C03b | EIT02.1 |
| 2.1-RHCUEE01-1060 |  | Megger & Continuity test | 4d | 2026-06-08 | 2026-06-11 | 2.1-RHCUEE01-1040 |  |  |  |  | -65d | 0d |  | LABOUR [600 h]; Construction Material [40] | UDF_G3 | 0 | EE | 1 | C03a | TY1 | Non | RHCU | EIT2.1 | C03b | EIT02.1 |
| 2.1-RHCUEE01-1080 |  | Complete QA/QC document | 3d | 2026-06-12 | 2026-06-15 | 2.1-RHCUEE01-1060 |  |  |  |  | -65d | 10d |  | LABOUR [470.77 h]; Construction Material [30] | UDF_G3 | 0 | EE | 1 | C03a | TY1 | Non | RHCU | EIT2.1 | C03b | EIT02.1 |
|  | 4 | **Electrical Cable Termination / Glanding** |  | 2026-02-16 | 2026-06-15 |  |  |  |  |  |  |  |  |  |  |  |  |  |  |  |  |  |  |  |  |
|  | 1 | **Termination MV Cable** |  | 2026-05-15 | 2026-06-15 |  |  |  |  |  |  |  |  |  |  |  |  |  |  |  |  |  |  |  |  |
| 2.1-RHCUEE02-1000 |  | Cable Termination/Glanding | 20d | 2026-05-15 | 2026-06-06 |  |  |  |  |  | -65d | 0d | start on or after 2026-02-16 | LABOUR [100 h]; Construction Material [200] | UDF_G3 | 0.1915 | EE | 1 | C03a | TY1 | Non | RHCU | EIT2.1 | C03b | EIT02.1 |
| 2.1-RHCUEE02-1040 |  | Clear punch | 4d | 2026-06-08 | 2026-06-11 | 2.1-RHCUEE02-1000 |  |  |  |  | -65d | 0d |  | LABOUR [20 h]; Construction Material [40] | UDF_G3 | 0 | EE | 1 | C03a | TY1 | Non | RHCU | EIT2.1 | C03b | EIT02.1 |
| 2.1-RHCUEE02-1080 |  | Complete QA/QC document | 3d | 2026-06-12 | 2026-06-15 | 2.1-RHCUEE02-1040 |  |  |  |  | -65d | 10d |  | LABOUR [36.8 h]; Construction Material [30] | UDF_G3 | 0 | EE | 1 | C03a | TY1 | Non | RHCU | EIT2.1 | C03b | EIT02.1 |
|  | 2 | **Termination LV Cable** |  | 2026-02-16 | 2026-06-15 |  |  |  |  |  |  |  |  |  |  |  |  |  |  |  |  |  |  |  |  |
| 2.1-RHCUEE02-1010 |  | Cable Termination/Glanding | 20d | 2026-02-16 A | 2026-06-06 | 2.1-RHCUEE02-1000 SS | 31% | 20d | 2026-02-16 | 2026-03-10 | -65d | 0d |  | LABOUR [100 h]; Construction Material [200] | UDF_G3 | 0.1915 | EE | 1 | C03a | TY1 | Non | RHCU | EIT2.1 | C03b | EIT02.1 |
| 2.1-RHCUEE02-1050 |  | Clear punch | 4d | 2026-06-08 | 2026-06-11 | 2.1-RHCUEE02-1010 |  |  |  |  | -65d | 0d |  | LABOUR [20 h]; Construction Material [40] | UDF_G3 | 0 | EE | 1 | C03a | TY1 | Non | RHCU | EIT2.1 | C03b | EIT02.1 |
| 2.1-RHCUEE02-1090 |  | Complete QA/QC document | 3d | 2026-06-12 | 2026-06-15 | 2.1-RHCUEE02-1050 |  |  |  |  | -65d | 10d |  | LABOUR [36.8 h]; Construction Material [30] | UDF_G3 | 0 | EE | 1 | C03a | TY1 | Non | RHCU | EIT2.1 | C03b | EIT02.1 |
|  | 3 | **Termination Control Cable** |  | 2026-02-16 | 2026-06-15 |  |  |  |  |  |  |  |  |  |  |  |  |  |  |  |  |  |  |  |  |
| 2.1-RHCUEE02-1020 |  | Cable Termination/Glanding | 20d | 2026-02-16 A | 2026-06-06 | 2.1-RHCUEE02-1010 SS | 39% | 20d | 2026-02-16 | 2026-03-10 | -65d | 0d |  | LABOUR [100 h]; Construction Material [200] | UDF_G3 | 0.1915 | EE | 1 | C03a | TY1 | Non | RHCU | EIT2.1 | C03b | EIT02.1 |
| 2.1-RHCUEE02-1060 |  | Clear punch | 4d | 2026-06-08 | 2026-06-11 | 2.1-RHCUEE02-1020 |  |  |  |  | -65d | 0d |  | LABOUR [20 h]; Construction Material [40] | UDF_G3 | 0 | EE | 1 | C03a | TY1 | Non | RHCU | EIT2.1 | C03b | EIT02.1 |
| 2.1-RHCUEE02-1100 |  | Complete QA/QC document | 3d | 2026-06-12 | 2026-06-15 | 2.1-RHCUEE02-1060 |  |  |  |  | -65d | 10d |  | LABOUR [36.8 h]; Construction Material [30] | UDF_G3 | 0 | EE | 1 | C03a | TY1 | Non | RHCU | EIT2.1 | C03b | EIT02.1 |

| ID | WBS | Activity | Duration | Start | Finish | Predecessors | Complete | Remaining | Planned start | Planned finish | Total float | Free float | Constraint | Resources | On Schedule Indicator | %Completed | Disciplines | Main Activity | WBS | Types | EIT2 Main Activity | Areas | Phases | EIT WBS | EIT PKG |
| --- | --- | --- | --- | --- | --- | --- | --- | --- | --- | --- | --- | --- | --- | --- | --- | --- | --- | --- | --- | --- | --- | --- | --- | --- | --- |
|  | 4 | **Termination Serial Communication Cable** |  | 2026-05-15 | 2026-06-15 |  |  |  |  |  |  |  |  |  |  |  |  |  |  |  |  |  |  |  |  |
| 2.1-RHCUEE02-1030 |  | Cable Termination/Glanding (have no in CMS) | 20d | 2026-05-15 | 2026-06-06 | 2.1-RHCUEE02-1020 SS |  |  |  |  | -65d | 0d |  | LABOUR [100 h]; Construction Material [200] | UDF_G3 | 0.1915 | EE | 1 | C03a | TY1 | Non | RHCU | EIT2.1 | C03b | EIT02.1 |
| 2.1-RHCUEE02-1070 |  | Clear punch (have no in CMS) | 4d | 2026-06-08 | 2026-06-11 | 2.1-RHCUEE02-1030 |  |  |  |  | -65d | 0d |  | LABOUR [20 h]; Construction Material [40] | UDF_G3 | 0 | EE | 1 | C03a | TY1 | Non | RHCU | EIT2.1 | C03b | EIT02.1 |
| 2.1-RHCUEE02-1110 |  | Complete QA/QC document (have no in CMS) | 3d | 2026-06-12 | 2026-06-15 | 2.1-RHCUEE02-1070 |  |  |  |  | -65d | 10d |  | LABOUR [36.8 h]; Construction Material [30] | UDF_G3 | 0 | EE | 1 | C03a | TY1 | Non | RHCU | EIT2.1 | C03b | EIT02.1 |
|  | 5 | **Lighting & Small Power Equipment Installation** |  | 2026-02-02 | 2026-05-23 |  |  |  |  |  |  |  |  |  |  |  |  |  |  |  |  |  |  |  |  |
| 2.1-RHCUEE05-1000 |  | Install support / bracket / Pole | 10d | 2026-02-02 A | 2026-05-14 A |  | 100% |  | 2026-02-02 | 2026-02-12 |  |  | start on or after 2026-02-02 | LABOUR [3 h]; Construction Material [100] | UDF_G3 | 1 | EE | 1 | C03a | TY1 | Non | RHCU | EIT2.1 | C03b | EIT02.1 |
| 2.1-RHCUEE05-1020 |  | Install Distribution panel, lighting fitting ,convenience outlet | 20d | 2026-02-13 A | 2026-05-14 A | 2.1-RHCUEE05-1000 SS | 100% |  | 2026-02-13 | 2026-03-07 |  |  |  | LABOUR [15 h]; Construction Material [200] | UDF_G3 | 1 | EE | 1 | C03a | TY1 | Non | RHCU | EIT2.1 | C03b | EIT02.1 |
| 2.1-RHCUEE05-1030 |  | Clear punch | 5d | 2026-05-15 | 2026-05-20 | 2.1-RHCUEE05-1020 |  |  |  |  | -46d | 0d |  | LABOUR [2 h]; Construction Material [50] | UDF_G3 | 0 | EE | 1 | C03a | TY1 | Non | RHCU | EIT2.1 | C03b | EIT02.1 |
| 2.1-RHCUEE05-1050 |  | Complete QA/QC document | 3d | 2026-05-21 | 2026-05-23 | 2.1-RHCUEE05-1030 |  |  |  |  | -46d | 29d |  | LABOUR [3.69 h]; Construction Material [30] | UDF_G3 | 0 | EE | 1 | C03a | TY1 | Non | RHCU | EIT2.1 | C03b | EIT02.1 |
|  | 9 | **Electrical Earthing / Lightning Installation** |  | 2026-02-02 | 2026-06-18 |  |  |  |  |  |  |  |  |  |  |  |  |  |  |  |  |  |  |  |  |
| 2.1-RHCUEE05-1010 |  | Install Equipment Earthing / Inspection PIT / Install earthing pull and Connecttion | 30d | 2026-02-02 A | 2026-06-18 |  | 38% | 30d | 2026-02-02 | 2026-03-07 | -43d | 0d | start on or after 2026-02-02 | LABOUR [3000 h] | UDF_G3 |  | EE | 1 | C03a | TY1 | Non | RHCU | EIT2.1 | C03b | EIT02.1 |
| 2.1-RHCUEE06-1010 |  | Install Equipment Earthing / Inspection PIT / Install earthing pull and Connecttion | 30d | 2026-02-02 A | 2026-05-15 |  | 38% | 0d | 2026-02-02 | 2026-03-07 | -43d | 0d | start on or after 2026-02-02 | LABOUR [3000 h]; Construction Material [300] | UDF_G3 | 0.6 | EE | 1 | C03a | TY1 | Non | RHCU | EIT2.1 | C03b | EIT02.1 |
| 2.1-RHCUEE05-1040 |  | Punch listing | 5d | 2026-03-09 A | 2026-05-20 | 2.1-RHCUEE05-1010 SS | 38% | 5d | 2026-03-09 | 2026-03-13 | -43d | 0d |  | LABOUR [500 h] | UDF_G3 |  | EE | 1 | C03a | TY1 | Non | RHCU | EIT2.1 | C03b | EIT02.1 |
| 2.1-RHCUEE06-1040 |  | Punch listing | 5d | 2026-03-09 A | 2026-05-15 | 2.1-RHCUEE06-1010 SS | 38% | 0d | 2026-03-09 | 2026-03-13 | -43d | 0d |  | LABOUR [500 h]; Construction Material [50] | UDF_G3 | 0.6 | EE | 1 | C03a | TY1 | Non | RHCU | EIT2.1 | C03b | EIT02.1 |
| 2.1-RHCUEE05-1060 |  | Complete QA/QC document | 5d | 2026-03-14 A | 2026-05-20 | 2.1-RHCUEE05-1040 SS |  | 5d | 2026-03-14 | 2026-03-19 | -43d | 32d |  | LABOUR [933.1 h] | UDF_G3 |  | EE | 1 | C03a | TY1 | Non | RHCU | EIT2.1 | C03b | EIT02.1 |
| 2.1-RHCUEE06-1060 |  | Complete QA/QC document | 5d | 2026-05-15 | 2026-05-20 | 2.1-RHCUEE06-1040 |  |  |  |  | -43d | 32d |  | LABOUR [933.1 h]; Construction Material [50] | UDF_G3 | 0 | EE | 1 | C03a | TY1 | Non | RHCU | EIT2.1 | C03b | EIT02.1 |
|  | 7 | **Instrument** |  | 2026-01-19 | 2026-06-26 |  |  |  |  |  |  |  |  |  |  |  |  |  |  |  |  |  |  |  |  |
|  | 3 | **Instrument Cable Tray/Ladder Installation** |  | 2026-01-26 | 2026-06-17 |  |  |  |  |  |  |  |  |  |  |  |  |  |  |  |  |  |  |  |  |
| 2.1-RHCUIN03-1000 |  | Install support / bracket | 10d | 2026-01-26 A | 2026-05-26 |  | 77% | 10d | 2026-01-26 | 2026-02-05 | -67d | 0d | start on or after 2026-01-26 | LABOUR [1000 h]; Construction Material [100] | UDF_G3 | 0 | EE | 1 | C03a | TY1 | Non | RHCU | EIT2.1 | C03b | EIT02.1 |
| 2.1-RHCUIN03-1010 |  | Install Ladder / Tray | 20d | 2026-02-06 A | 2026-06-06 | 2.1-RHCUIN03-1020 SS | 77% | 20d | 2026-02-06 | 2026-02-28 | -67d | 0d |  | LABOUR [500 h]; Construction Material [200] | UDF_G3 | 0 | EE | 1 | C03a | TY1 | Non | RHCU | EIT2.1 | C03b | EIT02.1 |
| 2.1-RHCUIN03-1020 |  | Steel Conduits for Cable tray | 20d | 2026-02-06 A | 2026-06-06 | 2.1-RHCUIN03-1000 SS | 77% | 20d | 2026-02-06 | 2026-02-28 | -67d | 0d |  | LABOUR [100 h]; Construction Material [200] | UDF_G3 | 0 | EE | 1 | C03a | TY1 | Non | RHCU | EIT2.1 | C03b | EIT02.1 |
| 2.1-RHCUIN03-1030 |  | Clear punch | 6d | 2026-06-08 | 2026-06-13 | 2.1-RHCUIN03-1010, 2.1-RHCUIN03-1020 |  |  |  |  | -67d | 0d |  | LABOUR [50 h]; Construction Material [60] | UDF_G3 | 0 | EE | 1 | C03a | TY1 | Non | RHCU | EIT2.1 | C03b | EIT02.1 |
| 2.1-RHCUIN03-1040 |  | Complete QA/QC document | 3d | 2026-06-15 | 2026-06-17 | 2.1-RHCUIN03-1030 |  |  |  |  | -67d | 8d |  | LABOUR [45.65 h]; Construction Material [30] | UDF_G3 | 0 | EE | 1 | C03a | TY1 | Non | RHCU | EIT2.1 | C03b | EIT02.1 |
|  | 1 | **Instrument Cable Installation** |  | 2026-02-09 | 2026-06-26 |  |  |  |  |  |  |  |  |  |  |  |  |  |  |  |  |  |  |  |  |
|  | 8 | **Cable Pull Primary Cable** |  | 2026-02-09 | 2026-06-26 |  |  |  |  |  |  |  |  |  |  |  |  |  |  |  |  |  |  |  |  |
| 2.1-RHCUIN01-1000 |  | Pull Cable | 30d | 2026-02-09 A | 2026-06-18 |  | 58% | 30d | 2026-02-09 | 2026-03-14 | -75d | 0d | start on or after 2026-02-09 | LABOUR [2500 h]; Construction Material | UDF_G3 | 0.5041 | EE | 1 | C03a | TY1 | Non | RHCU | EIT2.1 | C03b | EIT02.1 |
| 2.1-RHCUIN01-1050 |  | Megger & Continuity test | 4d | 2026-06-19 | 2026-06-23 | 2.1-RHCUIN01-1000 |  |  |  |  | -75d | 0d |  | LABOUR [300 h]; Construction Material [40] | UDF_G3 | 0 | EE | 1 | C03a | TY1 | Non | RHCU | EIT2.1 | C03b | EIT02.1 |
| 2.1-RHCUIN01-1100 |  | Complete QA/QC document | 3d | 2026-06-24 | 2026-06-26 | 2.1-RHCUIN01-1050 |  |  |  |  | -75d | 0d |  | LABOUR [574.28 h]; Construction Material [30] | UDF_G3 | 0 | EE | 1 | C03a | TY1 | Non | RHCU | EIT2.1 | C03b | EIT02.1 |

| ID | WBS | Activity | Duration | Start | Finish | Predecessors | Complete | Remaining | Planned start | Planned finish | Total float | Free float | Constraint | Resources | On Schedule Indicator | %Completed | Disciplines | Main Activity | WBS | Types | EIT2 Main Activity | Areas | Phases | EIT WBS | EIT PKG |
| --- | --- | --- | --- | --- | --- | --- | --- | --- | --- | --- | --- | --- | --- | --- | --- | --- | --- | --- | --- | --- | --- | --- | --- | --- | --- |
|  | 5 | **Cable Pull Power Cable** |  | 2026-05-15 | 2026-06-26 |  |  |  |  |  |  |  |  |  |  |  |  |  |  |  |  |  |  |  |  |
| 2.1-RHCUIN01-1010 |  | Pull Cable | 30d | 2026-05-15 | 2026-06-18 |  |  |  |  |  | -75d | 0d | start on or after 2026-02-09 | LABOUR [2500 h]; Construction Material [300] | UDF_G3 | 0.5041 | EE | 1 | C03a | TY1 | Non | RHCU | EIT2.1 | C03b | EIT02.1 |
| 2.1-RHCUIN01-1060 |  | Megger & Continuity test | 4d | 2026-06-19 | 2026-06-23 | 2.1-RHCUIN01-1010 |  |  |  |  | -75d | 0d |  | LABOUR [300 h]; Construction Material [40] | UDF_G3 | 0 | EE | 1 | C03a | TY1 | Non | RHCU | EIT2.1 | C03b | EIT02.1 |
| 2.1-RHCUIN01-1110 |  | Complete QA/QC document | 3d | 2026-06-24 | 2026-06-26 | 2.1-RHCUIN01-1060 |  |  |  |  | -75d | 0d |  | LABOUR [574.28 h]; Construction Material [30] | UDF_G3 | 0 | EE | 1 | C03a | TY1 | Non | RHCU | EIT2.1 | C03b | EIT02.1 |
|  | 9 | **Cable Pull Secondary Cable** |  | 2026-02-09 | 2026-06-26 |  |  |  |  |  |  |  |  |  |  |  |  |  |  |  |  |  |  |  |  |
| 2.1-RHCUIN01-1020 |  | Pull Cable | 30d | 2026-02-09 A | 2026-06-18 |  | 67% | 30d | 2026-02-09 | 2026-03-14 | -75d | 0d | start on or after 2026-02-09 | LABOUR [2500 h]; Construction Material [300] | UDF_G3 | 0.5041 | EE | 1 | C03a | TY1 | Non | RHCU | EIT2.1 | C03b | EIT02.1 |
| 2.1-RHCUIN01-1070 |  | Megger & Continuity test | 4d | 2026-06-19 | 2026-06-23 | 2.1-RHCUIN01-1020 |  |  |  |  | -75d | 0d |  | LABOUR [300 h]; Construction Material [40] | UDF_G3 | 0 | EE | 1 | C03a | TY1 | Non | RHCU | EIT2.1 | C03b | EIT02.1 |
| 2.1-RHCUIN01-1120 |  | Complete QA/QC document | 3d | 2026-06-24 | 2026-06-26 | 2.1-RHCUIN01-1070 |  |  |  |  | -75d | 0d |  | LABOUR [574.28 h]; Construction Material [30] | UDF_G3 | 0 | EE | 1 | C03a | TY1 | Non | RHCU | EIT2.1 | C03b | EIT02.1 |
|  | 2 | **Cable Pull Thermocouple Cable** |  | 2026-05-15 | 2026-06-26 |  |  |  |  |  |  |  |  |  |  |  |  |  |  |  |  |  |  |  |  |
| 2.1-RHCUIN01-1030 |  | Pull Cable | 30d | 2026-05-15 | 2026-06-18 |  |  |  |  |  | -75d | 0d | start on or after 2026-02-09 | LABOUR [2500 h]; Construction Material [300] | UDF_G3 | 0.5041 | EE | 1 | C03a | TY1 | Non | RHCU | EIT2.1 | C03b | EIT02.1 |
| 2.1-RHCUIN01-1080 |  | Megger & Continuity test | 4d | 2026-06-19 | 2026-06-23 | 2.1-RHCUIN01-1030 |  |  |  |  | -75d | 0d |  | LABOUR [300 h]; Construction Material [40] | UDF_G3 | 0 | EE | 1 | C03a | TY1 | Non | RHCU | EIT2.1 | C03b | EIT02.1 |
| 2.1-RHCUIN01-1130 |  | Complete QA/QC document | 3d | 2026-06-24 | 2026-06-26 | 2.1-RHCUIN01-1080 |  |  |  |  | -75d | 0d |  | LABOUR [574.28 h]; Construction Material [30] | UDF_G3 | 0 | EE | 1 | C03a | TY1 | Non | RHCU | EIT2.1 | C03b | EIT02.1 |
|  | 1 | **Cable Pull LAN Cable** |  | 2026-05-15 | 2026-06-26 |  |  |  |  |  |  |  |  |  |  |  |  |  |  |  |  |  |  |  |  |
| 2.1-RHCUIN01-1040 |  | Pull Cable | 30d | 2026-05-15 | 2026-06-18 |  |  |  |  |  | -75d | 0d | start on or after 2026-02-09 | LABOUR [2500 h]; Construction Material [300] | UDF_G3 | 0.5041 | EE | 1 | C03a | TY1 | Non | RHCU | EIT2.1 | C03b | EIT02.1 |
| 2.1-RHCUIN01-1090 |  | Megger & Continuity test | 4d | 2026-06-19 | 2026-06-23 | 2.1-RHCUIN01-1040 |  |  |  |  | -75d | 0d |  | LABOUR [300 h]; Construction Material [40] | UDF_G3 | 0 | EE | 1 | C03a | TY1 | Non | RHCU | EIT2.1 | C03b | EIT02.1 |
| 2.1-RHCUIN01-1140 |  | Complete QA/QC document | 3d | 2026-06-24 | 2026-06-26 | 2.1-RHCUIN01-1090 |  |  |  |  | -75d | 0d |  | LABOUR [574.28 h]; Construction Material [30] | UDF_G3 | 0 | EE | 1 | C03a | TY1 | Non | RHCU | EIT2.1 | C03b | EIT02.1 |
|  | 2 | **Instrument Cable Termination / Glanding** |  | 2026-02-20 | 2026-06-15 |  |  |  |  |  |  |  |  |  |  |  |  |  |  |  |  |  |  |  |  |
|  | 8 | **Cable Termination Primary Cable** |  | 2026-02-20 | 2026-06-15 |  |  |  |  |  |  |  |  |  |  |  |  |  |  |  |  |  |  |  |  |
| 2.1-RHCUIN02-1000 |  | Cable Termination/Glanding | 20d | 2026-02-20 A | 2026-06-06 |  | 3% | 20d | 2026-02-20 | 2026-03-14 | -65d | 0d | start on or after 2026-02-20 | LABOUR [500 h]; Construction Material [200] | UDF_G3 | 0.16 | EE | 1 | C03a | TY1 | Non | RHCU | EIT2.1 | C03b | EIT02.1 |
| 2.1-RHCUIN02-1050 |  | Clear punch | 4d | 2026-06-08 | 2026-06-11 | 2.1-RHCUIN02-1000 |  |  |  |  | -65d | 0d |  | LABOUR [51.16 h]; Construction Material [40] | UDF_G3 | 0 | EE | 1 | C03a | TY1 | Non | RHCU | EIT2.1 | C03b | EIT02.1 |
| 2.1-RHCUIN02-1100 |  | Complete QA/QC document | 3d | 2026-06-12 | 2026-06-15 | 2.1-RHCUIN02-1050 |  |  |  |  | -65d | 10d |  | LABOUR [100 h]; Construction Material [30] | UDF_G3 | 0 | EE | 1 | C03a | TY1 | Non | RHCU | EIT2.1 | C03b | EIT02.1 |
|  | 5 | **Cable Termination Power Cable** |  | 2026-05-15 | 2026-06-15 |  |  |  |  |  |  |  |  |  |  |  |  |  |  |  |  |  |  |  |  |
| 2.1-RHCUIN02-1010 |  | Cable Termination/Glanding | 20d | 2026-05-15 | 2026-06-06 | 2.1-RHCUIN02-1000 SS |  |  |  |  | -65d | 0d |  | LABOUR [500 h]; Construction Material [200] | UDF_G3 | 0.16 | EE | 1 | C03a | TY1 | Non | RHCU | EIT2.1 | C03b | EIT02.1 |
| 2.1-RHCUIN02-1060 |  | Clear punch | 4d | 2026-06-08 | 2026-06-11 | 2.1-RHCUIN02-1010 |  |  |  |  | -65d | 0d |  | LABOUR [51.16 h]; Construction Material [40] | UDF_G3 | 0 | EE | 1 | C03a | TY1 | Non | RHCU | EIT2.1 | C03b | EIT02.1 |
| 2.1-RHCUIN02-1110 |  | Complete QA/QC document | 3d | 2026-06-12 | 2026-06-15 | 2.1-RHCUIN02-1060 |  |  |  |  | -65d | 10d |  | LABOUR [100 h]; Construction Material [30] | UDF_G3 | 0 | EE | 1 | C03a | TY1 | Non | RHCU | EIT2.1 | C03b | EIT02.1 |

| ID | WBS | Activity | Duration | Start | Finish | Predecessors | Complete | Remaining | Planned start | Planned finish | Total float | Free float | Constraint | Resources | On Schedule Indicator | %Completed | Disciplines | Main Activity | WBS | Types | EIT2 Main Activity | Areas | Phases | EIT WBS | EIT PKG |
| --- | --- | --- | --- | --- | --- | --- | --- | --- | --- | --- | --- | --- | --- | --- | --- | --- | --- | --- | --- | --- | --- | --- | --- | --- | --- |
|  | 9 | **Cable Termination Secondary Cable** |  | 2026-02-20 | 2026-06-15 |  |  |  |  |  |  |  |  |  |  |  |  |  |  |  |  |  |  |  |  |
| 2.1-RHCUIN02-1020 |  | Cable Termination/Glanding | 20d | 2026-02-20 A | 2026-06-06 | 2.1-RHCUIN02-1010 SS | 22% | 20d | 2026-02-20 | 2026-03-14 | -65d | 0d |  | LABOUR [500 h]; Construction Material [200] | UDF_G3 | 0.16 | EE | 1 | C03a | TY1 | Non | RHCU | EIT2.1 | C03b | EIT02.1 |
| 2.1-RHCUIN02-1070 |  | Clear punch | 4d | 2026-06-08 | 2026-06-11 | 2.1-RHCUIN02-1020 |  |  |  |  | -65d | 0d |  | LABOUR [51.16 h]; Construction Material [40] | UDF_G3 | 0 | EE | 1 | C03a | TY1 | Non | RHCU | EIT2.1 | C03b | EIT02.1 |
| 2.1-RHCUIN02-1120 |  | Complete QA/QC document | 3d | 2026-06-12 | 2026-06-15 | 2.1-RHCUIN02-1070 |  |  |  |  | -65d | 10d |  | LABOUR [100 h]; Construction Material [30] | UDF_G3 | 0 | EE | 1 | C03a | TY1 | Non | RHCU | EIT2.1 | C03b | EIT02.1 |
|  | 2 | **Cable Termination Thermocouple Cable** |  | 2026-05-15 | 2026-06-15 |  |  |  |  |  |  |  |  |  |  |  |  |  |  |  |  |  |  |  |  |
| 2.1-RHCUIN02-1030 |  | Cable Termination/Glanding | 20d | 2026-05-15 | 2026-06-06 | 2.1-RHCUIN02-1020 SS |  |  |  |  | -65d | 0d |  | LABOUR [500 h]; Construction Material [200] | UDF_G3 | 0.16 | EE | 1 | C03a | TY1 | Non | RHCU | EIT2.1 | C03b | EIT02.1 |
| 2.1-RHCUIN02-1080 |  | Clear punch | 4d | 2026-06-08 | 2026-06-11 | 2.1-RHCUIN02-1030 |  |  |  |  | -65d | 0d |  | LABOUR [51.16 h]; Construction Material [40] | UDF_G3 | 0 | EE | 1 | C03a | TY1 | Non | RHCU | EIT2.1 | C03b | EIT02.1 |
| 2.1-RHCUIN02-1130 |  | Complete QA/QC document | 3d | 2026-06-12 | 2026-06-15 | 2.1-RHCUIN02-1080 |  |  |  |  | -65d | 10d |  | LABOUR [100 h]; Construction Material [30] | UDF_G3 | 0 | EE | 1 | C03a | TY1 | Non | RHCU | EIT2.1 | C03b | EIT02.1 |
|  | 1 | **Cable Termination LAN Cable** |  | 2026-05-15 | 2026-06-15 |  |  |  |  |  |  |  |  |  |  |  |  |  |  |  |  |  |  |  |  |
| 2.1-RHCUIN02-1040 |  | Cable Termination/Glanding | 20d | 2026-05-15 | 2026-06-06 | 2.1-RHCUIN02-1030 SS |  |  |  |  | -65d | 0d |  | LABOUR [500 h]; Construction Material [200] | UDF_G3 | 0.16 | EE | 1 | C03a | TY1 | Non | RHCU | EIT2.1 | C03b | EIT02.1 |
| 2.1-RHCUIN02-1090 |  | Clear punch | 4d | 2026-06-08 | 2026-06-11 | 2.1-RHCUIN02-1040 |  |  |  |  | -65d | 0d |  | LABOUR [51.16 h]; Construction Material [40] | UDF_G3 | 0 | EE | 1 | C03a | TY1 | Non | RHCU | EIT2.1 | C03b | EIT02.1 |
| 2.1-RHCUIN02-1140 |  | Complete QA/QC document | 3d | 2026-06-12 | 2026-06-15 | 2.1-RHCUIN02-1090 |  |  |  |  | -65d | 10d |  | LABOUR [100 h]; Construction Material [30] | UDF_G3 | 0 | EE | 1 | C03a | TY1 | Non | RHCU | EIT2.1 | C03b | EIT02.1 |
|  | 6 | **Instrument Equipment Installation** |  | 2026-05-15 | 2026-06-26 |  |  |  |  |  |  |  |  |  |  |  |  |  |  |  |  |  |  |  |  |
|  | 1 | **Analyser Instruments** |  | 2026-05-15 | 2026-06-26 |  |  |  |  |  |  |  |  |  |  |  |  |  |  |  |  |  |  |  |  |
| 2.1-RHCUIN04-1000 |  | Install support / bracket | 10d | 2026-05-15 | 2026-05-26 |  |  |  |  |  | -75d | 0d | start on or after 2026-01-30 | LABOUR [630.19 h]; Construction Material [100] | UDF_G3 | 0 | EE | 1 | C03a | TY1 | Non | RHCU | EIT2.1 | C03b | EIT02.1 |
| 2.1-RHCUIN04-1010 |  | Install Equipment | 20d | 2026-05-27 | 2026-06-18 | 2.1-RHCUIN04-1000 |  |  |  |  | -75d | 0d |  | LABOUR [80 h]; Construction Material [200] | UDF_G3 | 0 | EE | 1 | C03a | TY1 | Non | RHCU | EIT2.1 | C03b | EIT02.1 |
| 2.1-RHCUIN04-1020 |  | Clear punch | 4d | 2026-06-19 | 2026-06-23 | 2.1-RHCUIN04-1010 |  |  |  |  | -75d | 0d |  | LABOUR [10 h]; Construction Material [40] | UDF_G3 | 0 | EE | 1 | C03a | TY1 | Non | RHCU | EIT2.1 | C03b | EIT02.1 |
| 2.1-RHCUIN04-1030 |  | Complete QA/QC document | 3d | 2026-06-24 | 2026-06-26 | 2.1-RHCUIN04-1020 |  |  |  |  | -75d | 0d |  | LABOUR [39.41 h]; Construction Material [30] | UDF_G3 | 0 | EE | 1 | C03a | TY1 | Non | RHCU | EIT2.1 | C03b | EIT02.1 |
|  | 4 | **Instrument Calibration** |  | 2026-01-19 | 2026-06-18 |  |  |  |  |  |  |  |  |  |  |  |  |  |  |  |  |  |  |  |  |
| 2.1-RHCUIN05-1000 |  | Calibration Equipment | 30d | 2026-01-19 A | 2026-06-18 |  | 7% | 30d | 2026-01-19 | 2026-02-21 | -41d | 0d | start on or after 2026-01-19 | LABOUR [2300 h]; Construction Material [300] | UDF_G3 | 0 | EE | 1 | C03a | TY1 | Non | RHCU | EIT2.1 | C03b | EIT02.1 |
| 2.1-RHCUIN05-1010 |  | Complete QA/QC document | 3d | 2026-02-23 A | 2026-05-18 | 2.1-RHCUIN05-1000 SS | 7% | 3d | 2026-02-23 | 2026-02-25 | -41d | 34d |  | LABOUR [360.97 h]; Construction Material [30] | UDF_G3 | 0 | EE | 1 | C03a | TY1 | Non | RHCU | EIT2.1 | C03b | EIT02.1 |
|  | 8 | **Telecommunication** |  | 2026-02-26 | 2026-06-15 |  |  |  |  |  |  |  |  |  |  |  |  |  |  |  |  |  |  |  |  |
|  | 5 | **Telecom** |  | 2026-02-26 | 2026-06-15 |  |  |  |  |  |  |  |  |  |  |  |  |  |  |  |  |  |  |  |  |
|  | 1 | **Telecommunication Cable Installation** |  | 2026-05-15 | 2026-06-15 |  |  |  |  |  |  |  |  |  |  |  |  |  |  |  |  |  |  |  |  |
| 2.1-RHCUTE01-1000 |  | Pull Cable | 20d | 2026-05-15 | 2026-06-06 |  |  |  |  |  | -65d | 0d | start on or after 2026-01-26 | LABOUR [875.44 h]; Construction Material [200] | UDF_G3 | 0 | EE | 1 | C03a | TY1 | Non | RHCU | EIT2.1 | C03b | EIT02.1 |
| 2.1-RHCUTE01-1010 |  | Megger & Continuity test | 4d | 2026-06-08 | 2026-06-11 | 2.1-RHCUTE01-1000 |  |  |  |  | -65d | 0d |  | LABOUR [180 h]; Construction Material [40] | UDF_G3 | 0 | EE | 1 | C03a | TY1 | Non | RHCU | EIT2.1 | C03b | EIT02.1 |
| 2.1-RHCUTE01-1020 |  | Complete QA/QC document | 3d | 2026-06-12 | 2026-06-15 | 2.1-RHCUTE01-1010 |  |  |  |  | -65d | 0d |  | LABOUR [200 h]; Construction Material [30] | UDF_G3 | 0 | EE | 1 | C03a | TY1 | Non | RHCU | EIT2.1 | C03b | EIT02.1 |

| ID | WBS | Activity | Duration | Start | Finish | Predecessors | Complete | Constraint | Resources | On Schedule Indicator | %Completed | Disciplines | Main Activity | WBS | Types | EIT2 Main Activity | Areas | Phases | EIT WBS | EIT PKG |
| --- | --- | --- | --- | --- | --- | --- | --- | --- | --- | --- | --- | --- | --- | --- | --- | --- | --- | --- | --- | --- |
|  | 4 | **Telecommunication Termination / Glanding** |  | 2026-02-26 | 2026-03-28 |  |  |  |  |  |  |  |  |  |  |  |  |  |  |  |
| 2.1-RHCUTE02-1000 |  | Cable Termination/Glanding (no CMS) | 20d | 2026-02-26 A | 2026-03-20 A | 2.1-RHCUTE01-1020 | 100% |  | LABOUR; Construction Material [200] | UDF_G3 | 0 | EE | 1 | C03a | TY1 | Non | RHCU | EIT2.1 | C03b | EIT02.1 |
| 2.1-RHCUTE02-1010 |  | Clear punch (no CMS) | 4d | 2026-03-21 A | 2026-03-25 A | 2.1-RHCUTE02-1000 | 100% |  | LABOUR; Construction Material [40] | UDF_G3 | 0 | EE | 1 | C03a | TY1 | Non | RHCU | EIT2.1 | C03b | EIT02.1 |
| 2.1-RHCUTE02-1020 |  | Complete QA/QC document (no CMS) | 3d | 2026-03-26 A | 2026-03-28 A | 2.1-RHCUTE02-1010 | 100% |  | LABOUR; Construction Material [30] | UDF_G3 | 0 | EE | 1 | C03a | TY1 | Non | RHCU | EIT2.1 | C03b | EIT02.1 |
|  | 6 | **CCTV System** |  | 2026-02-26 | 2026-03-31 |  |  |  |  |  |  |  |  |  |  |  |  |  |  |  |
|  | 1 | **CCTV Cable Installation** |  | 2026-02-26 | 2026-03-31 |  |  |  |  |  |  |  |  |  |  |  |  |  |  |  |
| 2.1-RHCUTE01.1-1000 |  | Pull Cable (no CMS) | 22d | 2026-02-26 A | 2026-03-23 A |  | 100% | start on or after 2026-02-26 | LABOUR; Construction Material [220] | UDF_G3 | 0 | EE | 1 | C03a | TY1 | Non | RHCU | EIT2.1 | C03b | EIT02.1 |
| 2.1-RHCUTE01.1-1010 |  | Megger & Continuity test (no CMS) | 4d | 2026-03-24 A | 2026-03-27 A | 2.1-RHCUTE01.1-1000 | 100% |  | LABOUR; Construction Material [40] | UDF_G3 | 0 | EE | 1 | C03a | TY1 | Non | RHCU | EIT2.1 | C03b | EIT02.1 |
| 2.1-RHCUTE01.1-1020 |  | Complete QA/QC document (no CMS) | 3d | 2026-03-28 A | 2026-03-31 A | 2.1-RHCUTE01.1-1010 | 100% |  | LABOUR; Construction Material [30] | UDF_G3 | 0 | EE | 1 | C03a | TY1 | Non | RHCU | EIT2.1 | C03b | EIT02.1 |
|  | 1 | **WBS : SDA (Solvent De-Asphalting Unit)** |  | 2025-12-23 | 2026-07-07 |  |  |  |  |  |  |  |  |  |  |  |  |  |  |  |
|  | 6 | **Electrical** |  | 2025-12-23 | 2026-06-26 |  |  |  |  |  |  |  |  |  |  |  |  |  |  |  |
|  | 3 | **Electrical Cable Tray/Ladder Installation** |  | 2025-12-23 | 2026-02-28 |  |  |  |  |  |  |  |  |  |  |  |  |  |  |  |
|  | 17 | **Air Fin Cooler -EM-10803-1** |  | 2025-12-23 | 2026-02-28 |  |  |  |  |  |  |  |  |  |  |  |  |  |  |  |
| 2.1-SDAEE03-1000 |  | Install support / bracket | 20d | 2025-12-23 A | 2026-01-14 A |  | 100% | start on or after 2025-12-23 | LABOUR [4.36 h]; Construction Material | UDF_G3 | 1 | EE | 1 | C03a | TY1 | Non | SDA | EIT2.1 | C03c | EIT02.1 |
| 2.1-SDAEE03-1280 |  | Install Ladder / Tray | 30d | 2026-01-15 A | 2026-02-18 A | 2.1-SDAEE03-1000 SS, 2.1-SDAEE03-1000 | 100% |  | LABOUR [15 h]; Construction Material | UDF_G3 | 1 | EE | 1 | C03a | TY1 | Non | SDA | EIT2.1 | C03c | EIT02.1 |
| 2.1-SDAEE03-1290 |  | Install Conduits | 30d | 2026-01-15 A | 2026-02-18 A | 2.1-SDAEE03-1280 SS | 100% |  | LABOUR [5 h]; Construction Material | UDF_G3 | 1 | EE | 1 | C03a | TY1 | Non | SDA | EIT2.1 | C03c | EIT02.1 |
| 2.1-SDAEE03-1840 |  | Clear punch | 6d | 2026-02-19 A | 2026-02-25 A | 2.1-SDAEE03-1290 SS, 2.1-SDAEE03-1280 SS, 2.1-SDAEE03-1290, 2.1-SDAEE03-1280 | 100% |  | LABOUR [5 h]; Construction Material | UDF_G3 | 1 | EE | 1 | C03a | TY1 | Non | SDA | EIT2.1 | C03c | EIT02.1 |
| 2.1-SDAEE03-2120 |  | Complete QA/QC document | 3d | 2026-02-26 A | 2026-02-28 A | 2.1-SDAEE03-1840 SS, 2.1-SDAEE03-1840 | 100% |  | LABOUR [6.37 h]; Construction Material | UDF_G3 | 1 | EE | 1 | C03a | TY1 | Non | SDA | EIT2.1 | C03c | EIT02.1 |
|  | 1 | **Air Fin Cooler - EM-10803-2** |  | 2025-12-23 | 2026-02-28 |  |  |  |  |  |  |  |  |  |  |  |  |  |  |  |
| 2.1-SDAEE03-1010 |  | Install support / bracket | 20d | 2025-12-23 A | 2026-01-14 A | 2.1-SDAEE03-1000 SS | 100% |  | LABOUR [4.36 h]; Construction Material | UDF_G3 | 1 | EE | 1 | C03a | TY1 | Non | SDA | EIT2.1 | C03c | EIT02.1 |
| 2.1-SDAEE03-1300 |  | Install Ladder / Tray | 30d | 2026-01-15 A | 2026-02-18 A | 2.1-SDAEE03-1010 SS, 2.1-SDAEE03-1010 | 100% |  | LABOUR [15 h]; Construction Material | UDF_G3 | 1 | EE | 1 | C03a | TY1 | Non | SDA | EIT2.1 | C03c | EIT02.1 |
| 2.1-SDAEE03-1310 |  | Install Conduits | 30d | 2026-01-15 A | 2026-02-18 A | 2.1-SDAEE03-1300 SS | 100% |  | LABOUR [5 h]; Construction Material | UDF_G3 | 1 | EE | 1 | C03a | TY1 | Non | SDA | EIT2.1 | C03c | EIT02.1 |
| 2.1-SDAEE03-1850 |  | Clear punch | 6d | 2026-02-19 A | 2026-02-25 A | 2.1-SDAEE03-1310 SS, 2.1-SDAEE03-1300 SS, 2.1-SDAEE03-1310, 2.1-SDAEE03-1300 | 100% |  | LABOUR [5 h]; Construction Material | UDF_G3 | 1 | EE | 1 | C03a | TY1 | Non | SDA | EIT2.1 | C03c | EIT02.1 |
| 2.1-SDAEE03-2130 |  | Complete QA/QC document | 3d | 2026-02-26 A | 2026-02-28 A | 2.1-SDAEE03-1850 SS, 2.1-SDAEE03-1850 | 100% |  | LABOUR [6.37 h]; Construction Material | UDF_G3 | 1 | EE | 1 | C03a | TY1 | Non | SDA | EIT2.1 | C03c | EIT02.1 |

| ID | WBS | Activity | Duration | Start | Finish | Predecessors | Complete | Resources | On Schedule Indicator | %Completed | Disciplines | Main Activity | WBS | Types | EIT2 Main Activity | Areas | Phases | EIT WBS | EIT PKG |
| --- | --- | --- | --- | --- | --- | --- | --- | --- | --- | --- | --- | --- | --- | --- | --- | --- | --- | --- | --- |
|  | 10 | **Air Fin Cooler - EM-10807-2** |  | 2025-12-23 | 2026-02-28 |  |  |  |  |  |  |  |  |  |  |  |  |  |  |
| 2.1-SDAEE03-1030 |  | Install support / bracket | 20d | 2025-12-23 A | 2026-01-14 A | 2.1-SDAEE03-1020 SS | 100% | LABOUR [4.36 h]; Construction Material | UDF_G3 | 1 | EE | 1 | C03a | TY1 | Non | SDA | EIT2.1 | C03c | EIT02.1 |
| 2.1-SDAEE03-1340 |  | Install Ladder / Tray | 30d | 2026-01-15 A | 2026-02-18 A | 2.1-SDAEE03-1030 SS, 2.1-SDAEE03-1030 | 100% | LABOUR [15 h]; Construction Material | UDF_G3 | 1 | EE | 1 | C03a | TY1 | Non | SDA | EIT2.1 | C03c | EIT02.1 |
| 2.1-SDAEE03-1350 |  | Install Conduits | 30d | 2026-01-15 A | 2026-02-18 A | 2.1-SDAEE03-1340 SS | 100% | LABOUR [5 h]; Construction Material | UDF_G3 | 1 | EE | 1 | C03a | TY1 | Non | SDA | EIT2.1 | C03c | EIT02.1 |
| 2.1-SDAEE03-1870 |  | Clear punch | 6d | 2026-02-19 A | 2026-02-25 A | 2.1-SDAEE03-1350 SS, 2.1-SDAEE03-1340 SS, 2.1-SDAEE03-1350, 2.1-SDAEE03-1340 | 100% | LABOUR [5 h]; Construction Material | UDF_G3 | 1 | EE | 1 | C03a | TY1 | Non | SDA | EIT2.1 | C03c | EIT02.1 |
| 2.1-SDAEE03-2150 |  | Complete QA/QC document | 3d | 2026-02-26 A | 2026-02-28 A | 2.1-SDAEE03-1870 SS, 2.1-SDAEE03-1870 | 100% | LABOUR [6.37 h]; Construction Material | UDF_G3 | 1 | EE | 1 | C03a | TY1 | Non | SDA | EIT2.1 | C03c | EIT02.1 |
|  | 18 | **Air Fin Cooler - EM-10812-1** |  | 2025-12-23 | 2026-02-28 |  |  |  |  |  |  |  |  |  |  |  |  |  |  |
| 2.1-SDAEE03-1040 |  | Install support / bracket | 20d | 2025-12-23 A | 2026-01-14 A | 2.1-SDAEE03-1030 SS | 100% | LABOUR [4.36 h]; Construction Material | UDF_G3 | 1 | EE | 1 | C03a | TY1 | Non | SDA | EIT2.1 | C03c | EIT02.1 |
| 2.1-SDAEE03-1360 |  | Install Ladder / Tray | 30d | 2026-01-15 A | 2026-02-18 A | 2.1-SDAEE03-1040 SS, 2.1-SDAEE03-1040 | 100% | LABOUR [15 h]; Construction Material | UDF_G3 | 1 | EE | 1 | C03a | TY1 | Non | SDA | EIT2.1 | C03c | EIT02.1 |
| 2.1-SDAEE03-1370 |  | Install Conduits | 30d | 2026-01-15 A | 2026-02-18 A | 2.1-SDAEE03-1360 SS | 100% | LABOUR [5 h]; Construction Material | UDF_G3 | 1 | EE | 1 | C03a | TY1 | Non | SDA | EIT2.1 | C03c | EIT02.1 |
| 2.1-SDAEE03-1880 |  | Clear punch | 6d | 2026-02-19 A | 2026-02-25 A | 2.1-SDAEE03-1370 SS, 2.1-SDAEE03-1360 SS, 2.1-SDAEE03-1370, 2.1-SDAEE03-1360 | 100% | LABOUR [5 h]; Construction Material | UDF_G3 | 1 | EE | 1 | C03a | TY1 | Non | SDA | EIT2.1 | C03c | EIT02.1 |
| 2.1-SDAEE03-2160 |  | Complete QA/QC document | 3d | 2026-02-26 A | 2026-02-28 A | 2.1-SDAEE03-1880 SS, 2.1-SDAEE03-1880 | 100% | LABOUR [6.37 h]; Construction Material | UDF_G3 | 1 | EE | 1 | C03a | TY1 | Non | SDA | EIT2.1 | C03c | EIT02.1 |
|  | 6 | **Air Fin Cooler - EM-10807-1** |  | 2025-12-23 | 2026-02-28 |  |  |  |  |  |  |  |  |  |  |  |  |  |  |
| 2.1-SDAEE03-1020 |  | Install support / bracket | 20d | 2025-12-23 A | 2026-01-14 A | 2.1-SDAEE03-1010 SS | 100% | LABOUR [4.36 h]; Construction Material | UDF_G3 | 1 | EE | 1 | C03a | TY1 | Non | SDA | EIT2.1 | C03c | EIT02.1 |
| 2.1-SDAEE03-1320 |  | Install Ladder / Tray | 30d | 2026-01-15 A | 2026-02-18 A | 2.1-SDAEE03-1020 SS, 2.1-SDAEE03-1020 | 100% | LABOUR [15 h]; Construction Material | UDF_G3 | 1 | EE | 1 | C03a | TY1 | Non | SDA | EIT2.1 | C03c | EIT02.1 |
| 2.1-SDAEE03-1330 |  | Install Conduits | 30d | 2026-01-15 A | 2026-02-18 A | 2.1-SDAEE03-1320 SS | 100% | LABOUR [5 h]; Construction Material | UDF_G3 | 1 | EE | 1 | C03a | TY1 | Non | SDA | EIT2.1 | C03c | EIT02.1 |
| 2.1-SDAEE03-1860 |  | Clear punch | 6d | 2026-02-19 A | 2026-02-25 A | 2.1-SDAEE03-1330 SS, 2.1-SDAEE03-1320 SS, 2.1-SDAEE03-1330, 2.1-SDAEE03-1320 | 100% | LABOUR [5 h]; Construction Material | UDF_G3 | 1 | EE | 1 | C03a | TY1 | Non | SDA | EIT2.1 | C03c | EIT02.1 |
| 2.1-SDAEE03-2140 |  | Complete QA/QC document | 3d | 2026-02-26 A | 2026-02-28 A | 2.1-SDAEE03-1860 SS, 2.1-SDAEE03-1860 | 100% | LABOUR [6.37 h]; Construction Material | UDF_G3 | 1 | EE | 1 | C03a | TY1 | Non | SDA | EIT2.1 | C03c | EIT02.1 |
|  | 11 | **Air Fin Cooler - EM-10802-1** |  | 2025-12-23 | 2026-02-28 |  |  |  |  |  |  |  |  |  |  |  |  |  |  |
| 2.1-SDAEE03-1060 |  | Install support / bracket | 20d | 2025-12-23 A | 2026-01-14 A | 2.1-SDAEE03-1050 SS | 100% | LABOUR [4.36 h]; Construction Material | UDF_G3 | 1 | EE | 1 | C03a | TY1 | Non | SDA | EIT2.1 | C03c | EIT02.1 |
| 2.1-SDAEE03-1400 |  | Install Ladder / Tray | 30d | 2026-01-15 A | 2026-02-18 A | 2.1-SDAEE03-1060 SS, 2.1-SDAEE03-1060 | 100% | LABOUR [15 h]; Construction Material | UDF_G3 | 1 | EE | 1 | C03a | TY1 | Non | SDA | EIT2.1 | C03c | EIT02.1 |
| 2.1-SDAEE03-1410 |  | Install Conduits | 30d | 2026-01-15 A | 2026-02-18 A | 2.1-SDAEE03-1400 SS | 100% | LABOUR [5 h]; Construction Material | UDF_G3 | 1 | EE | 1 | C03a | TY1 | Non | SDA | EIT2.1 | C03c | EIT02.1 |
| 2.1-SDAEE03-1900 |  | Clear punch | 6d | 2026-02-19 A | 2026-02-25 A | 2.1-SDAEE03-1410 SS, 2.1-SDAEE03-1400 SS, 2.1-SDAEE03-1410, 2.1-SDAEE03-1400 | 100% | LABOUR [5 h]; Construction Material | UDF_G3 | 1 | EE | 1 | C03a | TY1 | Non | SDA | EIT2.1 | C03c | EIT02.1 |
| 2.1-SDAEE03-2180 |  | Complete QA/QC document | 3d | 2026-02-26 A | 2026-02-28 A | 2.1-SDAEE03-1900 SS, 2.1-SDAEE03-1900 | 100% | LABOUR [6.37 h]; Construction Material | UDF_G3 | 1 | EE | 1 | C03a | TY1 | Non | SDA | EIT2.1 | C03c | EIT02.1 |

| ID | WBS | Activity | Duration | Start | Finish | Predecessors | Complete | Resources | On Schedule Indicator | %Completed | Disciplines | Main Activity | WBS | Types | EIT2 Main Activity | Areas | Phases | EIT WBS | EIT PKG |
| --- | --- | --- | --- | --- | --- | --- | --- | --- | --- | --- | --- | --- | --- | --- | --- | --- | --- | --- | --- |
|  | 19 | **Air Fin Cooler - EM-10802-2** |  | 2025-12-23 | 2026-02-28 |  |  |  |  |  |  |  |  |  |  |  |  |  |  |
| 2.1-SDAEE03-1070 |  | Install support / bracket | 20d | 2025-12-23 A | 2026-01-14 A | 2.1-SDAEE03-1060 SS | 100% | LABOUR [4.36 h]; Construction Material | UDF_G3 | 1 | EE | 1 | C03a | TY1 | Non | SDA | EIT2.1 | C03c | EIT02.1 |
| 2.1-SDAEE03-1420 |  | Install Ladder / Tray | 30d | 2026-01-15 A | 2026-02-18 A | 2.1-SDAEE03-1070 SS, 2.1-SDAEE03-1070 | 100% | LABOUR [15 h]; Construction Material | UDF_G3 | 1 | EE | 1 | C03a | TY1 | Non | SDA | EIT2.1 | C03c | EIT02.1 |
| 2.1-SDAEE03-1430 |  | Install Conduits | 30d | 2026-01-15 A | 2026-02-18 A | 2.1-SDAEE03-1420 SS | 100% | LABOUR [5 h]; Construction Material | UDF_G3 | 1 | EE | 1 | C03a | TY1 | Non | SDA | EIT2.1 | C03c | EIT02.1 |
| 2.1-SDAEE03-1910 |  | Clear punch | 6d | 2026-02-19 A | 2026-02-25 A | 2.1-SDAEE03-1430 SS, 2.1-SDAEE03-1420 SS, 2.1-SDAEE03-1430, 2.1-SDAEE03-1420 | 100% | LABOUR [5 h]; Construction Material | UDF_G3 | 1 | EE | 1 | C03a | TY1 | Non | SDA | EIT2.1 | C03c | EIT02.1 |
| 2.1-SDAEE03-2190 |  | Complete QA/QC document | 3d | 2026-02-26 A | 2026-02-28 A | 2.1-SDAEE03-1910 SS, 2.1-SDAEE03-1910 | 100% | LABOUR [6.37 h]; Construction Material | UDF_G3 | 1 | EE | 1 | C03a | TY1 | Non | SDA | EIT2.1 | C03c | EIT02.1 |
|  | 7 | **Air Fin Cooler - EM-10812-2** |  | 2025-12-23 | 2026-02-28 |  |  |  |  |  |  |  |  |  |  |  |  |  |  |
| 2.1-SDAEE03-1050 |  | Install support / bracket | 20d | 2025-12-23 A | 2026-01-14 A | 2.1-SDAEE03-1040 SS | 100% | LABOUR [4.36 h]; Construction Material | UDF_G3 | 1 | EE | 1 | C03a | TY1 | Non | SDA | EIT2.1 | C03c | EIT02.1 |
| 2.1-SDAEE03-1380 |  | Install Ladder / Tray | 30d | 2026-01-15 A | 2026-02-18 A | 2.1-SDAEE03-1050 SS, 2.1-SDAEE03-1050 | 100% | LABOUR [15 h]; Construction Material | UDF_G3 | 1 | EE | 1 | C03a | TY1 | Non | SDA | EIT2.1 | C03c | EIT02.1 |
| 2.1-SDAEE03-1390 |  | Install Conduits | 30d | 2026-01-15 A | 2026-02-18 A | 2.1-SDAEE03-1380 SS | 100% | LABOUR [5 h]; Construction Material | UDF_G3 | 1 | EE | 1 | C03a | TY1 | Non | SDA | EIT2.1 | C03c | EIT02.1 |
| 2.1-SDAEE03-1890 |  | Clear punch | 6d | 2026-02-19 A | 2026-02-25 A | 2.1-SDAEE03-1390 SS, 2.1-SDAEE03-1380 SS, 2.1-SDAEE03-1390, 2.1-SDAEE03-1380 | 100% | LABOUR [5 h]; Construction Material | UDF_G3 | 1 | EE | 1 | C03a | TY1 | Non | SDA | EIT2.1 | C03c | EIT02.1 |
| 2.1-SDAEE03-2170 |  | Complete QA/QC document | 3d | 2026-02-26 A | 2026-02-28 A | 2.1-SDAEE03-1890 SS, 2.1-SDAEE03-1890 | 100% | LABOUR [6.37 h]; Construction Material | UDF_G3 | 1 | EE | 1 | C03a | TY1 | Non | SDA | EIT2.1 | C03c | EIT02.1 |
|  | 12 | **Air Fin Cooler - EM-10802-4** |  | 2025-12-23 | 2026-02-28 |  |  |  |  |  |  |  |  |  |  |  |  |  |  |
| 2.1-SDAEE03-1090 |  | Install support / bracket | 20d | 2025-12-23 A | 2026-01-14 A | 2.1-SDAEE03-1080 SS | 100% | LABOUR [4.36 h]; Construction Material | UDF_G3 | 1 | EE | 1 | C03a | TY1 | Non | SDA | EIT2.1 | C03c | EIT02.1 |
| 2.1-SDAEE03-1460 |  | Install Ladder / Tray | 30d | 2026-01-15 A | 2026-02-18 A | 2.1-SDAEE03-1090 SS, 2.1-SDAEE03-1090 | 100% | LABOUR [15 h]; Construction Material | UDF_G3 | 1 | EE | 1 | C03a | TY1 | Non | SDA | EIT2.1 | C03c | EIT02.1 |
| 2.1-SDAEE03-1470 |  | Install Conduits | 30d | 2026-01-15 A | 2026-02-18 A | 2.1-SDAEE03-1460 SS | 100% | LABOUR [5 h]; Construction Material | UDF_G3 | 1 | EE | 1 | C03a | TY1 | Non | SDA | EIT2.1 | C03c | EIT02.1 |
| 2.1-SDAEE03-1930 |  | Clear punch | 6d | 2026-02-19 A | 2026-02-25 A | 2.1-SDAEE03-1470 SS, 2.1-SDAEE03-1460 SS, 2.1-SDAEE03-1470, 2.1-SDAEE03-1460 | 100% | LABOUR [5 h]; Construction Material | UDF_G3 | 1 | EE | 1 | C03a | TY1 | Non | SDA | EIT2.1 | C03c | EIT02.1 |
| 2.1-SDAEE03-2210 |  | Complete QA/QC document | 3d | 2026-02-26 A | 2026-02-28 A | 2.1-SDAEE03-1930 SS, 2.1-SDAEE03-1930 | 100% | LABOUR [6.37 h]; Construction Material | UDF_G3 | 1 | EE | 1 | C03a | TY1 | Non | SDA | EIT2.1 | C03c | EIT02.1 |
|  | 20 | **Air Fin Cooler - EM-10802-5** |  | 2025-12-23 | 2026-02-28 |  |  |  |  |  |  |  |  |  |  |  |  |  |  |
| 2.1-SDAEE03-1100 |  | Install support / bracket | 20d | 2025-12-23 A | 2026-01-14 A | 2.1-SDAEE03-1090 SS | 100% | LABOUR [4.36 h]; Construction Material | UDF_G3 | 1 | EE | 1 | C03a | TY1 | Non | SDA | EIT2.1 | C03c | EIT02.1 |
| 2.1-SDAEE03-1480 |  | Install Ladder / Tray | 30d | 2026-01-15 A | 2026-02-18 A | 2.1-SDAEE03-1100 SS, 2.1-SDAEE03-1100 | 100% | LABOUR [15 h]; Construction Material | UDF_G3 | 1 | EE | 1 | C03a | TY1 | Non | SDA | EIT2.1 | C03c | EIT02.1 |
| 2.1-SDAEE03-1490 |  | Install Conduits | 30d | 2026-01-15 A | 2026-02-18 A | 2.1-SDAEE03-1480 SS | 100% | LABOUR [5 h]; Construction Material | UDF_G3 | 1 | EE | 1 | C03a | TY1 | Non | SDA | EIT2.1 | C03c | EIT02.1 |
| 2.1-SDAEE03-1940 |  | Clear punch | 6d | 2026-02-19 A | 2026-02-25 A | 2.1-SDAEE03-1490 SS, 2.1-SDAEE03-1480 SS, 2.1-SDAEE03-1490, 2.1-SDAEE03-1480 | 100% | LABOUR [5 h]; Construction Material | UDF_G3 | 1 | EE | 1 | C03a | TY1 | Non | SDA | EIT2.1 | C03c | EIT02.1 |
| 2.1-SDAEE03-2220 |  | Complete QA/QC document | 3d | 2026-02-26 A | 2026-02-28 A | 2.1-SDAEE03-1940 SS, 2.1-SDAEE03-1940 | 100% | LABOUR [6.37 h]; Construction Material | UDF_G3 | 1 | EE | 1 | C03a | TY1 | Non | SDA | EIT2.1 | C03c | EIT02.1 |

| ID | WBS | Activity | Duration | Start | Finish | Predecessors | Complete | Resources | On Schedule Indicator | %Completed | Disciplines | Main Activity | WBS | Types | EIT2 Main Activity | Areas | Phases | EIT WBS | EIT PKG |
| --- | --- | --- | --- | --- | --- | --- | --- | --- | --- | --- | --- | --- | --- | --- | --- | --- | --- | --- | --- |
|  | 8 | **Air Fin Cooler - EM-10802-3** |  | 2025-12-23 | 2026-02-28 |  |  |  |  |  |  |  |  |  |  |  |  |  |  |
| 2.1-SDAEE03-1080 |  | Install support / bracket | 20d | 2025-12-23 A | 2026-01-14 A | 2.1-SDAEE03-1070 SS | 100% | LABOUR [4.36 h]; Construction Material | UDF_G3 | 1 | EE | 1 | C03a | TY1 | Non | SDA | EIT2.1 | C03c | EIT02.1 |
| 2.1-SDAEE03-1440 |  | Install Ladder / Tray | 30d | 2026-01-15 A | 2026-02-18 A | 2.1-SDAEE03-1080 SS, 2.1-SDAEE03-1080 | 100% | LABOUR [15 h]; Construction Material | UDF_G3 | 1 | EE | 1 | C03a | TY1 | Non | SDA | EIT2.1 | C03c | EIT02.1 |
| 2.1-SDAEE03-1450 |  | Install Conduits | 30d | 2026-01-15 A | 2026-02-18 A | 2.1-SDAEE03-1440 SS | 100% | LABOUR [5 h]; Construction Material | UDF_G3 | 1 | EE | 1 | C03a | TY1 | Non | SDA | EIT2.1 | C03c | EIT02.1 |
| 2.1-SDAEE03-1920 |  | Clear punch | 6d | 2026-02-19 A | 2026-02-25 A | 2.1-SDAEE03-1450 SS, 2.1-SDAEE03-1440 SS, 2.1-SDAEE03-1450, 2.1-SDAEE03-1440 | 100% | LABOUR [5 h]; Construction Material | UDF_G3 | 1 | EE | 1 | C03a | TY1 | Non | SDA | EIT2.1 | C03c | EIT02.1 |
| 2.1-SDAEE03-2200 |  | Complete QA/QC document | 3d | 2026-02-26 A | 2026-02-28 A | 2.1-SDAEE03-1920 SS, 2.1-SDAEE03-1920 | 100% | LABOUR [6.37 h]; Construction Material | UDF_G3 | 1 | EE | 1 | C03a | TY1 | Non | SDA | EIT2.1 | C03c | EIT02.1 |
|  | 13 | **Air Fin Cooler - EM-10802-7** |  | 2025-12-23 | 2026-02-28 |  |  |  |  |  |  |  |  |  |  |  |  |  |  |
| 2.1-SDAEE03-1120 |  | Install support / bracket | 20d | 2025-12-23 A | 2026-01-14 A | 2.1-SDAEE03-1110 SS | 100% | LABOUR [4.36 h]; Construction Material | UDF_G3 | 1 | EE | 1 | C03a | TY1 | Non | SDA | EIT2.1 | C03c | EIT02.1 |
| 2.1-SDAEE03-1520 |  | Install Ladder / Tray | 30d | 2026-01-15 A | 2026-02-18 A | 2.1-SDAEE03-1120 SS, 2.1-SDAEE03-1120 | 100% | LABOUR [15 h]; Construction Material | UDF_G3 | 1 | EE | 1 | C03a | TY1 | Non | SDA | EIT2.1 | C03c | EIT02.1 |
| 2.1-SDAEE03-1530 |  | Install Conduits | 30d | 2026-01-15 A | 2026-02-18 A | 2.1-SDAEE03-1520 SS | 100% | LABOUR [5 h]; Construction Material | UDF_G3 | 1 | EE | 1 | C03a | TY1 | Non | SDA | EIT2.1 | C03c | EIT02.1 |
| 2.1-SDAEE03-1960 |  | Clear punch | 6d | 2026-02-19 A | 2026-02-25 A | 2.1-SDAEE03-1530 SS, 2.1-SDAEE03-1520 SS, 2.1-SDAEE03-1530, 2.1-SDAEE03-1520 | 100% | LABOUR [5 h]; Construction Material | UDF_G3 | 1 | EE | 1 | C03a | TY1 | Non | SDA | EIT2.1 | C03c | EIT02.1 |
| 2.1-SDAEE03-2240 |  | Complete QA/QC document | 3d | 2026-02-26 A | 2026-02-28 A | 2.1-SDAEE03-1960 SS, 2.1-SDAEE03-1960 | 100% | LABOUR [6.37 h]; Construction Material | UDF_G3 | 1 | EE | 1 | C03a | TY1 | Non | SDA | EIT2.1 | C03c | EIT02.1 |
|  | 2 | **Air Fin Cooler - EM-10802-6** |  | 2025-12-23 | 2026-02-28 |  |  |  |  |  |  |  |  |  |  |  |  |  |  |
| 2.1-SDAEE03-1110 |  | Install support / bracket | 20d | 2025-12-23 A | 2026-01-14 A | 2.1-SDAEE03-1100 SS | 100% | LABOUR [4.36 h]; Construction Material | UDF_G3 | 1 | EE | 1 | C03a | TY1 | Non | SDA | EIT2.1 | C03c | EIT02.1 |
| 2.1-SDAEE03-1500 |  | Install Ladder / Tray | 30d | 2026-01-15 A | 2026-02-18 A | 2.1-SDAEE03-1110 SS, 2.1-SDAEE03-1110 | 100% | LABOUR [15 h]; Construction Material | UDF_G3 | 1 | EE | 1 | C03a | TY1 | Non | SDA | EIT2.1 | C03c | EIT02.1 |
| 2.1-SDAEE03-1510 |  | Install Conduits | 30d | 2026-01-15 A | 2026-02-18 A | 2.1-SDAEE03-1500 SS | 100% | LABOUR [5 h]; Construction Material | UDF_G3 | 1 | EE | 1 | C03a | TY1 | Non | SDA | EIT2.1 | C03c | EIT02.1 |
| 2.1-SDAEE03-1950 |  | Clear punch | 6d | 2026-02-19 A | 2026-02-25 A | 2.1-SDAEE03-1510 SS, 2.1-SDAEE03-1500 SS, 2.1-SDAEE03-1510, 2.1-SDAEE03-1500 | 100% | LABOUR [5 h]; Construction Material | UDF_G3 | 1 | EE | 1 | C03a | TY1 | Non | SDA | EIT2.1 | C03c | EIT02.1 |
| 2.1-SDAEE03-2230 |  | Complete QA/QC document | 3d | 2026-02-26 A | 2026-02-28 A | 2.1-SDAEE03-1950 SS, 2.1-SDAEE03-1950 | 100% | LABOUR [6.37 h]; Construction Material | UDF_G3 | 1 | EE | 1 | C03a | TY1 | Non | SDA | EIT2.1 | C03c | EIT02.1 |
|  | 21 | **Air Fin Cooler - EM-10802-8** |  | 2025-12-23 | 2026-02-28 |  |  |  |  |  |  |  |  |  |  |  |  |  |  |
| 2.1-SDAEE03-1130 |  | Install support / bracket | 20d | 2025-12-23 A | 2026-01-14 A | 2.1-SDAEE03-1120 SS | 100% | LABOUR [4.36 h]; Construction Material | UDF_G3 | 1 | EE | 1 | C03a | TY1 | Non | SDA | EIT2.1 | C03c | EIT02.1 |
| 2.1-SDAEE03-1540 |  | Install Ladder / Tray | 30d | 2026-01-15 A | 2026-02-18 A | 2.1-SDAEE03-1130 SS, 2.1-SDAEE03-1130 | 100% | LABOUR [15 h]; Construction Material | UDF_G3 | 1 | EE | 1 | C03a | TY1 | Non | SDA | EIT2.1 | C03c | EIT02.1 |
| 2.1-SDAEE03-1550 |  | Install Conduits | 30d | 2026-01-15 A | 2026-02-18 A | 2.1-SDAEE03-1540 SS | 100% | LABOUR [5 h]; Construction Material | UDF_G3 | 1 | EE | 1 | C03a | TY1 | Non | SDA | EIT2.1 | C03c | EIT02.1 |
| 2.1-SDAEE03-1970 |  | Clear punch | 5.6d | 2026-02-19 A | 2026-02-25 A | 2.1-SDAEE03-1550 SS, 2.1-SDAEE03-1540 SS, 2.1-SDAEE03-1550, 2.1-SDAEE03-1540 | 100% | LABOUR [5 h]; Construction Material | UDF_G3 | 1 | EE | 1 | C03a | TY1 | Non | SDA | EIT2.1 | C03c | EIT02.1 |
| 2.1-SDAEE03-2250 |  | Complete QA/QC document | 3d | 2026-02-25 A | 2026-02-28 A | 2.1-SDAEE03-1970 SS, 2.1-SDAEE03-1970 | 100% | LABOUR [6.37 h]; Construction Material | UDF_G3 | 1 | EE | 1 | C03a | TY1 | Non | SDA | EIT2.1 | C03c | EIT02.1 |

| ID | WBS | Activity | Duration | Start | Finish | Predecessors | Complete | Resources | On Schedule Indicator | %Completed | Disciplines | Main Activity | WBS | Types | EIT2 Main Activity | Areas | Phases | EIT WBS | EIT PKG |
| --- | --- | --- | --- | --- | --- | --- | --- | --- | --- | --- | --- | --- | --- | --- | --- | --- | --- | --- | --- |
|  | 14 | **Air Fin Cooler - EM-10802-10** |  | 2025-12-23 | 2026-02-28 |  |  |  |  |  |  |  |  |  |  |  |  |  |  |
| 2.1-SDAEE03-1140 |  | Install support / bracket | 20d | 2025-12-23 A | 2026-01-14 A | 2.1-SDAEE03-1130 SS | 100% | LABOUR [4.36 h]; Construction Material | UDF_G3 | 1 | EE | 1 | C03a | TY1 | Non | SDA | EIT2.1 | C03c | EIT02.1 |
| 2.1-SDAEE03-1560 |  | Install Ladder / Tray | 30d | 2026-01-15 A | 2026-02-18 A | 2.1-SDAEE03-1140 SS, 2.1-SDAEE03-1140 | 100% | LABOUR [15 h]; Construction Material | UDF_G3 | 1 | EE | 1 | C03a | TY1 | Non | SDA | EIT2.1 | C03c | EIT02.1 |
| 2.1-SDAEE03-1570 |  | Install Conduits | 30d | 2026-01-15 A | 2026-02-18 A | 2.1-SDAEE03-1560 SS | 100% | LABOUR [5 h]; Construction Material | UDF_G3 | 1 | EE | 1 | C03a | TY1 | Non | SDA | EIT2.1 | C03c | EIT02.1 |
| 2.1-SDAEE03-1980 |  | Clear punch | 5.6d | 2026-02-19 A | 2026-02-25 A | 2.1-SDAEE03-1570 SS, 2.1-SDAEE03-1560 SS, 2.1-SDAEE03-1570, 2.1-SDAEE03-1560 | 100% | LABOUR [5 h]; Construction Material | UDF_G3 | 1 | EE | 1 | C03a | TY1 | Non | SDA | EIT2.1 | C03c | EIT02.1 |
| 2.1-SDAEE03-2260 |  | Complete QA/QC document | 3d | 2026-02-25 A | 2026-02-28 A | 2.1-SDAEE03-1980 SS, 2.1-SDAEE03-1980 | 100% | LABOUR [6.37 h]; Construction Material | UDF_G3 | 1 | EE | 1 | C03a | TY1 | Non | SDA | EIT2.1 | C03c | EIT02.1 |
|  | 22 | **Air Fin Cooler - EM-10802-11** |  | 2025-12-23 | 2026-02-28 |  |  |  |  |  |  |  |  |  |  |  |  |  |  |
| 2.1-SDAEE03-1150 |  | Install support / bracket | 20d | 2025-12-23 A | 2026-01-14 A | 2.1-SDAEE03-1140 SS | 100% | LABOUR [4.36 h]; Construction Material | UDF_G3 | 1 | EE | 1 | C03a | TY1 | Non | SDA | EIT2.1 | C03c | EIT02.1 |
| 2.1-SDAEE03-1580 |  | Install Ladder / Tray | 30d | 2026-01-15 A | 2026-02-18 A | 2.1-SDAEE03-1150 SS, 2.1-SDAEE03-1150 | 100% | LABOUR [15 h]; Construction Material | UDF_G3 | 1 | EE | 1 | C03a | TY1 | Non | SDA | EIT2.1 | C03c | EIT02.1 |
| 2.1-SDAEE03-1590 |  | Install Conduits | 30d | 2026-01-15 A | 2026-02-18 A | 2.1-SDAEE03-1580 SS | 100% | LABOUR [5 h]; Construction Material | UDF_G3 | 1 | EE | 1 | C03a | TY1 | Non | SDA | EIT2.1 | C03c | EIT02.1 |
| 2.1-SDAEE03-1990 |  | Clear punch | 5.6d | 2026-02-19 A | 2026-02-25 A | 2.1-SDAEE03-1590, 2.1-SDAEE03-1580 SS, 2.1-SDAEE03-1580 | 100% | LABOUR [5 h]; Construction Material | UDF_G3 | 1 | EE | 1 | C03a | TY1 | Non | SDA | EIT2.1 | C03c | EIT02.1 |
| 2.1-SDAEE03-2270 |  | Complete QA/QC document | 3d | 2026-02-25 A | 2026-02-28 A | 2.1-SDAEE03-1990 SS, 2.1-SDAEE03-1990 | 100% | LABOUR [6.37 h]; Construction Material | UDF_G3 | 1 | EE | 1 | C03a | TY1 | Non | SDA | EIT2.1 | C03c | EIT02.1 |
|  | 15 | **Air Fin Cooler - EM-10802-12** |  | 2025-12-23 | 2026-02-28 |  |  |  |  |  |  |  |  |  |  |  |  |  |  |
| 2.1-SDAEE03-1160 |  | Install support / bracket | 20d | 2025-12-23 A | 2026-01-14 A | 2.1-SDAEE03-1150 SS | 100% | LABOUR [4.36 h]; Construction Material | UDF_G3 | 1 | EE | 1 | C03a | TY1 | Non | SDA | EIT2.1 | C03c | EIT02.1 |
| 2.1-SDAEE03-1600 |  | Install Ladder / Tray | 30d | 2026-01-15 A | 2026-02-18 A | 2.1-SDAEE03-1160 SS, 2.1-SDAEE03-1160 | 100% | LABOUR [15 h]; Construction Material | UDF_G3 | 1 | EE | 1 | C03a | TY1 | Non | SDA | EIT2.1 | C03c | EIT02.1 |
| 2.1-SDAEE03-1610 |  | Install Conduits | 30d | 2026-01-15 A | 2026-02-18 A | 2.1-SDAEE03-1600 SS | 100% | LABOUR [5 h]; Construction Material | UDF_G3 | 1 | EE | 1 | C03a | TY1 | Non | SDA | EIT2.1 | C03c | EIT02.1 |
| 2.1-SDAEE03-2000 |  | Clear punch | 5.6d | 2026-02-19 A | 2026-02-25 A | 2.1-SDAEE03-1610 SS, 2.1-SDAEE03-1600 SS, 2.1-SDAEE03-1610, 2.1-SDAEE03-1600 | 100% | LABOUR [5 h]; Construction Material | UDF_G3 | 1 | EE | 1 | C03a | TY1 | Non | SDA | EIT2.1 | C03c | EIT02.1 |
| 2.1-SDAEE03-2280 |  | Complete QA/QC document | 3d | 2026-02-25 A | 2026-02-28 A | 2.1-SDAEE03-2000 SS, 2.1-SDAEE03-2000 | 100% | LABOUR [6.37 h]; Construction Material | UDF_G3 | 1 | EE | 1 | C03a | TY1 | Non | SDA | EIT2.1 | C03c | EIT02.1 |
|  | 23 | **Air Fin Cooler - EM-10802-13** |  | 2025-12-23 | 2026-02-28 |  |  |  |  |  |  |  |  |  |  |  |  |  |  |
| 2.1-SDAEE03-1170 |  | Install support / bracket | 20d | 2025-12-23 A | 2026-01-14 A | 2.1-SDAEE03-1160 SS | 100% | LABOUR [4.36 h]; Construction Material | UDF_G3 | 1 | EE | 1 | C03a | TY1 | Non | SDA | EIT2.1 | C03c | EIT02.1 |
| 2.1-SDAEE03-1620 |  | Install Ladder / Tray | 30d | 2026-01-15 A | 2026-02-18 A | 2.1-SDAEE03-1170 SS, 2.1-SDAEE03-1170 | 100% | LABOUR [15 h]; Construction Material | UDF_G3 | 1 | EE | 1 | C03a | TY1 | Non | SDA | EIT2.1 | C03c | EIT02.1 |
| 2.1-SDAEE03-1630 |  | Install Conduits | 30d | 2026-01-15 A | 2026-02-18 A | 2.1-SDAEE03-1620 SS | 100% | LABOUR [5 h]; Construction Material | UDF_G3 | 1 | EE | 1 | C03a | TY1 | Non | SDA | EIT2.1 | C03c | EIT02.1 |
| 2.1-SDAEE03-2010 |  | Clear punch | 5.6d | 2026-02-19 A | 2026-02-25 A | 2.1-SDAEE03-1630 SS, 2.1-SDAEE03-1620 SS, 2.1-SDAEE03-1630, 2.1-SDAEE03-1620 | 100% | LABOUR [5 h]; Construction Material | UDF_G3 | 1 | EE | 1 | C03a | TY1 | Non | SDA | EIT2.1 | C03c | EIT02.1 |
| 2.1-SDAEE03-2290 |  | Complete QA/QC document | 3d | 2026-02-25 A | 2026-02-28 A | 2.1-SDAEE03-2010 SS, 2.1-SDAEE03-2010 | 100% | LABOUR [6.37 h]; Construction Material | UDF_G3 | 1 | EE | 1 | C03a | TY1 | Non | SDA | EIT2.1 | C03c | EIT02.1 |

| ID | WBS | Activity | Duration | Start | Finish | Predecessors | Complete | Resources | On Schedule Indicator | %Completed | Disciplines | Main Activity | WBS | Types | EIT2 Main Activity | Areas | Phases | EIT WBS | EIT PKG |
| --- | --- | --- | --- | --- | --- | --- | --- | --- | --- | --- | --- | --- | --- | --- | --- | --- | --- | --- | --- |
|  | 16 | **Air Fin Cooler - EM-10802-14** |  | 2025-12-23 | 2026-02-28 |  |  |  |  |  |  |  |  |  |  |  |  |  |  |
| 2.1-SDAEE03-1180 |  | Install support / bracket | 20d | 2025-12-23 A | 2026-01-14 A | 2.1-SDAEE03-1170 SS | 100% | LABOUR [4.36 h]; Construction Material | UDF_G3 | 1 | EE | 1 | C03a | TY1 | Non | SDA | EIT2.1 | C03c | EIT02.1 |
| 2.1-SDAEE03-1640 |  | Install Ladder / Tray | 30d | 2026-01-15 A | 2026-02-18 A | 2.1-SDAEE03-1180 SS, 2.1-SDAEE03-1180 | 100% | LABOUR [15 h]; Construction Material | UDF_G3 | 1 | EE | 1 | C03a | TY1 | Non | SDA | EIT2.1 | C03c | EIT02.1 |
| 2.1-SDAEE03-1650 |  | Install Conduits | 30d | 2026-01-15 A | 2026-02-18 A | 2.1-SDAEE03-1640 SS | 100% | LABOUR [5 h]; Construction Material | UDF_G3 | 1 | EE | 1 | C03a | TY1 | Non | SDA | EIT2.1 | C03c | EIT02.1 |
| 2.1-SDAEE03-2020 |  | Clear punch | 5.6d | 2026-02-19 A | 2026-02-25 A | 2.1-SDAEE03-1650 SS, 2.1-SDAEE03-1640 SS, 2.1-SDAEE03-1650, 2.1-SDAEE03-1640 | 100% | LABOUR [5 h]; Construction Material | UDF_G3 | 1 | EE | 1 | C03a | TY1 | Non | SDA | EIT2.1 | C03c | EIT02.1 |
| 2.1-SDAEE03-2300 |  | Complete QA/QC document | 3d | 2026-02-25 A | 2026-02-28 A | 2.1-SDAEE03-2020 SS, 2.1-SDAEE03-2020 | 100% | LABOUR [6.37 h]; Construction Material | UDF_G3 | 1 | EE | 1 | C03a | TY1 | Non | SDA | EIT2.1 | C03c | EIT02.1 |
|  | 24 | **Air Fin Cooler - EM-10802-9** |  | 2025-12-23 | 2026-02-28 |  |  |  |  |  |  |  |  |  |  |  |  |  |  |
| 2.1-SDAEE03-1190 |  | Install support / bracket | 20d | 2025-12-23 A | 2026-01-14 A | 2.1-SDAEE03-1180 SS | 100% | LABOUR [4.36 h]; Construction Material | UDF_G3 | 1 | EE | 1 | C03a | TY1 | Non | SDA | EIT2.1 | C03c | EIT02.1 |
| 2.1-SDAEE03-1660 |  | Install Ladder / Tray | 30d | 2026-01-15 A | 2026-02-18 A | 2.1-SDAEE03-1190 SS, 2.1-SDAEE03-1190 | 100% | LABOUR [15 h]; Construction Material | UDF_G3 | 1 | EE | 1 | C03a | TY1 | Non | SDA | EIT2.1 | C03c | EIT02.1 |
| 2.1-SDAEE03-1670 |  | Install Conduits | 30d | 2026-01-15 A | 2026-02-18 A | 2.1-SDAEE03-1660 SS | 100% | LABOUR [5 h]; Construction Material | UDF_G3 | 1 | EE | 1 | C03a | TY1 | Non | SDA | EIT2.1 | C03c | EIT02.1 |
| 2.1-SDAEE03-2030 |  | Clear punch | 5.6d | 2026-02-19 A | 2026-02-25 A | 2.1-SDAEE03-1670 SS, 2.1-SDAEE03-1660 SS, 2.1-SDAEE03-1670, 2.1-SDAEE03-1660 | 100% | LABOUR [5 h]; Construction Material | UDF_G3 | 1 | EE | 1 | C03a | TY1 | Non | SDA | EIT2.1 | C03c | EIT02.1 |
| 2.1-SDAEE03-2310 |  | Complete QA/QC document | 3d | 2026-02-25 A | 2026-02-28 A | 2.1-SDAEE03-2030 SS, 2.1-SDAEE03-2030 | 100% | LABOUR [6.36 h]; Construction Material | UDF_G3 | 1 | EE | 1 | C03a | TY1 | Non | SDA | EIT2.1 | C03c | EIT02.1 |
|  | 25 | **Air Fin Cooler - EM-10802-16** |  | 2025-12-23 | 2026-02-28 |  |  |  |  |  |  |  |  |  |  |  |  |  |  |
| 2.1-SDAEE03-1210 |  | Install support / bracket | 20d | 2025-12-23 A | 2026-01-14 A | 2.1-SDAEE03-1200 SS | 100% | LABOUR [4.36 h]; Construction Material | UDF_G3 | 1 | EE | 1 | C03a | TY1 | Non | SDA | EIT2.1 | C03c | EIT02.1 |
| 2.1-SDAEE03-1700 |  | Install Ladder / Tray | 30d | 2026-01-15 A | 2026-02-18 A | 2.1-SDAEE03-1210 SS, 2.1-SDAEE03-1210 | 100% | LABOUR [15 h]; Construction Material | UDF_G3 | 1 | EE | 1 | C03a | TY1 | Non | SDA | EIT2.1 | C03c | EIT02.1 |
| 2.1-SDAEE03-1710 |  | Install Conduits | 30d | 2026-01-15 A | 2026-02-18 A | 2.1-SDAEE03-1700 SS | 100% | LABOUR [5 h]; Construction Material | UDF_G3 | 1 | EE | 1 | C03a | TY1 | Non | SDA | EIT2.1 | C03c | EIT02.1 |
| 2.1-SDAEE03-2050 |  | Clear punch | 5.6d | 2026-02-19 A | 2026-02-25 A | 2.1-SDAEE03-1710 SS, 2.1-SDAEE03-1700 SS, 2.1-SDAEE03-1710, 2.1-SDAEE03-1700 | 100% | LABOUR [5 h]; Construction Material | UDF_G3 | 1 | EE | 1 | C03a | TY1 | Non | SDA | EIT2.1 | C03c | EIT02.1 |
| 2.1-SDAEE03-2330 |  | Complete QA/QC document | 3d | 2026-02-25 A | 2026-02-28 A | 2.1-SDAEE03-2050 SS, 2.1-SDAEE03-2050 | 100% | LABOUR [6.36 h]; Construction Material | UDF_G3 | 1 | EE | 1 | C03a | TY1 | Non | SDA | EIT2.1 | C03c | EIT02.1 |
|  | 5 | **Air Fin Cooler - EM-10802-15** |  | 2025-12-23 | 2026-02-28 |  |  |  |  |  |  |  |  |  |  |  |  |  |  |
| 2.1-SDAEE03-1200 |  | Install support / bracket | 20d | 2025-12-23 A | 2026-01-14 A | 2.1-SDAEE03-1190 SS | 100% | LABOUR [4.36 h]; Construction Material | UDF_G3 | 1 | EE | 1 | C03a | TY1 | Non | SDA | EIT2.1 | C03c | EIT02.1 |
| 2.1-SDAEE03-1680 |  | Install Ladder / Tray | 30d | 2026-01-15 A | 2026-02-18 A | 2.1-SDAEE03-1200 SS, 2.1-SDAEE03-1200 | 100% | LABOUR [15 h]; Construction Material | UDF_G3 | 1 | EE | 1 | C03a | TY1 | Non | SDA | EIT2.1 | C03c | EIT02.1 |
| 2.1-SDAEE03-1690 |  | Install Conduits | 30d | 2026-01-15 A | 2026-02-18 A | 2.1-SDAEE03-1680 SS | 100% | LABOUR [5 h]; Construction Material | UDF_G3 | 1 | EE | 1 | C03a | TY1 | Non | SDA | EIT2.1 | C03c | EIT02.1 |
| 2.1-SDAEE03-2040 |  | Clear punch | 5.6d | 2026-02-19 A | 2026-02-25 A | 2.1-SDAEE03-1690 SS, 2.1-SDAEE03-1680 SS, 2.1-SDAEE03-1690, 2.1-SDAEE03-1680 | 100% | LABOUR [5 h]; Construction Material | UDF_G3 | 1 | EE | 1 | C03a | TY1 | Non | SDA | EIT2.1 | C03c | EIT02.1 |
| 2.1-SDAEE03-2320 |  | Complete QA/QC document | 3d | 2026-02-25 A | 2026-02-28 A | 2.1-SDAEE03-2040 SS, 2.1-SDAEE03-2040 | 100% | LABOUR [6.36 h]; Construction Material | UDF_G3 | 1 | EE | 1 | C03a | TY1 | Non | SDA | EIT2.1 | C03c | EIT02.1 |

| ID | WBS | Activity | Duration | Start | Finish | Predecessors | Complete | Resources | On Schedule Indicator | %Completed | Disciplines | Main Activity | WBS | Types | EIT2 Main Activity | Areas | Phases | EIT WBS | EIT PKG |
| --- | --- | --- | --- | --- | --- | --- | --- | --- | --- | --- | --- | --- | --- | --- | --- | --- | --- | --- | --- |
|  | 26 | **Air Fin Cooler - EM-10802-17** |  | 2025-12-23 | 2026-02-28 |  |  |  |  |  |  |  |  |  |  |  |  |  |  |
| 2.1-SDAEE03-1220 |  | Install support / bracket | 20d | 2025-12-23 A | 2026-01-14 A | 2.1-SDAEE03-1210 SS | 100% | LABOUR [4.36 h]; Construction Material | UDF_G3 | 1 | EE | 1 | C03a | TY1 | Non | SDA | EIT2.1 | C03c | EIT02.1 |
| 2.1-SDAEE03-1720 |  | Install Ladder / Tray | 30d | 2026-01-15 A | 2026-02-18 A | 2.1-SDAEE03-1220 SS, 2.1-SDAEE03-1220 | 100% | LABOUR [15 h]; Construction Material | UDF_G3 | 1 | EE | 1 | C03a | TY1 | Non | SDA | EIT2.1 | C03c | EIT02.1 |
| 2.1-SDAEE03-1730 |  | Install Conduits | 30d | 2026-01-15 A | 2026-02-18 A | 2.1-SDAEE03-1720 SS | 100% | LABOUR [5 h]; Construction Material | UDF_G3 | 1 | EE | 1 | C03a | TY1 | Non | SDA | EIT2.1 | C03c | EIT02.1 |
| 2.1-SDAEE03-2060 |  | Clear punch | 5.6d | 2026-02-19 A | 2026-02-25 A | 2.1-SDAEE03-1730 SS, 2.1-SDAEE03-1720 SS, 2.1-SDAEE03-1730, 2.1-SDAEE03-1720 | 100% | LABOUR [5 h]; Construction Material | UDF_G3 | 1 | EE | 1 | C03a | TY1 | Non | SDA | EIT2.1 | C03c | EIT02.1 |
| 2.1-SDAEE03-2340 |  | Complete QA/QC document | 3d | 2026-02-25 A | 2026-02-28 A | 2.1-SDAEE03-2060 SS, 2.1-SDAEE03-2060 | 100% | LABOUR [6.36 h]; Construction Material | UDF_G3 | 1 | EE | 1 | C03a | TY1 | Non | SDA | EIT2.1 | C03c | EIT02.1 |
|  | 27 | **Air Fin Cooler - EM-10802-18** |  | 2025-12-23 | 2026-02-28 |  |  |  |  |  |  |  |  |  |  |  |  |  |  |
| 2.1-SDAEE03-1230 |  | Install support / bracket | 20d | 2025-12-23 A | 2026-01-14 A | 2.1-SDAEE03-1220 SS | 100% | LABOUR [4.36 h]; Construction Material | UDF_G3 | 1 | EE | 1 | C03a | TY1 | Non | SDA | EIT2.1 | C03c | EIT02.1 |
| 2.1-SDAEE03-1740 |  | Install Ladder / Tray | 30d | 2026-01-15 A | 2026-02-18 A | 2.1-SDAEE03-1230 SS, 2.1-SDAEE03-1230 | 100% | LABOUR [15 h]; Construction Material | UDF_G3 | 1 | EE | 1 | C03a | TY1 | Non | SDA | EIT2.1 | C03c | EIT02.1 |
| 2.1-SDAEE03-1750 |  | Install Conduits | 30d | 2026-01-15 A | 2026-02-18 A | 2.1-SDAEE03-1740 SS | 100% | LABOUR [5 h]; Construction Material | UDF_G3 | 1 | EE | 1 | C03a | TY1 | Non | SDA | EIT2.1 | C03c | EIT02.1 |
| 2.1-SDAEE03-2070 |  | Clear punch | 5.6d | 2026-02-19 A | 2026-02-25 A | 2.1-SDAEE03-1750 SS, 2.1-SDAEE03-1740 SS, 2.1-SDAEE03-1750, 2.1-SDAEE03-1740 | 100% | LABOUR [5 h]; Construction Material | UDF_G3 | 1 | EE | 1 | C03a | TY1 | Non | SDA | EIT2.1 | C03c | EIT02.1 |
| 2.1-SDAEE03-2350 |  | Complete QA/QC document | 3d | 2026-02-25 A | 2026-02-28 A | 2.1-SDAEE03-2070 SS, 2.1-SDAEE03-2070 | 100% | LABOUR [6.36 h]; Construction Material | UDF_G3 | 1 | EE | 1 | C03a | TY1 | Non | SDA | EIT2.1 | C03c | EIT02.1 |
|  | 28 | **Air Fin Cooler - EM-10802-19** |  | 2025-12-23 | 2026-02-28 |  |  |  |  |  |  |  |  |  |  |  |  |  |  |
| 2.1-SDAEE03-1240 |  | Install support / bracket | 20d | 2025-12-23 A | 2026-01-14 A | 2.1-SDAEE03-1230 SS | 100% | LABOUR [4.36 h]; Construction Material | UDF_G3 | 1 | EE | 1 | C03a | TY1 | Non | SDA | EIT2.1 | C03c | EIT02.1 |
| 2.1-SDAEE03-1760 |  | Install Ladder / Tray | 30d | 2026-01-15 A | 2026-02-18 A | 2.1-SDAEE03-1240 SS, 2.1-SDAEE03-1240 | 100% | LABOUR [15 h]; Construction Material | UDF_G3 | 1 | EE | 1 | C03a | TY1 | Non | SDA | EIT2.1 | C03c | EIT02.1 |
| 2.1-SDAEE03-1770 |  | Install Conduits | 30d | 2026-01-15 A | 2026-02-18 A | 2.1-SDAEE03-1760 SS | 100% | LABOUR [5 h]; Construction Material | UDF_G3 | 1 | EE | 1 | C03a | TY1 | Non | SDA | EIT2.1 | C03c | EIT02.1 |
| 2.1-SDAEE03-2080 |  | Clear punch | 5.6d | 2026-02-19 A | 2026-02-25 A | 2.1-SDAEE03-1770 SS, 2.1-SDAEE03-1760 SS, 2.1-SDAEE03-1770, 2.1-SDAEE03-1760 | 100% | LABOUR [5 h]; Construction Material | UDF_G3 | 1 | EE | 1 | C03a | TY1 | Non | SDA | EIT2.1 | C03c | EIT02.1 |
| 2.1-SDAEE03-2360 |  | Complete QA/QC document | 3d | 2026-02-25 A | 2026-02-28 A | 2.1-SDAEE03-2080 SS, 2.1-SDAEE03-2080 | 100% | LABOUR [6.36 h]; Construction Material | UDF_G3 | 1 | EE | 1 | C03a | TY1 | Non | SDA | EIT2.1 | C03c | EIT02.1 |
|  | 29 | **Air Fin Cooler - EM-10802-20** |  | 2025-12-23 | 2026-02-28 |  |  |  |  |  |  |  |  |  |  |  |  |  |  |
| 2.1-SDAEE03-1250 |  | Install support / bracket | 20d | 2025-12-23 A | 2026-01-14 A | 2.1-SDAEE03-1240 SS | 100% | LABOUR [4.36 h]; Construction Material | UDF_G3 | 1 | EE | 1 | C03a | TY1 | Non | SDA | EIT2.1 | C03c | EIT02.1 |
| 2.1-SDAEE03-1780 |  | Install Ladder / Tray | 30d | 2026-01-15 A | 2026-02-18 A | 2.1-SDAEE03-1250 SS, 2.1-SDAEE03-1250 | 100% | LABOUR [15 h]; Construction Material | UDF_G3 | 1 | EE | 1 | C03a | TY1 | Non | SDA | EIT2.1 | C03c | EIT02.1 |
| 2.1-SDAEE03-1790 |  | Install Conduits | 30d | 2026-01-15 A | 2026-02-18 A | 2.1-SDAEE03-1780 SS | 100% | LABOUR [5 h]; Construction Material | UDF_G3 | 1 | EE | 1 | C03a | TY1 | Non | SDA | EIT2.1 | C03c | EIT02.1 |
| 2.1-SDAEE03-2090 |  | Clear punch | 5.6d | 2026-02-19 A | 2026-02-25 A | 2.1-SDAEE03-1790 SS, 2.1-SDAEE03-1780 SS, 2.1-SDAEE03-1790, 2.1-SDAEE03-1780 | 100% | LABOUR [5 h]; Construction Material | UDF_G3 | 1 | EE | 1 | C03a | TY1 | Non | SDA | EIT2.1 | C03c | EIT02.1 |
| 2.1-SDAEE03-2370 |  | Complete QA/QC document | 3d | 2026-02-25 A | 2026-02-28 A | 2.1-SDAEE03-2090 SS, 2.1-SDAEE03-2090 | 100% | LABOUR [6.36 h]; Construction Material | UDF_G3 | 1 | EE | 1 | C03a | TY1 | Non | SDA | EIT2.1 | C03c | EIT02.1 |

| ID | WBS | Activity | Duration | Start | Finish | Predecessors | Complete | Remaining | Planned start | Planned finish | Total float | Free float | Constraint | Resources | On Schedule Indicator | %Completed | Disciplines | Main Activity | WBS | Types | EIT2 Main Activity | Areas | Phases | EIT WBS | EIT PKG |
| --- | --- | --- | --- | --- | --- | --- | --- | --- | --- | --- | --- | --- | --- | --- | --- | --- | --- | --- | --- | --- | --- | --- | --- | --- | --- |
|  | 30 | **Air Fin Cooler - EM-10853-1** |  | 2025-12-23 | 2026-02-28 |  |  |  |  |  |  |  |  |  |  |  |  |  |  |  |  |  |  |  |  |
| 2.1-SDAEE03-1260 |  | Install support / bracket | 20d | 2025-12-23 A | 2026-01-14 A | 2.1-SDAEE03-1250 SS | 100% |  |  |  |  |  |  | LABOUR [4.36 h]; Construction Material | UDF_G3 | 1 | EE | 1 | C03a | TY1 | Non | SDA | EIT2.1 | C03c | EIT02.1 |
| 2.1-SDAEE03-1800 |  | Install Ladder / Tray | 30d | 2026-01-15 A | 2026-02-18 A | 2.1-SDAEE03-1260 SS, 2.1-SDAEE03-1260 | 100% |  |  |  |  |  |  | LABOUR [15 h]; Construction Material | UDF_G3 | 1 | EE | 1 | C03a | TY1 | Non | SDA | EIT2.1 | C03c | EIT02.1 |
| 2.1-SDAEE03-1810 |  | Install Conduits | 30d | 2026-01-15 A | 2026-02-18 A | 2.1-SDAEE03-1800 SS | 100% |  |  |  |  |  |  | LABOUR [5 h]; Construction Material | UDF_G3 | 1 | EE | 1 | C03a | TY1 | Non | SDA | EIT2.1 | C03c | EIT02.1 |
| 2.1-SDAEE03-2100 |  | Clear punch | 5.6d | 2026-02-19 A | 2026-02-25 A | 2.1-SDAEE03-1810 SS, 2.1-SDAEE03-1800 SS, 2.1-SDAEE03-1810, 2.1-SDAEE03-1800 | 100% |  |  |  |  |  |  | LABOUR [5 h]; Construction Material | UDF_G3 | 1 | EE | 1 | C03a | TY1 | Non | SDA | EIT2.1 | C03c | EIT02.1 |
| 2.1-SDAEE03-2380 |  | Complete QA/QC document | 3d | 2026-02-25 A | 2026-02-28 A | 2.1-SDAEE03-2100 SS, 2.1-SDAEE03-2100 | 100% |  |  |  |  |  |  | LABOUR [6.36 h]; Construction Material | UDF_G3 | 1 | EE | 1 | C03a | TY1 | Non | SDA | EIT2.1 | C03c | EIT02.1 |
|  | 31 | **Air Fin Cooler - EM-10853-2** |  | 2025-12-23 | 2026-02-28 |  |  |  |  |  |  |  |  |  |  |  |  |  |  |  |  |  |  |  |  |
| 2.1-SDAEE03-1270 |  | Install support / bracket | 20d | 2025-12-23 A | 2026-01-14 A | 2.1-SDAEE03-1260 SS | 100% |  |  |  |  |  |  | LABOUR [4.36 h]; Construction Material | UDF_G3 | 1 | EE | 1 | C03a | TY1 | Non | SDA | EIT2.1 | C03c | EIT02.1 |
| 2.1-SDAEE03-1820 |  | Install Ladder / Tray | 30d | 2026-01-15 A | 2026-02-18 A | 2.1-SDAEE03-1270 SS, 2.1-SDAEE03-1270 | 100% |  |  |  |  |  |  | LABOUR [15 h]; Construction Material | UDF_G3 | 1 | EE | 1 | C03a | TY1 | Non | SDA | EIT2.1 | C03c | EIT02.1 |
| 2.1-SDAEE03-1830 |  | Install Conduits | 30d | 2026-01-15 A | 2026-02-18 A | 2.1-SDAEE03-1820 SS | 100% |  |  |  |  |  |  | LABOUR [5 h]; Construction Material | UDF_G3 | 1 | EE | 1 | C03a | TY1 | Non | SDA | EIT2.1 | C03c | EIT02.1 |
| 2.1-SDAEE03-2110 |  | Clear punch | 5.6d | 2026-02-19 A | 2026-02-25 A | 2.1-SDAEE03-1830 SS, 2.1-SDAEE03-1820 SS, 2.1-SDAEE03-1830, 2.1-SDAEE03-1820 | 100% |  |  |  |  |  |  | LABOUR [5 h]; Construction Material | UDF_G3 | 1 | EE | 1 | C03a | TY1 | Non | SDA | EIT2.1 | C03c | EIT02.1 |
| 2.1-SDAEE03-2390 |  | Complete QA/QC document | 3d | 2026-02-25 A | 2026-02-28 A | 2.1-SDAEE03-2110 SS, 2.1-SDAEE03-2110 | 100% |  |  |  |  |  |  | LABOUR [6.36 h]; Construction Material | UDF_G3 | 1 | EE | 1 | C03a | TY1 | Non | SDA | EIT2.1 | C03c | EIT02.1 |
|  | 2 | **Electrical Cable Installation** |  | 2026-01-19 | 2026-06-26 |  |  |  |  |  |  |  |  |  |  |  |  |  |  |  |  |  |  |  |  |
|  | 1 | **Cable Pull MV Cable** |  | 2026-05-15 | 2026-06-26 |  |  |  |  |  |  |  |  |  |  |  |  |  |  |  |  |  |  |  |  |
| 2.1-SDAEE01-1000 |  | Pull Cable | 30d | 2026-05-15 | 2026-06-18 |  |  |  |  |  | -75d | 0d | start on or after 2026-01-19 | LABOUR [1000 h]; Construction Material [300] | UDF_G3 | 1 | EE | 1 | C03a | TY1 | Non | SDA | EIT2.1 | C03c | EIT02.1 |
| 2.1-SDAEE01-1090 |  | Megger & Continuity test | 4d | 2026-06-19 | 2026-06-23 | 2.1-SDAEE01-1000 |  |  |  |  | -75d | 0d |  | LABOUR [300 h]; Construction Material [40] | UDF_G3 | 1 | EE | 1 | C03a | TY1 | Non | SDA | EIT2.1 | C03c | EIT02.1 |
| 2.1-SDAEE01-1120 |  | Complete QA/QC document | 3d | 2026-06-24 | 2026-06-26 | 2.1-SDAEE01-1090 |  |  |  |  | -75d | 9d |  | LABOUR [238.83 h]; Construction Material [30] | UDF_G3 | 0 | EE | 1 | C03a | TY1 | Non | SDA | EIT2.1 | C03c | EIT02.1 |
|  | 2 | **Cable Pull LV Cable** |  | 2026-01-19 | 2026-06-26 |  |  |  |  |  |  |  |  |  |  |  |  |  |  |  |  |  |  |  |  |
| 2.1-SDAEE01-1010 |  | Pull Cable | 30d | 2026-01-19 A | 2026-06-18 | 2.1-SDAEE01-1000 SS | 37% | 30d | 2026-01-19 | 2026-02-21 | -75d | 0d |  | LABOUR [1000 h]; Construction Material | UDF_G3 | 1 | EE | 1 | C03a | TY1 | Non | SDA | EIT2.1 | C03c | EIT02.1 |
| 2.1-SDAEE01-1100 |  | Megger & Continuity test | 4d | 2026-06-19 | 2026-06-23 | 2.1-SDAEE01-1010 |  |  |  |  | -75d | 0d |  | LABOUR [300 h]; Construction Material | UDF_G3 | 1 | EE | 1 | C03a | TY1 | Non | SDA | EIT2.1 | C03c | EIT02.1 |
| 2.1-SDAEE01-1130 |  | Complete QA/QC document | 3d | 2026-06-24 | 2026-06-26 | 2.1-SDAEE01-1100 |  |  |  |  | -75d | 9d |  | LABOUR [238.83 h]; Construction Material [30] | UDF_G3 | 0 | EE | 1 | C03a | TY1 | Non | SDA | EIT2.1 | C03c | EIT02.1 |
|  | 3 | **Cable Pull Control Cable** |  | 2026-02-23 | 2026-06-18 |  |  |  |  |  |  |  |  |  |  |  |  |  |  |  |  |  |  |  |  |
| 2.1-SDAEE01-1110 |  | Megger & Continuity test | 4d | 2026-02-23 A | 2026-05-19 | 2.1-SDAEE01-1150 SS | 7% | 4d | 2026-02-23 | 2026-02-26 | -45d | 0d |  | LABOUR [300 h]; Construction Material [40] | UDF_G3 | 1 | EE | 1 | C03a | TY1 | Non | SDA | EIT2.1 | C03c | EIT02.1 |
| 2.1-SDAEE01-1150 |  | Pull Cable | 30d | 2026-05-15 | 2026-06-18 | 2.1-SDAEE01-1010 SS |  |  |  |  | -75d | 0d |  | LABOUR [1000 h]; Construction Material [300] | UDF_G3 | 0 | EE | 1 | C03a | TY1 | Non | SDA | EIT2.1 | C03c | EIT02.1 |
| 2.1-SDAEE01-1140 |  | Complete QA/QC document | 3d | 2026-05-20 | 2026-05-22 | 2.1-SDAEE01-1110 SS, 2.1-SDAEE01-1110 |  |  |  |  | -45d | 39d |  | LABOUR [238.83 h]; Construction Material [30] | UDF_G3 | 1 | EE | 1 | C03a | TY1 | Non | SDA | EIT2.1 | C03c | EIT02.1 |

| ID | WBS | Activity | Duration | Start | Finish | Predecessors | Complete | Remaining | Planned start | Planned finish | Total float | Free float | Resources | On Schedule Indicator | %Completed | Disciplines | Main Activity | WBS | Types | EIT2 Main Activity | Areas | Phases | EIT WBS | EIT PKG |
| --- | --- | --- | --- | --- | --- | --- | --- | --- | --- | --- | --- | --- | --- | --- | --- | --- | --- | --- | --- | --- | --- | --- | --- | --- |
|  | 4 | **Serial Communication Cable** |  | 2026-05-15 | 2026-06-26 |  |  |  |  |  |  |  |  |  |  |  |  |  |  |  |  |  |  |  |
| 2.1-SDAEE01-1030 |  | Pull Cable | 30d | 2026-05-15 | 2026-06-18 | 2.1-SDAEE01-1150 SS |  |  |  |  | -75d | 0d | LABOUR [1000 h]; Construction Material [300] | UDF_G3 | 1 | EE | 1 | C03a | TY1 | Non | SDA | EIT2.1 | C03c | EIT02.1 |
| 2.1-SDAEE01-1050 |  | Megger & Continuity test | 4d | 2026-06-19 | 2026-06-23 | 2.1-SDAEE01-1030 |  |  |  |  | -75d | 0d | LABOUR [300 h]; Construction Material [40] | UDF_G3 | 1 | EE | 1 | C03a | TY1 | Non | SDA | EIT2.1 | C03c | EIT02.1 |
| 2.1-SDAEE01-1109 |  | Complete QA/QC document | 3d | 2026-06-24 | 2026-06-26 | 2.1-SDAEE01-1050 |  |  |  |  | -75d | 9d | LABOUR [238.83 h]; Construction Material [30] | UDF_G3 | 0 | EE | 1 | C03a | TY1 | Non | SDA | EIT2.1 | C03c | EIT02.1 |
|  | 5 | **Cable Pull Instrument Cable** |  | 2026-05-15 | 2026-06-15 |  |  |  |  |  |  |  |  |  |  |  |  |  |  |  |  |  |  |  |
| 2.1-SDAEE01-1040 |  | Pull Cable | 20d | 2026-05-15 | 2026-06-06 | 2.1-SDAEE01-1030 SS |  |  |  |  | -65d | 0d | LABOUR [1000 h]; Construction Material [200] | UDF_G3 | 1 | EE | 1 | C03a | TY1 | Non | SDA | EIT2.1 | C03c | EIT02.1 |
| 2.1-SDAEE01-1060 |  | Megger & Continuity test | 4d | 2026-06-08 | 2026-06-11 | 2.1-SDAEE01-1040 |  |  |  |  | -65d | 0d | LABOUR [300 h]; Construction Material [40] | UDF_G3 | 1 | EE | 1 | C03a | TY1 | Non | SDA | EIT2.1 | C03c | EIT02.1 |
| 2.1-SDAEE01-1080 |  | Complete QA/QC document | 3d | 2026-06-12 | 2026-06-15 | 2.1-SDAEE01-1060 |  |  |  |  | -65d | 19d | LABOUR [238.83 h]; Construction Material [30] | UDF_G3 | 0 | EE | 1 | C03a | TY1 | Non | SDA | EIT2.1 | C03c | EIT02.1 |
|  | 4 | **Electrical Cable Termination / Glanding** |  | 2026-02-11 | 2026-06-15 |  |  |  |  |  |  |  |  |  |  |  |  |  |  |  |  |  |  |  |
|  | 1 | **Termination MV Cable** |  | 2026-05-15 | 2026-06-15 |  |  |  |  |  |  |  |  |  |  |  |  |  |  |  |  |  |  |  |
| 2.1-SDAEE02-1000 |  | Cable Termination/Glanding | 20d | 2026-05-15 | 2026-06-06 | 2.1-SDAEE01-1040 SS |  |  |  |  | -65d | 0d | LABOUR [30 h]; Construction Material [200] | UDF_G3 | 0.0519 | EE | 1 | C03a | TY1 | Non | SDA | EIT2.1 | C03c | EIT02.1 |
| 2.1-SDAEE02-1050 |  | Clear punch | 4d | 2026-06-08 | 2026-06-11 | 2.1-SDAEE02-1000 |  |  |  |  | -65d | 0d | LABOUR [5 h]; Construction Material [40] | UDF_G3 | 0 | EE | 1 | C03a | TY1 | Non | SDA | EIT2.1 | C03c | EIT02.1 |
| 2.1-SDAEE02-1100 |  | Complete QA/QC document | 3d | 2026-06-12 | 2026-06-15 | 2.1-SDAEE02-1050 |  |  |  |  | -65d | 19d | LABOUR [9.08 h]; Construction Material [30] | UDF_G3 | 0 | EE | 1 | C03a | TY1 | Non | SDA | EIT2.1 | C03c | EIT02.1 |
|  | 2 | **Termination LV Cable** |  | 2026-02-11 | 2026-06-15 |  |  |  |  |  |  |  |  |  |  |  |  |  |  |  |  |  |  |  |
| 2.1-SDAEE02-1010 |  | Cable Termination/Glanding | 20d | 2026-02-11 A | 2026-06-06 | 2.1-SDAEE02-1000 SS | 30% | 20d | 2026-02-11 | 2026-03-05 | -65d | 0d | LABOUR [30 h]; Construction Material [200] | UDF_G3 | 0.0519 | EE | 1 | C03a | TY1 | Non | SDA | EIT2.1 | C03c | EIT02.1 |
| 2.1-SDAEE02-1060 |  | Clear punch | 4d | 2026-06-08 | 2026-06-11 | 2.1-SDAEE02-1010 |  |  |  |  | -65d | 0d | LABOUR [5 h]; Construction Material [40] | UDF_G3 | 0 | EE | 1 | C03a | TY1 | Non | SDA | EIT2.1 | C03c | EIT02.1 |
| 2.1-SDAEE02-1110 |  | Complete QA/QC document | 3d | 2026-06-12 | 2026-06-15 | 2.1-SDAEE02-1060 |  |  |  |  | -65d | 19d | LABOUR [9.08 h]; Construction Material [30] | UDF_G3 | 0 | EE | 1 | C03a | TY1 | Non | SDA | EIT2.1 | C03c | EIT02.1 |
|  | 3 | **Termination Control Cable** |  | 2026-02-11 | 2026-06-15 |  |  |  |  |  |  |  |  |  |  |  |  |  |  |  |  |  |  |  |
| 2.1-SDAEE02-1020 |  | Cable Termination/Glanding | 20d | 2026-02-11 A | 2026-06-06 | 2.1-SDAEE02-1010 SS | 58% | 20d | 2026-02-11 | 2026-03-05 | -65d | 0d | LABOUR [30 h]; Construction Material [200] | UDF_G3 | 0.0519 | EE | 1 | C03a | TY1 | Non | SDA | EIT2.1 | C03c | EIT02.1 |
| 2.1-SDAEE02-1070 |  | Clear punch | 4d | 2026-06-08 | 2026-06-11 | 2.1-SDAEE02-1020 |  |  |  |  | -65d | 0d | LABOUR [5 h]; Construction Material [40] | UDF_G3 | 0 | EE | 1 | C03a | TY1 | Non | SDA | EIT2.1 | C03c | EIT02.1 |
| 2.1-SDAEE02-1120 |  | Complete QA/QC document | 3d | 2026-06-12 | 2026-06-15 | 2.1-SDAEE02-1070 |  |  |  |  | -65d | 19d | LABOUR [9.08 h]; Construction Material [30] | UDF_G3 | 0 | EE | 1 | C03a | TY1 | Non | SDA | EIT2.1 | C03c | EIT02.1 |
|  | 4 | **Termination Serial Communication Cable** |  | 2026-05-15 | 2026-06-15 |  |  |  |  |  |  |  |  |  |  |  |  |  |  |  |  |  |  |  |
| 2.1-SDAEE02-1030 |  | Cable Termination/Glanding | 20d | 2026-05-15 | 2026-06-06 | 2.1-SDAEE02-1020 SS |  |  |  |  | -65d | 0d | LABOUR [30 h]; Construction Material [200] | UDF_G3 | 0.0519 | EE | 1 | C03a | TY1 | Non | SDA | EIT2.1 | C03c | EIT02.1 |
| 2.1-SDAEE02-1080 |  | Clear punch | 4d | 2026-06-08 | 2026-06-11 | 2.1-SDAEE02-1030 |  |  |  |  | -65d | 0d | LABOUR [5 h]; Construction Material [40] | UDF_G3 | 0 | EE | 1 | C03a | TY1 | Non | SDA | EIT2.1 | C03c | EIT02.1 |
| 2.1-SDAEE02-1130 |  | Complete QA/QC document | 3d | 2026-06-12 | 2026-06-15 | 2.1-SDAEE02-1080 |  |  |  |  | -65d | 19d | LABOUR [9.08 h]; Construction Material [30] | UDF_G3 | 0 | EE | 1 | C03a | TY1 | Non | SDA | EIT2.1 | C03c | EIT02.1 |

| ID | WBS | Activity | Duration | Start | Finish | Predecessors | Complete | Remaining | Planned start | Planned finish | Total float | Free float | Constraint | Resources | On Schedule Indicator | %Completed | Disciplines | Main Activity | WBS | Types | EIT2 Main Activity | Areas | Phases | EIT WBS | EIT PKG |
| --- | --- | --- | --- | --- | --- | --- | --- | --- | --- | --- | --- | --- | --- | --- | --- | --- | --- | --- | --- | --- | --- | --- | --- | --- | --- |
|  | 5 | **Termination Instrument Cable** |  | 2026-05-15 | 2026-06-15 |  |  |  |  |  |  |  |  |  |  |  |  |  |  |  |  |  |  |  |  |
| 2.1-SDAEE02-1040 |  | Cable Termination/Glanding | 20d | 2026-05-15 | 2026-06-06 | 2.1-SDAEE02-1030 SS |  |  |  |  | -65d | 0d |  | LABOUR [30 h]; Construction Material [200] | UDF_G3 | 0.0519 | EE | 1 | C03a | TY1 | Non | SDA | EIT2.1 | C03c | EIT02.1 |
| 2.1-SDAEE02-1090 |  | Clear punch | 4d | 2026-06-08 | 2026-06-11 | 2.1-SDAEE02-1040 |  |  |  |  | -65d | 0d |  | LABOUR [5 h]; Construction Material [40] | UDF_G3 | 0 | EE | 1 | C03a | TY1 | Non | SDA | EIT2.1 | C03c | EIT02.1 |
| 2.1-SDAEE02-1140 |  | Complete QA/QC document | 3d | 2026-06-12 | 2026-06-15 | 2.1-SDAEE02-1090 |  |  |  |  | -65d | 19d |  | LABOUR [9.08 h]; Construction Material [30] | UDF_G3 | 0 | EE | 1 | C03a | TY1 | Non | SDA | EIT2.1 | C03c | EIT02.1 |
|  | 5 | **Lighting & Small Power Equipment Installation** |  | 2026-01-26 | 2026-05-23 |  |  |  |  |  |  |  |  |  |  |  |  |  |  |  |  |  |  |  |  |
| 2.1-SDAEE05-1000 |  | Install support / bracket / Pole | 10d | 2026-01-26 A | 2026-05-14 A |  | 100% |  | 2026-01-26 | 2026-02-05 |  |  | start on or after 2026-01-26 | LABOUR [2 h]; Construction Material [100] | UDF_G3 | 0.1364 | EE | 1 | C03a | TY1 | Non | SDA | EIT2.1 | C03c | EIT02.1 |
| 2.1-SDAEE05-1010 |  | Install Distribution panel, lighting fitting ,convenience outlet | 20d | 2026-02-06 A | 2026-05-14 A | 2.1-SDAEE05-1000 SS | 100% |  | 2026-02-06 | 2026-02-28 |  |  |  | LABOUR [10 h]; Construction Material [200] | UDF_G3 | 0.1363 | EE | 1 | C03a | TY1 | Non | SDA | EIT2.1 | C03c | EIT02.1 |
| 2.1-SDAEE05-1020 |  | Clear punch | 5d | 2026-05-15 | 2026-05-20 | 2.1-SDAEE05-1010 |  |  |  |  | -46d | 0d |  | LABOUR [5 h]; Construction Material [50] | UDF_G3 | 0 | EE | 1 | C03a | TY1 | Non | SDA | EIT2.1 | C03c | EIT02.1 |
| 2.1-SDAEE05-1030 |  | Complete QA/QC document | 3d | 2026-05-21 | 2026-05-23 | 2.1-SDAEE05-1020 |  |  |  |  | -46d | 38d |  | LABOUR [3.41 h]; Construction Material [30] | UDF_G3 | 0 | EE | 1 | C03a | TY1 | Non | SDA | EIT2.1 | C03c | EIT02.1 |
|  | 9 | **Electrical Earthing / Lightning Installation** |  | 2026-01-26 | 2026-06-18 |  |  |  |  |  |  |  |  |  |  |  |  |  |  |  |  |  |  |  |  |
| 2.1-SDAEE06-1000 |  | Install Equipment Earthing / Inspection PIT / Install earthing pull and Connecttion | 30d | 2026-01-26 A | 2026-06-18 | 2.1-SDAEE05-1000 SS | 42% | 30d | 2026-01-26 | 2026-02-28 | -84d | 0d | start on or after 2026-01-26 | LABOUR [1500 h]; Construction Material | UDF_G3 | 0.5313 | EE | 1 | C03a | TY1 | Non | SDA | EIT2.1 | C03c | EIT02.1 |
| 2.1-SDAEE06-1010 |  | Punch listing | 5d | 2026-03-02 A | 2026-05-20 | 2.1-SDAEE06-1000 SS | 42% | 5d | 2026-03-02 | 2026-03-06 | -48d | 0d |  | LABOUR [300 h]; Construction Material | UDF_G3 | 0.5313 | EE | 1 | C03a | TY1 | Non | SDA | EIT2.1 | C03c | EIT02.1 |
| 2.1-SDAEE06-1020 |  | Complete QA/QC document | 5d | 2026-05-21 | 2026-05-26 | 2.1-SDAEE06-1010 |  |  |  |  | -48d | 36d |  | LABOUR [491.49 h]; Construction Material [50] | UDF_G3 | 0 | EE | 1 | C03a | TY1 | Non | SDA | EIT2.1 | C03c | EIT02.1 |
|  | 7 | **Instrument** |  | 2026-01-26 | 2026-07-07 |  |  |  |  |  |  |  |  |  |  |  |  |  |  |  |  |  |  |  |  |
|  | 3 | **Instrument Cable Tray/Ladder Installation** |  | 2026-01-26 | 2026-06-06 |  |  |  |  |  |  |  |  |  |  |  |  |  |  |  |  |  |  |  |  |
| 2.1-SDAIN03-1000 |  | Install support / bracket | 10d | 2026-01-26 A | 2026-05-26 | 2.1-SDAEE06-1000 SS | 81% | 10d | 2026-01-26 | 2026-02-05 | -84d | 0d |  | LABOUR [500 h]; Construction Material [100] | UDF_G3 | 0 | EE | 1 | C03a | TY1 | Non | SDA | EIT2.1 | C03c | EIT02.1 |
| 2.1-SDAIN03-1010 |  | Install Ladder / Tray | 20d | 2026-02-06 A | 2026-06-06 | 2.1-SDAIN03-1020 SS | 81% | 20d | 2026-02-06 | 2026-02-28 | -84d | 0d |  | LABOUR [200 h]; Construction Material [200] | UDF_G3 | 0 | EE | 1 | C03a | TY1 | Non | SDA | EIT2.1 | C03c | EIT02.1 |
| 2.1-SDAIN03-1020 |  | Steel Conduits for Cable tray | 20d | 2026-02-06 A | 2026-06-06 | 2.1-SDAIN03-1000 SS | 81% | 20d | 2026-02-06 | 2026-02-28 | -84d | 0d |  | LABOUR [100 h]; Construction Material [200] | UDF_G3 | 0 | EE | 1 | C03a | TY1 | Non | SDA | EIT2.1 | C03c | EIT02.1 |
| 2.1-SDAIN03-1030 |  | Clear punch | 5.6d | 2026-03-02 A | 2026-05-21 | 2.1-SDAIN03-1010 SS, 2.1-SDAIN03-1020 SS | 17% | 5.6d | 2026-03-02 | 2026-03-07 | -41d | 0d |  | LABOUR [20 h]; Construction Material [56] | UDF_G3 | 0 | EE | 1 | C03a | TY1 | Non | SDA | EIT2.1 | C03c | EIT02.1 |
| 2.1-SDAIN03-1040 |  | Complete QA/QC document | 3d | 2026-03-07 A | 2026-05-18 | 2.1-SDAIN03-1030 SS | 17% | 3d | 2026-03-07 | 2026-03-11 | -41d | 43d |  | LABOUR [34.34 h]; Construction Material [30] | UDF_G3 | 0 | EE | 1 | C03a | TY1 | Non | SDA | EIT2.1 | C03c | EIT02.1 |
|  | 1 | **Instrument Cable Installation** |  | 2026-02-06 | 2026-06-26 |  |  |  |  |  |  |  |  |  |  |  |  |  |  |  |  |  |  |  |  |
|  | 8 | **Cable Pull Primary Cable** |  | 2026-02-06 | 2026-06-26 |  |  |  |  |  |  |  |  |  |  |  |  |  |  |  |  |  |  |  |  |
| 2.1-SDAIN01-1000 |  | Pull Cable | 30d | 2026-02-06 A | 2026-06-18 | 2.1-SDAIN03-1010 SS | 43% | 30d | 2026-02-06 | 2026-03-12 | -84d | 0d |  | LABOUR [1200 h]; Construction Material [300] | UDF_G3 | 0.824 | EE | 1 | C03a | TY1 | Non | SDA | EIT2.1 | C03c | EIT02.1 |
| 2.1-SDAIN01-1040 |  | Megger & Continuity test | 4d | 2026-06-19 | 2026-06-23 | 2.1-SDAIN01-1000 |  |  |  |  | -75d | 0d |  | LABOUR [200 h]; Construction Material [40] | UDF_G3 | 0 | EE | 1 | C03a | TY1 | Non | SDA | EIT2.1 | C03c | EIT02.1 |
| 2.1-SDAIN01-1080 |  | Complete QA/QC document | 3d | 2026-06-24 | 2026-06-26 | 2.1-SDAIN01-1040 |  |  |  |  | -75d | 9d |  | LABOUR [264.85 h]; Construction Material [30] | UDF_G3 | 0 | EE | 1 | C03a | TY1 | Non | SDA | EIT2.1 | C03c | EIT02.1 |

| ID | WBS | Activity | Duration | Start | Finish | Predecessors | Complete | Remaining | Planned start | Planned finish | Total float | Free float | Resources | On Schedule Indicator | %Completed | Disciplines | Main Activity | WBS | Types | EIT2 Main Activity | Areas | Phases | EIT WBS | EIT PKG |
| --- | --- | --- | --- | --- | --- | --- | --- | --- | --- | --- | --- | --- | --- | --- | --- | --- | --- | --- | --- | --- | --- | --- | --- | --- |
|  | 5 | **Cable Pull Power Cable** |  | 2026-05-15 | 2026-06-26 |  |  |  |  |  |  |  |  |  |  |  |  |  |  |  |  |  |  |  |
| 2.1-SDAIN01-1010 |  | Pull Cable | 30d | 2026-05-15 | 2026-06-18 | 2.1-SDAIN01-1000 SS |  |  |  |  | -84d | 0d | LABOUR [1200 h]; Construction Material [300] | UDF_G3 | 0.824 | EE | 1 | C03a | TY1 | Non | SDA | EIT2.1 | C03c | EIT02.1 |
| 2.1-SDAIN01-1050 |  | Megger & Continuity test | 4d | 2026-06-19 | 2026-06-23 | 2.1-SDAIN01-1010 |  |  |  |  | -75d | 0d | LABOUR [200 h]; Construction Material [40] | UDF_G3 | 0 | EE | 1 | C03a | TY1 | Non | SDA | EIT2.1 | C03c | EIT02.1 |
| 2.1-SDAIN01-1090 |  | Complete QA/QC document | 3d | 2026-06-24 | 2026-06-26 | 2.1-SDAIN01-1050 |  |  |  |  | -75d | 9d | LABOUR [264.85 h]; Construction Material [30] | UDF_G3 | 0 | EE | 1 | C03a | TY1 | Non | SDA | EIT2.1 | C03c | EIT02.1 |
|  | 9 | **Cable Pull Secondary Cable** |  | 2026-02-06 | 2026-06-26 |  |  |  |  |  |  |  |  |  |  |  |  |  |  |  |  |  |  |  |
| 2.1-SDAIN01-1020 |  | Pull Cable | 30d | 2026-02-06 A | 2026-06-18 | 2.1-SDAIN01-1010 SS | 61% | 30d | 2026-02-06 | 2026-03-12 | -84d | 0d | LABOUR [1200 h]; Construction Material [300] | UDF_G3 | 0.824 | EE | 1 | C03a | TY1 | Non | SDA | EIT2.1 | C03c | EIT02.1 |
| 2.1-SDAIN01-1060 |  | Megger & Continuity test | 4d | 2026-06-19 | 2026-06-23 | 2.1-SDAIN01-1020 |  |  |  |  | -75d | 0d | LABOUR [200 h]; Construction Material [40] | UDF_G3 | 0 | EE | 1 | C03a | TY1 | Non | SDA | EIT2.1 | C03c | EIT02.1 |
| 2.1-SDAIN01-1100 |  | Complete QA/QC document | 3d | 2026-06-24 | 2026-06-26 | 2.1-SDAIN01-1060 |  |  |  |  | -75d | 9d | LABOUR [264.85 h]; Construction Material [30] | UDF_G3 | 0 | EE | 1 | C03a | TY1 | Non | SDA | EIT2.1 | C03c | EIT02.1 |
|  | 2 | **Cable Pull Thermocouple Cable** |  | 2026-05-15 | 2026-06-26 |  |  |  |  |  |  |  |  |  |  |  |  |  |  |  |  |  |  |  |
| 2.1-SDAIN01-1030 |  | Pull Cable | 30d | 2026-05-15 | 2026-06-18 | 2.1-SDAIN01-1020 SS |  |  |  |  | -84d | 0d | LABOUR [1200 h]; Construction Material [300] | UDF_G3 | 0.824 | EE | 1 | C03a | TY1 | Non | SDA | EIT2.1 | C03c | EIT02.1 |
| 2.1-SDAIN01-1070 |  | Megger & Continuity test | 4d | 2026-06-19 | 2026-06-23 | 2.1-SDAIN01-1030 |  |  |  |  | -75d | 0d | LABOUR [200 h]; Construction Material [40] | UDF_G3 | 0 | EE | 1 | C03a | TY1 | Non | SDA | EIT2.1 | C03c | EIT02.1 |
| 2.1-SDAIN01-1110 |  | Complete QA/QC document | 3d | 2026-06-24 | 2026-06-26 | 2.1-SDAIN01-1070 |  |  |  |  | -75d | 9d | LABOUR [264.85 h]; Construction Material [30] | UDF_G3 | 0 | EE | 1 | C03a | TY1 | Non | SDA | EIT2.1 | C03c | EIT02.1 |
|  | 2 | **Instrument Cable Termination / Glanding** |  | 2026-03-13 | 2026-07-07 |  |  |  |  |  |  |  |  |  |  |  |  |  |  |  |  |  |  |  |
|  | 8 | **Cable Termination Primary Cable** |  | 2026-03-13 | 2026-06-02 |  |  |  |  |  |  |  |  |  |  |  |  |  |  |  |  |  |  |  |
| 2.1-SDAIN02-1000 |  | Pull Cable | 10d | 2026-03-13 A | 2026-05-26 | 2.1-SDAIN01-1000 SS | 28% | 10d | 2026-03-13 | 2026-03-24 | -54d | 0d | LABOUR [100 h]; Construction Material [100] | UDF_G3 | 0.29 | EE | 1 | C03a | TY1 | Non | SDA | EIT2.1 | C03c | EIT02.1 |
| 2.1-SDAIN02-1050 |  | Megger & Continuity test | 4d | 2026-05-27 | 2026-05-30 | 2.1-SDAIN02-1000 |  |  |  |  | -54d | 0d | LABOUR [20 h]; Construction Material [40] | UDF_G3 | 0 | EE | 1 | C03a | TY1 | Non | SDA | EIT2.1 | C03c | EIT02.1 |
| 2.1-SDAIN02-1100 |  | Complete QA/QC document | 2d | 2026-06-01 | 2026-06-02 | 2.1-SDAIN02-1050 |  |  |  |  | -54d | 30d | LABOUR [24.69 h]; Construction Material [20] | UDF_G3 | 0 | EE | 1 | C03a | TY1 | Non | SDA | EIT2.1 | C03c | EIT02.1 |
|  | 5 | **Cable Termination Power Cable** |  | 2026-06-19 | 2026-07-07 |  |  |  |  |  |  |  |  |  |  |  |  |  |  |  |  |  |  |  |
| 2.1-SDAIN02-1010 |  | Pull Cable | 10d | 2026-06-19 | 2026-06-30 | 2.1-SDAIN01-1010 SS, 2.1-SDAIN01-1010 |  |  |  |  | -84d | 0d | LABOUR [100 h]; Construction Material [100] | UDF_G3 | 0.29 | EE | 1 | C03a | TY1 | Non | SDA | EIT2.1 | C03c | EIT02.1 |
| 2.1-SDAIN02-1060 |  | Megger & Continuity test | 4d | 2026-07-01 | 2026-07-04 | 2.1-SDAIN02-1010 |  |  |  |  | -84d | 0d | LABOUR [20 h]; Construction Material [40] | UDF_G3 | 0 | EE | 1 | C03a | TY1 | Non | SDA | EIT2.1 | C03c | EIT02.1 |
| 2.1-SDAIN02-1110 |  | Complete QA/QC document | 2d | 2026-07-06 | 2026-07-07 | 2.1-SDAIN02-1060 |  |  |  |  | -84d | 0d | LABOUR [24.69 h]; Construction Material [20] | UDF_G3 | 0 | EE | 1 | C03a | TY1 | Non | SDA | EIT2.1 | C03c | EIT02.1 |
|  | 9 | **Cable Termination Secondary Cable** |  | 2026-03-13 | 2026-06-02 |  |  |  |  |  |  |  |  |  |  |  |  |  |  |  |  |  |  |  |
| 2.1-SDAIN02-1020 |  | Pull Cable | 10d | 2026-03-13 A | 2026-05-26 | 2.1-SDAIN01-1020 SS | 33% | 10d | 2026-03-13 | 2026-03-24 | -54d | 0d | LABOUR [100 h]; Construction Material [100] | UDF_G3 | 0.29 | EE | 1 | C03a | TY1 | Non | SDA | EIT2.1 | C03c | EIT02.1 |
| 2.1-SDAIN02-1070 |  | Megger & Continuity test | 4d | 2026-05-27 | 2026-05-30 | 2.1-SDAIN02-1020 |  |  |  |  | -54d | 0d | LABOUR [20 h]; Construction Material [40] | UDF_G3 | 0 | EE | 1 | C03a | TY1 | Non | SDA | EIT2.1 | C03c | EIT02.1 |
| 2.1-SDAIN02-1120 |  | Complete QA/QC document | 2d | 2026-06-01 | 2026-06-02 | 2.1-SDAIN02-1070 |  |  |  |  | -54d | 30d | LABOUR [24.69 h]; Construction Material [20] | UDF_G3 | 0 | EE | 1 | C03a | TY1 | Non | SDA | EIT2.1 | C03c | EIT02.1 |

| ID | WBS | Activity | Duration | Start | Finish | Predecessors | Complete | Remaining | Planned start | Planned finish | Total float | Free float | Constraint | Resources | On Schedule Indicator | %Completed | Disciplines | Main Activity | WBS | Types | EIT2 Main Activity | Areas | Phases | EIT WBS | EIT PKG |
| --- | --- | --- | --- | --- | --- | --- | --- | --- | --- | --- | --- | --- | --- | --- | --- | --- | --- | --- | --- | --- | --- | --- | --- | --- | --- |
|  | 2 | **Cable Termination Thermocouple Cable** |  | 2026-06-19 | 2026-07-07 |  |  |  |  |  |  |  |  |  |  |  |  |  |  |  |  |  |  |  |  |
| 2.1-SDAIN02-1030 |  | Pull Cable | 10d | 2026-06-19 | 2026-06-30 | 2.1-SDAIN01-1030 SS, 2.1-SDAIN01-1030 |  |  |  |  | -84d | 0d |  | LABOUR [100 h]; Construction Material [100] | UDF_G3 | 0.29 | EE | 1 | C03a | TY1 | Non | SDA | EIT2.1 | C03c | EIT02.1 |
| 2.1-SDAIN02-1080 |  | Megger & Continuity test | 4d | 2026-07-01 | 2026-07-04 | 2.1-SDAIN02-1030 |  |  |  |  | -84d | 0d |  | LABOUR [20 h]; Construction Material [40] | UDF_G3 | 0 | EE | 1 | C03a | TY1 | Non | SDA | EIT2.1 | C03c | EIT02.1 |
| 2.1-SDAIN02-1130 |  | Complete QA/QC document | 2d | 2026-07-06 | 2026-07-07 | 2.1-SDAIN02-1080 |  |  |  |  | -84d | 0d |  | LABOUR [24.69 h]; Construction Material [20] | UDF_G3 | 0 | EE | 1 | C03a | TY1 | Non | SDA | EIT2.1 | C03c | EIT02.1 |
|  | 6 | **Instrument Equipment Installation** |  | 2026-05-15 | 2026-06-26 |  |  |  |  |  |  |  |  |  |  |  |  |  |  |  |  |  |  |  |  |
|  | 1 | **Analyser Instruments** |  | 2026-05-15 | 2026-06-26 |  |  |  |  |  |  |  |  |  |  |  |  |  |  |  |  |  |  |  |  |
| 2.1-SDAIN04-1000 |  | Install support / bracket | 10d | 2026-05-15 | 2026-05-26 |  |  |  |  |  | -75d | 0d | start on or after 2026-01-30 | LABOUR [169.21 h]; Construction Material [100] | UDF_G3 | 0 | EE | 1 | C03a | TY1 | Non | SDA | EIT2.1 | C03c | EIT02.1 |
| 2.1-SDAIN04-1010 |  | Install Equipment | 20d | 2026-05-27 | 2026-06-18 | 2.1-SDAIN04-1000 |  |  |  |  | -75d | 0d |  | LABOUR [25 h]; Construction Material [200] | UDF_G3 | 0 | EE | 1 | C03a | TY1 | Non | SDA | EIT2.1 | C03c | EIT02.1 |
| 2.1-SDAIN04-1020 |  | Clear punch | 4d | 2026-06-19 | 2026-06-23 | 2.1-SDAIN04-1010 |  |  |  |  | -75d | 0d |  | LABOUR [5 h]; Construction Material [40] | UDF_G3 | 0 | EE | 1 | C03a | TY1 | Non | SDA | EIT2.1 | C03c | EIT02.1 |
| 2.1-SDAIN04-1030 |  | Complete QA/QC document | 3d | 2026-06-24 | 2026-06-26 | 2.1-SDAIN04-1020 |  |  |  |  | -75d | 9d |  | LABOUR [10.44 h]; Construction Material [30] | UDF_G3 | 0 | EE | 1 | C03a | TY1 | Non | SDA | EIT2.1 | C03c | EIT02.1 |
|  | 4 | **Instrument Calibration** |  | 2026-01-30 | 2026-06-18 |  |  |  |  |  |  |  |  |  |  |  |  |  |  |  |  |  |  |  |  |
| 2.1-SDAIN05-1000 |  | Calibration Equipment | 30d | 2026-01-30 A | 2026-06-18 | 2.1-SDAIN04-1000 SS | 25% | 30d | 2026-01-30 | 2026-03-05 | -41d | 0d |  | LABOUR [300 h]; Construction Material [300] | UDF_G3 | 0 | EE | 1 | C03a | TY1 | Non | SDA | EIT2.1 | C03c | EIT02.1 |
| 2.1-SDAIN05-1010 |  | Complete QA/QC document | 3d | 2026-03-06 A | 2026-05-18 | 2.1-SDAIN05-1000 SS | 25% | 3d | 2026-03-06 | 2026-03-09 | -41d | 43d |  | LABOUR [161.02 h]; Construction Material [30] | UDF_G3 | 0 | EE | 1 | C03a | TY1 | Non | SDA | EIT2.1 | C03c | EIT02.1 |
|  | 4 | **Telecommunication** |  | 2026-03-13 | 2026-07-02 |  |  |  |  |  |  |  |  |  |  |  |  |  |  |  |  |  |  |  |  |
|  | 5 | **Telecom** |  | 2026-03-27 | 2026-07-02 |  |  |  |  |  |  |  |  |  |  |  |  |  |  |  |  |  |  |  |  |
|  | 1 | **Telecommunication Cable Installation** |  | 2026-06-19 | 2026-07-02 |  |  |  |  |  |  |  |  |  |  |  |  |  |  |  |  |  |  |  |  |
| 2.1-SDATE01-1000 |  | Pull Cable | 5d | 2026-06-19 | 2026-06-24 | 2.1-SDAIN01-1000 |  |  |  |  | -80d | 0d |  | LABOUR [600 h]; Construction Material [50] | UDF_G3 | 0 | EE | 1 | C03a | TY1 | Non | SDA | EIT2.1 | C03c | EIT02.1 |
| 2.1-SDATE01-1010 |  | Megger & Continuity test | 4d | 2026-06-25 | 2026-06-29 | 2.1-SDATE01-1000 |  |  |  |  | -80d | 0d |  | LABOUR [50 h]; Construction Material [40] | UDF_G3 | 0 | EE | 1 | C03a | TY1 | Non | SDA | EIT2.1 | C03c | EIT02.1 |
| 2.1-SDATE01-1020 |  | Complete QA/QC document | 3d | 2026-06-30 | 2026-07-02 | 2.1-SDATE01-1010 |  |  |  |  | -80d | 0d |  | LABOUR [59.12 h]; Construction Material [30] | UDF_G3 | 0 | EE | 1 | C03a | TY1 | Non | SDA | EIT2.1 | C03c | EIT02.1 |
|  | 4 | **Telecommunication Termination / Glanding** |  | 2026-03-27 | 2026-03-31 |  |  |  |  |  |  |  |  |  |  |  |  |  |  |  |  |  |  |  |  |
| 2.1-SDATE02-1000 |  | Cable Termination/Glanding (no CMS) | 2d | 2026-03-27 A | 2026-03-28 A | 2.1-SDATE01-1020 | 100% |  |  |  |  |  |  | LABOUR; Construction Material [20] | UDF_G3 | 0 | EE | 1 | C03a | TY1 | Non | SDA | EIT2.1 | C03c | EIT02.1 |
| 2.1-SDATE02-1010 |  | Clear punch (no CMS) | 1d | 2026-03-30 A | 2026-03-30 A | 2.1-SDATE02-1000 | 100% |  |  |  |  |  |  | LABOUR; Construction Material [10] | UDF_G3 | 0 | EE | 1 | C03a | TY1 | Non | SDA | EIT2.1 | C03c | EIT02.1 |
| 2.1-SDATE02-1020 |  | Complete QA/QC document (no CMS) | 1d | 2026-03-31 A | 2026-03-31 A | 2.1-SDATE02-1010 | 100% |  |  |  |  |  |  | LABOUR; Construction Material [10] | UDF_G3 | 0 | EE | 1 | C03a | TY1 | Non | SDA | EIT2.1 | C03c | EIT02.1 |
|  | 6 | **CCTV System** |  | 2026-03-13 | 2026-03-31 |  |  |  |  |  |  |  |  |  |  |  |  |  |  |  |  |  |  |  |  |
|  | 1 | **CCTV Cable Installation** |  | 2026-03-13 | 2026-03-31 |  |  |  |  |  |  |  |  |  |  |  |  |  |  |  |  |  |  |  |  |
| 2.1-SDATE01.1-1000 |  | Pull Cable (no CMS) | 9d | 2026-03-13 A | 2026-03-23 A | 2.1-SDATE01-1000 SS | 100% |  |  |  |  |  |  | LABOUR; Construction Material [90] | UDF_G3 | 0 | EE | 1 | C03a | TY1 | Non | SDA | EIT2.1 | C03c | EIT02.1 |
| 2.1-SDATE01.1-1010 |  | Megger & Continuity test (no CMS) | 4d | 2026-03-24 A | 2026-03-27 A | 2.1-SDATE01.1-1000 | 100% |  |  |  |  |  |  | LABOUR; Construction Material [40] | UDF_G3 | 0 | EE | 1 | C03a | TY1 | Non | SDA | EIT2.1 | C03c | EIT02.1 |
| 2.1-SDATE01.1-1020 |  | Complete QA/QC document (no CMS) | 3d | 2026-03-28 A | 2026-03-31 A | 2.1-SDATE01.1-1010 | 100% |  |  |  |  |  |  | LABOUR; Construction Material [30] | UDF_G3 | 0 | EE | 1 | C03a | TY1 | Non | SDA | EIT2.1 | C03c | EIT02.1 |

| ID | WBS | Activity | Duration | Start | Finish | Predecessors | Complete | Remaining | Planned start | Planned finish | Total float | Free float | Constraint | Resources | On Schedule Indicator | %Completed | Disciplines | Main Activity | WBS | Types | EIT2 Main Activity | Areas | Phases | EIT WBS | EIT PKG |
| --- | --- | --- | --- | --- | --- | --- | --- | --- | --- | --- | --- | --- | --- | --- | --- | --- | --- | --- | --- | --- | --- | --- | --- | --- | --- |
|  | 11 | **WBS : C05** |  | 2025-12-15 | 2026-06-30 |  |  |  |  |  |  |  |  |  |  |  |  |  |  |  |  |  |  |  |  |
|  | 5 | **Substation SS-098 (FAR-13)** |  | 2025-12-15 | 2026-06-30 |  |  |  |  |  |  |  |  |  |  |  |  |  |  |  |  |  |  |  |  |
|  | 1 | **Electrical** |  | 2026-01-22 | 2026-06-25 |  |  |  |  |  |  |  |  |  |  |  |  |  |  |  |  |  |  |  |  |
| 2.1-SS098P-1000 |  | Remainning Punchlist closure in Substation SS-098 (FAR-13) | 36d | 2026-05-15 | 2026-06-25 |  |  |  |  |  | -90d | 4d | start on or after 2026-01-19 | LABOUR; Construction Material [360] | UDF_G3 | 0 | EE | 6 | WBSc053 | TY3 | Non | SS098 | EIT2.1 | C05 | EIT02.1 |
|  | 1 | **Electrical Equipment Installation** |  | 2026-01-22 | 2026-06-03 |  |  |  |  |  |  |  |  |  |  |  |  |  |  |  |  |  |  |  |  |
|  | 2 | **UPS and Charger System** |  | 2026-01-22 | 2026-06-03 |  |  |  |  |  |  |  |  |  |  |  |  |  |  |  |  |  |  |  |  |
|  | 5 | **110VAC UPS for vital Instrument - Battery Unit BATT-CV98H1 for CV98H1** |  | 2026-01-22 | 2026-06-03 |  |  |  |  |  |  |  |  |  |  |  |  |  |  |  |  |  |  |  |  |
| 2.1-SS098EE04-1000 |  | Install Equipment | 15d | 2026-01-22 A | 2026-02-07 A |  | 100% |  |  |  |  |  | start on or after 2026-01-22 | LABOUR [15 h]; Construction Material | UDF_G3 | 1 | EE | 1 | C03a | TY1 | Non | SS098 | EIT2.1 | C05 | EIT02.1 |
| 2.1-SS098EE04-1040 |  | Inspection and Testing, Per-Commissionning | 10d | 2026-05-08 A | 2026-05-26 | 2.1-SS098EE04-1000 | 67% | 10d | 2026-05-08 | 2026-05-19 | -71d | 0d |  | LABOUR [5 h]; Construction Material [100] | UDF_G3 | 0 | EE | 1 | C03a | TY1 | Non | SS098 | EIT2.1 | C05 | EIT02.1 |
| 2.1-SS098EE04-1090 |  | Clear punch | 4d | 2026-05-27 | 2026-05-30 | 2.1-SS098EE04-1040 |  |  |  |  | -71d | 0d |  | LABOUR [5 h]; Construction Material [40] | UDF_G3 | 0 | EE | 1 | C03a | TY1 | Non | SS098 | EIT2.1 | C05 | EIT02.1 |
| 2.1-SS098EE04-1140 |  | Complete QA/QC document | 3d | 2026-06-01 | 2026-06-03 | 2.1-SS098EE04-1090 |  |  |  |  | -71d | 23d |  | LABOUR [3.61 h]; Construction Material [30] | UDF_G3 | 0 | EE | 1 | C03a | TY1 | Non | SS098 | EIT2.1 | C05 | EIT02.1 |
|  | 6 | **110VAC UPS for vital Instrument - Battery Unit BATT-CV98H2 for CV98H2** |  | 2026-01-22 | 2026-06-03 |  |  |  |  |  |  |  |  |  |  |  |  |  |  |  |  |  |  |  |  |
| 2.1-SS098EE04-1010 |  | Install Equipment | 15d | 2026-01-22 A | 2026-02-07 A | 2.1-SS098EE04-1000 SS | 100% |  |  |  |  |  |  | LABOUR [15 h]; Construction Material | UDF_G3 | 1 | EE | 1 | C03a | TY1 | Non | SS098 | EIT2.1 | C05 | EIT02.1 |
| 2.1-SS098EE04-1050 |  | Inspection and Testing, Per-Commissionning | 10d | 2026-05-08 A | 2026-05-26 | 2.1-SS098EE04-1010 | 67% | 10d | 2026-05-08 | 2026-05-19 | -71d | 0d |  | LABOUR [5 h]; Construction Material [100] | UDF_G3 | 0 | EE | 1 | C03a | TY1 | Non | SS098 | EIT2.1 | C05 | EIT02.1 |
| 2.1-SS098EE04-1100 |  | Clear punch | 4d | 2026-05-27 | 2026-05-30 | 2.1-SS098EE04-1050 |  |  |  |  | -71d | 0d |  | LABOUR [5 h]; Construction Material [40] | UDF_G3 | 0 | EE | 1 | C03a | TY1 | Non | SS098 | EIT2.1 | C05 | EIT02.1 |
| 2.1-SS098EE04-1150 |  | Complete QA/QC document | 3d | 2026-06-01 | 2026-06-03 | 2.1-SS098EE04-1100 |  |  |  |  | -71d | 23d |  | LABOUR [3.61 h]; Construction Material [30] | UDF_G3 | 0 | EE | 1 | C03a | TY1 | Non | SS098 | EIT2.1 | C05 | EIT02.1 |
|  | 3 | **110VAC UPS for vital Instrument - Battery Unit for BATT-CV98H3 for CV98H3** |  | 2026-01-22 | 2026-06-03 |  |  |  |  |  |  |  |  |  |  |  |  |  |  |  |  |  |  |  |  |
| 2.1-SS098EE04-1020 |  | Install Equipment | 15d | 2026-01-22 A | 2026-02-07 A | 2.1-SS098EE04-1010 SS | 100% |  |  |  |  |  |  | LABOUR [15 h]; Construction Material | UDF_G3 | 1 | EE | 1 | C03a | TY1 | Non | SS098 | EIT2.1 | C05 | EIT02.1 |
| 2.1-SS098EE04-1060 |  | Inspection and Testing, Per-Commissionning | 10d | 2026-05-08 A | 2026-05-26 | 2.1-SS098EE04-1020 | 67% | 10d | 2026-05-08 | 2026-05-19 | -71d | 0d |  | LABOUR [5 h]; Construction Material [100] | UDF_G3 | 0 | EE | 1 | C03a | TY1 | Non | SS098 | EIT2.1 | C05 | EIT02.1 |
| 2.1-SS098EE04-1110 |  | Clear punch | 4d | 2026-05-27 | 2026-05-30 | 2.1-SS098EE04-1060 |  |  |  |  | -71d | 0d |  | LABOUR [5 h]; Construction Material [40] | UDF_G3 | 0 | EE | 1 | C03a | TY1 | Non | SS098 | EIT2.1 | C05 | EIT02.1 |
| 2.1-SS098EE04-1160 |  | Complete QA/QC document | 3d | 2026-06-01 | 2026-06-03 | 2.1-SS098EE04-1110 |  |  |  |  | -71d | 23d |  | LABOUR [3.61 h]; Construction Material [30] | UDF_G3 | 0 | EE | 1 | C03a | TY1 | Non | SS098 | EIT2.1 | C05 | EIT02.1 |
|  | 2 | **10VAC UPS for vital Instrument - Battery Unit BATT-CV98H4 for CV98H4** |  | 2026-01-22 | 2026-06-03 |  |  |  |  |  |  |  |  |  |  |  |  |  |  |  |  |  |  |  |  |
| 2.1-SS098EE04-1030 |  | Install Equipment | 15d | 2026-01-22 A | 2026-02-07 A | 2.1-SS098EE04-1020 SS | 100% |  |  |  |  |  |  | LABOUR [15 h]; Construction Material | UDF_G3 | 1 | EE | 1 | C03a | TY1 | Non | SS098 | EIT2.1 | C05 | EIT02.1 |
| 2.1-SS098EE04-1070 |  | Inspection and Testing, Per-Commissionning | 10d | 2026-05-08 A | 2026-05-26 | 2.1-SS098EE04-1030 | 67% | 10d | 2026-05-08 | 2026-05-19 | -71d | 0d |  | LABOUR [5 h]; Construction Material [100] | UDF_G3 | 0 | EE | 1 | C03a | TY1 | Non | SS098 | EIT2.1 | C05 | EIT02.1 |
| 2.1-SS098EE04-1120 |  | Clear punch | 4d | 2026-05-27 | 2026-05-30 | 2.1-SS098EE04-1070 |  |  |  |  | -71d | 0d |  | LABOUR [5 h]; Construction Material [40] | UDF_G3 | 0 | EE | 1 | C03a | TY1 | Non | SS098 | EIT2.1 | C05 | EIT02.1 |
| 2.1-SS098EE04-1170 |  | Complete QA/QC document | 3d | 2026-06-01 | 2026-06-03 | 2.1-SS098EE04-1120 |  |  |  |  | -71d | 23d |  | LABOUR [3.61 h]; Construction Material [30] | UDF_G3 | 0 | EE | 1 | C03a | TY1 | Non | SS098 | EIT2.1 | C05 | EIT02.1 |

| ID | WBS | Activity | Duration | Start | Finish | Predecessors | Complete | Remaining | Planned start | Planned finish | Total float | Free float | Constraint | Resources | On Schedule Indicator | %Completed | Disciplines | Main Activity | WBS | Types | EIT2 Main Activity | Areas | Phases | EIT WBS | EIT PKG |
| --- | --- | --- | --- | --- | --- | --- | --- | --- | --- | --- | --- | --- | --- | --- | --- | --- | --- | --- | --- | --- | --- | --- | --- | --- | --- |
|  | 1 | **Battery Unit BATT-CV98H5 for C98H5** |  | 2026-02-09 | 2026-06-03 |  |  |  |  |  |  |  |  |  |  |  |  |  |  |  |  |  |  |  |  |
| 2.1-SS098EE04-1080 |  | Inspection and Testing, Per-Commissionning | 10d | 2026-02-09 A | 2026-05-26 | 2.1-SS098EE04-1030 SS, 2.1-SS098EE04-1030 | 100% | 10d | 2026-02-09 | 2026-02-19 | -71d | 0d |  | LABOUR [3 h]; Construction Material | UDF_G3 | 1 | EE | 1 | C03a | TY1 | Non | SS098 | EIT2.1 | C05 | EIT02.1 |
| 2.1-SS098EE04-1130 |  | Clear punch | 4d | 2026-05-27 | 2026-05-30 | 2.1-SS098EE04-1080 |  |  |  |  | -71d | 0d |  | LABOUR [75 h]; Construction Material [40] | UDF_G3 | 0 | EE | 1 | C03a | TY1 | Non | SS098 | EIT2.1 | C05 | EIT02.1 |
| 2.1-SS098EE04-1180 |  | Complete QA/QC document | 3d | 2026-06-01 | 2026-06-03 | 2.1-SS098EE04-1130 |  |  |  |  | -71d | 23d |  | LABOUR [75 h]; Construction Material [30] | UDF_G3 | 0 | EE | 1 | C03a | TY1 | Non | SS098 | EIT2.1 | C05 | EIT02.1 |
|  | 2 | **Instrument** |  | 2025-12-15 | 2026-02-20 |  |  |  |  |  |  |  |  |  |  |  |  |  |  |  |  |  |  |  |  |
|  | 2 | **Verify System Cable Damage** |  | 2025-12-15 | 2026-01-31 |  |  |  |  |  |  |  |  |  |  |  |  |  |  |  |  |  |  |  |  |
| 2.1-SS098INV-1000 |  | Site Survey in Substation | 7d | 2025-12-15 A | 2025-12-22 A |  | 100% |  |  |  |  |  | start on or after 2025-12-15 | LABOUR; Construction Material [70] | UDF_G3 | 0 | EE | 1 | C03a | TY1 | Non | SS098 | EIT2.1 | C05 | EIT02.1 |
| 2.1-SS098INV-1010 |  | Verify Cable in Substation SS-098 (FAR-13) | 30d | 2025-12-23 A | 2026-01-26 A | 2.1-SS098INV-1000 | 100% |  |  |  |  |  |  | LABOUR; Construction Material [300] | UDF_G3 | 0 | EE | 1 | C03a | TY1 | Non | SS098 | EIT2.1 | C05 | EIT02.1 |
| 2.1-SS098INV-1020 |  | Complete QA/QC document and Report Cablel Verify | 5d | 2026-01-27 A | 2026-01-31 A | 2.1-SS098INV-1010 | 100% |  |  |  |  |  |  | LABOUR; Construction Material [50] | UDF_G3 | 0 | EE | 1 | C03a | TY1 | Non | SS098 | EIT2.1 | C05 | EIT02.1 |
|  | 1 | **F&G System** |  | 2026-01-21 | 2026-02-20 |  |  |  |  |  |  |  |  |  |  |  |  |  |  |  |  |  |  |  |  |
| 2.1-SS098IN04-1000 |  | Install Equipment | 20d | 2026-01-21 A | 2026-02-12 A |  | 100% |  |  |  |  |  | start on or after 2026-01-21 | LABOUR; Construction Material [200] | UDF_G3 | 0 | EE | 1 | C03a | TY1 | Non | SS098 | EIT2.1 | C05 | EIT02.1 |
| 2.1-SS098IN04-1010 |  | Clear punch | 4d | 2026-02-13 A | 2026-02-17 A | 2.1-SS098IN04-1000 | 100% |  |  |  |  |  |  | LABOUR; Construction Material [40] | UDF_G3 | 0 | EE | 1 | C03a | TY1 | Non | SS098 | EIT2.1 | C05 | EIT02.1 |
| 2.1-SS098IN04-1020 |  | Complete QA/QC document | 3d | 2026-02-18 A | 2026-02-20 A | 2.1-SS098IN04-1010 | 100% |  |  |  |  |  | start on or after 2026-01-29 | LABOUR; Construction Material [30] | UDF_G3 | 0 | EE | 1 | C03a | TY1 | Non | SS098 | EIT2.1 | C05 | EIT02.1 |
|  | 3 | **Telecommunication** |  | 2026-05-08 | 2026-06-30 |  |  |  |  |  |  |  |  |  |  |  |  |  |  |  |  |  |  |  |  |
|  | 5 | **Telecom** |  | 2026-05-08 | 2026-06-30 |  |  |  |  |  |  |  |  |  |  |  |  |  |  |  |  |  |  |  |  |
|  | 1 | **Telecommunication Cable Installation** |  | 2026-05-08 | 2026-06-09 |  |  |  |  |  |  |  |  |  |  |  |  |  |  |  |  |  |  |  |  |
| 2.1-SS098TE01-1000 |  | Pull Cable | 15d | 2026-05-08 A | 2026-06-01 |  | 21% | 15d | 2026-05-08 | 2026-05-25 | -94d | 0d | start on or after 2026-01-26 | LABOUR; Construction Material [150] | UDF_G3 | 0 | EE | 1 | C03a | TY1 | Non | SS098 | EIT2.1 | C05 | EIT02.1 |
| 2.1-SS098TE01-1010 |  | Megger & Continuity test | 4d | 2026-06-02 | 2026-06-05 | 2.1-SS098TE01-1000 |  |  |  |  | -76d | 0d |  | LABOUR; Construction Material [40] | UDF_G3 | 0 | EE | 1 | C03a | TY1 | Non | SS098 | EIT2.1 | C05 | EIT02.1 |
| 2.1-SS098TE01-1020 |  | Complete QA/QC document | 3d | 2026-06-06 | 2026-06-09 | 2.1-SS098TE01-1010 |  |  |  |  | -76d | 18d |  | LABOUR; Construction Material [30] | UDF_G3 | 0 | EE | 1 | C03a | TY1 | Non | SS098 | EIT2.1 | C05 | EIT02.1 |
|  | 4 | **Telecommunication Termination / Glanding** |  | 2026-06-02 | 2026-06-30 |  |  |  |  |  |  |  |  |  |  |  |  |  |  |  |  |  |  |  |  |
| 2.1-SS098TE02-1000 |  | Cable Termination/Glanding | 15d | 2026-06-02 | 2026-06-18 | 2.1-SS098TE01-1000 SS, 2.1-SS098TE01-1000 |  |  |  |  | -94d | 0d |  | LABOUR; Construction Material [150] | UDF_G3 | 0 | EE | 1 | C03a | TY1 | Non | SS098 | EIT2.1 | C05 | EIT02.1 |
| 2.1-SS098TE02-1010 |  | Clear punch | 4d | 2026-06-19 | 2026-06-23 | 2.1-SS098TE02-1000 SS, 2.1-SS098TE02-1000 |  |  |  |  | -94d | 0d |  | LABOUR; Construction Material [40] | UDF_G3 | 0 | EE | 1 | C03a | TY1 | Non | SS098 | EIT2.1 | C05 | EIT02.1 |
| 2.1-SS098TE02-1020 |  | Complete QA/QC document | 6d | 2026-06-24 | 2026-06-30 | 2.1-SS098TE02-1010 |  |  |  |  | -94d | 0d |  | LABOUR; Construction Material [60] | UDF_G3 | 0 | EE | 1 | C03a | TY1 | Non | SS098 | EIT2.1 | C05 | EIT02.1 |
|  | 4 | **Substation SS-097** |  | 2026-01-21 | 2026-06-30 |  |  |  |  |  |  |  |  |  |  |  |  |  |  |  |  |  |  |  |  |
|  | 1 | **Electrical** |  | 2026-01-22 | 2026-06-25 |  |  |  |  |  |  |  |  |  |  |  |  |  |  |  |  |  |  |  |  |
| 2.1-SS097P-1000 |  | Remainning Punchlist closure in Substation SS-098 (FAR-13) | 36d | 2026-05-15 | 2026-06-25 |  |  |  |  |  | -90d | 4d | start on or after 2026-01-19 | LABOUR; Construction Material [360] | UDF_G3 | 0 | EE | 6 | WBSc053 | TY3 | Non | SS097 | EIT2.1 | C05 | EIT02.1 |

| ID | WBS | Activity | Duration | Start | Finish | Predecessors | Complete | Total float | Free float | Constraint | Resources | On Schedule Indicator | %Completed | Disciplines | Main Activity | WBS | Types | EIT2 Main Activity | Areas | Phases | EIT WBS | EIT PKG |
| --- | --- | --- | --- | --- | --- | --- | --- | --- | --- | --- | --- | --- | --- | --- | --- | --- | --- | --- | --- | --- | --- | --- |
|  | 1 | **Electrical Equipment Installation** |  | 2026-01-22 | 2026-06-03 |  |  |  |  |  |  |  |  |  |  |  |  |  |  |  |  |  |
|  | 42 | **UPS and Charger System** |  | 2026-02-02 | 2026-02-20 |  |  |  |  |  |  |  |  |  |  |  |  |  |  |  |  |  |
|  | 4 | **CV97F23-1 - 240VAC UPS For Emergency Lighting** |  | 2026-02-02 | 2026-02-20 |  |  |  |  |  |  |  |  |  |  |  |  |  |  |  |  |  |
| 2.1-SS097EE04-1010 |  | Inspection and Testing, Per-Commissionning | 10d | 2026-02-02 A | 2026-02-12 A |  | 100% |  |  | start on or after 2026-02-02 | LABOUR [10 h]; Construction Material [100] | UDF_G3 | 0 | EE | 1 | C03a | TY1 | Non | SS097 | EIT2.1 | C05 | EIT02.1 |
| 2.1-SS097EE04-1040 |  | Clear punch | 4d | 2026-02-13 A | 2026-02-17 A | 2.1-SS097EE04-1010 | 100% |  |  |  | LABOUR [3 h]; Construction Material [40] | UDF_G3 | 0 | EE | 1 | C03a | TY1 | Non | SS097 | EIT2.1 | C05 | EIT02.1 |
| 2.1-SS097EE04-1060 |  | Complete QA/QC document | 3d | 2026-02-18 A | 2026-02-20 A | 2.1-SS097EE04-1040 | 100% |  |  |  | LABOUR [5.7 h]; Construction Material [30] | UDF_G3 | 0 | EE | 1 | C03a | TY1 | Non | SS097 | EIT2.1 | C05 | EIT02.1 |
|  | 1 | **CV97F23-2 - 240VAC UPS For Emergency Lighting** |  | 2026-02-02 | 2026-02-20 |  |  |  |  |  |  |  |  |  |  |  |  |  |  |  |  |  |
| 2.1-SS097EE04-1020 |  | Inspection and Testing, Per-Commissionning | 10d | 2026-02-02 A | 2026-02-12 A | 2.1-SS097EE04-1010 SS | 100% |  |  |  | LABOUR [10 h]; Construction Material [100] | UDF_G3 | 0 | EE | 1 | C03a | TY1 | Non | SS097 | EIT2.1 | C05 | EIT02.1 |
| 2.1-SS097EE04-1050 |  | Clear punch | 4d | 2026-02-13 A | 2026-02-17 A | 2.1-SS097EE04-1020 | 100% |  |  |  | LABOUR [3 h]; Construction Material [40] | UDF_G3 | 0 | EE | 1 | C03a | TY1 | Non | SS097 | EIT2.1 | C05 | EIT02.1 |
| 2.1-SS097EE04-1070 |  | Complete QA/QC document | 3d | 2026-02-18 A | 2026-02-20 A | 2.1-SS097EE04-1050 | 100% |  |  |  | LABOUR [5.7 h]; Construction Material [30] | UDF_G3 | 0 | EE | 1 | C03a | TY1 | Non | SS097 | EIT2.1 | C05 | EIT02.1 |
|  | 6 | **Miscellaneous Panels** |  | 2026-01-22 | 2026-06-03 |  |  |  |  |  |  |  |  |  |  |  |  |  |  |  |  |  |
|  | 3 | **S097-ELC-0004 - Cathodic Protection Transformer Rectifier For UG Pipes Unit 10700** |  | 2026-01-22 | 2026-06-03 |  |  |  |  |  |  |  |  |  |  |  |  |  |  |  |  |  |
| 2.1-SS097EE04-1000 |  | Install Equipment | 15d | 2026-01-22 A | 2026-02-07 A | 2.1-SS098EE04-1030 SS | 100% |  |  |  | LABOUR [10 h]; Construction Material | UDF_G3 | 0 | EE | 1 | C03a | TY1 | Non | SS097 | EIT2.1 | C05 | EIT02.1 |
| 2.1-SS097EE04-1030 |  | Inspection and Testing, Per-Commissionning | 10d | 2026-05-15 | 2026-05-26 | 2.1-SS097EE04-1000 |  | -71d | 0d |  | LABOUR [3 h]; Construction Material [100] | UDF_G3 | 0 | EE | 1 | C03a | TY1 | Non | SS097 | EIT2.1 | C05 | EIT02.1 |
| 2.1-SS097EE04-1080 |  | Clear punch | 4d | 2026-05-27 | 2026-05-30 | 2.1-SS097EE04-1030 |  | -71d | 0d |  | LABOUR [2 h]; Construction Material [40] | UDF_G3 | 0 | EE | 1 | C03a | TY1 | Non | SS097 | EIT2.1 | C05 | EIT02.1 |
| 2.1-SS097EE04-1090 |  | Complete QA/QC document | 3d | 2026-06-01 | 2026-06-03 | 2.1-SS097EE04-1080 |  | -71d | 23d |  | LABOUR [3.7 h]; Construction Material [30] | UDF_G3 | 0 | EE | 1 | C03a | TY1 | Non | SS097 | EIT2.1 | C05 | EIT02.1 |
|  | 2 | **Instrument** |  | 2026-01-21 | 2026-02-20 |  |  |  |  |  |  |  |  |  |  |  |  |  |  |  |  |  |
|  | 1 | **F&G System** |  | 2026-01-21 | 2026-02-20 |  |  |  |  |  |  |  |  |  |  |  |  |  |  |  |  |  |
| 2.1-SS097IN04-1000 |  | Install Equipment | 20d | 2026-01-21 A | 2026-02-12 A |  | 100% |  |  | start on or after 2026-01-21 | LABOUR; Construction Material [200] | UDF_G3 | 0 | EE | 1 | C03a | TY1 | Non | SS097 | EIT2.1 | C05 | EIT02.1 |
| 2.1-SS097IN04-1010 |  | Clear punch | 4d | 2026-02-13 A | 2026-02-17 A | 2.1-SS097IN04-1000 | 100% |  |  |  | LABOUR; Construction Material [40] | UDF_G3 | 0 | EE | 1 | C03a | TY1 | Non | SS097 | EIT2.1 | C05 | EIT02.1 |
| 2.1-SS097IN04-1020 |  | Complete QA/QC document | 3d | 2026-02-18 A | 2026-02-20 A | 2.1-SS097IN04-1010 | 100% |  |  |  | LABOUR; Construction Material [30] | UDF_G3 | 0 | EE | 1 | C03a | TY1 | Non | SS097 | EIT2.1 | C05 | EIT02.1 |
|  | 3 | **Telecommunication** |  | 2026-05-15 | 2026-06-30 |  |  |  |  |  |  |  |  |  |  |  |  |  |  |  |  |  |
|  | 5 | **Telecom** |  | 2026-05-15 | 2026-06-30 |  |  |  |  |  |  |  |  |  |  |  |  |  |  |  |  |  |
|  | 1 | **Telecommunication Cable Installation** |  | 2026-05-15 | 2026-06-09 |  |  |  |  |  |  |  |  |  |  |  |  |  |  |  |  |  |
| 2.1-SS097TE01-1000 |  | Pull Cable | 15d | 2026-05-15 | 2026-06-01 |  |  | -94d | 0d | start on or after 2026-01-26 | LABOUR; Construction Material [150] | UDF_G3 | 0 | EE | 1 | C03a | TY1 | Non | SS097 | EIT2.1 | C05 | EIT02.1 |
| 2.1-SS097TE01-1010 |  | Megger & Continuity test | 4d | 2026-06-02 | 2026-06-05 | 2.1-SS097TE01-1000 |  | -76d | 0d |  | LABOUR; Construction Material [40] | UDF_G3 | 0 | EE | 1 | C03a | TY1 | Non | SS097 | EIT2.1 | C05 | EIT02.1 |
| 2.1-SS097TE01-1020 |  | Complete QA/QC document | 3d | 2026-06-06 | 2026-06-09 | 2.1-SS097TE01-1010 |  | -76d | 18d |  | LABOUR; Construction Material [30] | UDF_G3 | 0 | EE | 1 | C03a | TY1 | Non | SS097 | EIT2.1 | C05 | EIT02.1 |

| ID | WBS | Activity | Duration | Start | Finish | Predecessors | Total float | Free float | Constraint | Resources | On Schedule Indicator | %Completed | Disciplines | Main Activity | WBS | Types | EIT2 Main Activity | Areas | Phases | EIT WBS | EIT PKG |
| --- | --- | --- | --- | --- | --- | --- | --- | --- | --- | --- | --- | --- | --- | --- | --- | --- | --- | --- | --- | --- | --- |
|  | 4 | **Telecommunication Termination / Glanding** |  | 2026-06-02 | 2026-06-30 |  |  |  |  |  |  |  |  |  |  |  |  |  |  |  |  |
| 2.1-SS097TE02-1000 |  | Cable Termination/Glanding | 15d | 2026-06-02 | 2026-06-18 | 2.1-SS097TE01-1000 | -94d | 0d |  | LABOUR; Construction Material [150] | UDF_G3 | 0 | EE | 1 | C03a | TY1 | Non | SS097 | EIT2.1 | C05 | EIT02.1 |
| 2.1-SS097TE02-1010 |  | Clear punch | 4d | 2026-06-19 | 2026-06-23 | 2.1-SS097TE02-1000 | -94d | 0d |  | LABOUR; Construction Material [40] | UDF_G3 | 0 | EE | 1 | C03a | TY1 | Non | SS097 | EIT2.1 | C05 | EIT02.1 |
| 2.1-SS097TE02-1020 |  | Complete QA/QC document | 6d | 2026-06-24 | 2026-06-30 | 2.1-SS097TE02-1010 | -94d | 0d |  | LABOUR; Construction Material [60] | UDF_G3 | 0 | EE | 1 | C03a | TY1 | Non | SS097 | EIT2.1 | C05 | EIT02.1 |
|  | WBS C07 | **WBS : C07** |  | 2026-05-15 | 2026-07-08 |  |  |  |  |  |  |  |  |  |  |  |  |  |  |  |  |
|  | 9 | **Main Contro Building MCB3** |  | 2026-05-15 | 2026-07-08 |  |  |  |  |  |  |  |  |  |  |  |  |  |  |  |  |
|  | 1 | **Electrical** |  | 2026-05-15 | 2026-07-02 |  |  |  |  |  |  |  |  |  |  |  |  |  |  |  |  |
|  | 2 | **Electrical Cable Installation** |  | 2026-05-15 | 2026-06-15 |  |  |  |  |  |  |  |  |  |  |  |  |  |  |  |  |
|  | 2 | **Cable Pull LV Cable** |  | 2026-05-15 | 2026-06-15 |  |  |  |  |  |  |  |  |  |  |  |  |  |  |  |  |
| 2.1-MCB3EE01-1000 |  | Pull Cable | 20d | 2026-05-15 | 2026-06-06 |  | -95d | 0d | start on or after 2026-01-19 | LABOUR [400 h]; Construction Material [200] | UDF_G3 | 0 | EE | 1 | C03a | TY1 | Non | MCB3 | EIT2.1 | C07 | EIT02.1 |
| 2.1-MCB3EE01-1030 |  | Megger & Continuity test | 4d | 2026-06-08 | 2026-06-11 | 2.1-MCB3EE01-1000 | -80d | 0d |  | LABOUR [50 h]; Construction Material [40] | UDF_G3 | 0 | EE | 1 | C03a | TY1 | Non | MCB3 | EIT2.1 | C07 | EIT02.1 |
| 2.1-MCB3EE01-1060 |  | Complete QA/QC document | 3d | 2026-06-12 | 2026-06-15 | 2.1-MCB3EE01-1030 | -80d | 20d |  | LABOUR [81.66 h]; Construction Material [30] | UDF_G3 | 0 | EE | 1 | C03a | TY1 | Non | MCB3 | EIT2.1 | C07 | EIT02.1 |
|  | 3 | **Cable Pull Control Cable** |  | 2026-05-15 | 2026-06-15 |  |  |  |  |  |  |  |  |  |  |  |  |  |  |  |  |
| 2.1-MCB3EE01-1010 |  | Pull Cable | 20d | 2026-05-15 | 2026-06-06 | 2.1-MCB3EE01-1000 SS | -95d | 0d | start on or after 2026-01-19 | LABOUR [400 h]; Construction Material [200] | UDF_G3 | 0 | EE | 1 | C03a | TY1 | Non | MCB3 | EIT2.1 | C07 | EIT02.1 |
| 2.1-MCB3EE01-1040 |  | Megger & Continuity test | 4d | 2026-06-08 | 2026-06-11 | 2.1-MCB3EE01-1010 | -80d | 0d |  | LABOUR [50 h]; Construction Material [40] | UDF_G3 | 0 | EE | 1 | C03a | TY1 | Non | MCB3 | EIT2.1 | C07 | EIT02.1 |
| 2.1-MCB3EE01-1070 |  | Complete QA/QC document | 3d | 2026-06-12 | 2026-06-15 | 2.1-MCB3EE01-1040 | -80d | 20d |  | LABOUR [81.66 h]; Construction Material [30] | UDF_G3 | 0 | EE | 1 | C03a | TY1 | Non | MCB3 | EIT2.1 | C07 | EIT02.1 |
|  | 5 | **Cable Pull Lighting Cable** |  | 2026-05-15 | 2026-06-15 |  |  |  |  |  |  |  |  |  |  |  |  |  |  |  |  |
| 2.1-MCB3EE01-1020 |  | Pull Cable | 20d | 2026-05-15 | 2026-06-06 | 2.1-MCB3EE01-1010 SS | -95d | 0d | start on or after 2026-01-19 | LABOUR [400 h]; Construction Material [200] | UDF_G3 | 0 | EE | 1 | C03a | TY1 | Non | MCB3 | EIT2.1 | C07 | EIT02.1 |
| 2.1-MCB3EE01-1050 |  | Megger & Continuity test | 4d | 2026-06-08 | 2026-06-11 | 2.1-MCB3EE01-1020 | -80d | 0d |  | LABOUR [50 h]; Construction Material [40] | UDF_G3 | 0 | EE | 1 | C03a | TY1 | Non | MCB3 | EIT2.1 | C07 | EIT02.1 |
| 2.1-MCB3EE01-1080 |  | Complete QA/QC document | 3d | 2026-06-12 | 2026-06-15 | 2.1-MCB3EE01-1050 | -80d | 20d |  | LABOUR [81.66 h]; Construction Material [30] | UDF_G3 | 0 | EE | 1 | C03a | TY1 | Non | MCB3 | EIT2.1 | C07 | EIT02.1 |
|  | 4 | **Electrical Cable Termination / Glanding** |  | 2026-06-08 | 2026-07-02 |  |  |  |  |  |  |  |  |  |  |  |  |  |  |  |  |
|  | 2 | **Termination LV Cable** |  | 2026-06-08 | 2026-07-02 |  |  |  |  |  |  |  |  |  |  |  |  |  |  |  |  |
| 2.1-MCB3EE02-1000 |  | Cable Termination/Glanding | 15d | 2026-06-08 | 2026-06-24 | 2.1-MCB3EE01-1020 | -95d | 0d |  | LABOUR [20 h]; Construction Material [150] | UDF_G3 | 0 | EE | 1 | C03a | TY1 | Non | MCB3 | EIT2.1 | C07 | EIT02.1 |
| 2.1-MCB3EE02-1030 |  | Clear punch | 4d | 2026-06-25 | 2026-06-29 | 2.1-MCB3EE02-1000 | -95d | 0d |  | LABOUR [5 h]; Construction Material [40] | UDF_G3 | 0 | EE | 1 | C03a | TY1 | Non | MCB3 | EIT2.1 | C07 | EIT02.1 |
| 2.1-MCB3EE02-1060 |  | Complete QA/QC document | 3d | 2026-06-30 | 2026-07-02 | 2.1-MCB3EE02-1030 | -95d | 5d |  | LABOUR [13.3 h]; Construction Material [30] | UDF_G3 | 0 | EE | 1 | C03a | TY1 | Non | MCB3 | EIT2.1 | C07 | EIT02.1 |

| ID | WBS | Activity | Duration | Start | Finish | Predecessors | Total float | Free float | Constraint | Resources | On Schedule Indicator | %Completed | Disciplines | Main Activity | WBS | Types | EIT2 Main Activity | Areas | Phases | EIT WBS | EIT PKG |
| --- | --- | --- | --- | --- | --- | --- | --- | --- | --- | --- | --- | --- | --- | --- | --- | --- | --- | --- | --- | --- | --- |
|  | 3 | **Termination Control Cable** |  | 2026-06-08 | 2026-07-02 |  |  |  |  |  |  |  |  |  |  |  |  |  |  |  |  |
| 2.1-MCB3EE02-1010 |  | Cable Termination/Glanding | 15d | 2026-06-08 | 2026-06-24 | 2.1-MCB3EE02-1000 SS | -95d | 0d |  | LABOUR [20 h]; Construction Material [150] | UDF_G3 | 0 | EE | 1 | C03a | TY1 | Non | MCB3 | EIT2.1 | C07 | EIT02.1 |
| 2.1-MCB3EE02-1040 |  | Clear punch | 4d | 2026-06-25 | 2026-06-29 | 2.1-MCB3EE02-1010 | -95d | 0d |  | LABOUR [5 h]; Construction Material [40] | UDF_G3 | 0 | EE | 1 | C03a | TY1 | Non | MCB3 | EIT2.1 | C07 | EIT02.1 |
| 2.1-MCB3EE02-1070 |  | Complete QA/QC document | 3d | 2026-06-30 | 2026-07-02 | 2.1-MCB3EE02-1040 | -95d | 5d |  | LABOUR [13.3 h]; Construction Material [30] | UDF_G3 | 0 | EE | 1 | C03a | TY1 | Non | MCB3 | EIT2.1 | C07 | EIT02.1 |
|  | 1 | **Termination Lighting Cable** |  | 2026-06-08 | 2026-07-02 |  |  |  |  |  |  |  |  |  |  |  |  |  |  |  |  |
| 2.1-MCB3EE02-1020 |  | Cable Termination/Glanding | 15d | 2026-06-08 | 2026-06-24 | 2.1-MCB3EE02-1010 SS | -95d | 0d |  | LABOUR [20 h]; Construction Material [150] | UDF_G3 | 0 | EE | 1 | C03a | TY1 | Non | MCB3 | EIT2.1 | C07 | EIT02.1 |
| 2.1-MCB3EE02-1050 |  | Clear punch | 4d | 2026-06-25 | 2026-06-29 | 2.1-MCB3EE02-1020 | -95d | 0d |  | LABOUR [5 h]; Construction Material [40] | UDF_G3 | 0 | EE | 1 | C03a | TY1 | Non | MCB3 | EIT2.1 | C07 | EIT02.1 |
| 2.1-MCB3EE02-1080 |  | Complete QA/QC document | 3d | 2026-06-30 | 2026-07-02 | 2.1-MCB3EE02-1050 | -95d | 5d |  | LABOUR [13.3 h]; Construction Material [30] | UDF_G3 | 0 | EE | 1 | C03a | TY1 | Non | MCB3 | EIT2.1 | C07 | EIT02.1 |
|  | 5 | **Lighting & Small Power Equipment Installation** |  | 2026-05-15 | 2026-06-20 |  |  |  |  |  |  |  |  |  |  |  |  |  |  |  |  |
| 2.1-MCB3EE05-1000 |  | Install support / bracket / Pole | 5d | 2026-05-15 | 2026-05-20 |  | -85d | 0d | start on or after 2026-01-23 | LABOUR [1 h]; Construction Material [50] | UDF_G3 | 0 | EE | 1 | C03a | TY1 | Non | MCB3 | EIT2.1 | C07 | EIT02.1 |
| 2.1-MCB3EE05-1010 |  | Install Distribution panel, lighting fitting ,convenience outlet | 15d | 2026-05-21 | 2026-06-06 | 2.1-MCB3EE05-1000 | -85d | 0d |  | LABOUR [4 h]; Construction Material [150] | UDF_G3 | 0 | EE | 1 | C03a | TY1 | Non | MCB3 | EIT2.1 | C07 | EIT02.1 |
| 2.1-MCB3EE05-1020 |  | Clear punch | 5d | 2026-06-08 | 2026-06-12 | 2.1-MCB3EE05-1010 | -85d | 0d |  | LABOUR [1 h]; Construction Material [50] | UDF_G3 | 0 | EE | 1 | C03a | TY1 | Non | MCB3 | EIT2.1 | C07 | EIT02.1 |
| 2.1-MCB3EE05-1030 |  | Complete QA/QC document | 7d | 2026-06-13 | 2026-06-20 | 2.1-MCB3EE05-1020 | -85d | 15d |  | LABOUR [1.9 h]; Construction Material [70] | UDF_G3 | 0 | EE | 1 | C03a | TY1 | Non | MCB3 | EIT2.1 | C07 | EIT02.1 |
|  | 2 | **Instrument** |  | 2026-05-15 | 2026-07-08 |  |  |  |  |  |  |  |  |  |  |  |  |  |  |  |  |
|  | 3 | **Instrument Cable Installation** |  | 2026-05-15 | 2026-06-15 |  |  |  |  |  |  |  |  |  |  |  |  |  |  |  |  |
|  | 1 | **Cable Pull Primary Cable** |  | 2026-05-15 | 2026-06-15 |  |  |  |  |  |  |  |  |  |  |  |  |  |  |  |  |
| 2.1-MCB3IN01-1030 |  | Pull Cable | 20d | 2026-05-15 | 2026-06-06 |  | -100d | 0d | start on or after 2026-01-19 | LABOUR [600 h]; Construction Material [200] | UDF_G3 | 0 | EE | 1 | C03a | TY1 | Non | MCB3 | EIT2.1 | C07 | EIT02.1 |
| 2.1-MCB3IN01-1070 |  | Megger & Continuity test | 4d | 2026-06-08 | 2026-06-11 | 2.1-MCB3IN01-1030 | -80d | 0d |  | LABOUR [100 h]; Construction Material [40] | UDF_G3 | 0 | EE | 1 | C03a | TY1 | Non | MCB3 | EIT2.1 | C07 | EIT02.1 |
| 2.1-MCB3IN01-1110 |  | Complete QA/QC document | 3d | 2026-06-12 | 2026-06-15 | 2.1-MCB3IN01-1070 | -80d | 20d |  | LABOUR [221.7 h]; Construction Material [30] | UDF_G3 | 0 | EE | 1 | C03a | TY1 | Non | MCB3 | EIT2.1 | C07 | EIT02.1 |
|  | 5 | **Cable Pull Power Cable** |  | 2026-05-15 | 2026-06-15 |  |  |  |  |  |  |  |  |  |  |  |  |  |  |  |  |
| 2.1-MCB3IN01-1010 |  | Pull Cable | 20d | 2026-05-15 | 2026-06-06 | 2.1-MCB3IN01-1030 SS | -100d | 0d |  | LABOUR [600 h]; Construction Material [200] | UDF_G3 | 0 | EE | 1 | C03a | TY1 | Non | MCB3 | EIT2.1 | C07 | EIT02.1 |
| 2.1-MCB3IN01-1050 |  | Megger & Continuity test | 4d | 2026-06-08 | 2026-06-11 | 2.1-MCB3IN01-1010 | -80d | 0d |  | LABOUR [100 h]; Construction Material [40] | UDF_G3 | 0 | EE | 1 | C03a | TY1 | Non | MCB3 | EIT2.1 | C07 | EIT02.1 |
| 2.1-MCB3IN01-1090 |  | Complete QA/QC document | 3d | 2026-06-12 | 2026-06-15 | 2.1-MCB3IN01-1050 | -80d | 20d |  | LABOUR [221.7 h]; Construction Material [30] | UDF_G3 | 0 | EE | 1 | C03a | TY1 | Non | MCB3 | EIT2.1 | C07 | EIT02.1 |
|  | 9 | **Cable Pull Secondary Cable** |  | 2026-05-15 | 2026-06-15 |  |  |  |  |  |  |  |  |  |  |  |  |  |  |  |  |
| 2.1-MCB3IN01-1020 |  | Pull Cable | 20d | 2026-05-15 | 2026-06-06 | 2.1-MCB3IN01-1010 SS | -100d | 0d | start on or after 2026-01-19 | LABOUR [600 h]; Construction Material [200] | UDF_G3 | 0 | EE | 1 | C03a | TY1 | Non | MCB3 | EIT2.1 | C07 | EIT02.1 |
| 2.1-MCB3IN01-1060 |  | Megger & Continuity test | 4d | 2026-06-08 | 2026-06-11 | 2.1-MCB3IN01-1020 | -80d | 0d |  | LABOUR [100 h]; Construction Material [40] | UDF_G3 | 0 | EE | 1 | C03a | TY1 | Non | MCB3 | EIT2.1 | C07 | EIT02.1 |
| 2.1-MCB3IN01-1100 |  | Complete QA/QC document | 3d | 2026-06-12 | 2026-06-15 | 2.1-MCB3IN01-1060 | -80d | 20d |  | LABOUR [221.7 h]; Construction Material [30] | UDF_G3 | 0 | EE | 1 | C03a | TY1 | Non | MCB3 | EIT2.1 | C07 | EIT02.1 |

| ID | WBS | Activity | Duration | Start | Finish | Predecessors | Total float | Free float | Constraint | Resources | On Schedule Indicator | %Completed | Disciplines | Main Activity | WBS | Types | EIT2 Main Activity | Areas | Phases | EIT WBS | EIT PKG |
| --- | --- | --- | --- | --- | --- | --- | --- | --- | --- | --- | --- | --- | --- | --- | --- | --- | --- | --- | --- | --- | --- |
|  | 8 | **Cross Wiring Cable Cable** |  | 2026-05-15 | 2026-06-15 |  |  |  |  |  |  |  |  |  |  |  |  |  |  |  |  |
| 2.1-MCB3IN01-1000 |  | Pull Cable | 20d | 2026-05-15 | 2026-06-06 | 2.1-MCB3IN01-1020 SS | -100d | 0d | start on or after 2026-01-19 | LABOUR [600 h]; Construction Material [200] | UDF_G3 | 0 | EE | 1 | C03a | TY1 | Non | MCB3 | EIT2.1 | C07 | EIT02.1 |
| 2.1-MCB3IN01-1040 |  | Megger & Continuity test | 4d | 2026-06-08 | 2026-06-11 | 2.1-MCB3IN01-1000 | -80d | 0d |  | LABOUR [100 h]; Construction Material [40] | UDF_G3 | 0 | EE | 1 | C03a | TY1 | Non | MCB3 | EIT2.1 | C07 | EIT02.1 |
| 2.1-MCB3IN01-1080 |  | Complete QA/QC document | 3d | 2026-06-12 | 2026-06-15 | 2.1-MCB3IN01-1040 | -80d | 20d |  | LABOUR [221.7 h]; Construction Material [30] | UDF_G3 | 0 | EE | 1 | C03a | TY1 | Non | MCB3 | EIT2.1 | C07 | EIT02.1 |
|  | 2 | **Instrument Cable Termination / Glanding** |  | 2026-06-08 | 2026-07-08 |  |  |  |  |  |  |  |  |  |  |  |  |  |  |  |  |
|  | 8 | **Cable Termination Primary Cable** |  | 2026-06-08 | 2026-07-02 |  |  |  |  |  |  |  |  |  |  |  |  |  |  |  |  |
| 2.1-MCB3IN02-1030 |  | Cable Termination/Glanding | 15d | 2026-06-08 | 2026-06-24 | 2.1-MCB3IN01-1030 | -95d | 0d |  | LABOUR [150 h]; Construction Material [150] | UDF_G3 | 0 | EE | 1 | C03a | TY1 | Non | MCB3 | EIT2.1 | C07 | EIT02.1 |
| 2.1-MCB3IN02-1070 |  | Clear punch | 4d | 2026-06-25 | 2026-06-29 | 2.1-MCB3IN02-1030 | -95d | 0d |  | LABOUR [50 h]; Construction Material [40] | UDF_G3 | 0 | EE | 1 | C03a | TY1 | Non | MCB3 | EIT2.1 | C07 | EIT02.1 |
| 2.1-MCB3IN02-1110 |  | Complete QA/QC document | 3d | 2026-06-30 | 2026-07-02 | 2.1-MCB3IN02-1070 | -95d | 5d |  | LABOUR [39.5 h]; Construction Material [30] | UDF_G3 | 0 | EE | 1 | C03a | TY1 | Non | MCB3 | EIT2.1 | C07 | EIT02.1 |
|  | 5 | **Cable Termination Power Cable** |  | 2026-06-08 | 2026-07-08 |  |  |  |  |  |  |  |  |  |  |  |  |  |  |  |  |
| 2.1-MCB3IN02-1000 |  | Cable Termination/Glanding | 20d | 2026-06-08 | 2026-06-30 | 2.1-MCB3IN01-1010 | -100d | 0d |  | LABOUR [150 h]; Construction Material [200] | UDF_G3 | 0 | EE | 1 | C03a | TY1 | Non | MCB3 | EIT2.1 | C07 | EIT02.1 |
| 2.1-MCB3IN02-1040 |  | Clear punch | 4d | 2026-07-01 | 2026-07-04 | 2.1-MCB3IN02-1000 | -100d | 0d |  | LABOUR [50 h]; Construction Material [40] | UDF_G3 | 0 | EE | 1 | C03a | TY1 | Non | MCB3 | EIT2.1 | C07 | EIT02.1 |
| 2.1-MCB3IN02-1080 |  | Complete QA/QC document | 3d | 2026-07-06 | 2026-07-08 | 2.1-MCB3IN02-1040 | -100d | 0d |  | LABOUR [39.5 h]; Construction Material [30] | UDF_G3 | 0 | EE | 1 | C03a | TY1 | Non | MCB3 | EIT2.1 | C07 | EIT02.1 |
|  | 9 | **Cable Termination Secondary Cable** |  | 2026-06-08 | 2026-07-08 |  |  |  |  |  |  |  |  |  |  |  |  |  |  |  |  |
| 2.1-MCB3IN02-1010 |  | Cable Termination/Glanding | 20d | 2026-06-08 | 2026-06-30 | 2.1-MCB3IN01-1020 | -100d | 0d |  | LABOUR [150 h]; Construction Material [200] | UDF_G3 | 0 | EE | 1 | C03a | TY1 | Non | MCB3 | EIT2.1 | C07 | EIT02.1 |
| 2.1-MCB3IN02-1050 |  | Clear punch | 4d | 2026-07-01 | 2026-07-04 | 2.1-MCB3IN02-1010 | -100d | 0d |  | LABOUR [50 h]; Construction Material [40] | UDF_G3 | 0 | EE | 1 | C03a | TY1 | Non | MCB3 | EIT2.1 | C07 | EIT02.1 |
| 2.1-MCB3IN02-1090 |  | Complete QA/QC document | 3d | 2026-07-06 | 2026-07-08 | 2.1-MCB3IN02-1050 | -100d | 0d |  | LABOUR [39.5 h]; Construction Material [30] | UDF_G3 | 0 | EE | 1 | C03a | TY1 | Non | MCB3 | EIT2.1 | C07 | EIT02.1 |
|  | 1 | **Cable Termination Cross Wiring Cable** |  | 2026-06-08 | 2026-07-08 |  |  |  |  |  |  |  |  |  |  |  |  |  |  |  |  |
| 2.1-MCB3IN02-1020 |  | Cable Termination/Glanding | 20d | 2026-06-08 | 2026-06-30 | 2.1-MCB3IN01-1000 | -100d | 0d |  | LABOUR [150 h]; Construction Material [200] | UDF_G3 | 0 | EE | 1 | C03a | TY1 | Non | MCB3 | EIT2.1 | C07 | EIT02.1 |
| 2.1-MCB3IN02-1060 |  | Clear punch | 4d | 2026-07-01 | 2026-07-04 | 2.1-MCB3IN02-1020 | -100d | 0d |  | LABOUR [50 h]; Construction Material [40] | UDF_G3 | 0 | EE | 1 | C03a | TY1 | Non | MCB3 | EIT2.1 | C07 | EIT02.1 |
| 2.1-MCB3IN02-1100 |  | Complete QA/QC document | 3d | 2026-07-06 | 2026-07-08 | 2.1-MCB3IN02-1060 | -100d | 0d |  | LABOUR [39.5 h]; Construction Material [30] | UDF_G3 | 0 | EE | 1 | C03a | TY1 | Non | MCB3 | EIT2.1 | C07 | EIT02.1 |
|  | 1 | **F&G System** |  | 2026-05-15 | 2026-06-23 |  |  |  |  |  |  |  |  |  |  |  |  |  |  |  |  |
| 2.1-MCB3IN04-1000 |  | Install Equipment | 20d | 2026-05-15 | 2026-06-06 |  | -87d | 0d | start on or after 2026-01-21 | LABOUR; Construction Material [200] | UDF_G3 | 0 | EE | 1 | C03a | TY1 | Non | MCB3 | EIT2.1 | C07 | EIT02.1 |
| 2.1-MCB3IN04-1010 |  | Clear punch | 7d | 2026-06-08 | 2026-06-15 | 2.1-MCB3IN04-1000 | -87d | 0d | start on or after 2026-01-29 | LABOUR; Construction Material [70] | UDF_G3 | 0 | EE | 1 | C03a | TY1 | Non | MCB3 | EIT2.1 | C07 | EIT02.1 |
| 2.1-MCB3IN04-1020 |  | Complete QA/QC document | 7d | 2026-06-16 | 2026-06-23 | 2.1-MCB3IN04-1010 | -87d | 13d | start on or after 2026-01-29 | LABOUR; Construction Material [70] | UDF_G3 | 0 | EE | 1 | C03a | TY1 | Non | MCB3 | EIT2.1 | C07 | EIT02.1 |

| ID | WBS | Activity | Duration | Start | Finish | Predecessors | Complete | Constraint | Resources | On Schedule Indicator | %Completed | Disciplines | Main Activity | WBS | Types | EIT2 Main Activity | Areas | Phases | EIT WBS | EIT PKG |
| --- | --- | --- | --- | --- | --- | --- | --- | --- | --- | --- | --- | --- | --- | --- | --- | --- | --- | --- | --- | --- |
|  | 4 | **WBS : B04** |  | 2026-01-22 | 2026-02-28 |  |  |  |  |  |  |  |  |  |  |  |  |  |  |  |
|  | 8 | **Substation SS-118** |  | 2026-01-22 | 2026-02-28 |  |  |  |  |  |  |  |  |  |  |  |  |  |  |  |
|  | 4 | **Electrical** |  | 2026-01-22 | 2026-02-28 |  |  |  |  |  |  |  |  |  |  |  |  |  |  |  |
|  | 1 | **Electrical Equipment Installation** |  | 2026-01-22 | 2026-02-28 |  |  |  |  |  |  |  |  |  |  |  |  |  |  |  |
|  | 2 | **Miscellaneous Panels** |  | 2026-01-22 | 2026-02-28 |  |  |  |  |  |  |  |  |  |  |  |  |  |  |  |
|  | 5 | **S118-ELC-0005 - KM-10602A Exciter control panel 415 V** |  | 2026-01-22 | 2026-02-27 |  |  |  |  |  |  |  |  |  |  |  |  |  |  |  |
| 2.1-SS118EE04-1000 |  | Install Equipment | 10d | 2026-01-22 A | 2026-02-02 A |  | 100% | start on or after 2026-01-22 | LABOUR; Construction Material [100] | UDF_G3 | 0 | EE | 1 | C03a | TY1 | Non | SS118 | EIT2.1 | B04 | EIT02.1 |
| 2.1-SS118EE04-1050 |  | Internal Wiring Cable | 5d | 2026-02-03 A | 2026-02-07 A | 2.1-SS118EE04-1000 | 100% |  | LABOUR; Construction Material [50] | UDF_G3 | 0 | EE | 1 | C03a | TY1 | Non | SS118 | EIT2.1 | B04 | EIT02.1 |
| 2.1-SS118EE04-1100 |  | Inspection and Testing, Per-Commissionning | 10d | 2026-02-09 A | 2026-02-19 A | 2.1-SS118EE04-1050 | 100% |  | LABOUR; Construction Material [100] | UDF_G3 | 0 | EE | 1 | C03a | TY1 | Non | SS118 | EIT2.1 | B04 | EIT02.1 |
| 2.1-SS118EE04-1150 |  | Clear punch | 4d | 2026-02-20 A | 2026-02-24 A | 2.1-SS118EE04-1100 | 100% |  | LABOUR; Construction Material [40] | UDF_G3 | 0 | EE | 1 | C03a | TY1 | Non | SS118 | EIT2.1 | B04 | EIT02.1 |
| 2.1-SS118EE04-1200 |  | Complete QA/QC document | 3d | 2026-02-25 A | 2026-02-27 A | 2.1-SS118EE04-1150 | 100% |  | LABOUR; Construction Material [30] | UDF_G3 | 0 | EE | 1 | C03a | TY1 | Non | SS118 | EIT2.1 | B04 | EIT02.1 |
|  | 3 | **S118-ELC-0006 - KM-10602B Exciter control panel 415 V** |  | 2026-01-22 | 2026-02-27 |  |  |  |  |  |  |  |  |  |  |  |  |  |  |  |
| 2.1-SS118EE04-1010 |  | Install Equipment | 10d | 2026-01-22 A | 2026-02-02 A | 2.1-SS118EE04-1000 SS | 100% |  | LABOUR; Construction Material [100] | UDF_G3 | 0 | EE | 1 | C03a | TY1 | Non | SS118 | EIT2.1 | B04 | EIT02.1 |
| 2.1-SS118EE04-1060 |  | Internal Wiring Cable | 5d | 2026-02-03 A | 2026-02-07 A | 2.1-SS118EE04-1010 | 100% |  | LABOUR; Construction Material [50] | UDF_G3 | 0 | EE | 1 | C03a | TY1 | Non | SS118 | EIT2.1 | B04 | EIT02.1 |
| 2.1-SS118EE04-1110 |  | Inspection and Testing, Per-Commissionning | 10d | 2026-02-09 A | 2026-02-19 A | 2.1-SS118EE04-1060 | 100% |  | LABOUR; Construction Material [100] | UDF_G3 | 0 | EE | 1 | C03a | TY1 | Non | SS118 | EIT2.1 | B04 | EIT02.1 |
| 2.1-SS118EE04-1160 |  | Clear punch | 4d | 2026-02-20 A | 2026-02-24 A | 2.1-SS118EE04-1110 | 100% |  | LABOUR; Construction Material [40] | UDF_G3 | 0 | EE | 1 | C03a | TY1 | Non | SS118 | EIT2.1 | B04 | EIT02.1 |
| 2.1-SS118EE04-1210 |  | Complete QA/QC document | 3d | 2026-02-25 A | 2026-02-27 A | 2.1-SS118EE04-1160 | 100% |  | LABOUR; Construction Material [30] | UDF_G3 | 0 | EE | 1 | C03a | TY1 | Non | SS118 | EIT2.1 | B04 | EIT02.1 |
|  | 6 | **S118-ELC-0007 - KM-10602C Exciter control panel 415 V** |  | 2026-01-22 | 2026-02-27 |  |  |  |  |  |  |  |  |  |  |  |  |  |  |  |
| 2.1-SS118EE04-1020 |  | Install Equipment | 10d | 2026-01-22 A | 2026-02-02 A | 2.1-SS118EE04-1010 SS | 100% |  | LABOUR; Construction Material [100] | UDF_G3 | 0 | EE | 1 | C03a | TY1 | Non | SS118 | EIT2.1 | B04 | EIT02.1 |
| 2.1-SS118EE04-1070 |  | Internal Wiring Cable | 5d | 2026-02-03 A | 2026-02-07 A | 2.1-SS118EE04-1020 | 100% |  | LABOUR; Construction Material [50] | UDF_G3 | 0 | EE | 1 | C03a | TY1 | Non | SS118 | EIT2.1 | B04 | EIT02.1 |
| 2.1-SS118EE04-1120 |  | Inspection and Testing, Per-Commissionning | 10d | 2026-02-09 A | 2026-02-19 A | 2.1-SS118EE04-1070 | 100% |  | LABOUR; Construction Material [100] | UDF_G3 | 0 | EE | 1 | C03a | TY1 | Non | SS118 | EIT2.1 | B04 | EIT02.1 |
| 2.1-SS118EE04-1170 |  | Clear punch | 4d | 2026-02-20 A | 2026-02-24 A | 2.1-SS118EE04-1120 | 100% |  | LABOUR; Construction Material [40] | UDF_G3 | 0 | EE | 1 | C03a | TY1 | Non | SS118 | EIT2.1 | B04 | EIT02.1 |
| 2.1-SS118EE04-1220 |  | Complete QA/QC document | 3d | 2026-02-25 A | 2026-02-27 A | 2.1-SS118EE04-1170 | 100% |  | LABOUR; Construction Material [30] | UDF_G3 | 0 | EE | 1 | C03a | TY1 | Non | SS118 | EIT2.1 | B04 | EIT02.1 |
|  | 2 | **S118-ELC-0008 - KM-10602D Exciter control panel 415 V** |  | 2026-01-22 | 2026-02-27 |  |  |  |  |  |  |  |  |  |  |  |  |  |  |  |
| 2.1-SS118EE04-1030 |  | Install Equipment | 10d | 2026-01-22 A | 2026-02-02 A | 2.1-SS118EE04-1020 SS | 100% |  | LABOUR; Construction Material [100] | UDF_G3 | 0 | EE | 1 | C03a | TY1 | Non | SS118 | EIT2.1 | B04 | EIT02.1 |
| 2.1-SS118EE04-1080 |  | Internal Wiring Cable | 5d | 2026-02-03 A | 2026-02-07 A | 2.1-SS118EE04-1030 | 100% |  | LABOUR; Construction Material [50] | UDF_G3 | 0 | EE | 1 | C03a | TY1 | Non | SS118 | EIT2.1 | B04 | EIT02.1 |
| 2.1-SS118EE04-1130 |  | Inspection and Testing, Per-Commissionning | 10d | 2026-02-09 A | 2026-02-19 A | 2.1-SS118EE04-1080 | 100% |  | LABOUR; Construction Material [100] | UDF_G3 | 0 | EE | 1 | C03a | TY1 | Non | SS118 | EIT2.1 | B04 | EIT02.1 |
| 2.1-SS118EE04-1180 |  | Clear punch | 4d | 2026-02-20 A | 2026-02-24 A | 2.1-SS118EE04-1130 | 100% |  | LABOUR; Construction Material [40] | UDF_G3 | 0 | EE | 1 | C03a | TY1 | Non | SS118 | EIT2.1 | B04 | EIT02.1 |
| 2.1-SS118EE04-1230 |  | Complete QA/QC document | 3d | 2026-02-25 A | 2026-02-27 A | 2.1-SS118EE04-1180 | 100% |  | LABOUR; Construction Material [30] | UDF_G3 | 0 | EE | 1 | C03a | TY1 | Non | SS118 | EIT2.1 | B04 | EIT02.1 |

| ID | WBS | Activity | Duration | Start | Finish | Predecessors | Complete | Total float | Free float | Constraint | Resources | On Schedule Indicator | %Completed | Disciplines | Main Activity | WBS | Types | EIT2 Main Activity | Areas | Phases | EIT WBS | EIT PKG |
| --- | --- | --- | --- | --- | --- | --- | --- | --- | --- | --- | --- | --- | --- | --- | --- | --- | --- | --- | --- | --- | --- | --- |
|  | 1 | **S118-ELC-0009 - PLC PANEL 415 V K-10602A/B/C/D Change Ober Cabinet** |  | 2026-01-22 | 2026-02-28 |  |  |  |  |  |  |  |  |  |  |  |  |  |  |  |  |  |
| 2.1-SS118EE04-1040 |  | Install Equipment | 10d | 2026-01-22 A | 2026-02-02 A | 2.1-SS118EE04-1030 SS | 100% |  |  |  | LABOUR [3 h]; Construction Material [100] | UDF_G3 | 0 | EE | 1 | C03a | TY1 | Non | SS118 | EIT2.1 | B04 | EIT02.1 |
| 2.1-SS118EE04-1090 |  | Internal Wiring Cable | 5d | 2026-02-03 A | 2026-02-07 A | 2.1-SS118EE04-1040 | 100% |  |  |  | LABOUR [3 h]; Construction Material [50] | UDF_G3 | 0 | EE | 1 | C03a | TY1 | Non | SS118 | EIT2.1 | B04 | EIT02.1 |
| 2.1-SS118EE04-1140 |  | Inspection and Testing, Per-Commissionning | 10d | 2026-02-09 A | 2026-02-19 A | 2.1-SS118EE04-1090 | 100% |  |  |  | LABOUR [3 h]; Construction Material [100] | UDF_G3 | 0 | EE | 1 | C03a | TY1 | Non | SS118 | EIT2.1 | B04 | EIT02.1 |
| 2.1-SS118EE04-1190 |  | Clear punch | 4d | 2026-02-20 A | 2026-02-24 A | 2.1-SS118EE04-1140 | 100% |  |  |  | LABOUR [75 h]; Construction Material [40] | UDF_G3 | 0 | EE | 1 | C03a | TY1 | Non | SS118 | EIT2.1 | B04 | EIT02.1 |
| 2.1-SS118EE04-1240 |  | Complete QA/QC document | 4d | 2026-02-25 A | 2026-02-28 A | 2.1-SS118EE04-1190 | 100% |  |  |  | LABOUR [75 h]; Construction Material [40] | UDF_G3 | 0 | EE | 1 | C03a | TY1 | Non | SS118 | EIT2.1 | B04 | EIT02.1 |
|  | 7 | **WBS : E06** |  | 2026-01-22 | 2026-06-15 |  |  |  |  |  |  |  |  |  |  |  |  |  |  |  |  |  |
|  | 4 | **Substation SS-077** |  | 2026-01-22 | 2026-06-15 |  |  |  |  |  |  |  |  |  |  |  |  |  |  |  |  |  |
|  | 1 | **Electrical** |  | 2026-01-22 | 2026-06-15 |  |  |  |  |  |  |  |  |  |  |  |  |  |  |  |  |  |
|  | 2 | **Electrical Equipment Installation** |  | 2026-01-22 | 2026-06-15 |  |  |  |  |  |  |  |  |  |  |  |  |  |  |  |  |  |
|  | 2 | **Miscellaneous Panels** |  | 2026-01-22 | 2026-05-22 |  |  |  |  |  |  |  |  |  |  |  |  |  |  |  |  |  |
|  | 5 | **SS-ANN-77B - Substation Annunciator Panel** |  | 2026-01-22 | 2026-05-22 |  |  |  |  |  |  |  |  |  |  |  |  |  |  |  |  |  |
| 2.1-SS077EE04-1000 |  | Install Equipment | 10d | 2026-01-22 A | 2026-02-02 A |  | 100% |  |  | start on or after 2026-01-22 | LABOUR [10 h]; Construction Material [100] | UDF_G3 | 0 | EE | 1 | C03a | TY1 | Non | SS077 | EIT2.1 | E06 | EIT02.1 |
| 2.1-SS077EE04-1090 |  | Inspection and Testing, Per-Commissionning | 10d | 2026-02-03 A | 2026-02-13 A | 2.1-SS077EE04-1000 | 100% |  |  |  | LABOUR [5 h]; Construction Material [100] | UDF_G3 | 0 | EE | 1 | C03a | TY1 | Non | SS077 | EIT2.1 | E06 | EIT02.1 |
| 2.1-SS077EE04-1320 |  | Clear punch | 4d | 2026-05-15 | 2026-05-19 | 2.1-SS077EE04-1090 |  | -47d | 0d |  | LABOUR [2 h]; Construction Material [40] | UDF_G3 | 0 | EE | 1 | C03a | TY1 | Non | SS077 | EIT2.1 | E06 | EIT02.1 |
| 2.1-SS077EE04-1530 |  | Complete QA/QC document | 3d | 2026-05-20 | 2026-05-22 | 2.1-SS077EE04-1320 |  | -47d | 20d |  | LABOUR [2.55 h]; Construction Material [30] | UDF_G3 | 0 | EE | 1 | C03a | TY1 | Non | SS077 | EIT2.1 | E06 | EIT02.1 |
|  | 3 | **SS-ANN-77C - Substation Annunciator Panel** |  | 2026-02-03 | 2026-05-22 |  |  |  |  |  |  |  |  |  |  |  |  |  |  |  |  |  |
| 2.1-SS077EE04-1100 |  | Inspection and Testing, Per-Commissionning | 10d | 2026-02-03 A | 2026-02-13 A | 2.1-SS077EE04-1090 SS | 100% |  |  |  | LABOUR [10 h]; Construction Material [100] | UDF_G3 | 0 | EE | 1 | C03a | TY1 | Non | SS077 | EIT2.1 | E06 | EIT02.1 |
| 2.1-SS077EE04-1330 |  | Clear punch | 4d | 2026-05-15 | 2026-05-19 | 2.1-SS077EE04-1100 |  | -47d | 0d |  | LABOUR [5 h]; Construction Material [40] | UDF_G3 | 0 | EE | 1 | C03a | TY1 | Non | SS077 | EIT2.1 | E06 | EIT02.1 |
| 2.1-SS077EE04-1540 |  | Complete QA/QC document | 3d | 2026-05-20 | 2026-05-22 | 2.1-SS077EE04-1330 |  | -47d | 20d |  | LABOUR [4.55 h]; Construction Material [30] | UDF_G3 | 0 | EE | 1 | C03a | TY1 | Non | SS077 | EIT2.1 | E06 | EIT02.1 |
|  | 5 | **ELICS Panels** |  | 2026-05-15 | 2026-06-15 |  |  |  |  |  |  |  |  |  |  |  |  |  |  |  |  |  |
|  | 9 | **E-S77-41-3 - Electrical Integrated Control System** |  | 2026-05-15 | 2026-06-15 |  |  |  |  |  |  |  |  |  |  |  |  |  |  |  |  |  |
| 2.1-SS077EE04-1010 |  | Install Equipment | 10d | 2026-05-15 | 2026-05-26 | 2.1-SS077EE04-1000 SS |  | -67d | 0d |  | LABOUR [10 h]; Construction Material [100] | UDF_G3 | 0 | EE | 1 | C03a | TY1 | Non | SS077 | EIT2.1 | E06 | EIT02.1 |
| 2.1-SS077EE04-1110 |  | Inspection and Testing, Per-Commissionning | 10d | 2026-05-27 | 2026-06-06 | 2.1-SS077EE04-1010 |  | -67d | 0d |  | LABOUR [5 h]; Construction Material [100] | UDF_G3 | 0 | EE | 1 | C03a | TY1 | Non | SS077 | EIT2.1 | E06 | EIT02.1 |
| 2.1-SS077EE04-1360 |  | Clear punch | 4d | 2026-06-08 | 2026-06-11 | 2.1-SS077EE04-1110 |  | -67d | 0d |  | LABOUR [2 h]; Construction Material [40] | UDF_G3 | 0 | EE | 1 | C03a | TY1 | Non | SS077 | EIT2.1 | E06 | EIT02.1 |
| 2.1-SS077EE04-1550 |  | Complete QA/QC document | 3d | 2026-06-12 | 2026-06-15 | 2.1-SS077EE04-1360 |  | -67d | 0d |  | LABOUR [2.55 h]; Construction Material [30] | UDF_G3 | 0 | EE | 1 | C03a | TY1 | Non | SS077 | EIT2.1 | E06 | EIT02.1 |

| ID | WBS | Activity | Duration | Start | Finish | Predecessors | Total float | Free float | Resources | On Schedule Indicator | %Completed | Disciplines | Main Activity | WBS | Types | EIT2 Main Activity | Areas | Phases | EIT WBS | EIT PKG |
| --- | --- | --- | --- | --- | --- | --- | --- | --- | --- | --- | --- | --- | --- | --- | --- | --- | --- | --- | --- | --- |
|  | 7 | **E-S77-41-4 - Extension of Electrical Integrated Control System E-S77-41** |  | 2026-05-15 | 2026-06-03 |  |  |  |  |  |  |  |  |  |  |  |  |  |  |  |
| 2.1-SS077EE04-1160 |  | Inspection and Testing, Per-Commissionning | 10d | 2026-05-15 | 2026-05-26 | 2.1-SS077EE04-1010 SS | -63d | 0d | LABOUR [10 h]; Construction Material [100] | UDF_G3 | 0 | EE | 1 | C03a | TY1 | Non | SS077 | EIT2.1 | E06 | EIT02.1 |
| 2.1-SS077EE04-1410 |  | Clear punch | 4d | 2026-05-27 | 2026-05-30 | 2.1-SS077EE04-1160 | -57d | 0d | LABOUR [5 h]; Construction Material [40] | UDF_G3 | 0 | EE | 1 | C03a | TY1 | Non | SS077 | EIT2.1 | E06 | EIT02.1 |
| 2.1-SS077EE04-1600 |  | Complete QA/QC document | 3d | 2026-06-01 | 2026-06-03 | 2.1-SS077EE04-1410 | -57d | 10d | LABOUR [4.55 h]; Construction Material [30] | UDF_G3 | 0 | EE | 1 | C03a | TY1 | Non | SS077 | EIT2.1 | E06 | EIT02.1 |
|  | 15 | **E-S77-42-4 - Extension of Electrical Integrated Control System E-S77-42** |  | 2026-05-15 | 2026-06-10 |  |  |  |  |  |  |  |  |  |  |  |  |  |  |  |
| 2.1-SS077EE04-1200 |  | Inspection and Testing, Per-Commissionning | 15d | 2026-05-15 | 2026-06-01 | 2.1-SS077EE04-1160 SS | -63d | 0d | LABOUR [10 h]; Construction Material [150] | UDF_G3 | 0 | EE | 1 | C03a | TY1 | Non | SS077 | EIT2.1 | E06 | EIT02.1 |
| 2.1-SS077EE04-1420 |  | Clear punch | 4d | 2026-06-02 | 2026-06-05 | 2.1-SS077EE04-1200 | -63d | 0d | LABOUR [5 h]; Construction Material [40] | UDF_G3 | 0 | EE | 1 | C03a | TY1 | Non | SS077 | EIT2.1 | E06 | EIT02.1 |
| 2.1-SS077EE04-1610 |  | Complete QA/QC document | 4d | 2026-06-06 | 2026-06-10 | 2.1-SS077EE04-1420 | -63d | 4d | LABOUR [4.55 h]; Construction Material [40] | UDF_G3 | 0 | EE | 1 | C03a | TY1 | Non | SS077 | EIT2.1 | E06 | EIT02.1 |
|  | 1 | **HV/LV Switchgear** |  | 2026-05-15 | 2026-06-03 |  |  |  |  |  |  |  |  |  |  |  |  |  |  |  |
|  | 1 | **S77B2 11kV Switchgear Panel** |  | 2026-05-15 | 2026-06-03 |  |  |  |  |  |  |  |  |  |  |  |  |  |  |  |
| 2.1-SS077EE04-1170 |  | Inspection and Testing, Per-Commissionning | 10d | 2026-05-15 | 2026-05-26 | 2.1-SS077EE04-1200 SS | -59d | 0d | LABOUR [10 h]; Construction Material [100] | UDF_G3 | 0 | EE | 1 | C03a | TY1 | Non | SS077 | EIT2.1 | E06 | EIT02.1 |
| 2.1-SS077EE04-1430 |  | Clear punch | 4d | 2026-05-27 | 2026-05-30 | 2.1-SS077EE04-1170 | -57d | 0d | LABOUR [5 h]; Construction Material [40] | UDF_G3 | 0 | EE | 1 | C03a | TY1 | Non | SS077 | EIT2.1 | E06 | EIT02.1 |
| 2.1-SS077EE04-1620 |  | Complete QA/QC document | 3d | 2026-06-01 | 2026-06-03 | 2.1-SS077EE04-1430 | -57d | 10d | LABOUR [4.55 h]; Construction Material [30] | UDF_G3 | 0 | EE | 1 | C03a | TY1 | Non | SS077 | EIT2.1 | E06 | EIT02.1 |
|  | 7 | **S77D2 3.3kV Switchgear Panel** |  | 2026-05-15 | 2026-06-03 |  |  |  |  |  |  |  |  |  |  |  |  |  |  |  |
| 2.1-SS077EE04-1210 |  | Inspection and Testing, Per-Commissionning | 10d | 2026-05-15 | 2026-05-26 | 2.1-SS077EE04-1170 SS | -59d | 0d | LABOUR [10 h]; Construction Material [100] | UDF_G3 | 0 | EE | 1 | C03a | TY1 | Non | SS077 | EIT2.1 | E06 | EIT02.1 |
| 2.1-SS077EE04-1440 |  | Clear punch | 4d | 2026-05-27 | 2026-05-30 | 2.1-SS077EE04-1210 | -57d | 0d | LABOUR [5 h]; Construction Material [40] | UDF_G3 | 0 | EE | 1 | C03a | TY1 | Non | SS077 | EIT2.1 | E06 | EIT02.1 |
| 2.1-SS077EE04-1630 |  | Complete QA/QC document | 3d | 2026-06-01 | 2026-06-03 | 2.1-SS077EE04-1440 | -57d | 10d | LABOUR [4.55 h]; Construction Material [30] | UDF_G3 | 0 | EE | 1 | C03a | TY1 | Non | SS077 | EIT2.1 | E06 | EIT02.1 |
|  | 11 | **S77E3 415V Switchgear Panel** |  | 2026-05-15 | 2026-06-03 |  |  |  |  |  |  |  |  |  |  |  |  |  |  |  |
| 2.1-SS077EE04-1220 |  | Inspection and Testing, Per-Commissionning | 10d | 2026-05-15 | 2026-05-26 | 2.1-SS077EE04-1210 SS | -59d | 0d | LABOUR [10 h]; Construction Material [100] | UDF_G3 | 0 | EE | 1 | C03a | TY1 | Non | SS077 | EIT2.1 | E06 | EIT02.1 |
| 2.1-SS077EE04-1450 |  | Clear punch | 4d | 2026-05-27 | 2026-05-30 | 2.1-SS077EE04-1220 | -57d | 0d | LABOUR [5 h]; Construction Material [40] | UDF_G3 | 0 | EE | 1 | C03a | TY1 | Non | SS077 | EIT2.1 | E06 | EIT02.1 |
| 2.1-SS077EE04-1640 |  | Complete QA/QC document | 3d | 2026-06-01 | 2026-06-03 | 2.1-SS077EE04-1450 | -57d | 10d | LABOUR [4.55 h]; Construction Material [30] | UDF_G3 | 0 | EE | 1 | C03a | TY1 | Non | SS077 | EIT2.1 | E06 | EIT02.1 |
|  | 8 | **S77E4 415V Switchgear Panel** |  | 2026-05-15 | 2026-06-03 |  |  |  |  |  |  |  |  |  |  |  |  |  |  |  |
| 2.1-SS077EE04-1230 |  | Inspection and Testing, Per-Commissionning | 10d | 2026-05-15 | 2026-05-26 | 2.1-SS077EE04-1220 SS | -59d | 0d | LABOUR [10 h]; Construction Material [100] | UDF_G3 | 0 | EE | 1 | C03a | TY1 | Non | SS077 | EIT2.1 | E06 | EIT02.1 |
| 2.1-SS077EE04-1460 |  | Clear punch | 4d | 2026-05-27 | 2026-05-30 | 2.1-SS077EE04-1230 | -57d | 0d | LABOUR [5 h]; Construction Material [40] | UDF_G3 | 0 | EE | 1 | C03a | TY1 | Non | SS077 | EIT2.1 | E06 | EIT02.1 |
| 2.1-SS077EE04-1650 |  | Complete QA/QC document | 3d | 2026-06-01 | 2026-06-03 | 2.1-SS077EE04-1460 | -57d | 10d | LABOUR [4.55 h]; Construction Material [30] | UDF_G3 | 0 | EE | 1 | C03a | TY1 | Non | SS077 | EIT2.1 | E06 | EIT02.1 |

| ID | WBS | Activity | Duration | Start | Finish | Predecessors | Complete | Total float | Free float | Resources | On Schedule Indicator | %Completed | Disciplines | Main Activity | WBS | Types | EIT2 Main Activity | Areas | Phases | EIT WBS | EIT PKG |
| --- | --- | --- | --- | --- | --- | --- | --- | --- | --- | --- | --- | --- | --- | --- | --- | --- | --- | --- | --- | --- | --- |
|  | 3 | **S77E7 415V Switchgear Panel** |  | 2026-05-15 | 2026-06-03 |  |  |  |  |  |  |  |  |  |  |  |  |  |  |  |  |
| 2.1-SS077EE04-1240 |  | Inspection and Testing, Per-Commissionning | 10d | 2026-05-15 | 2026-05-26 | 2.1-SS077EE04-1230 SS |  | -59d | 0d | LABOUR [10 h]; Construction Material [100] | UDF_G3 | 0 | EE | 1 | C03a | TY1 | Non | SS077 | EIT2.1 | E06 | EIT02.1 |
| 2.1-SS077EE04-1470 |  | Clear punch | 4d | 2026-05-27 | 2026-05-30 | 2.1-SS077EE04-1240 |  | -57d | 0d | LABOUR [5 h]; Construction Material [40] | UDF_G3 | 0 | EE | 1 | C03a | TY1 | Non | SS077 | EIT2.1 | E06 | EIT02.1 |
| 2.1-SS077EE04-1660 |  | Complete QA/QC document | 3d | 2026-06-01 | 2026-06-03 | 2.1-SS077EE04-1470 |  | -57d | 10d | LABOUR [4.55 h]; Construction Material [30] | UDF_G3 | 0 | EE | 1 | C03a | TY1 | Non | SS077 | EIT2.1 | E06 | EIT02.1 |
|  | 4 | **S77E21 415V Switchgear Panel** |  | 2026-05-15 | 2026-06-03 |  |  |  |  |  |  |  |  |  |  |  |  |  |  |  |  |
| 2.1-SS077EE04-1250 |  | Inspection and Testing, Per-Commissionning | 10d | 2026-05-15 | 2026-05-26 | 2.1-SS077EE04-1240 SS |  | -59d | 0d | LABOUR [10 h]; Construction Material [100] | UDF_G3 | 0 | EE | 1 | C03a | TY1 | Non | SS077 | EIT2.1 | E06 | EIT02.1 |
| 2.1-SS077EE04-1480 |  | Clear punch | 4d | 2026-05-27 | 2026-05-30 | 2.1-SS077EE04-1250 |  | -57d | 0d | LABOUR [5 h]; Construction Material [40] | UDF_G3 | 0 | EE | 1 | C03a | TY1 | Non | SS077 | EIT2.1 | E06 | EIT02.1 |
| 2.1-SS077EE04-1670 |  | Complete QA/QC document | 3d | 2026-06-01 | 2026-06-03 | 2.1-SS077EE04-1480 |  | -57d | 10d | LABOUR [4.55 h]; Construction Material [30] | UDF_G3 | 0 | EE | 1 | C03a | TY1 | Non | SS077 | EIT2.1 | E06 | EIT02.1 |
|  | 12 | **S77B1-A8 PM-14702D (3000 kW) - Remain full function test** |  | 2026-05-15 | 2026-06-03 |  |  |  |  |  |  |  |  |  |  |  |  |  |  |  |  |
| 2.1-SS077EE04-1260 |  | Inspection and Testing, Per-Commissionning | 10d | 2026-05-15 | 2026-05-26 | 2.1-SS077EE04-1250 SS |  | -59d | 0d | LABOUR [10 h]; Construction Material [100] | UDF_G3 | 0 | EE | 1 | C03a | TY1 | Non | SS077 | EIT2.1 | E06 | EIT02.1 |
| 2.1-SS077EE04-1490 |  | Clear punch | 4d | 2026-05-27 | 2026-05-30 | 2.1-SS077EE04-1260 |  | -57d | 0d | LABOUR [5 h]; Construction Material [40] | UDF_G3 | 0 | EE | 1 | C03a | TY1 | Non | SS077 | EIT2.1 | E06 | EIT02.1 |
| 2.1-SS077EE04-1680 |  | Complete QA/QC document | 3d | 2026-06-01 | 2026-06-03 | 2.1-SS077EE04-1490 |  | -57d | 10d | LABOUR [4.55 h]; Construction Material [30] | UDF_G3 | 0 | EE | 1 | C03a | TY1 | Non | SS077 | EIT2.1 | E06 | EIT02.1 |
|  | 9 | **S77D1-B7 PM-10719B (715kW) - Remain full function test** |  | 2026-05-15 | 2026-06-03 |  |  |  |  |  |  |  |  |  |  |  |  |  |  |  |  |
| 2.1-SS077EE04-1180 |  | Inspection and Testing, Per-Commissionning | 10d | 2026-05-15 | 2026-05-26 | 2.1-SS077EE04-1260 SS |  | -59d | 0d | LABOUR [10 h]; Construction Material [100] | UDF_G3 | 0 | EE | 1 | C03a | TY1 | Non | SS077 | EIT2.1 | E06 | EIT02.1 |
| 2.1-SS077EE04-1500 |  | Clear punch | 4d | 2026-05-27 | 2026-05-30 | 2.1-SS077EE04-1180 |  | -57d | 0d | LABOUR [5 h]; Construction Material [40] | UDF_G3 | 0 | EE | 1 | C03a | TY1 | Non | SS077 | EIT2.1 | E06 | EIT02.1 |
| 2.1-SS077EE04-1690 |  | Complete QA/QC document | 3d | 2026-06-01 | 2026-06-03 | 2.1-SS077EE04-1500 |  | -57d | 10d | LABOUR [4.55 h]; Construction Material [30] | UDF_G3 | 0 | EE | 1 | C03a | TY1 | Non | SS077 | EIT2.1 | E06 | EIT02.1 |
|  | 13 | **UPS and Charger System** |  | 2026-03-04 | 2026-05-22 |  |  |  |  |  |  |  |  |  |  |  |  |  |  |  |  |
|  | 15 | **S77J1 - 125VDC Distribution Board** |  | 2026-03-04 | 2026-05-18 |  |  |  |  |  |  |  |  |  |  |  |  |  |  |  |  |
| 2.1-SS077EE04-1060 |  | Inspection and Testing, Per-Commissionning | 10d | 2026-03-04 A | 2026-03-14 A | 2.1-SS077EE04-1180 SS | 100% |  |  | LABOUR [10 h]; Construction Material [100] | UDF_G3 | 1 | EE | 1 | C03a | TY1 | Non | SS077 | EIT2.1 | E06 | EIT02.1 |
| 2.1-SS077EE04-1190 |  | Clear punch | 4d | 2026-05-01 A | 2026-05-05 A | 2.1-SS077EE04-1060 SS | 100% |  |  | LABOUR [5 h]; Construction Material [40] | UDF_G3 | 1 | EE | 1 | C03a | TY1 | Non | SS077 | EIT2.1 | E06 | EIT02.1 |
| 2.1-SS077EE04-1290 |  | Complete QA/QC document | 3d | 2026-05-15 | 2026-05-18 | 2.1-SS077EE04-1190 |  | -43d | 24d | LABOUR [4.55 h]; Construction Material [30] | UDF_G3 | 0 | EE | 1 | C03a | TY1 | Non | SS077 | EIT2.1 | E06 | EIT02.1 |
|  | 14 | **BATT-C77J1 - 125VDC Battery Charger - Battery Unit for C77J1** |  | 2026-03-04 | 2026-05-22 |  |  |  |  |  |  |  |  |  |  |  |  |  |  |  |  |
| 2.1-SS077EE04-1020 |  | Install Equipment | 10d | 2026-03-04 A | 2026-03-14 A | 2.1-SS077EE04-1060 SS | 100% |  |  | LABOUR [10 h]; Construction Material | UDF_G3 | 1 | EE | 1 | C03a | TY1 | Non | SS077 | EIT2.1 | E06 | EIT02.1 |
| 2.1-SS077EE04-1120 |  | Inspection and Testing, Per-Commissionning | 5d | 2026-03-16 A | 2026-03-20 A | 2.1-SS077EE04-1020 | 100% |  |  | LABOUR [5 h]; Construction Material | UDF_G3 | 1 | EE | 1 | C03a | TY1 | Non | SS077 | EIT2.1 | E06 | EIT02.1 |
| 2.1-SS077EE04-1370 |  | Clear punch | 4d | 2026-05-15 | 2026-05-19 | 2.1-SS077EE04-1120 SS |  | -47d | 0d | LABOUR [2 h]; Construction Material [40] | UDF_G3 | 1 | EE | 1 | C03a | TY1 | Non | SS077 | EIT2.1 | E06 | EIT02.1 |
| 2.1-SS077EE04-1560 |  | Complete QA/QC document | 3d | 2026-05-20 | 2026-05-22 | 2.1-SS077EE04-1370 |  | -47d | 20d | LABOUR [2.55 h]; Construction Material [30] | UDF_G3 | 0 | EE | 1 | C03a | TY1 | Non | SS077 | EIT2.1 | E06 | EIT02.1 |

| ID | WBS | Activity | Duration | Start | Finish | Predecessors | Complete | Planned start | Planned finish | Total float | Free float | Resources | On Schedule Indicator | %Completed | Disciplines | Main Activity | WBS | Types | EIT2 Main Activity | Areas | Phases | EIT WBS | EIT PKG |
| --- | --- | --- | --- | --- | --- | --- | --- | --- | --- | --- | --- | --- | --- | --- | --- | --- | --- | --- | --- | --- | --- | --- | --- |
|  | 16 | **BATT-C77J2 - 125VDC Battery Charger - Battery Unit for C77J2** |  | 2026-03-04 | 2026-05-22 |  |  |  |  |  |  |  |  |  |  |  |  |  |  |  |  |  |  |
| 2.1-SS077EE04-1030 |  | Install Equipment | 10d | 2026-03-04 A | 2026-03-14 A | 2.1-SS077EE04-1020 SS | 100% |  |  |  |  | LABOUR [10 h]; Construction Material | UDF_G3 | 1 | EE | 1 | C03a | TY1 | Non | SS077 | EIT2.1 | E06 | EIT02.1 |
| 2.1-SS077EE04-1130 |  | Inspection and Testing, Per-Commissionning | 5d | 2026-03-16 A | 2026-03-20 A | 2.1-SS077EE04-1030 | 100% |  |  |  |  | LABOUR [5 h]; Construction Material | UDF_G3 | 1 | EE | 1 | C03a | TY1 | Non | SS077 | EIT2.1 | E06 | EIT02.1 |
| 2.1-SS077EE04-1380 |  | Clear punch | 4d | 2026-05-15 | 2026-05-19 | 2.1-SS077EE04-1130 SS |  |  |  | -47d | 0d | LABOUR [2 h]; Construction Material [40] | UDF_G3 | 1 | EE | 1 | C03a | TY1 | Non | SS077 | EIT2.1 | E06 | EIT02.1 |
| 2.1-SS077EE04-1570 |  | Complete QA/QC document | 3d | 2026-05-20 | 2026-05-22 | 2.1-SS077EE04-1380 |  |  |  | -47d | 20d | LABOUR [2.55 h]; Construction Material [30] | UDF_G3 | 0 | EE | 1 | C03a | TY1 | Non | SS077 | EIT2.1 | E06 | EIT02.1 |
|  | 6 | **CB-BATT-C77J1 - 125VDC Battery Charger - Battery CB for C77J1** |  | 2026-03-04 | 2026-05-22 |  |  |  |  |  |  |  |  |  |  |  |  |  |  |  |  |  |  |
| 2.1-SS077EE04-1040 |  | Install Equipment | 10d | 2026-03-04 A | 2026-03-14 A | 2.1-SS077EE04-1030 SS | 100% |  |  |  |  | LABOUR [10 h]; Construction Material | UDF_G3 | 1 | EE | 1 | C03a | TY1 | Non | SS077 | EIT2.1 | E06 | EIT02.1 |
| 2.1-SS077EE04-1140 |  | Inspection and Testing, Per-Commissionning | 5d | 2026-03-16 A | 2026-03-20 A | 2.1-SS077EE04-1040 | 100% |  |  |  |  | LABOUR [5 h]; Construction Material | UDF_G3 | 1 | EE | 1 | C03a | TY1 | Non | SS077 | EIT2.1 | E06 | EIT02.1 |
| 2.1-SS077EE04-1390 |  | Clear punch | 4d | 2026-05-15 | 2026-05-19 | 2.1-SS077EE04-1140 SS |  |  |  | -47d | 0d | LABOUR [2 h]; Construction Material [40] | UDF_G3 | 1 | EE | 1 | C03a | TY1 | Non | SS077 | EIT2.1 | E06 | EIT02.1 |
| 2.1-SS077EE04-1580 |  | Complete QA/QC document | 3d | 2026-05-20 | 2026-05-22 | 2.1-SS077EE04-1390 |  |  |  | -47d | 20d | LABOUR [2.55 h]; Construction Material [30] | UDF_G3 | 0 | EE | 1 | C03a | TY1 | Non | SS077 | EIT2.1 | E06 | EIT02.1 |
|  | 17 | **CB-BATT-C77J2 - 125VDC Battery Charger - Battery CB for C77J2** |  | 2026-03-04 | 2026-05-22 |  |  |  |  |  |  |  |  |  |  |  |  |  |  |  |  |  |  |
| 2.1-SS077EE04-1050 |  | Install Equipment | 10d | 2026-03-04 A | 2026-03-14 A | 2.1-SS077EE04-1040 SS | 100% |  |  |  |  | LABOUR [10 h]; Construction Material | UDF_G3 | 1 | EE | 1 | C03a | TY1 | Non | SS077 | EIT2.1 | E06 | EIT02.1 |
| 2.1-SS077EE04-1150 |  | Inspection and Testing, Per-Commissionning | 5d | 2026-03-16 A | 2026-03-20 A | 2.1-SS077EE04-1050 | 100% |  |  |  |  | LABOUR [5 h]; Construction Material | UDF_G3 | 1 | EE | 1 | C03a | TY1 | Non | SS077 | EIT2.1 | E06 | EIT02.1 |
| 2.1-SS077EE04-1400 |  | Clear punch | 4d | 2026-05-15 | 2026-05-19 | 2.1-SS077EE04-1150 SS |  |  |  | -47d | 0d | LABOUR [2 h]; Construction Material [40] | UDF_G3 | 0 | EE | 1 | C03a | TY1 | Non | SS077 | EIT2.1 | E06 | EIT02.1 |
| 2.1-SS077EE04-1590 |  | Complete QA/QC document | 3d | 2026-05-20 | 2026-05-22 | 2.1-SS077EE04-1400 |  |  |  | -47d | 20d | LABOUR [2.55 h]; Construction Material [30] | UDF_G3 | 0 | EE | 1 | C03a | TY1 | Non | SS077 | EIT2.1 | E06 | EIT02.1 |
|  | 1 | **C77J1 - 125VDC Battery Charger** |  | 2026-03-04 | 2026-05-22 |  |  |  |  |  |  |  |  |  |  |  |  |  |  |  |  |  |  |
| 2.1-SS077EE04-1070 |  | Inspection and Testing, Per-Commissionning | 10d | 2026-03-04 A | 2026-03-14 A | 2.1-SS077EE04-1050 SS | 100% |  |  |  |  | LABOUR [10 h]; Construction Material [100] | UDF_G3 | 1 | EE | 1 | C03a | TY1 | Non | SS077 | EIT2.1 | E06 | EIT02.1 |
| 2.1-SS077EE04-1300 |  | Clear punch | 4d | 2026-05-15 | 2026-05-19 | 2.1-SS077EE04-1070 SS |  |  |  | -47d | 0d | LABOUR [5 h]; Construction Material [40] | UDF_G3 | 1 | EE | 1 | C03a | TY1 | Non | SS077 | EIT2.1 | E06 | EIT02.1 |
| 2.1-SS077EE04-1340 |  | Complete QA/QC document | 3d | 2026-05-20 | 2026-05-22 | 2.1-SS077EE04-1300 |  |  |  | -47d | 20d | LABOUR [4.55 h]; Construction Material [30] | UDF_G3 | 0 | EE | 1 | C03a | TY1 | Non | SS077 | EIT2.1 | E06 | EIT02.1 |
|  | 2 | **C77J2 - 125VDC Battery Charger** |  | 2026-03-04 | 2026-05-22 |  |  |  |  |  |  |  |  |  |  |  |  |  |  |  |  |  |  |
| 2.1-SS077EE04-1080 |  | Inspection and Testing, Per-Commissionning | 10d | 2026-03-04 A | 2026-05-07 A | 2.1-SS077EE04-1070 SS | 100% | 2026-03-04 | 2026-03-14 |  |  | LABOUR [10 h]; Construction Material [100] | UDF_G3 | 1 | EE | 1 | C03a | TY1 | Non | SS077 | EIT2.1 | E06 | EIT02.1 |
| 2.1-SS077EE04-1310 |  | Clear punch | 4d | 2026-05-15 | 2026-05-19 | 2.1-SS077EE04-1080 |  |  |  | -47d | 0d | LABOUR [5 h]; Construction Material [40] | UDF_G3 | 1 | EE | 1 | C03a | TY1 | Non | SS077 | EIT2.1 | E06 | EIT02.1 |
| 2.1-SS077EE04-1350 |  | Complete QA/QC document | 3d | 2026-05-20 | 2026-05-22 | 2.1-SS077EE04-1310 |  |  |  | -47d | 20d | LABOUR [4.55 h]; Construction Material [30] | UDF_G3 | 0 | EE | 1 | C03a | TY1 | Non | SS077 | EIT2.1 | E06 | EIT02.1 |
|  | 16 | **Power Transformer** |  | 2026-05-15 | 2026-06-05 |  |  |  |  |  |  |  |  |  |  |  |  |  |  |  |  |  |  |
|  | 17 | **TR77D2L - Transformer 11/3.45kV** |  | 2026-05-15 | 2026-06-03 |  |  |  |  |  |  |  |  |  |  |  |  |  |  |  |  |  |  |
| 2.1-SS077EE04-1270 |  | Inspection and Testing, Per-Commissionning | 10d | 2026-05-15 | 2026-05-26 | 2.1-SS077EE04-1080 SS |  |  |  | -59d | 0d | LABOUR [10 h]; Construction Material [100] | UDF_G3 | 0 | EE | 1 | C03a | TY1 | Non | SS077 | EIT2.1 | E06 | EIT02.1 |
| 2.1-SS077EE04-1510 |  | Clear punch | 4d | 2026-05-27 | 2026-05-30 | 2.1-SS077EE04-1270 |  |  |  | -57d | 0d | LABOUR [5 h]; Construction Material [40] | UDF_G3 | 0 | EE | 1 | C03a | TY1 | Non | SS077 | EIT2.1 | E06 | EIT02.1 |
| 2.1-SS077EE04-1700 |  | Complete QA/QC document | 3d | 2026-06-01 | 2026-06-03 | 2.1-SS077EE04-1510 |  |  |  | -57d | 10d | LABOUR [4.55 h]; Construction Material [30] | UDF_G3 | 0 | EE | 1 | C03a | TY1 | Non | SS077 | EIT2.1 | E06 | EIT02.1 |

| ID | WBS | Activity | Type | Duration | Start | Finish | Predecessors | Total float | Free float | Constraint | Resources | On Schedule Indicator | %Completed | Disciplines | Main Activity | WBS | Types | EIT2 Main Activity | Areas | Phases | EIT WBS | EIT PKG |
| --- | --- | --- | --- | --- | --- | --- | --- | --- | --- | --- | --- | --- | --- | --- | --- | --- | --- | --- | --- | --- | --- | --- |
|  | 6 | **TR77D2R - Transformer 11/3.45kV** |  |  | 2026-05-15 | 2026-06-05 |  |  |  |  |  |  |  |  |  |  |  |  |  |  |  |  |
| 2.1-SS077EE04-1280 |  | Inspection and Testing, Per-Commissionning |  | 10d | 2026-05-15 | 2026-05-26 | 2.1-SS077EE04-1270 SS | -59d | 0d |  | LABOUR [10 h]; Construction Material [100] | UDF_G3 | 0 | EE | 1 | C03a | TY1 | Non | SS077 | EIT2.1 | E06 | EIT02.1 |
| 2.1-SS077EE04-1520 |  | Clear punch |  | 4d | 2026-05-27 | 2026-05-30 | 2.1-SS077EE04-1280 | -59d | 0d |  | LABOUR [5 h]; Construction Material [40] | UDF_G3 | 0 | EE | 1 | C03a | TY1 | Non | SS077 | EIT2.1 | E06 | EIT02.1 |
| 2.1-SS077EE04-1710 |  | Complete QA/QC document |  | 5d | 2026-06-01 | 2026-06-05 | 2.1-SS077EE04-1520 | -59d | 8d |  | LABOUR [75 h]; Construction Material [50] | UDF_G3 | 0 | EE | 1 | C03a | TY1 | Non | SS077 | EIT2.1 | E06 | EIT02.1 |
|  | 1 | **EIT 2.2 : Schedule Level 4 : Clean Fuel Project (CFP)** |  |  | 2026-04-01 | 2027-06-08 |  |  |  |  |  |  |  |  |  |  |  |  |  |  |  |  |
|  | 1 | **EIT-2.2 Project Milestones** |  |  | 2026-07-10 | 2027-06-08 |  |  |  |  |  |  |  |  |  |  |  |  |  |  |  |  |
|  | 1 | **SDA** |  |  | 2026-08-11 | 2027-05-29 |  |  |  |  |  |  |  |  |  |  |  |  |  |  |  |  |
| MI2100 |  | EIT2.2 Instrument Caribration and Installation SDA (Solvent De-Asphalting Unit) | milestone | 0d | 2026-08-11 | 2026-08-11 | 2.2-SDAIN05-1630, 2.2-SDAIN04-1150, 2.2-SDAIN04-1260, 2.2-SDAIN04-1230, 2.2-SDAIN05-2010 | -6d | 258d | finish on 2026-08-04 |  | UDF_G3 | 0 | CO |  |  |  | Non |  | EIT2.2 |  |  |
| MI2090 |  | EIT2.2 :Laying Instrument Cable concrete trench SDA (Solvent De-Asphalting Unit) | milestone | 0d | 2026-10-22 | 2026-10-22 | 2.2-SDAIN01-2060, 2.2-SDAIN01-2120, 2.2-SDAIN01-2180 | -6d | 196d | finish on 2026-10-15 |  | UDF_G3 | 0 | CO |  |  |  | Non |  | EIT2.2 |  |  |
| MI2080 |  | EIT2.2 :Lighting and Small Power SDA (Solvent De-Asphalting Unit) | milestone | 0d | 2026-11-06 | 2026-11-06 | 2.2-SDAEE05-1180, 2.2-SDAEE05-1580, 2.2-SDAEE06- 1150, 2.2-SDAEE05- 1150 | 0d | 183d | finish on 2026-11-06 |  | UDF_G3 | 0 | CO |  |  |  | Non |  | EIT2.2 |  |  |
| MI2040 |  | EIT2.2 :UG Cable SDA (Solvent De-Asphalting Unit) | milestone | 0d | 2026-11-07 | 2026-11-07 | 2.2-SDAEE01-2050, 2.2-SDAEE01-2060, 2.2-SDAEE01-2130, 2.2-SDAEE01-2200, 2.2-SDAEE01-2270, 2.2-SDAEE01-2330, 2.2-SDAEE01-2390, 2.2-SDAEE01-2450, 2.2-SDAEE01-2510, 2.2-SDAEE01-2570 | -6d | 182d | finish on 2026-10-31 |  | UDF_G3 | 0 | CO |  |  |  | Non |  | EIT2.2 |  |  |
| MI2110 |  | EIT2.2 Telecom. SDA (Solvent De-Asphalting Unit) | milestone | 0d | 2026-11-21 | 2026-11-21 | 2.2-SDATE-1350, 2.2-SDATE01-1100, 2.2-SDATE02-1110, 2.2-SDATE01.1-1140 | -2d | 170d | finish on 2026-11-19 |  | UDF_G3 | 0 | CO |  |  |  | Non |  | EIT2.2 |  |  |
| MI2030 |  | EIT2.2 : WBS C03c : SDA (Solvent De-Asphalting Unit) | milestone | 0d | 2027-05-29 | 2027-05-29 | 2.2-SDAIN05-2040 FF, 2.2-SDAEE09-1100, 2.2-SDAEE01-1490, 2.2-SDAEE02-1470, 2.2-SDAEE02-1500, 2.2-SDAEE02-1530, 2.2-SDAEE01-2270, 2.2-SDAEE01-2510, 2.2-SDAEE05-1580, 2.2-SDAEE06- 1150, 2.2-SDAEE05- 1180, 2.2-SDAIN01-2060, 2.2-SDAIN01-2120, 2.2-SDAIN01-2180, 2.2-SDAIN02-1640, 2.2-SDAIN04-1150, 2.2-SDAIN04-1260, 2.2-SDAIN04-1230, 2.2-SDAIN05-2010, 2.2-SDATE02-1110, 2.2-SDATE01.1-1140, 2.2-SDAEE01-2130, 2.2-SDAEE09-1010, 2.2-SDAEE09-1040, 2.2-SDAEE09-1070, 2.2-SDAEE09-1100 FF, 2.2-SDAEE01-2060, 2.2-SDAEE01-2130 FF, 2.2-SDAEE01-2200, 2.2-SDAEE01-2330, 2.2-SDAEE01-2390, 2.2-SDAEE01-2450, 2.2-SDAEE01-2570, 2.2-SDAEE03-1590, 2.2-SDAEE01-1430, 2.2-SDAEE01-1460, 2.2-SDAEE02-1440, 2.2-SDAEE05-1180, 2.2-SDAIN03-1490, 2.2-SDAIN01-1520, 2.2-SDAIN01-1550, 2.2-SDAIN02-1640 FF, 2.2-SDAIN02-1580, 2.2-SDAIN02-1610, 2.2-SDAIN05-1630, 2.2-SDAIN04-1150 FF, 2.2-SDATE-1350, 2.2-SDATE01-1100, 2.2-SDAEE05- 1150 | 8d |  |  |  | UDF_G3 | 0 | CO |  |  |  | Non |  | EIT2.2 |  |  |
|  | 2 | **HCU** |  |  | 2026-11-13 | 2027-04-05 |  |  |  |  |  |  |  |  |  |  |  |  |  |  |  |  |
| MI2050 |  | EIT2.2 :UG Cable HCU-3 (Hydrocracking Unit) | milestone | 0d | 2026-11-13 | 2026-11-13 | 2.2-HCUEE01-1110, 2.2-HCUEE01-2400, 2.2-HCUEE01-2460, 2.2-HCUEE01-2520, 2.2-HCUEE01-2580, 2.2-HCUEE01-2640, 2.2-HCUEE01-3150, 2.2-HCUEE01-3210, 2.2-HCUEE01-1050, 2.2-HCUEE01-1550, 2.2-HCUEE01-3480, 2.2-HCUEE01-3540, 2.2-HCUEE01-3360, 2.2-HCUEE01-3420, 2.2-HCUIN01-4050, 2.2-HCUIN01-4110, 2.2-HCUIN01 -4150, 2.2-HCUIN01- 4190, 2.2-HCUIN01- 4240 | -11d | 177d | finish on 2026-10-31 |  | UDF_G3 | 0 | CO |  |  |  | Non |  | EIT2.2 |  |  |
| MI2010 |  | EIT2.2 : WBS C03a : HCU-3 (Hydrocracking Unit) | milestone | 0d | 2027-04-05 | 2027-04-05 | 2.2-HCUIN09-1550 FF, 2.2-HCUEE09-1010, 2.2-HCUEE09-1030, 2.2-HCUEE09-1050, 2.2-HCUEE01-1110, 2.2-HCUEE01-2400, 2.2-HCUEE01-2520, 2.2-HCUEE01-2460, 2.2-HCUEE01-2580, 2.2-HCUEE01-2640, 2.2-HCUEE03-1490, 2.2-HCUEE01-1190, 2.2-HCUEE01-1230, 2.2-HCUEE01-1260, 2.2-HCUEE02-1170, 2.2-HCUEE02-1230, 2.2-HCUEE02-1290, 2.2-HCU EE05-1660, 2.2-HCUEE-1110, 2.2-HCUIN01-4050, 2.2-HCUIN04-1380, 2.2-HCUIN09-1490, 2.2-HCUTE02-1050, 2.2-HCUEE02-2490, 2.2-HCUIN09-1520, 2.2-HCUTE02-1350, 2.2-HCUEE01-3540, 2.2-HCUEE02-2610, 2.1-HCUEE-1170, 2.2-HCUIN01- 4240, 2.1-HCUTE02-1380 | -30.2d | 55.8d | finish on 2027-02-27 |  | UDF_G3 | 0 | CO |  |  |  | Non |  | EIT2.2 |  |  |
|  | 3 | **RHCU** |  |  | 2026-07-10 | 2027-06-08 |  |  |  |  |  |  |  |  |  |  |  |  |  |  |  |  |
| MI2190 |  | EIT2.2 :SS-077 and SS-097 Completed | milestone | 0d | 2026-07-10 | 2026-07-10 | 2.2-SS077EE04-1020, 2.2-SS077EE04-1050, 2.2-SS077EE04-1080, 2.2-SS077EE04-1110, 2.2-SS077EE04-1140, 2.2-SS077EE04-1170, 2.2-SS077EE04-1200, 2.2-SS077EE04-1230, 2.2-SS077EE04-1260, 2.2-SS077EE04-1290, 2.2-SS077EE04-1320, 2.2-SS077EE04-1350, 2.2-SS077EE04-1380, 2.2-SS077EE04-1410, 2.2-SS077EE04-1440, 2.2-SS077EE04-1470, 2.2-SS077EE04-1500, 2.2-SS077EE04-1530, 2.2-SS077EE04-1560, 2.2-SS077EE04-1590, 2.2-SS077EE04-1620, 2.2-SS077EE04-1650, 2.2-SS077EE04-1680, 2.2-SS077EE04-1710, 2.2-SS077EE04-1740, 2.2-SS077EE04-1770, 2.2-SS077EE04-1800, 2.2-SS077EE04-1830, 2.2-SS077EE04-1860, 2.2-SS077EE04-1890, 2.2-SS077EE04-1920, 2.2-SS077EE04-1950, 2.2-SS077EE04-1980, 2.2-SS077EE04-2010, 2.2-SS077EE04-2040, 2.2-SS077EE04-2070, 2.2-SS077EE04-2100, 2.2-SS077EE04-2130, 2.2-SS077EE04-2160, 2.2-SS077EE04-2190, 2.2-SS097EE04-1020, 2.2-SS097EE04-1050, 2.2-SS097EE04-1080, 2.2-SS097EE04-1110, 2.2-SS097EE04-1140, 2.2-SS097EE04-1170, 2.2-SS097EE04-1200, 2.2-SS097EE04-1230, 2.2-SS097EE04-1260, 2.2-SS097EE04-1290, 2.2-SS097EE04-1320, 2.2-SS097EE04-1350, 2.2-SS097EE04-1380, 2.2-SS097EE04-1410, 2.2-SS097EE04-1440, 2.2-SS097EE04-1470, 2.2-SS097EE04-1500, 2.2-SS097EE04-1530, 2.2-SS097EE04-1560, 2.2-SS097EE04-1590, 2.2-SS097EE04-1620, 2.2-SS097EE04-1650, 2.2-SS097EE04-1680, 2.2-SS097EE04-1710, 2.2-SS097EE04-1740, 2.2-SS097EE04-1770, 2.2-SS097EE04-1800, 2.2-SS097EE04-1830, 2.2-SS097EE04-1860, 2.2-SS097EE04-1890, 2.2-SS097EE04-1920, 2.2-SS097EE04-1950, 2.2-SS097EE04-1980, 2.2-SS097EE04-2010, 2.2-SS097EE04-2040, 2.2-SS097EE04-2070, 2.2-SS097EE04-2100, 2.2-SS097EE04-2130, 2.2-SS097EE04-2160, 2.2-SS097EE04-2190 | -37d | 285d | finish on 2026-05-28 |  | UDF_G3 | 0 | CO |  |  |  | Non |  | EIT2.2 |  |  |
| MI2180 |  | EIT2.2 :Laying Instrument Cable concrete trench RHCU-3 (Hydrocracking Unit) | milestone | 0d | 2026-08-01 | 2026-08-01 | 2.2-RHCUIN01-1470 | -6d | 266d | finish on 2026-07-25 |  | UDF_G3 | 0 | CO |  |  |  | Non |  | EIT2.2 |  |  |
| MI2130 |  | EIT2.2 AG Cable & Ladder RHCU-3 (Hydrocracking Unit) | milestone | 0d | 2026-11-26 | 2026-11-26 | 2.2-RHCUEE03-1040, 2.2-RHCUEE01-1260, 2.2-RHCUEE01-1290, 2.2-RHCUEE01-1320, 2.2-RHCUEE03-1140, 2.2-RHCUEE01-1740, 2.2-RHCUEE01-1770, 2.2-RHCUEE01-1800, 2.2-RHCUEE03-1190, 2.2-RHCUEE01-2310, 2.2-RHCUEE01-2340, 2.2-RHCUEE01-2370, 2.2-RHCUIN03-1190, 2.2-RHCUIN01-1380, 2.2-RHCUIN01-1410 | -6d | 166d | finish on 2026-11-19 |  | UDF_G3 | 0 | CO |  |  |  | Non |  | EIT2.2 |  |  |
| MI2060 |  | EIT2.2 :UG Cable RHCU (Residue Hydrocracking Unit) | milestone | 0d | 2026-12-14 | 2026-12-14 | 2.2-RHCUEE01-1050, 2.2-RHCUEE01-1110, 2.2-RHCUEE01-1170, 2.2-RHCUEE01-1230, 2.2-RHCUEE01-1470, 2.2-RHCUEE01-1710, 2.2-RHCUEE01-1530, 2.2-RHCUEE01-1600, 2.2-RHCUEE01-3420, 2.2-RHCUEE01-2040, 2.2-RHCUEE01-2100, 2.2-RHCUEE01-1920, 2.2-RHCUEE01-1980, 2.2-RHCUEE01-2160, 2.2-RHCUEE01-2220, 2.2-RHCUEE01-2280, 2.2-RHCUEE01-2430, 2.2-RHCUEE01-2490, 2.2-RHCUEE01-2560, 2.2-RHCUEE01-2730, 2.2-RHCUEE01-2880, 2.2-RHCUEE01-2940, 2.2-RHCUEE01-3000, 2.2-RHCUEE01-3060, 2.2-RHCUEE01-3120, 2.2-RHCUEE01-3180, 2.2-RHCUEE01-3240, 2.2-RHCUEE01-3300, 2.2-RHCUEE01-3360, 2.2-RHCUIN01-1050, 2.2-RHCUIN01-1230, 2.2-RHCUIN01-1350, 2.2-RHCUIN01-1470, 2.2-RHCUIN01-1590, 2.2-RHCUIN01-1650, 2.2-RHCUIN01-1710 | -12d | 151d | finish on 2026-11-30 |  | UDF_G3 | 0 | CO |  |  |  | Non |  | EIT2.2 |  |  |
| MI2170 |  | EIT2.2 EL&IN. termination/glanding RHCU-3 (Hydrocracking Unit) | milestone | 0d | 2027-01-18 | 2027-01-18 | 2.2-RHCUEE02-1380, 2.2-RHCUEE02-1410, 2.2-RHCUEE02-1440, 2.2-RHCUEE02-1470, 2.2-RHCUEE02-1290, 2.2-RHCUEE02-1320, 2.2-RHCUEE02-1350, 2.2-RHCUIN02-1410, 2.2-RHCUIN02-1200, 2.2-RHCUIN02-1230 | -6d | 121d | finish on 2027-01-11 |  | UDF_G3 | 0 | CO |  |  |  | Non |  | EIT2.2 |  |  |
| MI2140 |  | EIT2.2 :Lighting and Small Power RHCU (Solvent De-Asphalting Unit) | milestone | 0d | 2027-01-26 | 2027-01-26 | 2.2-RHCUEE02-1020, 2.2-RHCUEE02-1040, 2.2-RHCUEE02-1080, 2.2-RHCUEE02-1110, 2.2-RHCUEE06-1020, 2.2-RHCUEE05-1030, 2.2-RHCUEE05-1070, 2.2-RHCUEE00-1030, 2.2-RHCUEE06-1110, 2.2-RHCUEE05-1270, 2.2-RHCUEE05-1310, 2.2-RHCUEE00-1120 | -5.2d | 114.8d | finish on 2027-01-19 |  | UDF_G3 | 0 | CO |  |  |  | Non |  | EIT2.2 |  |  |
| MI2150 |  | EIT2.2 Instrument Caribration and Installation RHCU (Solvent De-Asphalting Unit) | milestone | 0d | 2027-01-28 | 2027-01-28 | 2.2-RHCUIN05-1050, 2.2-RHCUIN04-1040, 2.2-RHCUIN04-1110, 2.2-RHCUIN04-1150, 2.2-RHCUIN07-1030, 2.2-RHCUIN05-1080, 2.2-RHCUIN04-1490, 2.2-RHCUIN04-1600, 2.2-RHCUIN04-1570, 2.2-RHCUIN07-1150, 2.2-RHCUIN00-1110 | -6d | 112d | finish on 2027-01-21 |  | UDF_G3 | 0 | CO |  |  |  | Non |  | EIT2.2 |  |  |
| MI2160 |  | EIT2.2 Telecom. RHCU (Hydrocracking Unit) | milestone | 0d | 2027-01-29 | 2027-01-29 | 2.2-RHCUTE03-1040, 2.2-RHCUTE01-1020, 2.2-RHCUTE02-1020, 2.2-RHCUTE04-1020, 2.2-RHCUTE03-1140, 2.2-RHCUTE01-1080, 2.2-RHCUTE02-1080, 2.2-RHCUTE04-1080, 2.2-RHCUTE03-1190, 2.2-RHCUTE04-1110, 2.2-RHCUTE02-1110, 2.2-RHCUTE01-1110, 2.2-RHCUTE03-1190 FF | -2d | 111d | finish on 2027-01-27 |  | UDF_G3 | 0 | CO |  |  |  | Non |  | EIT2.2 |  |  |
| MI2020 |  | EIT2.2 : WBS C03b : RHCU (Residue Hydrocracking Unit) | milestone | 0d | 2027-06-08 | 2027-06-08 | 2.2-RHCUIN00-1140 FF, 2.2-RHCUEE01-1230, 2.2-RHCUEE00-1030, 2.2-RHCUIN00-1020, 2.2-RHCUTE02-1020, 2.2-RHCUEE02-1230, 2.2-RHCUEE00-1060, 2.2-RHCUIN00-1050, 2.2-RHCUTE02-1050, 2.2-RHCUTE04-1050, 2.2-RHCUEE01-2100, 2.2-RHCUEE02-1350, 2.2-RHCUIN00-1080, 2.2-RHCUTE02-1080, 2.2-RHCUEE02-1470, 2.2-RHCUEE00-1120, 2.2-RHCUTE02-1110, 2.2-RHCUEE01-3060, 2.2-RHCUEE02-1590, 2.2-RHCUEE00-1150 | 0d |  |  |  | UDF_G3 | 0 | CO |  |  |  | Non |  | EIT2.2 |  |  |

| ID | WBS | Activity | Type | Duration | Start | Finish | Predecessors | Complete | Remaining | Planned start | Planned finish | Total float | Free float | Constraint | Resources | On Schedule Indicator | %Completed | Disciplines | EIT2 Main Activity | Phases | Areas | EIT WBS | EIT PKG | Cable Pull & Laying |
| --- | --- | --- | --- | --- | --- | --- | --- | --- | --- | --- | --- | --- | --- | --- | --- | --- | --- | --- | --- | --- | --- | --- | --- | --- |
|  | 2 | **EIT-2.2 Project Milestones (Civil Works)** |  |  | 2026-08-11 | 2026-08-31 |  |  |  |  |  |  |  |  |  |  |  |  |  |  |  |  |  |  |
| MI2070 |  | EIT2.2 :Cable Trench SDA (Solvent De-Asphalting Unit) | milestone | 0d | 2026-08-11 | 2026-08-11 | 2.2-SDAEE09-1010, 2.2-SDAEE09-1040, 2.2-SDAEE09-1070, 2.2-SDAEE09-1100 |  |  |  |  | 0d | 258d | finish on 2026-08-11 |  | UDF_G3 | 0 | CO | Non | EIT2.2 |  |  |  |  |
| MI2120 |  | EIT2.2 :Cable Trench HCU-3 (Hydrocracking Unit) | milestone | 0d | 2026-08-31 | 2026-08-31 | 2.2-RHCUEE09-1010, 2.2-RHCUEE09-1070, 2.2-RHCUEE09-1090, 2.2-RHCUEE09-1110, 2.2-RHCUEE09-1130 |  |  |  |  | -6d | 241d | finish on 2026-08-24 |  | UDF_G3 | 0 | CO | Non | EIT2.2 |  |  |  |  |
|  | 4 | **EIT-2.2 Construction Work** |  |  | 2026-04-01 | 2027-06-08 |  |  |  |  |  |  |  |  |  |  |  |  |  |  |  |  |  |  |
|  | EIT-2.211 | **WBS : SDA (Solvent De-Asphalting Unit)** |  |  | 2026-04-01 | 2027-05-29 |  |  |  |  |  |  |  |  |  |  |  |  |  |  |  |  |  |  |
|  | 1 | **Electrical** |  |  | 2026-04-01 | 2027-03-12 |  |  |  |  |  |  |  |  |  |  |  |  |  |  |  |  |  |  |
|  | 6 | **Cable Trench** |  |  | 2026-04-01 | 2026-08-11 |  |  |  |  |  |  |  |  |  |  |  |  |  |  |  |  |  |  |
|  | 3 | **Cable trench Excavation buried** |  |  | 2026-04-01 | 2026-08-11 |  |  |  |  |  |  |  |  |  |  |  |  |  |  |  |  |  |  |
|  | 3 | **C03-ETD-594/562/560/559/615/464/467/567/595/568** |  |  | 2026-04-01 | 2026-05-20 |  |  |  |  |  |  |  |  |  |  |  |  |  |  |  |  |  |  |
| 2.2-SDAEE09-1000 |  | Cable trench Excavation |  | 25d | 2026-04-01 A | 2026-04-29 A |  | 100% |  |  |  |  |  | start on or after 2026-04-01 | LABOUR [900 h]; Construction Material [250] | UDF_G3 | 0 | EE | Non | EIT2.2 | SDA | C03c | EIT02.2 |  |
| 2.2-SDAEE09-1010 |  | Sand Filling Compaction |  | 5d | 2026-05-15 | 2026-05-20 | 2.2-SDAEE09-1000 |  |  |  |  | 61d | 0d |  | LABOUR [329 h]; Construction Material [50] | UDF_G3 | 0 | EE | Non | EIT2.2 | SDA | C03c | EIT02.2 |  |
|  | 1 | **C03-ETD-598/468/599//442/597/406/469/578/472/455/579/581/454** |  |  | 2026-04-30 | 2026-05-26 |  |  |  |  |  |  |  |  |  |  |  |  |  |  |  |  |  |  |
| 2.2-SDAEE09-1030 |  | Cable trench Excavation |  | 25d | 2026-04-30 A | 2026-05-15 | 2.2-SDAEE09-1000 |  | 0d | 2026-04-30 | 2026-05-28 | 12d | 0d |  | LABOUR [900 h]; Construction Material [250] | UDF_G3 | 0 | EE | Non | EIT2.2 | SDA | C03c | EIT02.2 |  |
| 2.2-SDAEE09-1040 |  | Sand Filling Compaction |  | 5d | 2026-05-21 | 2026-05-26 | 2.2-SDAEE09-1030, 2.2-SDAEE09-1010 |  |  |  |  | 61d | 20d |  | LABOUR [329 h]; Construction Material [50] | UDF_G3 | 0 | EE | Non | EIT2.2 | SDA | C03c | EIT02.2 |  |
|  | 2 | **C03-ETD-413/412/414/418/419/605/474/328/473/577/435/435/417/416/574/575/576/470** |  |  | 2026-05-15 | 2026-06-24 |  |  |  |  |  |  |  |  |  |  |  |  |  |  |  |  |  |  |
| 2.2-SDAEE09-1060 |  | Cable trench Excavation |  | 30d | 2026-05-15 | 2026-06-18 | 2.2-SDAEE09-1030 |  |  |  |  | 12d | 0d |  | LABOUR [900 h]; Construction Material [300] | UDF_G3 | 0 | EE | Non | EIT2.2 | SDA | C03c | EIT02.2 |  |
| 2.2-SDAEE09-1070 |  | Sand Filling Compaction |  | 5d | 2026-06-19 | 2026-06-24 | 2.2-SDAEE09-1060, 2.2-SDAEE09-1040 |  |  |  |  | 41d | 24d |  | LABOUR [329 h]; Construction Material [50] | UDF_G3 | 0 | EE | Non | EIT2.2 | SDA | C03c | EIT02.2 |  |
|  | 5 | **C03-ETD-610/415/314/420/421/614** |  |  | 2026-06-19 | 2026-08-11 |  |  |  |  |  |  |  |  |  |  |  |  |  |  |  |  |  |  |
| 2.2-SDAEE09-1090 |  | Cable trench Excavation |  | 29d | 2026-06-19 | 2026-07-22 | 2.2-SDAEE09-1060 |  |  |  |  | 12d | 0d |  | LABOUR [900 h]; Construction Material [290] | UDF_G3 | 0 | EE | Non | EIT2.2 | SDA | C03c | EIT02.2 |  |
| 2.2-SDAEE09-1100 |  | Sand Filling Compaction |  | 5d | 2026-08-06 A | 2026-08-11 A | 2.2-SDAEE09-1090, 2.2-SDAEE09-1070 | 100% |  |  |  |  |  |  | LABOUR [329 h]; Construction Material [50] | UDF_G3 | 0 | EE | Non | EIT2.2 | SDA | C03c | EIT02.2 |  |
|  | 3 | **Electrical Cable laying** |  |  | 2026-05-15 | 2026-11-07 |  |  |  |  |  |  |  |  |  |  |  |  |  |  |  |  |  |  |
|  | 4 | **Cable Laying Direct buried** |  |  | 2026-05-15 | 2026-11-07 |  |  |  |  |  |  |  |  |  |  |  |  |  |  |  |  |  |  |
|  | 3 | **C03-ETD-594/562/560/559/615/464/467/567/595/568** |  |  | 2026-05-15 | 2026-08-01 |  |  |  |  |  |  |  |  |  |  |  |  |  |  |  |  |  |  |
| 2.2-SDAEE01-2000 |  | Sand Filling First Layer |  | 4d | 2026-05-15 | 2026-05-19 | 2.2-SDAEE09-1000 |  |  |  |  | -6d | 0d |  | LABOUR [200 h]; Cable Pull; Construction Material [50] | UDF_G3 | 0 | EE | PRIC | EIT2.2 | SDA | C03c | EIT02.2 |  |
| 2.2-SDAEE01-2010 |  | Cable Laying |  | 19d | 2026-05-20 | 2026-06-10 | 2.2-SDAEE01-2000 SS, 2.2-SDAEE01-2000 |  |  |  |  | -6d | 0d |  | LABOUR [2000 h]; Cable Pull [10937 h]; Construction Material [160] | UDF_G3 | 0 | EE | PRIC | EIT2.2 | SDA | C03c | EIT02.2 | PUL |
| 2.2-SDAEE01-2020 |  | Megger & Continuity test |  | 5d | 2026-06-11 | 2026-06-16 | 2.2-SDAEE01-2010 |  |  |  |  | 58d | 0d |  | LABOUR [500 h]; Cable Pull; Construction Material [50] | UDF_G3 | 0 | EE | PRIC | EIT2.2 | SDA | C03c | EIT02.2 |  |
| 2.2-SDAEE01-2030 |  | Punch Clear |  | 10d | 2026-06-17 | 2026-06-27 | 2.2-SDAEE01-2020 |  |  |  |  | 58d | 0d |  | LABOUR [200 h]; Cable Pull; Construction Material [100] | UDF_G3 | 0 | EE | PRIC | EIT2.2 | SDA |  |  |  |
| 2.2-SDAEE01-2040 |  | Sand Filling, compaction |  | 5d | 2026-06-29 | 2026-07-03 | 2.2-SDAEE01-2030 |  |  |  |  | 58d | 0d |  | LABOUR [100 h]; Cable Pull; Construction Material [50] | UDF_G3 | 0 | EE | PRIC | EIT2.2 | SDA | C03c | EIT02.2 |  |
| 2.2-SDAEE01-2050 |  | Complete QA/QC document |  | 5d | 2026-07-04 | 2026-07-09 | 2.2-SDAEE01-2040 |  |  |  |  | 58d | 0d |  | LABOUR [50 h]; Cable Pull; Construction Material [50] | UDF_G3 | 0 | EE | PRIC | EIT2.2 | SDA | C03c | EIT02.2 |  |
| 2.2-SDAEE01-2060 |  | Back Filling |  | 20d | 2026-07-10 | 2026-08-01 | 2.2-SDAEE01-2050 |  |  |  |  | 58d | 25d |  | LABOUR [897.38 h]; Cable Pull; Construction Material [200] | UDF_G3 | 0 | EE | PRIC | EIT2.2 | SDA |  |  |  |

| ID | WBS | Activity | Duration | Start | Finish | Predecessors | Total float | Free float | Resources | On Schedule Indicator | %Completed | Disciplines | EIT2 Main Activity | Areas | Phases | EIT WBS | EIT PKG | Cable Pull & Laying |
| --- | --- | --- | --- | --- | --- | --- | --- | --- | --- | --- | --- | --- | --- | --- | --- | --- | --- | --- |
|  | 1 | **C03-ETD-598/468/599//442/597/406/469/578/472/455/579/581/454** |  | 2026-06-12 | 2026-08-31 |  |  |  |  |  |  |  |  |  |  |  |  |  |
| 2.2-SDAEE01-2070 |  | Sand Filling First Layer | 5d | 2026-06-12 | 2026-06-17 | 2.2-SDAEE09-1030, 2.2-SDAEE01-2010 SS+20d | -6d | 0d | LABOUR [200 h]; Cable Pull; Construction Material [50] | UDF_G3 | 0 | EE | PRIC | SDA | EIT2.2 | C03c | EIT02.2 |  |
| 2.2-SDAEE01-2080 |  | Cable Laying | 19d | 2026-06-18 | 2026-07-09 | 2.2-SDAEE01-2070 | -6d | 0d | LABOUR [2000 h]; Cable Pull [10936 h]; Construction Material [110] | UDF_G3 | 0 | EE | PRIC | SDA | EIT2.2 | C03c | EIT02.2 | PUL |
| 2.2-SDAEE01-2090 |  | Megger & Continuity test | 5d | 2026-07-10 | 2026-07-15 | 2.2-SDAEE01-2080 | -6d | 0d | LABOUR [500 h]; Cable Pull; Construction Material [50] | UDF_G3 | 0 | EE | PRIC | SDA | EIT2.2 | C03c | EIT02.2 |  |
| 2.2-SDAEE01-2100 |  | Punch Clear | 10d | 2026-07-16 | 2026-07-27 | 2.2-SDAEE01-2090 | 33d | 0d | LABOUR [200 h]; Cable Pull; Construction Material [100] | UDF_G3 | 0 | EE | PRIC | SDA | EIT2.2 |  |  |  |
| 2.2-SDAEE01-2110 |  | Sand Filling, compaction | 5d | 2026-07-28 | 2026-08-01 | 2.2-SDAEE01-2100 | 33d | 0d | LABOUR [100 h]; Cable Pull; Construction Material [50] | UDF_G3 | 0 | EE | PRIC | SDA | EIT2.2 | C03c | EIT02.2 |  |
| 2.2-SDAEE01-2120 |  | Complete QA/QC document | 5d | 2026-08-03 | 2026-08-07 | 2.2-SDAEE01-2110 | 33d | 0d | LABOUR [50 h]; Cable Pull; Construction Material [50] | UDF_G3 | 0 | EE | PRIC | SDA | EIT2.2 | C03c | EIT02.2 |  |
| 2.2-SDAEE01-2130 |  | Back Filling | 20d | 2026-08-08 | 2026-08-31 | 2.2-SDAEE01-2120, 2.2-SDAEE01-2060 FF | 33d | 30d | LABOUR [897.38 h]; Cable Pull; Construction Material [200] | UDF_G3 | 0 | EE | PRIC | SDA | EIT2.2 |  |  |  |
|  | 2 | **C03-ETD-413/412/414/418/419/605/474/328/473/577/435/435/417/416/574/575/576/470** |  | 2026-07-10 | 2026-10-05 |  |  |  |  |  |  |  |  |  |  |  |  |  |
| 2.2-SDAEE01-2140 |  | Sand Filling First Layer | 5d | 2026-07-10 | 2026-07-15 | 2.2-SDAEE09-1060, 2.2-SDAEE01-2090 SS | -6d | 0d | LABOUR [200 h]; Cable Pull; Construction Material [50] | UDF_G3 | 0 | EE | PRIC | SDA | EIT2.2 | C03c | EIT02.2 |  |
| 2.2-SDAEE01-2150 |  | Cable Laying | 25d | 2026-07-16 | 2026-08-13 | 2.2-SDAEE01-2140 | -6d | 0d | LABOUR [2000 h]; Cable Pull [10936 h]; Construction Material [110] | UDF_G3 | 0 | EE | PRIC | SDA | EIT2.2 | C03c | EIT02.2 | PUL |
| 2.2-SDAEE01-2160 |  | Megger & Continuity test | 5d | 2026-08-14 | 2026-08-19 | 2.2-SDAEE01-2150 | -6d | 0d | LABOUR [500 h]; Cable Pull; Construction Material [50] | UDF_G3 | 0 | EE | PRIC | SDA | EIT2.2 | C03c | EIT02.2 |  |
| 2.2-SDAEE01-2170 |  | Punch Clear | 10d | 2026-08-20 | 2026-08-31 | 2.2-SDAEE01-2160 | 3d | 0d | LABOUR [200 h]; Cable Pull; Construction Material [100] | UDF_G3 | 0 | EE | PRIC | SDA | EIT2.2 |  |  |  |
| 2.2-SDAEE01-2180 |  | Sand Filling, compaction | 5d | 2026-09-01 | 2026-09-05 | 2.2-SDAEE01-2170 | 3d | 0d | LABOUR [100 h]; Cable Pull; Construction Material [50] | UDF_G3 | 0 | EE | PRIC | SDA | EIT2.2 | C03c | EIT02.2 |  |
| 2.2-SDAEE01-2190 |  | Complete QA/QC document | 5d | 2026-09-07 | 2026-09-11 | 2.2-SDAEE01-2180 | 3d | 0d | LABOUR [50 h]; Cable Pull; Construction Material [50] | UDF_G3 | 0 | EE | PRIC | SDA | EIT2.2 | C03c | EIT02.2 |  |
| 2.2-SDAEE01-2200 |  | Back Filling | 20d | 2026-09-12 | 2026-10-05 | 2.2-SDAEE01-2190, 2.2-SDAEE01-2130 FF | 3d | 9d | LABOUR [897.38 h]; Cable Pull; Construction Material [200] | UDF_G3 | 0 | EE | PRIC | SDA | EIT2.2 |  |  |  |
|  | 5 | **C03-ETD-610/415/314/420/421/614** |  | 2026-08-13 | 2026-11-07 |  |  |  |  |  |  |  |  |  |  |  |  |  |
| 2.2-SDAEE01-2210 |  | Sand Filling First Layer | 5d | 2026-08-13 | 2026-08-18 | 2.2-SDAEE09-1090, 2.2-SDAEE01-2160 SS-1d | -6d | 0d | LABOUR [200 h]; Cable Pull; Construction Material [50] | UDF_G3 | 0 | EE | PRIC | SDA | EIT2.2 | C03c | EIT02.2 |  |
| 2.2-SDAEE01-2220 |  | Cable Laying | 25d | 2026-08-19 | 2026-09-16 | 2.2-SDAEE01-2210 | -6d | 0d | LABOUR [2000 h]; Cable Pull [10936 h]; Construction Material [110] | UDF_G3 | 0 | EE | PRIC | SDA | EIT2.2 | C03c | EIT02.2 | PUL |
| 2.2-SDAEE01-2230 |  | Megger & Continuity test | 5d | 2026-09-17 | 2026-09-22 | 2.2-SDAEE01-2220 | -6d | 0d | LABOUR [500 h]; Cable Pull; Construction Material [50] | UDF_G3 | 0 | EE | PRIC | SDA | EIT2.2 | C03c | EIT02.2 |  |
| 2.2-SDAEE01-2240 |  | Punch Clear | 10d | 2026-09-23 | 2026-10-03 | 2.2-SDAEE01-2230 | -6d | 0d | LABOUR [200 h]; Cable Pull; Construction Material [100] | UDF_G3 | 0 | EE | PRIC | SDA | EIT2.2 |  |  |  |
| 2.2-SDAEE01-2250 |  | Sand Filling, compaction | 5d | 2026-10-05 | 2026-10-09 | 2.2-SDAEE01-2240 | -6d | 0d | LABOUR [100 h]; Cable Pull; Construction Material [50] | UDF_G3 | 0 | EE | PRIC | SDA | EIT2.2 | C03c | EIT02.2 |  |
| 2.2-SDAEE01-2260 |  | Complete QA/QC document | 5d | 2026-10-10 | 2026-10-15 | 2.2-SDAEE01-2250 | -6d | 0d | LABOUR [50 h]; Cable Pull; Construction Material [50] | UDF_G3 | 0 | EE | PRIC | SDA | EIT2.2 | C03c | EIT02.2 |  |
| 2.2-SDAEE01-2270 |  | Back Filling | 20d | 2026-10-16 | 2026-11-07 | 2.2-SDAEE01-2260, 2.2-SDAEE01-2200 | -6d | 0d | LABOUR [897.38 h]; Cable Pull; Construction Material [200] | UDF_G3 | 0 | EE | PRIC | SDA | EIT2.2 |  |  |  |

| ID | WBS | Activity | Duration | Start | Finish | Predecessors | Total float | Free float | Resources | On Schedule Indicator | %Completed | Disciplines | EIT2 Main Activity | Areas | Phases | Cable Pull & Laying | EIT WBS | EIT PKG |
| --- | --- | --- | --- | --- | --- | --- | --- | --- | --- | --- | --- | --- | --- | --- | --- | --- | --- | --- |
|  | 5 | **Cable Laying Concrete Trench** |  | 2026-05-20 | 2026-11-06 |  |  |  |  |  |  |  |  |  |  |  |  |  |
|  | 30 | **C03-ETC-357/354/330/356/319/345/301/302/331/354** |  | 2026-05-20 | 2026-08-06 |  |  |  |  |  |  |  |  |  |  |  |  |  |
| 2.2-SDAEE01-2280 |  | Cable Laying | 19d | 2026-05-20 | 2026-06-10 | 2.2-SDAEE01-2010 SS | 29d | 0d | LABOUR [2000 h]; Cable Pull [10936 h]; Construction Material [250] | UDF_G3 | 0 | EE | PRIC | SDA | EIT2.2 | PUL | C03c | EIT02.2 |
| 2.2-SDAEE01-2290 |  | Megger & Continuity test | 5d | 2026-06-11 | 2026-06-16 | 2.2-SDAEE01-2280 | 29d | 0d | LABOUR [500 h]; Cable Pull; Construction Material [50] | UDF_G3 | 0 | EE | PRIC | SDA | EIT2.2 |  | C03c | EIT02.2 |
| 2.2-SDAEE01-2300 |  | punch Clear | 5d | 2026-06-17 | 2026-06-22 | 2.2-SDAEE01-2290 | 29d | 0d | LABOUR [200 h]; Cable Pull; Construction Material [50] | UDF_G3 | 0 | EE | PRIC | SDA | EIT2.2 |  | C03c | EIT02.2 |
| 2.2-SDAEE01-2310 |  | Sand Filling Compaction | 4d | 2026-06-23 | 2026-06-26 | 2.2-SDAEE01-2300 | 29d | 0d | LABOUR [200 h]; Cable Pull; Construction Material [40] | UDF_G3 | 0 | EE | PRIC | SDA | EIT2.2 |  |  |  |
| 2.2-SDAEE01-2320 |  | Complete QA/QC document | 10d | 2026-06-27 | 2026-07-08 | 2.2-SDAEE01-2310 | 29d | 0d | LABOUR [100 h]; Cable Pull; Construction Material [100] | UDF_G3 | 0 | EE | PRIC | SDA | EIT2.2 |  | C03c | EIT02.2 |
| 2.2-SDAEE01-2330 |  | Back Filling | 25d | 2026-07-09 | 2026-08-06 | 2.2-SDAEE01-2320 | 29d | 0d | LABOUR [947.38 h]; Cable Pull; Construction Material [250] | UDF_G3 | 0 | EE | PRIC | SDA | EIT2.2 |  | C03c | EIT02.2 |
|  | 6 | **C03-ETC-358/351/324/351/338/321/337/316/320/336/303/328** |  | 2026-06-18 | 2026-09-04 |  |  |  |  |  |  |  |  |  |  |  |  |  |
| 2.2-SDAEE01-2340 |  | Cable Laying | 19d | 2026-06-18 | 2026-07-09 | 2.2-SDAEE01-2080 SS | 29d | 0d | LABOUR [2000 h]; Cable Pull [10936 h]; Construction Material [250] | UDF_G3 | 0 | EE | PRIC | SDA | EIT2.2 | PUL | C03c | EIT02.2 |
| 2.2-SDAEE01-2350 |  | Megger & Continuity test | 5d | 2026-07-10 | 2026-07-15 | 2.2-SDAEE01-2340 | 29d | 0d | LABOUR [500 h]; Cable Pull; Construction Material [50] | UDF_G3 | 0 | EE | PRIC | SDA | EIT2.2 |  | C03c | EIT02.2 |
| 2.2-SDAEE01-2360 |  | punch Clear | 5d | 2026-07-16 | 2026-07-21 | 2.2-SDAEE01-2350 | 29d | 0d | LABOUR [200 h]; Cable Pull; Construction Material [50] | UDF_G3 | 0 | EE | PRIC | SDA | EIT2.2 |  | C03c | EIT02.2 |
| 2.2-SDAEE01-2370 |  | Sand Filling Compaction | 4d | 2026-07-22 | 2026-07-25 | 2.2-SDAEE01-2360 | 29d | 0d | LABOUR [200 h]; Cable Pull; Construction Material [40] | UDF_G3 | 0 | EE | PRIC | SDA | EIT2.2 |  |  |  |
| 2.2-SDAEE01-2380 |  | Complete QA/QC document | 10d | 2026-07-27 | 2026-08-06 | 2.2-SDAEE01-2370 | 29d | 0d | LABOUR [100 h]; Cable Pull; Construction Material [100] | UDF_G3 | 0 | EE | PRIC | SDA | EIT2.2 |  | C03c | EIT02.2 |
| 2.2-SDAEE01-2390 |  | Back Filling | 25d | 2026-08-07 | 2026-09-04 | 2.2-SDAEE01-2380, 2.2-SDAEE01-2330 | 29d | 30d | LABOUR [947.38 h]; Cable Pull; Construction Material [250] | UDF_G3 | 0 | EE | PRIC | SDA | EIT2.2 |  | C03c | EIT02.2 |
|  | 28 | **C03-ETC-355/328/305/339/340/341/352/343/344** |  | 2026-08-14 | 2026-11-02 |  |  |  |  |  |  |  |  |  |  |  |  |  |
| 2.2-SDAEE01-2400 |  | Cable Laying | 25d | 2026-08-14 | 2026-09-11 | 2.2-SDAEE01-2150 | -1d | 0d | LABOUR [2000 h]; Cable Pull [10936 h]; Construction Material [250] | UDF_G3 | 0 | EE | PRIC | SDA | EIT2.2 | PUL | C03c | EIT02.2 |
| 2.2-SDAEE01-2410 |  | Megger & Continuity test | 5d | 2026-09-12 | 2026-09-17 | 2.2-SDAEE01-2400 | -1d | 0d | LABOUR [500 h]; Cable Pull; Construction Material [50] | UDF_G3 | 0 | EE | PRIC | SDA | EIT2.2 |  | C03c | EIT02.2 |
| 2.2-SDAEE01-2420 |  | punch Clear | 5d | 2026-09-18 | 2026-09-23 | 2.2-SDAEE01-2410 | -1d | 0d | LABOUR [200 h]; Cable Pull; Construction Material [50] | UDF_G3 | 0 | EE | PRIC | SDA | EIT2.2 |  | C03c | EIT02.2 |
| 2.2-SDAEE01-2430 |  | Sand Filling Compaction | 4d | 2026-09-24 | 2026-09-28 | 2.2-SDAEE01-2420 | -1d | 0d | LABOUR [200 h]; Cable Pull; Construction Material [40] | UDF_G3 | 0 | EE | PRIC | SDA | EIT2.2 |  |  |  |
| 2.2-SDAEE01-2440 |  | Complete QA/QC document | 10d | 2026-09-29 | 2026-10-09 | 2.2-SDAEE01-2430 | -1d | 0d | LABOUR [100 h]; Cable Pull; Construction Material [100] | UDF_G3 | 0 | EE | PRIC | SDA | EIT2.2 |  | C03c | EIT02.2 |
| 2.2-SDAEE01-2450 |  | Back Filling | 20d | 2026-10-10 | 2026-11-02 | 2.2-SDAEE01-2440, 2.2-SDAEE01-2390 | -1d | 0d | LABOUR [947.38 h]; Cable Pull; Construction Material [200] | UDF_G3 | 0 | EE | PRIC | SDA | EIT2.2 |  | C03c | EIT02.2 |
|  | 29 | **C03-ETC-310/418/350/306** |  | 2026-08-14 | 2026-11-02 |  |  |  |  |  |  |  |  |  |  |  |  |  |
| 2.2-SDAEE01-2460 |  | Cable Laying | 25d | 2026-08-14 | 2026-09-11 | 2.2-SDAEE01-2150 | -1d | 0d | LABOUR [2000 h]; Cable Pull [10936 h]; Construction Material [250] | UDF_G3 | 0 | EE | PRIC | SDA | EIT2.2 | PUL | C03c | EIT02.2 |
| 2.2-SDAEE01-2470 |  | Megger & Continuity test | 5d | 2026-09-12 | 2026-09-17 | 2.2-SDAEE01-2460 | -1d | 0d | LABOUR [500 h]; Cable Pull; Construction Material [50] | UDF_G3 | 0 | EE | PRIC | SDA | EIT2.2 |  | C03c | EIT02.2 |
| 2.2-SDAEE01-2480 |  | punch Clear | 5d | 2026-09-18 | 2026-09-23 | 2.2-SDAEE01-2470 | -1d | 0d | LABOUR [200 h]; Cable Pull; Construction Material [50] | UDF_G3 | 0 | EE | PRIC | SDA | EIT2.2 |  | C03c | EIT02.2 |
| 2.2-SDAEE01-2490 |  | Sand Filling Compaction | 4d | 2026-09-24 | 2026-09-28 | 2.2-SDAEE01-2480 | -1d | 0d | LABOUR [200 h]; Cable Pull; Construction Material [40] | UDF_G3 | 0 | EE | PRIC | SDA | EIT2.2 |  |  |  |
| 2.2-SDAEE01-2500 |  | Complete QA/QC document | 10d | 2026-09-29 | 2026-10-09 | 2.2-SDAEE01-2490 | -1d | 0d | LABOUR [100 h]; Cable Pull; Construction Material [100] | UDF_G3 | 0 | EE | PRIC | SDA | EIT2.2 |  | C03c | EIT02.2 |
| 2.2-SDAEE01-2510 |  | Back Filling | 20d | 2026-10-10 | 2026-11-02 | 2.2-SDAEE01-2500, 2.2-SDAEE01-2450 SS | -1d | 5d | LABOUR [947.38 h]; Cable Pull; Construction Material [200] | UDF_G3 | 0 | EE | PRIC | SDA | EIT2.2 |  | C03c | EIT02.2 |

| ID | WBS | Activity | Duration | Start | Finish | Predecessors | Complete | Remaining | Planned start | Planned finish | Total float | Free float | Constraint | Resources | On Schedule Indicator | %Completed | Disciplines | EIT2 Main Activity | Areas | Phases | Cable Pull & Laying | EIT WBS | EIT PKG | Main Activity | WBS | Types |
| --- | --- | --- | --- | --- | --- | --- | --- | --- | --- | --- | --- | --- | --- | --- | --- | --- | --- | --- | --- | --- | --- | --- | --- | --- | --- | --- |
|  | 32 | **C03-ETC-311/347/346/311/313/309/349** |  | 2026-08-19 | 2026-11-06 |  |  |  |  |  |  |  |  |  |  |  |  |  |  |  |  |  |  |  |  |  |
| 2.2-SDAEE01-2520 |  | Cable Laying | 25d | 2026-08-19 | 2026-09-16 | 2.2-SDAEE01-2220 SS |  |  |  |  | -5d | 0d |  | LABOUR [2000 h]; Cable Pull [10936 h]; Construction Material [250] | UDF_G3 | 0 | EE | PRIC | SDA | EIT2.2 | PUL | C03c | EIT02.2 |  |  |  |
| 2.2-SDAEE01-2530 |  | Megger & Continuity test | 5d | 2026-09-17 | 2026-09-22 | 2.2-SDAEE01-2520 |  |  |  |  | -5d | 0d |  | LABOUR [500 h]; Cable Pull; Construction Material [50] | UDF_G3 | 0 | EE | PRIC | SDA | EIT2.2 |  | C03c | EIT02.2 |  |  |  |
| 2.2-SDAEE01-2540 |  | punch Clear | 5d | 2026-09-23 | 2026-09-28 | 2.2-SDAEE01-2530 |  |  |  |  | -5d | 0d |  | LABOUR [200 h]; Cable Pull; Construction Material [50] | UDF_G3 | 0 | EE | PRIC | SDA | EIT2.2 |  | C03c | EIT02.2 |  |  |  |
| 2.2-SDAEE01-2550 |  | Sand Filling Compaction | 4d | 2026-09-29 | 2026-10-02 | 2.2-SDAEE01-2540 |  |  |  |  | -5d | 0d |  | LABOUR [200 h]; Cable Pull; Construction Material [40] | UDF_G3 | 0 | EE | PRIC | SDA | EIT2.2 |  |  |  |  |  |  |
| 2.2-SDAEE01-2560 |  | Complete QA/QC document | 10d | 2026-10-03 | 2026-10-14 | 2.2-SDAEE01-2550 |  |  |  |  | -5d | 0d |  | LABOUR [100 h]; Cable Pull; Construction Material [100] | UDF_G3 | 0 | EE | PRIC | SDA | EIT2.2 |  | C03c | EIT02.2 |  |  |  |
| 2.2-SDAEE01-2570 |  | Back Filling | 20d | 2026-10-15 | 2026-11-06 | 2.2-SDAEE01-2560 |  |  |  |  | -5d | 0d |  | LABOUR [947.38 h]; Cable Pull; Construction Material [200] | UDF_G3 | 0 | EE | PRIC | SDA | EIT2.2 |  | C03c | EIT02.2 |  |  |  |
|  | 1 | **Electrical Cable Tray/Ladder Installation** |  | 2026-04-01 | 2026-10-27 |  |  |  |  |  |  |  |  |  |  |  |  |  |  |  |  |  |  |  |  |  |
| 2.2-SDAEE03-1550 |  | Install support / bracket | 120d | 2026-04-01 A | 2026-08-18 |  | 9% | 82d |  |  | 0d |  | start on or after 2026-04-01 | LABOUR [3000 h]; Construction Material [1060] | UDF_G3 | 0 | EE | Non | SDA | EIT2.2 |  | C03c | EIT02.2 | 1 | C03a | TY1 |
| 2.2-SDAEE03-1560 |  | Install Ladder / Tray | 120d | 2026-04-01 A | 2026-08-18 | 2.2-SDAEE03-1550 SS | 10% | 82d |  |  | 82d | 0d |  | LABOUR [8000 h]; Construction Material [1060] | UDF_G3 | 0 | EE | Non | SDA | EIT2.2 |  | C03c | EIT02.2 | 1 | C03a | TY1 |
| 2.2-SDAEE03-1570 |  | Install Conduits | 120d | 2026-04-01 A | 2026-08-18 | 2.2-SDAEE03-1550 SS | 10% | 82d |  |  | 192d | 0d |  | LABOUR [2000 h]; Construction Material [1200] | UDF_G3 | 0 | EE | Non | SDA | EIT2.2 |  | C03c | EIT02.2 | 1 | C03a | TY1 |
| 2.2-SDAEE03-1580 |  | Clear Punch | 30d | 2026-08-19 | 2026-09-22 | 2.2-SDAEE03-1560, 2.2-SDAEE03-1570 |  |  |  |  | 192d | 0d |  | LABOUR [200 h]; Construction Material [300] | UDF_G3 | 0 | EE | Non | SDA | EIT2.2 |  | C03c | EIT02.2 | 1 | C03a | TY1 |
| 2.2-SDAEE03-1590 |  | Complete QA/QC document | 30d | 2026-09-23 | 2026-10-27 | 2.2-SDAEE03-1580 SS, 2.2-SDAEE03-1580 |  |  |  |  | 192d | 184d |  | LABOUR [3 h]; Construction Material [300] | UDF_G3 | 0 | EE | Non | SDA | EIT2.2 |  | C03c | EIT02.2 | 1 | C03a | TY1 |
|  | 12 | **AG Cable Pull LV Cable** |  | 2026-05-06 | 2026-09-25 |  |  |  |  |  |  |  |  |  |  |  |  |  |  |  |  |  |  |  |  |  |
| 2.2-SDAEE01-1420 |  | Pull Cable | 90d | 2026-05-06 A | 2026-08-27 | 2.2-SDAEE03-1560 SS | 9% | 90d | 2026-08-19 | 2026-12-01 | 129d | 0d |  | LABOUR [5000 h]; Cable Pull; Construction Material [30] | UDF_G3 | 0 | EE | SECE | SDA | EIT2.2 | PUL |  |  |  |  |  |
| 2.2-SDAEE01-1425 |  | Megger & Continuity test | 10d | 2026-08-28 | 2026-09-08 | 2.2-SDAEE01-1420 |  |  |  |  | 184d | 0d |  | LABOUR [500 h]; Cable Pull; Construction Material [100] | UDF_G3 | 0 | EE | SECE | SDA | EIT2.2 |  |  |  |  |  |  |
| 2.2-SDAEE01-1430 |  | Complete QA/QC document | 15d | 2026-09-09 | 2026-09-25 | 2.2-SDAEE01-1425 |  |  |  |  | 184d | 0d |  | LABOUR [876.56 h]; Cable Pull; Construction Material [150] | UDF_G3 | 0 | EE | SECE | SDA | EIT2.2 |  |  |  |  |  |  |
|  | 11 | **AG Cable Pull Control Cable** |  | 2026-05-06 | 2026-09-25 |  |  |  |  |  |  |  |  |  |  |  |  |  |  |  |  |  |  |  |  |  |
| 2.2-SDAEE01-1450 |  | Pull Cable | 90d | 2026-05-06 A | 2026-08-27 | 2.2-SDAEE01-1420 SS | 5% | 90d | 2026-08-19 | 2026-12-01 | 129d | 0d |  | LABOUR [5000 h]; Cable Pull; Construction Material [30] | UDF_G3 | 0 | EE | SECE | SDA | EIT2.2 | PUL |  |  |  |  |  |
| 2.2-SDAEE01-1455 |  | Megger & Continuity test | 10d | 2026-08-28 | 2026-09-08 | 2.2-SDAEE01-1450 |  |  |  |  | 184d | 0d |  | LABOUR [500 h]; Cable Pull; Construction Material [100] | UDF_G3 | 0 | EE | SECE | SDA | EIT2.2 |  |  |  |  |  |  |
| 2.2-SDAEE01-1460 |  | Complete QA/QC document | 15d | 2026-09-09 | 2026-09-25 | 2.2-SDAEE01-1455, 2.2-SDAEE01-1430 SS |  |  |  |  | 184d | 5d |  | LABOUR [876.56 h]; Cable Pull; Construction Material [150] | UDF_G3 | 0 | EE | SECE | SDA | EIT2.2 |  |  |  |  |  |  |
|  | 10 | **AG Lighting Cable** |  | 2026-05-07 | 2026-11-11 |  |  |  |  |  |  |  |  |  |  |  |  |  |  |  |  |  |  |  |  |  |
| 2.2-SDAEE01-1480 |  | Pull Cable | 120d | 2026-05-07 A | 2026-10-01 | 2.2-SDAEE01-1450 SS | 1% | 120d | 2026-08-19 | 2027-01-05 | 129d | 0d |  | LABOUR [5000 h]; Cable Pull; Construction Material [1200] | UDF_G3 | 0 | EE | SECE | SDA | EIT2.2 | PUL |  |  |  |  |  |
| 2.2-SDAEE01-1485 |  | Megger & Continuity test | 15d | 2026-10-02 | 2026-10-19 | 2.2-SDAEE01-1480, 2.2-SDAEE01-1460 |  |  |  |  | 179d | 0d |  | LABOUR [500 h]; Cable Pull; Construction Material [150] | UDF_G3 | 0 | EE | SECE | SDA | EIT2.2 |  |  |  |  |  |  |
| 2.2-SDAEE01-1490 |  | Complete QA/QC document | 20d | 2026-10-20 | 2026-11-11 | 2.2-SDAEE01-1485 |  |  |  |  | 179d | 171d |  | LABOUR [876.56 h]; Cable Pull; Construction Material [200] | UDF_G3 | 0 | EE | SECE | SDA | EIT2.2 |  |  |  |  |  |  |

| ID | WBS | Activity | Duration | Start | Finish | Predecessors | Complete | Remaining | Planned start | Planned finish | Total float | Free float | Resources | On Schedule Indicator | %Completed | Disciplines | EIT2 Main Activity | Areas | Phases |
| --- | --- | --- | --- | --- | --- | --- | --- | --- | --- | --- | --- | --- | --- | --- | --- | --- | --- | --- | --- |
|  | 4 | **Electrical Cable Termination / Glanding** |  | 2026-04-27 | 2027-01-09 |  |  |  |  |  |  |  |  |  |  |  |  |  |  |
|  | 1 | **Termination MV Cable** |  | 2026-11-07 | 2027-01-09 |  |  |  |  |  |  |  |  |  |  |  |  |  |  |
| 2.2-SDAEE02-1420 |  | Cable Termination/Glanding | 40d | 2026-11-07 | 2026-12-23 | 2.2-SDAEE01-2570 |  |  |  |  | 75d | 0d | LABOUR [2000 h]; Construction Material [400] | UDF_G3 | 0 | EE | Non | SDA | EIT2.2 |
| 2.2-SDAEE02-1430 |  | Clear punch | 5d | 2026-12-24 | 2026-12-29 | 2.2-SDAEE02-1420 |  |  |  |  | 75d | 0d | LABOUR [200 h]; Construction Material [50] | UDF_G3 | 0 | EE | Non | SDA | EIT2.2 |
| 2.2-SDAEE02-1440 |  | Complete QA/QC document | 10d | 2026-12-30 | 2027-01-09 | 2.2-SDAEE02-1430 |  |  |  |  | 75d | 0d | LABOUR [450 h]; Construction Material [100] | UDF_G3 | 0 | EE | Non | SDA | EIT2.2 |
|  | 2 | **Termination LV Cable** |  | 2026-04-27 | 2026-12-04 |  |  |  |  |  |  |  |  |  |  |  |  |  |  |
| 2.2-SDAEE02-1450 |  | Cable Termination/Glanding | 60d | 2026-04-27 A | 2026-11-05 | 2.2-SDAEE01-1420 | 2% | 60d | 2026-12-02 | 2027-02-09 | 159d | 0d | LABOUR [12000 h]; Construction Material [600] | UDF_G3 | 0 | EE | Non | SDA | EIT2.2 |
| 2.2-SDAEE02-1460 |  | Clear punch | 10d | 2026-11-06 | 2026-11-17 | 2.2-SDAEE02-1450 |  |  |  |  | 159d | 0d | LABOUR [1000 h]; Construction Material [100] | UDF_G3 | 0 | EE | Non | SDA | EIT2.2 |
| 2.2-SDAEE02-1470 |  | Complete QA/QC document | 15d | 2026-11-18 | 2026-12-04 | 2.2-SDAEE02-1460 |  |  |  |  | 159d | 151d | LABOUR [2899.6 h]; Construction Material [150] | UDF_G3 | 0 | EE | Non | SDA | EIT2.2 |
|  | 3 | **Termination Control Cable** |  | 2026-05-02 | 2026-12-04 |  |  |  |  |  |  |  |  |  |  |  |  |  |  |
| 2.2-SDAEE02-1480 |  | Cable Termination/Glanding | 60d | 2026-05-02 A | 2026-11-05 | 2.2-SDAEE02-1450 SS | 7% | 60d | 2026-12-02 | 2027-02-09 | 159d | 0d | LABOUR [2000 h]; Construction Material [600] | UDF_G3 | 0 | EE | Non | SDA | EIT2.2 |
| 2.2-SDAEE02-1490 |  | Clear punch | 10d | 2026-11-06 | 2026-11-17 | 2.2-SDAEE02-1480 |  |  |  |  | 159d | 0d | LABOUR [200 h]; Construction Material [100] | UDF_G3 | 0 | EE | Non | SDA | EIT2.2 |
| 2.2-SDAEE02-1500 |  | Complete QA/QC document | 15d | 2026-11-18 | 2026-12-04 | 2.2-SDAEE02-1490 |  |  |  |  | 159d | 151d | LABOUR [450 h]; Construction Material [150] | UDF_G3 | 0 | EE | Non | SDA | EIT2.2 |
|  | 4 | **Termination Lighting Cable** |  | 2026-10-02 | 2027-01-08 |  |  |  |  |  |  |  |  |  |  |  |  |  |  |
| 2.2-SDAEE02-1510 |  | Cable Termination/Glanding | 60d | 2026-10-02 | 2026-12-10 | 2.2-SDAEE01-1480 |  |  |  |  | 129d | 0d | LABOUR [3500 h]; Construction Material [600] | UDF_G3 | 0 | EE | Non | SDA | EIT2.2 |
| 2.2-SDAEE02-1520 |  | Clear punch | 10d | 2026-12-11 | 2026-12-22 | 2.2-SDAEE02-1510 |  |  |  |  | 129d | 0d | LABOUR [1000 h]; Construction Material [100] | UDF_G3 | 0 | EE | Non | SDA | EIT2.2 |
| 2.2-SDAEE02-1530 |  | Complete QA/QC document | 15d | 2026-12-23 | 2027-01-08 | 2.2-SDAEE02-1520 |  |  |  |  | 129d | 121d | LABOUR [799.9 h]; Construction Material [150] | UDF_G3 | 0 | EE | Non | SDA | EIT2.2 |
|  | 5 | **Lighting Fixture Installation** |  | 2026-04-24 | 2026-08-03 |  |  |  |  |  |  |  |  |  |  |  |  |  |  |
| 2.2-SDAEE05-1150 |  | Install support / bracket / Pole | 60d | 2026-04-24 A | 2026-07-23 | 2.2-SDAEE03-1560 SS | 10% | 60d | 2026-08-19 | 2026-10-27 | 82d | 0d | LABOUR [1500 h]; Construction Material [600] | UDF_G3 | 0 | EE | Non | SDA | EIT2.2 |
| 2.2-SDAEE05-1160 |  | lighting fixture | 60d | 2026-04-24 A | 2026-07-23 | 2.2-SDAEE05-1150 SS | 10% | 60d | 2026-08-19 | 2026-10-27 | 82d | 0d | LABOUR [3000 h]; Construction Material [600] | UDF_G3 | 0 | EE | Non | SDA | EIT2.2 |
| 2.2-SDAEE05-1170 |  | Clear punch | 5d | 2026-07-24 | 2026-07-29 | 2.2-SDAEE05-1160 |  |  |  |  | 82d | 0d | LABOUR [500 h]; Construction Material [50] | UDF_G3 | 0 | EE | Non | SDA | EIT2.2 |
| 2.2-SDAEE05-1180 |  | Complete QA/QC document | 4d | 2026-07-30 | 2026-08-03 | 2.2-SDAEE05-1170 |  |  |  |  | 82d | 0d | LABOUR [1044.94 h]; Construction Material [40] | UDF_G3 | 0 | EE | Non | SDA | EIT2.2 |
|  | 8 | **Small Power Equipment Installation** |  | 2026-07-24 | 2026-08-03 |  |  |  |  |  |  |  |  |  |  |  |  |  |  |
| 2.2-SDAEE05-1570 |  | Clear punch | 5d | 2026-07-24 | 2026-07-29 | 2.2-SDAEE05-1560 |  |  |  |  | 82d | 0d | LABOUR [500 h]; Construction Material [50] | UDF_G3 | 0 | EE | Non | SDA | EIT2.2 |
| 2.2-SDAEE05-1580 |  | Complete QA/QC document | 4d | 2026-07-30 | 2026-08-03 | 2.2-SDAEE05-1570, 2.2-SDAEE05-1180 SS |  |  |  |  | 82d |  | LABOUR [1044.94 h]; Construction Material [40] | UDF_G3 | 0 | EE | Non | SDA | EIT2.2 |
| 2.2-SDAEE05-1550 |  | Install support / bracket | 60d | 2026-08-19 A | 2026-07-23 | 2.2-SDAEE05-1150 SS | 10% | 60d | 2026-08-19 | 2026-10-27 | 82d | 0d | LABOUR [1500 h]; Construction Material [600] | UDF_G3 | 0 | EE | Non | SDA | EIT2.2 |
| 2.2-SDAEE05-1560 |  | Install Distribution panel, convenience outlet | 60d | 2026-08-19 A | 2026-07-23 | 2.2-SDAEE05-1550 SS | 10% | 60d | 2026-08-19 | 2026-10-27 | 82d | 0d | LABOUR [3000 h]; Construction Material [600] | UDF_G3 | 0 | EE | Non | SDA | EIT2.2 |

| ID | WBS | Activity | Duration | Start | Finish | Predecessors | Complete | Remaining | Planned start | Planned finish | Total float | Free float | Constraint | Resources | On Schedule Indicator | %Completed | Disciplines | EIT2 Main Activity | Areas | Phases | Motor Loop | EIT WBS | EIT PKG |
| --- | --- | --- | --- | --- | --- | --- | --- | --- | --- | --- | --- | --- | --- | --- | --- | --- | --- | --- | --- | --- | --- | --- | --- |
|  | 7 | **Electrical Earthing / Lightning Installation** |  | 2026-04-04 | 2026-10-31 |  |  |  |  |  |  |  |  |  |  |  |  |  |  |  |  |  |  |
| 2.2-SDAEE06- 1140 |  | Clear punch | 5d | 2026-04-04 A | 2026-10-20 | 2.2-SDAEE06- 1130 SS | 11% | 136d | 2026-09-17 | 2026-09-22 | 5d | 0d |  | LABOUR [1000 h]; Construction Material [50] | UDF_G3 | 0 | EE | Non | SDA | EIT2.2 |  |  |  |
| 2.2-SDAEE05- 1130 |  | Install Equipment Earthing / Inspection PIT / Install earthing pull and Connecttion | 140d | 2026-04-07 A | 2026-09-16 |  | 11% | 107d |  |  | 29d | 0d | start on or after 2026-04-07 | LABOUR [10000 h] | UDF_G3 |  |  | Non | SDA | EIT2.2 |  |  |  |
| 2.2-SDAEE05- 1140 |  | Clear punch | 5d | 2026-04-07 A | 2026-09-22 | 2.2-SDAEE05- 1130 | 11% | 5d | 2026-09-17 | 2026-09-22 | 29d | 0d |  | LABOUR [1000 h] | UDF_G3 |  |  | Non | SDA | EIT2.2 |  |  |  |
| 2.2-SDAEE06- 1130 |  | Install Equipment Earthing / Inspection PIT / Install earthing pull and Connecttion | 140d | 2026-04-07 A | 2026-10-14 |  | 11% | 131d | 2026-04-07 | 2026-09-16 | 5d | 0d | start on or after 2026-04-07 | LABOUR [10000 h]; Construction Material [1400] | UDF_G3 | 0 | EE | Non | SDA | EIT2.2 |  |  |  |
| 2.2-SDAEE05- 1150 |  | Complete QA/QC document | 10d | 2026-09-23 | 2026-10-03 | 2.2-SDAEE05- 1140 |  |  |  |  | 29d |  |  | LABOUR [1203.36 h] | UDF_G3 |  |  | Non | SDA | EIT2.2 |  |  |  |
| 2.2-SDAEE06- 1150 |  | Complete QA/QC document | 10d | 2026-10-21 | 2026-10-31 | 2.2-SDAEE06- 1140 |  |  |  |  | 5d |  |  | LABOUR [1203.36 h]; Construction Material [100] | UDF_G3 | 0 | EE | Non | SDA | EIT2.2 |  |  |  |
|  | 2 | **Motor Solo Run** |  | 2027-01-11 | 2027-03-12 |  |  |  |  |  |  |  |  |  |  |  |  |  |  |  |  |  |  |
| 2.2-SDAEE05- 1160 |  | Motor solo run | 30d | 2027-01-11 | 2027-02-13 | 2.2-SDAEE02-1440 |  |  |  |  | 75d | 0d |  | LABOUR; Construction Material [300] | UDF_G3 | 0 | EE | Non | SDA | EIT2.2 | MO |  |  |
| 2.2-SDAEE05- 1170 |  | Clear punch | 10d | 2027-02-15 | 2027-02-25 | 2.2-SDAEE05- 1160 |  |  |  |  | 75d | 0d |  | LABOUR; Construction Material [100] | UDF_G3 | 0 | EE | Non | SDA | EIT2.2 | MO |  |  |
| 2.2-SDAEE05- 1180 |  | Complete QA/QC document | 13d | 2027-02-26 | 2027-03-12 | 2.2-SDAEE05- 1170 |  |  |  |  | 75d | 67d |  | LABOUR; Construction Material [130] | UDF_G3 | 0 | EE | Non | SDA | EIT2.2 | MO |  |  |
|  | 2 | **Instrument** |  | 2026-04-01 | 2027-05-29 |  |  |  |  |  |  |  |  |  |  |  |  |  |  |  |  |  |  |
|  | 12 | **Cable Laying concrete Trench** |  | 2026-05-15 | 2026-10-22 |  |  |  |  |  |  |  |  |  |  |  |  |  |  |  |  |  |  |
|  | 20 | **C03-JTR-479/452/476/453/482/480/454/457/455/458/459/460** |  | 2026-05-15 | 2026-08-13 |  |  |  |  |  |  |  |  |  |  |  |  |  |  |  |  |  |  |
| 2.2-SDAIN01-2000 |  | Cable Laying | 24d | 2026-05-15 | 2026-06-11 |  |  |  |  |  | -6d | 0d | start on or after 2026-05-01 | LABOUR [6000 h]; Construction Material [300] | UDF_G3 | 0 | IN | Non | SDA | EIT2.2 |  | C03c | EIT02.2 |
| 2.2-SDAIN01-2010 |  | Megger & Continuity test | 5d | 2026-06-12 | 2026-06-17 | 2.2-SDAIN01-2000 |  |  |  |  | 54d | 0d |  | LABOUR [500 h]; Construction Material [50] | UDF_G3 | 0 | IN | Non | SDA | EIT2.2 |  | C03c | EIT02.2 |
| 2.2-SDAIN01-2020 |  | punch Clear | 5d | 2026-06-18 | 2026-06-23 | 2.2-SDAIN01-2010 |  |  |  |  | 54d | 0d |  | LABOUR [500 h]; Construction Material [50] | UDF_G3 | 0 | IN | Non | SDA | EIT2.2 |  | C03c | EIT02.2 |
| 2.2-SDAIN01-2030 |  | Sand Filling Compaction | 4d | 2026-06-24 | 2026-06-27 | 2.2-SDAIN01-2020 |  |  |  |  | 54d | 0d |  | LABOUR [300 h]; Construction Material [40] | UDF_G3 | 0 | IN | Non | SDA | EIT2.2 |  |  |  |
| 2.2-SDAIN01-2040 |  | Complete QA/QC document | 10d | 2026-06-29 | 2026-07-09 | 2.2-SDAIN01-2030 |  |  |  |  | 54d | 0d |  | LABOUR [1000 h]; Construction Material [100] | UDF_G3 | 0 | IN | Non | SDA | EIT2.2 |  | C03c | EIT02.2 |
| 2.2-SDAIN01-2060 |  | Back Filling | 30d | 2026-07-10 | 2026-08-13 | 2.2-SDAIN01-2040 |  |  |  |  | 54d | 30d |  | LABOUR [2110.86 h]; Construction Material [300] | UDF_G3 | 0 | IN | Non | SDA | EIT2.2 |  | C03c | EIT02.2 |
|  | 2 | **C03-JTR-470/471/472/473/463** |  | 2026-06-12 | 2026-09-17 |  |  |  |  |  |  |  |  |  |  |  |  |  |  |  |  |  |  |
| 2.2-SDAIN01-2070 |  | Cable Laying | 30d | 2026-06-12 | 2026-07-16 | 2.2-SDAIN01-2000 |  |  |  |  | -6d | 0d |  | LABOUR [6000 h]; Construction Material [300] | UDF_G3 | 0 | IN | Non | SDA | EIT2.2 |  | C03c | EIT02.2 |
| 2.2-SDAIN01-2080 |  | Megger & Continuity test | 5d | 2026-07-17 | 2026-07-22 | 2.2-SDAIN01-2070 |  |  |  |  | 24d | 0d |  | LABOUR [500 h]; Construction Material [50] | UDF_G3 | 0 | IN | Non | SDA | EIT2.2 |  | C03c | EIT02.2 |
| 2.2-SDAIN01-2090 |  | punch Clear | 5d | 2026-07-23 | 2026-07-28 | 2.2-SDAIN01-2080 |  |  |  |  | 24d | 0d |  | LABOUR [500 h]; Construction Material [50] | UDF_G3 | 0 | IN | Non | SDA | EIT2.2 |  | C03c | EIT02.2 |
| 2.2-SDAIN01-2100 |  | Sand Filling Compaction | 4d | 2026-07-29 | 2026-08-01 | 2.2-SDAIN01-2090 |  |  |  |  | 24d | 0d |  | LABOUR [300 h]; Construction Material [40] | UDF_G3 | 0 | IN | Non | SDA | EIT2.2 |  |  |  |
| 2.2-SDAIN01-2110 |  | Complete QA/QC document | 10d | 2026-08-03 | 2026-08-13 | 2.2-SDAIN01-2100 |  |  |  |  | 24d | 0d |  | LABOUR [1000 h]; Construction Material [100] | UDF_G3 | 0 | IN | Non | SDA | EIT2.2 |  | C03c | EIT02.2 |
| 2.2-SDAIN01-2120 |  | Back Filling | 30d | 2026-08-14 | 2026-09-17 | 2.2-SDAIN01-2110, 2.2-SDAIN01-2060 FF |  |  |  |  | 24d | 30d |  | LABOUR [2110.86 h]; Construction Material [300] | UDF_G3 | 0 | IN | Non | SDA | EIT2.2 |  | C03c | EIT02.2 |

| ID | WBS | Activity | Duration | Start | Finish | Predecessors | Complete | Remaining | Planned start | Planned finish | Total float | Free float | Resources | On Schedule Indicator | %Completed | Disciplines | EIT2 Main Activity | Areas | Phases | EIT WBS | EIT PKG | Main Activity | WBS | Types | Cable Pull & Laying |
| --- | --- | --- | --- | --- | --- | --- | --- | --- | --- | --- | --- | --- | --- | --- | --- | --- | --- | --- | --- | --- | --- | --- | --- | --- | --- |
|  | 1 | **C03-JTR-461/462/464/465/466/467/468/474** |  | 2026-07-17 | 2026-10-22 |  |  |  |  |  |  |  |  |  |  |  |  |  |  |  |  |  |  |  |  |
| 2.2-SDAIN01-2130 |  | Cable Laying | 30d | 2026-07-17 | 2026-08-20 | 2.2-SDAIN01-2070 |  |  |  |  | -6d | 0d | LABOUR [6000 h]; Construction Material [300] | UDF_G3 | 0 | IN | Non | SDA | EIT2.2 | C03c | EIT02.2 |  |  |  |  |
| 2.2-SDAIN01-2140 |  | Megger & Continuity test | 5d | 2026-08-21 | 2026-08-26 | 2.2-SDAIN01-2130, 2.2-SDAIN03-1450 |  |  |  |  | -6d | 0d | LABOUR [500 h]; Construction Material [50] | UDF_G3 | 0 | IN | Non | SDA | EIT2.2 | C03c | EIT02.2 |  |  |  |  |
| 2.2-SDAIN01-2150 |  | punch Clear | 5d | 2026-08-27 | 2026-09-01 | 2.2-SDAIN01-2140 |  |  |  |  | -6d | 0d | LABOUR [500 h]; Construction Material [50] | UDF_G3 | 0 | IN | Non | SDA | EIT2.2 | C03c | EIT02.2 |  |  |  |  |
| 2.2-SDAIN01-2160 |  | Sand Filling Compaction | 4d | 2026-09-02 | 2026-09-05 | 2.2-SDAIN01-2150 |  |  |  |  | -6d | 0d | LABOUR [300 h]; Construction Material [40] | UDF_G3 | 0 | IN | Non | SDA | EIT2.2 |  |  |  |  |  |  |
| 2.2-SDAIN01-2170 |  | Complete QA/QC document | 10d | 2026-09-07 | 2026-09-17 | 2.2-SDAIN01-2160 |  |  |  |  | -6d | 0d | LABOUR [1000 h]; Construction Material [100] | UDF_G3 | 0 | IN | Non | SDA | EIT2.2 | C03c | EIT02.2 |  |  |  |  |
| 2.2-SDAIN01-2180 |  | Back Filling | 30d | 2026-09-18 | 2026-10-22 | 2.2-SDAIN01-2170 |  |  |  |  | -6d | 0d | LABOUR [2110.86 h]; Construction Material [300] | UDF_G3 | 0 | IN | Non | SDA | EIT2.2 | C03c | EIT02.2 |  |  |  |  |
|  | 3 | **Instrument Cable Tray/Ladder Installation** |  | 2026-04-01 | 2026-08-08 |  |  |  |  |  |  |  |  |  |  |  |  |  |  |  |  |  |  |  |  |
| 2.2-SDAIN03-1450 |  | Install support / bracket | 90d | 2026-04-01 A | 2026-07-14 | 2.2-SDAEE03-1550 SS | 63% | 52d |  |  | 0d |  | LABOUR [1500 h]; Construction Material | UDF_G3 | 0 | EE | Non | SDA | EIT2.2 | C03c | EIT02.2 | 1 | C03a | TY1 |  |
| 2.2-SDAIN03-1460 |  | Install Ladder / Tray | 90d | 2026-04-01 A | 2026-07-14 | 2.2-SDAIN03-1450 SS | 63% | 52d |  |  | 8d | 0d | LABOUR [5000 h]; Construction Material | UDF_G3 | 0 | EE | Non | SDA | EIT2.2 | C03c | EIT02.2 | 1 | C03a | TY1 |  |
| 2.2-SDAIN03-1470 |  | Steel Conduits for Cable tray | 90d | 2026-04-01 A | 2026-07-14 | 2.2-SDAIN03-1450 SS | 63% | 52d |  |  | 8d | 0d | LABOUR [500 h]; Construction Material [900] | UDF_G3 | 0 | EE | Non | SDA | EIT2.2 | C03c | EIT02.2 | 1 | C03a | TY1 |  |
| 2.2-SDAIN03-1480 |  | Clear punch | 8d | 2026-07-15 | 2026-07-23 | 2.2-SDAIN03-1460, 2.2-SDAIN03-1470 |  |  |  |  | 8d | 0d | LABOUR [500 h]; Construction Material [80] | UDF_G3 | 0 | EE | Non | SDA | EIT2.2 | C03c | EIT02.2 | 1 | C03a | TY1 |  |
| 2.2-SDAIN03-1490 |  | Complete QA/QC document | 14d | 2026-07-24 | 2026-08-08 | 2.2-SDAIN03-1480 |  |  |  |  | 100d | 28d | LABOUR [1138.61 h]; Construction Material [140] | UDF_G3 | 0 | EE | Non | SDA | EIT2.2 | C03c | EIT02.2 | 1 | C03a | TY1 |  |
|  | 8 | **AG Cable Pull Primary Cable** |  | 2026-04-24 | 2026-09-10 |  |  |  |  |  |  |  |  |  |  |  |  |  |  |  |  |  |  |  |  |
| 2.2-SDAIN01-1500 |  | Pull Cable | 30d | 2026-04-24 A | 2026-08-18 | 2.2-SDAIN03-1460 SS, 2.2-SDAIN03-1480 SS, 2.2-SDAIN03-1460 | 39% | 30d | 2026-07-15 | 2026-08-18 | 8d | 0d | LABOUR [8000 h]; Cable Pull; Construction Material [300] | UDF_G3 | 0 | EE | SECI | SDA | EIT2.2 | C03c | EIT02.2 | 1 | C03a | TY1 | PUL |
| 2.2-SDAIN01-1510 |  | Megger & Continuity test | 5d | 2026-08-19 | 2026-08-24 | 2.2-SDAIN01-1500 |  |  |  |  | 72d | 0d | LABOUR [1000 h]; Cable Pull; Construction Material [50] | UDF_G3 | 0 | EE | SECI | SDA | EIT2.2 | C03c | EIT02.2 | 1 | C03a | TY1 |  |
| 2.2-SDAIN01-1520 |  | Complete QA/QC document | 15d | 2026-08-25 | 2026-09-10 | 2.2-SDAIN01-1510, 2.2-SDAIN03-1490 FF |  |  |  |  | 72d | 2d | LABOUR [1410.9 h]; Cable Pull; Construction Material [150] | UDF_G3 | 0 | EE | SECI | SDA | EIT2.2 | C03c | EIT02.2 | 1 | C03a | TY1 |  |
|  | 9 | **AG Cable Pull Secondary Cable** |  | 2026-04-24 | 2026-10-26 |  |  |  |  |  |  |  |  |  |  |  |  |  |  |  |  |  |  |  |  |
| 2.2-SDAIN01-1530 |  | Pull Cable | 64d | 2026-04-24 A | 2026-09-26 | 2.2-SDAIN01-1500 SS | 6% | 64d | 2026-07-15 | 2026-09-26 | 8d | 0d | LABOUR [8000 h]; Cable Pull; Construction Material [640] | UDF_G3 | 0 | EE | SECI | SDA | EIT2.2 | C03c | EIT02.2 | 1 | C03a | TY1 | PUL |
| 2.2-SDAIN01-1540 |  | Megger & Continuity test | 10d | 2026-09-28 | 2026-10-08 | 2.2-SDAIN01-1530 |  |  |  |  | 8d | 0d | LABOUR [1000 h]; Cable Pull; Construction Material [100] | UDF_G3 | 0 | EE | SECI | SDA | EIT2.2 | C03c | EIT02.2 | 1 | C03a | TY1 |  |
| 2.2-SDAIN01-1550 |  | Complete QA/QC document | 15d | 2026-10-09 | 2026-10-26 | 2.2-SDAIN01-1540 |  |  |  |  | 8d | 0d | LABOUR [1410.9 h]; Cable Pull; Construction Material [150] | UDF_G3 | 0 | EE | SECI | SDA | EIT2.2 | C03c | EIT02.2 | 1 | C03a | TY1 |  |
|  | 2 | **Instrument Cable Termination / Glanding** |  | 2026-08-21 | 2027-01-09 |  |  |  |  |  |  |  |  |  |  |  |  |  |  |  |  |  |  |  |  |
|  | 1 | **UG Cable Termination Cable** |  | 2026-08-21 | 2026-10-06 |  |  |  |  |  |  |  |  |  |  |  |  |  |  |  |  |  |  |  |  |
| 2.2-SDAIN02-1620 |  | Cable Termination/Glanding | 20d | 2026-08-21 | 2026-09-12 | 2.2-SDAIN01-2130 |  |  |  |  | 70d | 0d | LABOUR [3000 h]; Construction Material [200] | UDF_G3 | 0 | EE | Non | SDA | EIT2.2 | C03c | EIT02.2 | 1 | C03a | TY1 |  |
| 2.2-SDAIN02-1630 |  | Clear punch | 5d | 2026-09-14 | 2026-09-18 | 2.2-SDAIN02-1620 |  |  |  |  | 75d | 0d | LABOUR [500 h]; Construction Material [50] | UDF_G3 | 0 | EE | Non | SDA | EIT2.2 | C03c | EIT02.2 | 1 | C03a | TY1 |  |
| 2.2-SDAIN02-1640 |  | Complete QA/QC document | 15d | 2026-09-19 | 2026-10-06 | 2.2-SDAIN02-1630 |  |  |  |  | 75d | 5d | LABOUR [973.8 h]; Construction Material [150] | UDF_G3 | 0 | EE | Non | SDA | EIT2.2 | C03c | EIT02.2 | 1 | C03a | TY1 |  |

| ID | WBS | Activity | Duration | Start | Finish | Predecessors | Remaining | Total float | Free float | Constraint | Resources | On Schedule Indicator | %Completed | Disciplines | Main Activity | WBS | Types | EIT2 Main Activity | Areas | Phases | EIT WBS | EIT PKG |
| --- | --- | --- | --- | --- | --- | --- | --- | --- | --- | --- | --- | --- | --- | --- | --- | --- | --- | --- | --- | --- | --- | --- |
|  | 8 | **Cable Termination Primary Cable** |  | 2026-09-14 | 2026-10-29 |  |  |  |  |  |  |  |  |  |  |  |  |  |  |  |  |  |
| 2.2-SDAIN02-1560 |  | Cable Termination/Glanding | 20d | 2026-09-14 | 2026-10-06 | 2.2-SDAIN01-1520, 2.2-SDAIN02-1620 |  | 70d | 0d |  | LABOUR [3000 h]; Construction Material [200] | UDF_G3 | 0 | EE | 1 | C03a | TY1 | Non | SDA | EIT2.2 | C03c | EIT02.2 |
| 2.2-SDAIN02-1570 |  | Clear punch | 5d | 2026-10-07 | 2026-10-12 | 2.2-SDAIN02-1560 |  | 70d | 0d |  | LABOUR [500 h]; Construction Material [50] | UDF_G3 | 0 | EE | 1 | C03a | TY1 | Non | SDA | EIT2.2 | C03c | EIT02.2 |
| 2.2-SDAIN02-1580 |  | Complete QA/QC document | 15d | 2026-10-13 | 2026-10-29 | 2.2-SDAIN02-1570, 2.2-SDAIN02-1640 |  | 70d | 62d |  | LABOUR [973.8 h]; Construction Material [150] | UDF_G3 | 0 | EE | 1 | C03a | TY1 | Non | SDA | EIT2.2 | C03c | EIT02.2 |
|  | 9 | **Cable Termination Secondary Cable** |  | 2026-10-27 | 2027-01-09 |  |  |  |  |  |  |  |  |  |  |  |  |  |  |  |  |  |
| 2.2-SDAIN02-1590 |  | Cable Termination/Glanding | 40d | 2026-10-27 | 2026-12-11 | 2.2-SDAIN01-1550 |  | 8d | 0d |  | LABOUR [3000 h]; Construction Material [400] | UDF_G3 | 0 | EE | 1 | C03a | TY1 | Non | SDA | EIT2.2 | C03c | EIT02.2 |
| 2.2-SDAIN02-1600 |  | Clear punch | 10d | 2026-12-12 | 2026-12-23 | 2.2-SDAIN02-1590 |  | 8d | 0d |  | LABOUR [500 h]; Construction Material [100] | UDF_G3 | 0 | EE | 1 | C03a | TY1 | Non | SDA | EIT2.2 | C03c | EIT02.2 |
| 2.2-SDAIN02-1610 |  | Complete QA/QC document | 15d | 2026-12-24 | 2027-01-09 | 2.2-SDAIN02-1600, 2.2-SDAIN02-1580 FF |  | 8d | 0d |  | LABOUR [973.8 h]; Construction Material [150] | UDF_G3 | 0 | EE | 1 | C03a | TY1 | Non | SDA | EIT2.2 | C03c | EIT02.2 |
|  | 4 | **Instrument Calibration** |  | 2026-05-01 | 2026-06-04 |  |  |  |  |  |  |  |  |  |  |  |  |  |  |  |  |  |
| 2.2-SDAIN05-1620 |  | Calibration of Gauges | 30d | 2026-05-01 A | 2026-06-04 |  | 18d | -6d | 0d | start on or after 2026-05-01 | LABOUR [5000 h]; Construction Material [300] | UDF_G3 | 0 | EE | 1 | C03a | TY1 | Non | SDA | EIT2.2 | C03c | EIT02.2 |
| 2.2-SDAIN05-1630 |  | Calibration of Transmitters/Switches | 30d | 2026-05-01 A | 2026-06-04 | 2.2-SDAIN05-1620 SS, 2.2-SDAIN05-1620 FF | 18d | -6d | 0d |  | LABOUR [1840.66 h]; Construction Material [300] | UDF_G3 | 0 | IN |  |  |  | Non | SDA | EIT2.2 |  |  |
|  | 10 | **Gauges** |  | 2026-05-15 | 2026-06-05 |  |  |  |  |  |  |  |  |  |  |  |  |  |  |  |  |  |
| 2.2-SDAIN04-1110 |  | D.P Pressure Gauge Installation | 5d | 2026-05-15 | 2026-05-20 | 2.2-SDAIN05-1620 SS |  | 51d | 0d |  | LABOUR [500 h]; Construction Material [50] | UDF_G3 | 0 | IN |  |  |  | Non | SDA | EIT2.2 |  |  |
| 2.2-SDAIN04-1120 |  | Pressure Gauge Installation | 5d | 2026-05-21 | 2026-05-26 | 2.2-SDAIN04-1110 |  | 51d | 0d |  | LABOUR [500 h]; Construction Material [50] | UDF_G3 | 0 | IN |  |  |  | Non | SDA | EIT2.2 |  |  |
| 2.2-SDAIN04-1130 |  | Level Gauge Installation | 5d | 2026-05-27 | 2026-06-01 | 2.2-SDAIN04-1120 |  | 51d | 0d |  | LABOUR [500 h]; Construction Material [50] | UDF_G3 | 0 | IN |  |  |  | Non | SDA | EIT2.2 |  |  |
| 2.2-SDAIN04-1140 |  | Clear punch | 2d | 2026-06-02 | 2026-06-03 | 2.2-SDAIN04-1130 |  | 51d | 0d |  | LABOUR [500 h]; Construction Material [20] | UDF_G3 | 0 | IN |  |  |  | Non | SDA | EIT2.2 |  |  |
| 2.2-SDAIN04-1150 |  | Complete QA/QC document | 2d | 2026-06-04 | 2026-06-05 | 2.2-SDAIN04-1140 |  | 51d | 57d |  | LABOUR [879.5 h]; Construction Material [20] | UDF_G3 | 0 | IN |  |  |  | Non | SDA | EIT2.2 |  |  |
|  | 6 | **Transmitters/Switches** |  | 2026-05-15 | 2026-06-26 |  |  |  |  |  |  |  |  |  |  |  |  |  |  |  |  |  |
| 2.2-SDAIN04-1160 |  | Install support / bracket | 10d | 2026-05-15 | 2026-05-26 | 2.2-SDAIN05-1630 SS |  | -6d | 0d |  | LABOUR [200 h]; Construction Material [100] | UDF_G3 | 0 | EE | 1 | C03a | TY1 | Non | SDA | EIT2.2 | C03c | EIT02.2 |
| 2.2-SDAIN04-1170 |  | Pressure transmitters Installation | 5d | 2026-05-27 | 2026-06-01 | 2.2-SDAIN04-1160 |  | -6d | 0d |  | LABOUR [500 h]; Construction Material [50] | UDF_G3 | 0 | EE | 1 | C03a | TY1 | Non | SDA | EIT2.2 | C03c | EIT02.2 |
| 2.2-SDAIN04-1180 |  | D.P. Transmitters - HART Installation | 5d | 2026-06-02 | 2026-06-06 | 2.2-SDAIN04-1170 |  | -6d | 0d |  | LABOUR [500 h]; Construction Material [50] | UDF_G3 | 0 | EE | 1 | C03a | TY1 | Non | SDA | EIT2.2 | C03c | EIT02.2 |
| 2.2-SDAIN04-1190 |  | Temperature Transmitters Installation | 5d | 2026-06-08 | 2026-06-12 | 2.2-SDAIN04-1180 |  | 33d | 0d |  | LABOUR [500 h]; Construction Material [50] | UDF_G3 | 0 | EE | 1 | C03a | TY1 | Non | SDA | EIT2.2 | C03c | EIT02.2 |
| 2.2-SDAIN04-1240 |  | Level Switch Installation | 5d | 2026-06-13 | 2026-06-18 | 2.2-SDAIN04-1190 |  | 33d | 0d |  | LABOUR [500 h]; Construction Material [50] | UDF_G3 | 0 | IN |  |  |  | Non | SDA | EIT2.2 |  |  |
| 2.2-SDAIN04-1250 |  | Clear punch | 2d | 2026-06-19 | 2026-06-20 | 2.2-SDAIN04-1240 |  | 33d | 0d |  | LABOUR [100 h]; Construction Material [20] | UDF_G3 | 0 | IN |  |  |  | Non | SDA | EIT2.2 |  |  |
| 2.2-SDAIN04-1260 |  | Complete QA/QC document | 5d | 2026-06-22 | 2026-06-26 | 2.2-SDAIN04-1250 |  | 33d | 39d |  | LABOUR [579.5 h]; Construction Material [50] | UDF_G3 | 0 | IN |  |  |  | Non | SDA | EIT2.2 |  |  |

| ID | WBS | Activity | Duration | Start | Finish | Predecessors | Complete | Remaining | Planned start | Planned finish | Total float | Free float | Resources | On Schedule Indicator | %Completed | Disciplines | Main Activity | WBS | Types | EIT2 Main Activity | Areas | Phases | EIT WBS | EIT PKG | Motor Loop | Cable Pull & Laying |
| --- | --- | --- | --- | --- | --- | --- | --- | --- | --- | --- | --- | --- | --- | --- | --- | --- | --- | --- | --- | --- | --- | --- | --- | --- | --- | --- |
|  | 11 | **Instrument Junction Box Installation** |  | 2026-04-10 | 2026-05-25 |  |  |  |  |  |  |  |  |  |  |  |  |  |  |  |  |  |  |  |  |  |
| 2.2-SDAIN04-1210 |  | Instrument Junction Box Installation | 5d | 2026-04-10 A | 2026-05-20 | 2.2-SDAIN04-1200 SS | 54% | 5d | 2026-04-07 | 2026-04-11 | 61d | 0d | LABOUR [1000 h]; Construction Material [50] | UDF_G3 | 0 | EE | 1 | C03a | TY1 | Non | SDA | EIT2.2 | C03c | EIT02.2 |  |  |
| 2.2-SDAIN04-1200 |  | Install support / bracket | 5d | 2026-04-17 A | 2026-05-20 | 2.2-SDAIN03-1450 SS | 54% | 5d | 2026-04-01 | 2026-04-06 | 61d | 0d | LABOUR [1000 h]; Construction Material [50] | UDF_G3 | 0 | EE | 1 | C03a | TY1 | Non | SDA | EIT2.2 | C03c | EIT02.2 |  |  |
| 2.2-SDAIN04-1220 |  | Clear punch | 2d | 2026-05-21 | 2026-05-22 | 2.2-SDAIN04-1210 |  |  |  |  | 61d | 0d | LABOUR [200 h]; Construction Material [20] | UDF_G3 | 0 | EE | 1 | C03a | TY1 | Non | SDA | EIT2.2 | C03c | EIT02.2 |  |  |
| 2.2-SDAIN04-1230 |  | Complete QA/QC document | 2d | 2026-05-23 | 2026-05-25 | 2.2-SDAIN04-1220 |  |  |  |  | 61d | 67d | LABOUR [679.5 h]; Construction Material [20] | UDF_G3 | 0 | EE | 1 | C03a | TY1 | Non | SDA | EIT2.2 | C03c | EIT02.2 |  |  |
|  | 5 | **Tubing** |  | 2026-06-08 | 2026-08-11 |  |  |  |  |  |  |  |  |  |  |  |  |  |  |  |  |  |  |  |  |  |
| 2.2-SDAIN05-1980 |  | Instrument Hook up Tubing Installation | 14d | 2026-06-08 | 2026-06-23 | 2.2-SDAIN04-1170, 2.2-SDAIN04-1180 |  |  |  |  | -6d | 0d | LABOUR [200 h]; Construction Material [200] | UDF_G3 | 0 | IN |  |  |  | Non | SDA | EIT2.2 |  |  |  |  |
| 2.2-SDAIN05-1990 |  | Leak Test | 20d | 2026-06-24 | 2026-07-16 | 2.2-SDAIN05-1980 |  |  |  |  | -6d | 0d | LABOUR [100 h]; Construction Material [200] | UDF_G3 | 0 | IN |  |  |  | Non | SDA | EIT2.2 |  |  |  |  |
| 2.2-SDAIN05-2000 |  | Clear Punch | 10d | 2026-07-17 | 2026-07-28 | 2.2-SDAIN05-1990 |  |  |  |  | -6d | 0d | LABOUR [50 h]; Construction Material [100] | UDF_G3 | 0 | IN |  |  |  | Non | SDA | EIT2.2 |  |  |  |  |
| 2.2-SDAIN05-2010 |  | Complete QA/QC document | 12d | 2026-07-29 | 2026-08-11 | 2.2-SDAIN05-2000 |  |  |  |  | -6d | 0d | LABOUR [50.37 h]; Construction Material [120] | UDF_G3 | 0 | IN |  |  |  | Non | SDA | EIT2.2 |  |  |  |  |
|  | 7 | **Instrument Loop Check** |  | 2027-01-11 | 2027-05-29 |  |  |  |  |  |  |  |  |  |  |  |  |  |  |  |  |  |  |  |  |  |
| 2.2-SDAIN05-2020 |  | Instrument Loop check | 60d | 2027-01-11 | 2027-03-20 | 2.2-SDAIN02-1610 |  |  |  |  | 8d | 0d | LABOUR [3000 h]; Construction Material [600] | UDF_G3 | 0 | IN |  |  |  | Non | SDA | EIT2.2 |  |  | LO |  |
| 2.2-SDAIN05-2030 |  | Clear Punch | 20d | 2027-03-22 | 2027-04-13 | 2.2-SDAIN05-2020 |  |  |  |  | 8d | 0d | LABOUR [500 h]; Construction Material [200] | UDF_G3 | 0 | IN |  |  |  | Non | SDA | EIT2.2 |  |  | LO |  |
| 2.2-SDAIN05-2040 |  | Complete QA/QC document | 40d | 2027-04-14 | 2027-05-29 | 2.2-SDAIN05-2030 |  |  |  |  | 8d | 0d | LABOUR [607.78 h]; Construction Material [400] | UDF_G3 | 0 | IN |  |  |  | Non | SDA | EIT2.2 |  |  | LO |  |
|  | 8 | **Telecom** |  | 2026-05-01 | 2026-11-21 |  |  |  |  |  |  |  |  |  |  |  |  |  |  |  |  |  |  |  |  |  |
|  | 3 | **Telecom Cable Tray/Ladder Installation** |  | 2026-07-17 | 2026-09-01 |  |  |  |  |  |  |  |  |  |  |  |  |  |  |  |  |  |  |  |  |  |
| 2.2-SDATE-1330 |  | Install support / bracket | 30d | 2026-07-17 | 2026-08-20 | 2.2-SDAIN03-1450 SS, 2.2-SDAIN05-2000 SS, 2.2-SDAIN03-1450 |  |  |  |  | -2d | 0d | LABOUR; Construction Material [300] | UDF_G3 | 0 | EE | 1 | C03a | TY1 | Non | SDA | EIT2.2 | C03a | EIT02.2 |  |  |
| 2.2-SDATE-1335 |  | Install Ladder / Tray | 30d | 2026-07-17 | 2026-08-20 | 2.2-SDATE-1330 SS |  |  |  |  | -2d | 0d | LABOUR; Construction Material [300] | UDF_G3 | 0 | EE | 1 | C03a | TY1 | Non | SDA | EIT2.2 | C03a | EIT02.2 |  |  |
| 2.2-SDATE-1340 |  | Conduit Install | 30d | 2026-07-17 | 2026-08-20 | 2.2-SDATE-1330 SS |  |  |  |  | -2d | 0d | LABOUR; Construction Material [300] | UDF_G3 | 0 | TE |  |  |  | Non | SDA | EIT2.2 | C03a | EIT02.2 |  |  |
| 2.2-SDATE-1345 |  | Clear punch | 5d | 2026-08-21 | 2026-08-26 | 2.2-SDATE-1335, 2.2-SDATE-1340 |  |  |  |  | -2d | 0d | LABOUR; Construction Material [50] | UDF_G3 | 0 | EE | 1 | C03a | TY1 | Non | SDA | EIT2.2 | C03a | EIT02.2 |  |  |
| 2.2-SDATE-1350 |  | Complete QA/QC document | 5d | 2026-08-27 | 2026-09-01 | 2.2-SDATE-1345 |  |  |  |  | -2d | 0d | LABOUR; Construction Material [50] | UDF_G3 | 0 | EE | 1 | C03a | TY1 | Non | SDA | EIT2.2 | C03a | EIT02.2 |  |  |
|  | 1 | **AG Telecommunication Cable Installation** |  | 2026-05-01 | 2026-10-17 |  |  |  |  |  |  |  |  |  |  |  |  |  |  |  |  |  |  |  |  |  |
| 2.2-SDATE01-1090 |  | Above Ground Pull Cable | 30d | 2026-05-01 A | 2026-10-06 | 2.2-SDATE-1350 | 12% | 30d | 2026-09-07 | 2026-10-10 | -2d | 0d | LABOUR [1000 h]; Cable Pull; Construction Material [300] | UDF_G3 | 0 | EE | 1 | C03a | TY1 | SECT | SDA | EIT2.2 | C03c | EIT02.2 |  | PUL |
| 2.2-SDATE01-1095 |  | Megger & Continuity test | 5d | 2026-10-07 | 2026-10-12 | 2.2-SDATE01-1090 |  |  |  |  | -2d | 0d | LABOUR [500 h]; Cable Pull; Construction Material [50] | UDF_G3 | 0 | EE | 1 | C03a | TY1 | SECT | SDA | EIT2.2 | C03c | EIT02.2 |  |  |
| 2.2-SDATE01-1100 |  | Complete QA/QC document | 5d | 2026-10-13 | 2026-10-17 | 2.2-SDATE01-1095 |  |  |  |  | -2d | 0d | LABOUR [643.81 h]; Cable Pull; Construction Material [50] | UDF_G3 | 0 | EE | 1 | C03a | TY1 | SECT | SDA | EIT2.2 | C03c | EIT02.2 |  |  |

| ID | WBS | Activity | Duration | Start | Finish | Predecessors | Total float | Free float | Constraint | Resources | On Schedule Indicator | %Completed | Disciplines | Main Activity | WBS | Types | EIT2 Main Activity | Areas | Phases | EIT WBS | EIT PKG | Cable Pull & Laying |
| --- | --- | --- | --- | --- | --- | --- | --- | --- | --- | --- | --- | --- | --- | --- | --- | --- | --- | --- | --- | --- | --- | --- |
|  | 4 | **Telecommunication Termination / Glanding** |  | 2026-10-19 | 2026-11-21 |  |  |  |  |  |  |  |  |  |  |  |  |  |  |  |  |  |
| 2.2-SDATE02-1090 |  | Cable Termination/Glanding | 20d | 2026-10-19 | 2026-11-10 | 2.2-SDATE01-1100 | -2d | 0d |  | LABOUR [500 h]; Construction Material [200] | UDF_G3 | 0 | EE | 1 | C03a | TY1 | Non | SDA | EIT2.2 | C03c | EIT02.2 |  |
| 2.2-SDATE02-1100 |  | Clear punch | 5d | 2026-11-11 | 2026-11-16 | 2.2-SDATE02-1090 | -2d | 0d |  | LABOUR [200 h]; Construction Material [50] | UDF_G3 | 0 | EE | 1 | C03a | TY1 | Non | SDA | EIT2.2 | C03c | EIT02.2 |  |
| 2.2-SDATE02-1110 |  | Complete QA/QC document | 5d | 2026-11-17 | 2026-11-21 | 2.2-SDATE02-1100 | -2d | 0d |  | LABOUR [300 h]; Construction Material [50] | UDF_G3 | 0 | EE | 1 | C03a | TY1 | Non | SDA | EIT2.2 | C03c | EIT02.2 |  |
|  | 2 | **Telecommunication Equipment Installation** |  | 2026-08-21 | 2026-10-06 |  |  |  |  |  |  |  |  |  |  |  |  |  |  |  |  |  |
| 2.2-SDATE01.1-1120 |  | Telecom Equpiment Installation | 10d | 2026-08-21 | 2026-09-01 | 2.2-SDATE-1330 | 38d | 0d |  | LABOUR [1000 h]; Construction Material [100] | UDF_G3 | 0 | EE | 1 | C03a | TY1 | Non | SDA | EIT2.2 | C03c | EIT02.2 |  |
| 2.2-SDATE01.1-1130 |  | Clear Punch | 10d | 2026-09-02 | 2026-09-12 | 2.2-SDATE01.1-1120 | 38d | 0d |  | LABOUR [300 h]; Construction Material [100] | UDF_G3 | 0 | EE | 1 | C03a | TY1 | Non | SDA | EIT2.2 | C03c | EIT02.2 |  |
| 2.2-SDATE01.1-1140 |  | Complete QA/QC document | 20d | 2026-09-14 | 2026-10-06 | 2.2-SDATE01.1-1130 | 38d | 40d |  | LABOUR [782.95 h]; Construction Material [200] | UDF_G3 | 0 | EE | 1 | C03a | TY1 | Non | SDA | EIT2.2 | C03c | EIT02.2 |  |
|  | EIT-2.2 | **WBS : C03a HCU-3 (Hydrocracking Unit)-1** |  | 2026-04-01 | 2027-04-05 |  |  |  |  |  |  |  |  |  |  |  |  |  |  |  |  |  |
|  | 2 | **HCU ZONE-A** |  | 2026-04-01 | 2027-02-11 |  |  |  |  |  |  |  |  |  |  |  |  |  |  |  |  |  |
|  | 1 | **Electrical Works** |  | 2026-04-01 | 2027-02-11 |  |  |  |  |  |  |  |  |  |  |  |  |  |  |  |  |  |
|  | 6 | **Cable trench Excavation buried** |  | 2026-05-15 | 2026-09-02 |  |  |  |  |  |  |  |  |  |  |  |  |  |  |  |  |  |
|  | 8 | **C03-ETD-190/536/181/399/543/645/134/683/126/124** |  | 2026-05-15 | 2026-06-24 |  |  |  |  |  |  |  |  |  |  |  |  |  |  |  |  |  |
| 2.2-HCUEE09-1000 |  | Cable trench Excavation | 30d | 2026-05-15 | 2026-06-18 |  | -30.1d | 0d | start on or after 2026-04-01 | LABOUR [500 h]; Construction Material [300] | UDF_G3 | 0 | EE |  |  |  | Non | HCU | EIT2.2 | C03c | EIT02.2 |  |
| 2.2-HCUEE09-1010 |  | Sand Filling Compaction | 5d | 2026-06-19 | 2026-06-24 | 2.2-HCUEE09-1000 | 24d | 25d |  | LABOUR [167.55 h]; Construction Material [50] | UDF_G3 | 0 | EE |  |  |  | Non | HCU | EIT2.2 | C03c | EIT02.2 |  |
|  | 36 | **C03-ETD-522/185/220/857/652/187/853/139/140/138** |  | 2026-06-19 | 2026-07-29 |  |  |  |  |  |  |  |  |  |  |  |  |  |  |  |  |  |
| 2.2-HCUEE09-1020 |  | Cable trench Excavation | 30d | 2026-06-19 | 2026-07-23 | 2.2-HCUEE09-1000 | -10d | 0d |  | LABOUR [500 h]; Construction Material [300] | UDF_G3 | 0 | EE |  |  |  | Non | HCU | EIT2.2 | C03c | EIT02.2 |  |
| 2.2-HCUEE09-1030 |  | Sand Filling Compaction | 5d | 2026-07-24 | 2026-07-29 | 2.2-HCUEE09-1020, 2.2-HCUEE09-1010 | -1d | 0d |  | LABOUR [167.55 h]; Construction Material [50] | UDF_G3 | 0 | EE |  |  |  | Non | HCU | EIT2.2 | C03c | EIT02.2 |  |
|  | 9 | **C03-ETD-137/471/135/136/218/219/127** |  | 2026-07-24 | 2026-09-02 |  |  |  |  |  |  |  |  |  |  |  |  |  |  |  |  |  |
| 2.2-HCUEE09-1040 |  | Cable trench Excavation | 30d | 2026-07-24 | 2026-08-27 | 2.2-HCUEE09-1020 | -10d | 0d |  | LABOUR [500 h]; Construction Material [300] | UDF_G3 | 0 | EE |  |  |  | Non | HCU | EIT2.2 | C03c | EIT02.2 |  |
| 2.2-HCUEE09-1050 |  | Sand Filling Compaction | 5d | 2026-08-28 | 2026-09-02 | 2.2-HCUEE09-1040, 2.2-HCUEE09-1030 | -1d | 0d |  | LABOUR [167.55 h]; Construction Material [50] | UDF_G3 | 0 | EE |  |  |  | Non | HCU | EIT2.2 | C03c | EIT02.2 |  |
|  | 8 | **Cable Laying Direct buried** |  | 2026-06-19 | 2026-11-12 |  |  |  |  |  |  |  |  |  |  |  |  |  |  |  |  |  |
|  | 8 | **C03-ETD-190/536/181/399/543/645/134/683/126/124** |  | 2026-06-19 | 2026-09-05 |  |  |  |  |  |  |  |  |  |  |  |  |  |  |  |  |  |
| 2.2-HCUEE01-1055 |  | Sand Filling First layer | 4d | 2026-06-19 | 2026-06-23 | 2.2-HCUEE09-1000 | 10d | 0d |  | LABOUR [100 h]; Cable Pull; Construction Material [40] | UDF_G3 | 0 | EE |  |  |  | PRIC | HCU | EIT2.2 |  |  |  |
| 2.2-HCUEE01-1060 |  | Cable Laying | 20d | 2026-06-24 | 2026-07-16 | 2.2-HCUEE01-1055 | 10d | 0d |  | LABOUR [2500 h]; Cable Pull [22249 h]; Construction Material [200] | UDF_G3 | 0 | EE |  |  |  | PRIC | HCU | EIT2.2 | C03c | EIT02.2 | PUL |
| 2.2-HCUEE01-1070 |  | Megger & Continuity test | 5d | 2026-07-17 | 2026-07-22 | 2.2-HCUEE01-1060 | 10d | 0d |  | LABOUR [200 h]; Cable Pull; Construction Material [50] | UDF_G3 | 0 | EE |  |  |  | PRIC | HCU | EIT2.2 | C03c | EIT02.2 |  |
| 2.2-HCUEE01-1080 |  | punch Clear | 5d | 2026-07-23 | 2026-07-28 | 2.2-HCUEE01-1070 | 10d | 0d |  | LABOUR [100 h]; Cable Pull; Construction Material [50] | UDF_G3 | 0 | EE |  |  |  | PRIC | HCU | EIT2.2 | C03c | EIT02.2 |  |
| 2.2-HCUEE01-1090 |  | Sand Filling Compaction | 4d | 2026-07-29 | 2026-08-01 | 2.2-HCUEE01-1080 | 10d | 0d |  | LABOUR [300 h]; Cable Pull; Construction Material [40] | UDF_G3 | 0 | EE |  |  |  | PRIC | HCU | EIT2.2 |  |  |  |
| 2.2-HCUEE01-1100 |  | Complete QA/QC document | 10d | 2026-08-03 | 2026-08-13 | 2.2-HCUEE01-1090 | 10d | 0d |  | LABOUR [500 h]; Cable Pull; Construction Material [100] | UDF_G3 | 0 | EE |  |  |  | PRIC | HCU | EIT2.2 | C03c | EIT02.2 |  |
| 2.2-HCUEE01-1110 |  | Back Filling | 20d | 2026-08-14 | 2026-09-05 | 2.2-HCUEE01-1100 | 10d | 11d |  | LABOUR [824.66 h]; Cable Pull; Construction Material [200] | UDF_G3 | 0 | EE |  |  |  | PRIC | HCU | EIT2.2 | C03c | EIT02.2 |  |

| ID | WBS | Activity | Duration | Start | Finish | Predecessors | Total float | Free float | Resources | On Schedule Indicator | %Completed | Disciplines | EIT2 Main Activity | Areas | Phases | Cable Pull & Laying | EIT WBS | EIT PKG |
| --- | --- | --- | --- | --- | --- | --- | --- | --- | --- | --- | --- | --- | --- | --- | --- | --- | --- | --- |
|  | 36 | **C03-ETD-522/185/220/857/652/187/853/139/140/138** |  | 2026-07-24 | 2026-10-12 |  |  |  |  |  |  |  |  |  |  |  |  |  |
| 2.2-HCUEE01-2345 |  | Sand Filling First layer | 4d | 2026-07-24 | 2026-07-28 | 2.2-HCUEE09-1020 | 0d | 1d | LABOUR [100 h]; Cable Pull; Construction Material [40] | UDF_G3 | 0 | EE | PRIC | HCU | EIT2.2 |  |  |  |
| 2.2-HCUEE01-2350 |  | Cable Laying | 20d | 2026-07-30 | 2026-08-21 | 2.2-HCUEE09-1030, 2.2-HCUEE01-2345 | -1d | 0d | LABOUR [2500 h]; Cable Pull [22249 h]; Construction Material [200] | UDF_G3 | 0 | EE | PRIC | HCU | EIT2.2 | PUL | C03c | EIT02.2 |
| 2.2-HCUEE01-2360 |  | Megger & Continuity test | 5d | 2026-08-22 | 2026-08-27 | 2.2-HCUEE01-2350 | -1d | 0d | LABOUR [200 h]; Cable Pull; Construction Material [50] | UDF_G3 | 0 | EE | PRIC | HCU | EIT2.2 |  | C03c | EIT02.2 |
| 2.2-HCUEE01-2370 |  | punch Clear | 5d | 2026-08-28 | 2026-09-02 | 2.2-HCUEE01-2360 | -1d | 0d | LABOUR [100 h]; Cable Pull; Construction Material [50] | UDF_G3 | 0 | EE | PRIC | HCU | EIT2.2 |  | C03c | EIT02.2 |
| 2.2-HCUEE01-2380 |  | Sand Filling Compaction | 4d | 2026-09-03 | 2026-09-07 | 2.2-HCUEE01-2370, 2.2-HCUEE09-1050 | -1d | 0d | LABOUR [300 h]; Cable Pull; Construction Material [40] | UDF_G3 | 0 | EE | PRIC | HCU | EIT2.2 |  |  |  |
| 2.2-HCUEE01-2390 |  | Complete QA/QC document | 10d | 2026-09-08 | 2026-09-18 | 2.2-HCUEE01-2380 | -1d | 0d | LABOUR [500 h]; Cable Pull; Construction Material [100] | UDF_G3 | 0 | EE | PRIC | HCU | EIT2.2 |  | C03c | EIT02.2 |
| 2.2-HCUEE01-2400 |  | Back Filling | 20d | 2026-09-19 | 2026-10-12 | 2.2-HCUEE01-2390, 2.2-HCUEE01-1110 | -1d | 9d | LABOUR [824.66 h]; Cable Pull; Construction Material [200] | UDF_G3 | 0 | EE | PRIC | HCU | EIT2.2 |  | C03c | EIT02.2 |
|  | 9 | **C03-ETD-137/471/135/136/218/219/127** |  | 2026-08-28 | 2026-11-12 |  |  |  |  |  |  |  |  |  |  |  |  |  |
| 2.2-HCUEE01-2405 |  | Sand Filling First layer | 4d | 2026-08-28 | 2026-09-01 | 2.2-HCUEE09-1040 | -10d | 0d | LABOUR [100 h]; Cable Pull; Construction Material [40] | UDF_G3 | 0 | EE | PRIC | HCU | EIT2.2 |  |  |  |
| 2.2-HCUEE01-2410 |  | Cable Laying | 20d | 2026-09-02 | 2026-09-24 | 2.2-HCUEE01-2405 | -10d | 0d | LABOUR [2500 h]; Cable Pull [22250 h]; Construction Material [200] | UDF_G3 | 0 | EE | PRIC | HCU | EIT2.2 | PUL | C03c | EIT02.2 |
| 2.2-HCUEE01-2420 |  | Megger & Continuity test | 5d | 2026-09-25 | 2026-09-30 | 2.2-HCUEE01-2410 | -10d | 0d | LABOUR [200 h]; Cable Pull; Construction Material [50] | UDF_G3 | 0 | EE | PRIC | HCU | EIT2.2 |  | C03c | EIT02.2 |
| 2.2-HCUEE01-2430 |  | punch Clear | 5d | 2026-10-01 | 2026-10-06 | 2.2-HCUEE01-2420 | -10d | 0d | LABOUR [100 h]; Cable Pull; Construction Material [50] | UDF_G3 | 0 | EE | PRIC | HCU | EIT2.2 |  | C03c | EIT02.2 |
| 2.2-HCUEE01-2440 |  | Sand Filling Compaction | 4d | 2026-10-07 | 2026-10-10 | 2.2-HCUEE01-2430 | -10d | 0d | LABOUR [300 h]; Cable Pull; Construction Material [40] | UDF_G3 | 0 | EE | PRIC | HCU | EIT2.2 |  |  |  |
| 2.2-HCUEE01-2450 |  | Complete QA/QC document | 10d | 2026-10-12 | 2026-10-22 | 2.2-HCUEE01-2440 | -10d | 0d | LABOUR [500 h]; Cable Pull; Construction Material [100] | UDF_G3 | 0 | EE | PRIC | HCU | EIT2.2 |  | C03c | EIT02.2 |
| 2.2-HCUEE01-2460 |  | Back Filling | 18d | 2026-10-23 | 2026-11-12 | 2.2-HCUEE01-2450, 2.2-HCUEE01-2400 | -10d | 0d | LABOUR [824.66 h]; Cable Pull; Construction Material [180] | UDF_G3 | 0 | EE | PRIC | HCU | EIT2.2 |  | C03c | EIT02.2 |
|  | 13 | **Cable Laying Concrete Trench** |  | 2026-06-24 | 2026-11-12 |  |  |  |  |  |  |  |  |  |  |  |  |  |
|  | 1 | **C03-ETC-101/406/432/121/146/147/104/175/163/190/135/111/112/138/155** |  | 2026-06-24 | 2026-09-05 |  |  |  |  |  |  |  |  |  |  |  |  |  |
| 2.2-HCUEE01-2470 |  | Cable Laying | 20d | 2026-06-24 | 2026-07-16 | 2.2-HCUEE01-1060 SS | 10d | 0d | LABOUR [100 h]; Cable Pull [22250 h]; Construction Material [200] | UDF_G3 | 0 | EE | PRIC | HCU | EIT2.2 | PUL | C03c | EIT02.2 |
| 2.2-HCUEE01-2480 |  | Megger & Continuity test | 5d | 2026-07-17 | 2026-07-22 | 2.2-HCUEE01-2470 | 10d | 0d | LABOUR [2500 h]; Cable Pull; Construction Material [50] | UDF_G3 | 0 | EE | PRIC | HCU | EIT2.2 |  | C03c | EIT02.2 |
| 2.2-HCUEE01-2490 |  | punch Clear | 5d | 2026-07-23 | 2026-07-28 | 2.2-HCUEE01-2480 | 10d | 0d | LABOUR [200 h]; Cable Pull; Construction Material [50] | UDF_G3 | 0 | EE | PRIC | HCU | EIT2.2 |  | C03c | EIT02.2 |
| 2.2-HCUEE01-2500 |  | Sand Filling Compaction | 4d | 2026-07-29 | 2026-08-01 | 2.2-HCUEE01-2490 | 10d | 0d | LABOUR [100 h]; Cable Pull; Construction Material [40] | UDF_G3 | 0 | EE | PRIC | HCU | EIT2.2 |  |  |  |
| 2.2-HCUEE01-2510 |  | Complete QA/QC document | 10d | 2026-08-03 | 2026-08-13 | 2.2-HCUEE01-2500 | 10d | 0d | LABOUR [500 h]; Cable Pull; Construction Material [100] | UDF_G3 | 0 | EE | PRIC | HCU | EIT2.2 |  | C03c | EIT02.2 |
| 2.2-HCUEE01-2520 |  | Back Filling | 20d | 2026-08-14 | 2026-09-05 | 2.2-HCUEE01-2510 | 10d | 11d | LABOUR [1124.66 h]; Cable Pull; Construction Material [200] | UDF_G3 | 0 | EE | PRIC | HCU | EIT2.2 |  | C03c | EIT02.2 |

| ID | WBS | Activity | Duration | Start | Finish | Predecessors | Complete | Remaining | Planned start | Planned finish | Total float | Free float | Resources | On Schedule Indicator | %Completed | Disciplines | EIT2 Main Activity | Areas | Phases | Cable Pull & Laying | EIT WBS | EIT PKG | Main Activity | WBS | Types |
| --- | --- | --- | --- | --- | --- | --- | --- | --- | --- | --- | --- | --- | --- | --- | --- | --- | --- | --- | --- | --- | --- | --- | --- | --- | --- |
|  | 2 | **C03-ETC-107/108/187/188/177/408/405/119/410/153/113/176/102/115/118** |  | 2026-07-30 | 2026-10-12 |  |  |  |  |  |  |  |  |  |  |  |  |  |  |  |  |  |  |  |  |
| 2.2-HCUEE01-2530 |  | Cable Laying | 20d | 2026-07-30 | 2026-08-21 | 2.2-HCUEE01-2350 SS |  |  |  |  | -1d | 0d | LABOUR [100 h]; Cable Pull [22250 h]; Construction Material [200] | UDF_G3 | 0 | EE | PRIC | HCU | EIT2.2 | PUL | C03c | EIT02.2 |  |  |  |
| 2.2-HCUEE01-2540 |  | Megger & Continuity test | 5d | 2026-08-22 | 2026-08-27 | 2.2-HCUEE01-2530 |  |  |  |  | -1d | 0d | LABOUR [2500 h]; Cable Pull; Construction Material [50] | UDF_G3 | 0 | EE | PRIC | HCU | EIT2.2 |  | C03c | EIT02.2 |  |  |  |
| 2.2-HCUEE01-2550 |  | punch Clear | 5d | 2026-08-28 | 2026-09-02 | 2.2-HCUEE01-2540 |  |  |  |  | -1d | 0d | LABOUR [200 h]; Cable Pull; Construction Material [50] | UDF_G3 | 0 | EE | PRIC | HCU | EIT2.2 |  | C03c | EIT02.2 |  |  |  |
| 2.2-HCUEE01-2560 |  | Sand Filling Compaction | 4d | 2026-09-03 | 2026-09-07 | 2.2-HCUEE01-2550 |  |  |  |  | -1d | 0d | LABOUR [100 h]; Cable Pull; Construction Material [40] | UDF_G3 | 0 | EE | PRIC | HCU | EIT2.2 |  |  |  |  |  |  |
| 2.2-HCUEE01-2570 |  | Complete QA/QC document | 10d | 2026-09-08 | 2026-09-18 | 2.2-HCUEE01-2560 |  |  |  |  | -1d | 0d | LABOUR [500 h]; Cable Pull; Construction Material [100] | UDF_G3 | 0 | EE | PRIC | HCU | EIT2.2 |  | C03c | EIT02.2 |  |  |  |
| 2.2-HCUEE01-2580 |  | Back Filling | 20d | 2026-09-19 | 2026-10-12 | 2.2-HCUEE01-2570, 2.2-HCUEE01-2520 |  |  |  |  | -1d | 9d | LABOUR [1124.66 h]; Cable Pull; Construction Material [200] | UDF_G3 | 0 | EE | PRIC | HCU | EIT2.2 |  | C03c | EIT02.2 |  |  |  |
|  | 3 | **C03-ETC-439/189/545/144/433/163/156/157/191/185/186/432/182/139/175/105/122/438/121/185/404** |  | 2026-09-02 | 2026-11-12 |  |  |  |  |  |  |  |  |  |  |  |  |  |  |  |  |  |  |  |  |
| 2.2-HCUEE01-2590 |  | Cable Laying | 20d | 2026-09-02 | 2026-09-24 | 2.2-HCUEE01-2410 SS |  |  |  |  | -10d | 0d | LABOUR [100 h]; Cable Pull [22250 h]; Construction Material [200] | UDF_G3 | 0 | EE | PRIC | HCU | EIT2.2 | PUL | C03c | EIT02.2 |  |  |  |
| 2.2-HCUEE01-2600 |  | Megger & Continuity test | 5d | 2026-09-25 | 2026-09-30 | 2.2-HCUEE01-2590 |  |  |  |  | -10d | 0d | LABOUR [2500 h]; Cable Pull; Construction Material [50] | UDF_G3 | 0 | EE | PRIC | HCU | EIT2.2 |  | C03c | EIT02.2 |  |  |  |
| 2.2-HCUEE01-2610 |  | punch Clear | 5d | 2026-10-01 | 2026-10-06 | 2.2-HCUEE01-2600 |  |  |  |  | -10d | 0d | LABOUR [200 h]; Cable Pull; Construction Material [50] | UDF_G3 | 0 | EE | PRIC | HCU | EIT2.2 |  | C03c | EIT02.2 |  |  |  |
| 2.2-HCUEE01-2620 |  | Sand Filling Compaction | 4d | 2026-10-07 | 2026-10-10 | 2.2-HCUEE01-2610 |  |  |  |  | -10d | 0d | LABOUR [100 h]; Cable Pull; Construction Material [40] | UDF_G3 | 0 | EE | PRIC | HCU | EIT2.2 |  |  |  |  |  |  |
| 2.2-HCUEE01-2630 |  | Complete QA/QC document | 10d | 2026-10-12 | 2026-10-22 | 2.2-HCUEE01-2620 |  |  |  |  | -10d | 0d | LABOUR [500 h]; Cable Pull; Construction Material [100] | UDF_G3 | 0 | EE | PRIC | HCU | EIT2.2 |  | C03c | EIT02.2 |  |  |  |
| 2.2-HCUEE01-2640 |  | Back Filling | 18d | 2026-10-23 | 2026-11-12 | 2.2-HCUEE01-2630, 2.2-HCUEE01-2460 FF, 2.2-HCUEE01-2580 |  |  |  |  | -10d | 0d | LABOUR [1124.66 h]; Cable Pull; Construction Material [180] | UDF_G3 | 0 | EE | PRIC | HCU | EIT2.2 |  | C03c | EIT02.2 |  |  |  |
|  | 1 | **Electrical Cable Tray/Ladder Installation** |  | 2026-04-01 | 2026-08-12 |  |  |  |  |  |  |  |  |  |  |  |  |  |  |  |  |  |  |  |  |
| 2.2-HCUEE03-1450 |  | Install support / bracket | 90d | 2026-04-01 A | 2026-07-14 | 2.2-HCUEE09-1000 SS | 26% | 52d |  |  | 95d | 0d | LABOUR [1000 h]; Construction Material | UDF_G3 | 0 | EE | Non | HCU | EIT2.2 |  |  |  |  |  |  |
| 2.2-HCUEE03-1460 |  | Install Ladder / Tray | 90d | 2026-04-01 A | 2026-07-14 | 2.2-HCUEE03-1450 SS | 26% | 52d |  |  | 95d | 0d | LABOUR [2000 h]; Construction Material | UDF_G3 | 0 | EE | Non | HCU | EIT2.2 |  |  |  |  |  |  |
| 2.2-HCUEE03-1470 |  | Install Conduits | 90d | 2026-04-01 A | 2026-07-14 | 2.2-HCUEE03-1460 SS | 26% | 52d |  |  | 106d | 0d | LABOUR [500 h]; Construction Material [900] | UDF_G3 | 0 | EE | Non | HCU | EIT2.2 |  |  |  |  |  |  |
| 2.2-HCUEE03-1480 |  | Clear punch | 10d | 2026-07-15 | 2026-07-25 | 2.2-HCUEE03-1470, 2.2-HCUEE03-1460 |  |  |  |  | 106d | 0d | LABOUR [200 h]; Construction Material [100] | UDF_G3 | 0 | EE | Non | HCU | EIT2.2 |  |  |  |  |  |  |
| 2.2-HCUEE03-1490 |  | Complete QA/QC document | 15d | 2026-07-27 | 2026-08-12 | 2.2-HCUEE03-1480 |  |  |  |  | 106d | 0d | LABOUR [683.3 h]; Construction Material [150] | UDF_G3 | 0 | EE | Non | HCU | EIT2.2 |  |  |  |  |  |  |
|  | 9 | **AG Cable Pull LV Cable** |  | 2026-04-24 | 2026-08-29 |  |  |  |  |  |  |  |  |  |  |  |  |  |  |  |  |  |  |  |  |
| 2.2-HCUEE01-1180 |  | Pull Cable | 60d | 2026-04-24 A | 2026-07-23 | 2.2-HCUEE03-1460 SS | 3% | 60d | 2026-07-15 | 2026-09-22 | 95d | 0d | LABOUR [5000 h]; Cable Pull; Construction Material [600] | UDF_G3 | 0 | EE | SECE | HCU | EIT2.2 | PUL | C03a | EIT02.2 | 1 | C03a | TY1 |
| 2.2-HCUEE01-1185 |  | Megger & Continuity test | 10d | 2026-08-13 | 2026-08-24 | 2.2-HCUEE01-1180, 2.2-HCUEE03-1490 |  |  |  |  | 106d | 0d | LABOUR [500 h]; Cable Pull; Construction Material [100] | UDF_G3 | 0 | EE | SECE | HCU | EIT2.2 |  | C03a | EIT02.2 | 1 | C03a | TY1 |
| 2.2-HCUEE01-1190 |  | Complete QA/QC document | 15d | 2026-08-13 | 2026-08-29 | 2.2-HCUEE01-1185 SS |  |  |  |  | 106d | 0d | LABOUR [1440.6 h]; Cable Pull; Construction Material [150] | UDF_G3 | 0 | EE | SECE | HCU | EIT2.2 |  | C03a | EIT02.2 | 1 | C03a | TY1 |

| ID | WBS | Activity | Duration | Start | Finish | Predecessors | Complete | Remaining | Planned start | Planned finish | Total float | Free float | Resources | On Schedule Indicator | %Completed | Disciplines | Main Activity | WBS | Types | EIT2 Main Activity | Areas | Phases | Cable Pull & Laying | EIT WBS | EIT PKG |
| --- | --- | --- | --- | --- | --- | --- | --- | --- | --- | --- | --- | --- | --- | --- | --- | --- | --- | --- | --- | --- | --- | --- | --- | --- | --- |
|  | 10 | **AG Cable Pull Control Cable** |  | 2026-04-24 | 2026-11-30 |  |  |  |  |  |  |  |  |  |  |  |  |  |  |  |  |  |  |  |  |
| 2.2-HCUEE01-1210 |  | Pull Cable | 60d | 2026-04-24 A | 2026-07-23 | 2.2-HCUEE01-1180 SS | 1% | 60d | 2026-07-15 | 2026-09-22 | 95d | 0d | LABOUR [5000 h]; Cable Pull; Construction Material [600] | UDF_G3 | 0 | EE | 1 | C03a | TY1 | SECE | HCU | EIT2.2 | PUL | C03a | EIT02.2 |
| 2.2-HCUEE01-1220 |  | Megger & Continuity test | 10d | 2026-07-24 | 2026-08-04 | 2.2-HCUEE01-1210 |  |  |  |  | 100d | 86d | LABOUR [500 h]; Cable Pull; Construction Material [100] | UDF_G3 | 0 | EE | 1 | C03a | TY1 | SECE | HCU | EIT2.2 |  | C03a | EIT02.2 |
| 2.2-HCUEE01-1230 |  | Complete QA/QC document | 15d | 2026-11-13 | 2026-11-30 | 2.2-HCUEE01-1220, 2.2-HCUEE01-2640 |  |  |  |  | 14d | 0d | LABOUR [1440.6 h]; Cable Pull; Construction Material [150] | UDF_G3 | 0 | EE | 1 | C03a | TY1 | SECE | HCU | EIT2.2 |  | C03a | EIT02.2 |
|  | 11 | **AG Lighting Cable** |  | 2026-04-24 | 2026-12-23 |  |  |  |  |  |  |  |  |  |  |  |  |  |  |  |  |  |  |  |  |
| 2.2-HCUEE01-1240 |  | Pull Cable | 60d | 2026-04-24 A | 2026-07-23 | 2.2-HCUEE01-1210 SS | 3% | 60d | 2026-07-15 | 2026-09-22 | 95d | 0d | LABOUR [5000 h]; Cable Pull; Construction Material [600] | UDF_G3 | 0 | EE | 1 | C03a | TY1 | SECE | HCU | EIT2.2 | PUL | C03a | EIT02.2 |
| 2.2-HCUEE01-1250 |  | Megger & Continuity test | 30d | 2026-07-24 | 2026-08-27 | 2.2-HCUEE01-1240 |  |  |  |  | 95d | 81d | LABOUR [500 h]; Cable Pull; Construction Material [300] | UDF_G3 | 0 | EE | 1 | C03a | TY1 | SECE | HCU | EIT2.2 |  | C03a | EIT02.2 |
| 2.2-HCUEE01-1260 |  | Complete QA/QC document | 20d | 2026-12-01 | 2026-12-23 | 2.2-HCUEE01-1250, 2.2-HCUEE01-1230 |  |  |  |  | 14d | 0d | LABOUR [1440.6 h]; Cable Pull; Construction Material [200] | UDF_G3 | 0 | EE | 1 | C03a | TY1 | SECE | HCU | EIT2.2 |  | C03a | EIT02.2 |
|  | 4 | **Electrical Cable Termination / Glanding** |  | 2026-04-24 | 2027-02-11 |  |  |  |  |  |  |  |  |  |  |  |  |  |  |  |  |  |  |  |  |
|  | 1 | **Termination MV Cable** |  | 2026-09-25 | 2026-11-16 |  |  |  |  |  |  |  |  |  |  |  |  |  |  |  |  |  |  |  |  |
| 2.2-HCUEE02-1150 |  | Cable Termination/Glanding | 30d | 2026-09-25 | 2026-10-29 | 2.2-HCUEE01-2590 |  |  |  |  | 37d | 0d | LABOUR [3000 h]; Construction Material [300] | UDF_G3 | 0 | EE | 1 | C03a | TY1 | Non | HCU | EIT2.2 |  | C03a | EIT02.2 |
| 2.2-HCUEE02-1160 |  | punch clear | 5d | 2026-10-30 | 2026-11-04 | 2.2-HCUEE02-1150 |  |  |  |  | 37d | 0d | LABOUR [500 h]; Construction Material [50] | UDF_G3 | 0 | EE | 1 | C03a | TY1 | Non | HCU | EIT2.2 |  | C03a | EIT02.2 |
| 2.2-HCUEE02-1170 |  | Complete QA/QC document | 10d | 2026-11-05 | 2026-11-16 | 2.2-HCUEE02-1160 |  |  |  |  | 37d | 0d | LABOUR [925.66 h]; Construction Material [100] | UDF_G3 | 0 | EE | 1 | C03a | TY1 | Non | HCU | EIT2.2 |  | C03a | EIT02.2 |
|  | 2 | **Termination LV Cable** |  | 2026-04-24 | 2026-10-15 |  |  |  |  |  |  |  |  |  |  |  |  |  |  |  |  |  |  |  |  |
| 2.2-HCUEE02-1180 |  | Cable Termination/Glanding | 30d | 2026-04-24 A | 2026-09-16 | 2.2-HCUEE01-1190 SS | 2% | 30d | 2026-10-22 | 2026-11-25 | 106d | 0d | LABOUR [3000 h]; Construction Material [300] | UDF_G3 | 0 | EE | 1 | C03a | TY1 | Non | HCU | EIT2.2 |  | C03a | EIT02.2 |
| 2.2-HCUEE02-1190 |  | punch clear | 10d | 2026-09-17 | 2026-09-28 | 2.2-HCUEE02-1180 |  |  |  |  | 106d | 0d | LABOUR [500 h]; Construction Material [100] | UDF_G3 | 0 | EE | 1 | C03a | TY1 | Non | HCU | EIT2.2 |  | C03a | EIT02.2 |
| 2.2-HCUEE02-1200 |  | Complete QA/QC document | 15d | 2026-09-29 | 2026-10-15 | 2.2-HCUEE02-1190 |  |  |  |  | 106d | 0d | LABOUR [925.66 h]; Construction Material [150] | UDF_G3 | 0 | EE | 1 | C03a | TY1 | Non | HCU | EIT2.2 |  | C03a | EIT02.2 |
|  | 3 | **Termination Control Cable** |  | 2026-05-14 | 2026-10-15 |  |  |  |  |  |  |  |  |  |  |  |  |  |  |  |  |  |  |  |  |
| 2.2-HCUEE02-1210 |  | Cable Termination/Glanding | 30d | 2026-05-14 A | 2026-09-16 | 2.2-HCUEE02-1180 SS | 22% | 30d | 2026-08-13 | 2026-09-16 | 106d | 0d | LABOUR [3000 h]; Construction Material [300] | UDF_G3 | 0 | EE | 1 | C03a | TY1 | Non | HCU | EIT2.2 |  | C03a | EIT02.2 |
| 2.2-HCUEE02-1220 |  | punch clear | 10d | 2026-09-17 | 2026-09-28 | 2.2-HCUEE02-1210 |  |  |  |  | 106d | 0d | LABOUR [500 h]; Construction Material [100] | UDF_G3 | 0 | EE | 1 | C03a | TY1 | Non | HCU | EIT2.2 |  | C03a | EIT02.2 |
| 2.2-HCUEE02-1230 |  | Complete QA/QC document | 15d | 2026-09-29 | 2026-10-15 | 2.2-HCUEE02-1220, 2.2-HCUEE02-1200 SS, 2.2-HCUEE02-1200 FF |  |  |  |  | 106d | 92d | LABOUR [925.66 h]; Construction Material [150] | UDF_G3 | 0 | EE | 1 | C03a | TY1 | Non | HCU | EIT2.2 |  | C03a | EIT02.2 |
|  | 4 | **Termination Lighting Cable** |  | 2026-05-07 | 2027-02-11 |  |  |  |  |  |  |  |  |  |  |  |  |  |  |  |  |  |  |  |  |
| 2.2-HCUEE02-1270 |  | Cable Termination/Glanding | 28d | 2026-05-07 A | 2027-01-25 | 2.2-HCUEE01-1260 | 1% | 28d | 2026-12-10 | 2027-01-11 | 14d | 0d | LABOUR [3000 h]; Construction Material [280] | UDF_G3 | 0 | EE | 1 | C03a | TY1 | Non | HCU | EIT2.2 |  | C03a | EIT02.2 |
| 2.2-HCUEE02-1280 |  | punch clear | 5d | 2027-01-26 | 2027-01-30 | 2.2-HCUEE02-1270 |  |  |  |  | 14d | 0d | LABOUR [500 h]; Construction Material [50] | UDF_G3 | 0 | EE | 1 | C03a | TY1 | Non | HCU | EIT2.2 |  | C03a | EIT02.2 |
| 2.2-HCUEE02-1290 |  | Complete QA/QC document | 10d | 2027-02-01 | 2027-02-11 | 2.2-HCUEE02-1280, 2.2-HCUEE02-1230 |  |  |  |  | 14d | 44.2d | LABOUR [925.66 h]; Construction Material [100] | UDF_G3 | 0 | EE | 1 | C03a | TY1 | Non | HCU | EIT2.2 |  | C03a | EIT02.2 |

| ID | WBS | Activity | Duration | Start | Finish | Predecessors | Complete | Remaining | Planned start | Planned finish | Total float | Free float | Constraint | Resources | On Schedule Indicator | %Completed | Disciplines | EIT2 Main Activity | Areas | Phases | Motor Loop | Cable Pull & Laying | EIT WBS | EIT PKG |
| --- | --- | --- | --- | --- | --- | --- | --- | --- | --- | --- | --- | --- | --- | --- | --- | --- | --- | --- | --- | --- | --- | --- | --- | --- |
|  | 7 | **Electrical Earthing / Lightning Installation** |  | 2026-04-01 | 2026-09-16 |  |  |  |  |  |  |  |  |  |  |  |  |  |  |  |  |  |  |  |
| 2.2-HCUEE05-1070 |  | Install Equipment Earthing / Inspection PIT / Install earthing pull and Connecttion | 120d | 2026-04-01 A | 2026-08-18 | 2.2-HCUEE03-1470 SS | 12% | 82d |  |  | 123d | 0d |  | LABOUR [18000 h]; Construction Material [1060] | UDF_G3 | 0 | EE | Non | HCU | EIT2.2 |  |  |  |  |
| 2.2-HCUEE05-1080 |  | Clear punch | 10d | 2026-04-01 A | 2026-08-29 | 2.2-HCUEE05-1070 | 12% | 10d | 2026-08-19 | 2026-08-29 | 123d | 0d |  | LABOUR [500 h]; Construction Material [100] | UDF_G3 | 0 | EE | Non | HCU | EIT2.2 |  |  |  |  |
| 2.2-HCUEE05-1090 |  | Complete QA/QC document | 15d | 2026-08-31 | 2026-09-16 | 2.2-HCUEE05-1080 |  |  |  |  | 123d | 0d |  | LABOUR [3138 h]; Construction Material [150] | UDF_G3 | 0 | EE | Non | HCU | EIT2.2 |  |  |  |  |
|  | 5 | **Lighting Fixture Installation** |  | 2026-04-24 | 2026-09-26 |  |  |  |  |  |  |  |  |  |  |  |  |  |  |  |  |  |  |  |
| 2.2-HCU EE05-1590 |  | Install support / bracket / Pole | 60d | 2026-04-24 A | 2026-07-23 | 2.2-HCUEE01-1240 SS | 5% | 60d | 2026-07-15 | 2026-09-22 | 170d | 0d |  | LABOUR [1000 h]; Construction Material [600] | UDF_G3 | 0 | EE | Non | HCU | EIT2.2 |  |  |  |  |
| 2.2-HCU EE05-1600 |  | lighting fixture | 60d | 2026-04-24 A | 2026-07-23 | 2.2-HCU EE05-1590 SS | 5% | 60d | 2026-07-15 | 2026-09-22 | 170d | 47d |  | LABOUR [2000 h]; Construction Material [600] | UDF_G3 | 0 | EE | Non | HCU | EIT2.2 |  |  |  |  |
| 2.2-HCU EE05-1610 |  | Clear punch | 5d | 2026-09-17 | 2026-09-22 | 2.2-HCU EE05-1600, 2.2-HCUEE05-1090 |  |  |  |  | 123d | 0d |  | LABOUR [200 h]; Construction Material [50] | UDF_G3 | 0 | EE | Non | HCU | EIT2.2 |  |  |  |  |
| 2.2-HCU EE05-1620 |  | Complete QA/QC document | 4d | 2026-09-23 | 2026-09-26 | 2.2-HCU EE05-1610 |  |  |  |  | 123d | 0d |  | LABOUR [442.08 h]; Construction Material [40] | UDF_G3 | 0 | EE | Non | HCU | EIT2.2 |  |  |  |  |
|  | 12 | **Small Power Equipment Installation** |  | 2026-04-24 | 2027-01-15 |  |  |  |  |  |  |  |  |  |  |  |  |  |  |  |  |  |  |  |
| 2.2-HCU EE05-1630 |  | Install support / bracket | 60d | 2026-04-24 A | 2026-07-23 | 2.2-HCU EE05-1590 SS | 5% | 60d | 2026-09-23 | 2026-12-01 | 179d | 0d |  | LABOUR [1000 h]; Construction Material [600] | UDF_G3 | 0 | EE | Non | HCU | EIT2.2 |  |  |  |  |
| 2.2-HCU EE05-1640 |  | Install Distribution panel, convenience outlet | 60d | 2026-04-24 A | 2026-07-23 | 2.2-HCU EE05-1630 SS | 5% | 60d | 2026-09-23 | 2026-12-01 | 179d | 56d |  | LABOUR [2000 h]; Construction Material [600] | UDF_G3 | 0 | EE | Non | HCU | EIT2.2 |  |  |  |  |
| 2.2-HCU EE05-1650 |  | Clear punch | 5d | 2026-09-28 | 2026-10-02 | 2.2-HCU EE05-1640, 2.2-HCU EE05-1620 |  |  |  |  | 123d | 86d |  | LABOUR [200 h]; Construction Material [50] | UDF_G3 | 0 | EE | Non | HCU | EIT2.2 |  |  |  |  |
| 2.2-HCU EE05-1660 |  | Complete QA/QC document | 4d | 2027-01-12 | 2027-01-15 | 2.2-HCU EE05-1650, 2.2-HCUEE-1110 |  |  |  |  | 37d | 67.2d |  | LABOUR [442.08 h]; Construction Material [40] | UDF_G3 | 0 | EE | Non | HCU | EIT2.2 |  |  |  |  |
|  | 2 | **Motor Solo Run** |  | 2026-11-17 | 2027-01-11 |  |  |  |  |  |  |  |  |  |  |  |  |  |  |  |  |  |  |  |
| 2.2-HCUEE-1090 |  | Motor solo run | 25d | 2026-11-17 | 2026-12-15 | 2.2-HCUEE02-1170 |  |  |  |  | 37d | 0d |  | LABOUR; Construction Material [250] | UDF_G3 | 0 | EE | Non | HCU | EIT2.2 | MO |  |  |  |
| 2.2-HCUEE-1100 |  | Clear punch | 10d | 2026-12-16 | 2026-12-26 | 2.2-HCUEE-1090 |  |  |  |  | 37d | 0d |  | LABOUR; Construction Material [100] | UDF_G3 | 0 | EE | Non | HCU | EIT2.2 | MO |  |  |  |
| 2.2-HCUEE-1110 |  | Complete QA/QC document | 13d | 2026-12-28 | 2027-01-11 | 2.2-HCUEE-1100 |  |  |  |  | 37d | 0d |  | LABOUR; Construction Material [130] | UDF_G3 | 0 | EE | Non | HCU | EIT2.2 | MO |  |  |  |
|  | 3 | **Instrument Works** |  | 2026-04-01 | 2027-02-08 |  |  |  |  |  |  |  |  |  |  |  |  |  |  |  |  |  |  |  |
|  | 10 | **Cable Laying concrete Trench** |  | 2026-05-15 | 2026-08-15 |  |  |  |  |  |  |  |  |  |  |  |  |  |  |  |  |  |  |  |
|  | 3 | **C03-JTR-070/064/069/068/054/055/102/057/071/108** |  | 2026-05-15 | 2026-08-15 |  |  |  |  |  |  |  |  |  |  |  |  |  |  |  |  |  |  |  |
| 2.2-HCUIN01-4000 |  | Cable Laying | 30d | 2026-05-15 | 2026-06-18 |  |  |  |  |  | -6d | 0d | start on or after 2026-04-01 | LABOUR [12000 h]; Cable Pull [71405 h]; Construction Material [300] | UDF_G3 | 0 | IN | PRICI | HCU | EIT2.2 |  | PUL | C03c | EIT02.2 |
| 2.2-HCUIN01-4010 |  | Megger & Continuity test | 5d | 2026-06-19 | 2026-06-24 | 2.2-HCUIN01-4000 |  |  |  |  | 17d | 0d |  | LABOUR [500 h]; Cable Pull; Construction Material [50] | UDF_G3 | 0 | IN | PRICI | HCU | EIT2.2 |  |  | C03c | EIT02.2 |
| 2.2-HCUIN01-4020 |  | punch Clear | 5d | 2026-06-25 | 2026-06-30 | 2.2-HCUIN01-4010 |  |  |  |  | 17d | 0d |  | LABOUR [300 h]; Cable Pull; Construction Material [50] | UDF_G3 | 0 | IN | PRICI | HCU | EIT2.2 |  |  | C03c | EIT02.2 |
| 2.2-HCUIN01-4030 |  | Sand Filling Compaction | 5d | 2026-07-01 | 2026-07-06 | 2.2-HCUIN01-4020 |  |  |  |  | 17d | 0d |  | LABOUR [500 h]; Cable Pull; Construction Material [50] | UDF_G3 | 0 | IN | PRICI | HCU | EIT2.2 |  |  |  |  |
| 2.2-HCUIN01-4040 |  | Complete QA/QC document | 5d | 2026-07-07 | 2026-07-11 | 2.2-HCUIN01-4030 |  |  |  |  | 17d | 0d |  | LABOUR [500 h]; Cable Pull; Construction Material [50] | UDF_G3 | 0 | IN | PRICI | HCU | EIT2.2 |  |  | C03c | EIT02.2 |
| 2.2-HCUIN01-4050 |  | Back Filling | 30d | 2026-07-13 | 2026-08-15 | 2.2-HCUIN01-4040 |  |  |  |  | 17d | 0d |  | LABOUR [3450.37 h]; Cable Pull; Construction Material [300] | UDF_G3 | 0 | IN | PRICI | HCU | EIT2.2 |  |  | C03c | EIT02.2 |

| ID | WBS | Activity | Duration | Start | Finish | Predecessors | Complete | Remaining | Planned start | Planned finish | Total float | Free float | Resources | On Schedule Indicator | %Completed | Disciplines | EIT2 Main Activity | Areas | Phases | Cable Pull & Laying | EIT WBS | EIT PKG | Main Activity | WBS | Types |
| --- | --- | --- | --- | --- | --- | --- | --- | --- | --- | --- | --- | --- | --- | --- | --- | --- | --- | --- | --- | --- | --- | --- | --- | --- | --- |
|  | 2 | **C03-JTR-056/109/053/050/003/081/083/001/062/061** |  | 2026-05-15 | 2026-08-15 |  |  |  |  |  |  |  |  |  |  |  |  |  |  |  |  |  |  |  |  |
| 2.2-HCUIN01-4060 |  | Cable Laying | 28d | 2026-05-15 | 2026-06-16 | 2.2-HCUIN01-4000 SS |  |  |  |  | -6d | 0d | LABOUR [12000 h]; Cable Pull [71404 h]; Construction Material [300] | UDF_G3 | 0 | IN | PRICI | HCU | EIT2.2 | PUL | C03c | EIT02.2 |  |  |  |
| 2.2-HCUIN01-4070 |  | Megger & Continuity test | 5d | 2026-06-17 | 2026-06-22 | 2.2-HCUIN01-4060 |  |  |  |  | 19d | 0d | LABOUR [500 h]; Cable Pull; Construction Material [50] | UDF_G3 | 0 | IN | PRICI | HCU | EIT2.2 |  | C03c | EIT02.2 |  |  |  |
| 2.2-HCUIN01-4080 |  | punch Clear | 5d | 2026-06-23 | 2026-06-27 | 2.2-HCUIN01-4070 |  |  |  |  | 19d | 0d | LABOUR [300 h]; Cable Pull; Construction Material [50] | UDF_G3 | 0 | IN | PRICI | HCU | EIT2.2 |  | C03c | EIT02.2 |  |  |  |
| 2.2-HCUIN01-4090 |  | Sand Filling Compaction | 5d | 2026-06-29 | 2026-07-03 | 2.2-HCUIN01-4080 |  |  |  |  | 19d | 0d | LABOUR [500 h]; Cable Pull; Construction Material [50] | UDF_G3 | 0 | IN | PRICI | HCU | EIT2.2 |  |  |  |  |  |  |
| 2.2-HCUIN01-4100 |  | Complete QA/QC document | 5d | 2026-07-04 | 2026-07-09 | 2.2-HCUIN01-4090 |  |  |  |  | 19d | 2d | LABOUR [500 h]; Cable Pull; Construction Material [50] | UDF_G3 | 0 | IN | PRICI | HCU | EIT2.2 |  | C03c | EIT02.2 |  |  |  |
| 2.2-HCUIN01-4110 |  | Back Filling | 30d | 2026-07-13 | 2026-08-15 | 2.2-HCUIN01-4100, 2.2-HCUIN01-4050 FF |  |  |  |  | 17d | 0d | LABOUR [3450.37 h]; Cable Pull; Construction Material [300] | UDF_G3 | 0 | IN | PRICI | HCU | EIT2.2 |  | C03c | EIT02.2 |  |  |  |
|  | 3 | **Instrument Cable Tray/Ladder Installation** |  | 2026-04-01 | 2026-06-09 |  |  |  |  |  |  |  |  |  |  |  |  |  |  |  |  |  |  |  |  |
| 2.2-HCUIN03-1050 |  | Install support / bracket | 60d | 2026-04-01 A | 2026-06-09 | 2.2-HCUIN01-4000 SS | 20% | 22d |  |  | 47d | 0d | LABOUR; Construction Material [600] | UDF_G3 | 0 | IN | Non | HCU | EIT2.2 |  |  |  |  |  |  |
| 2.2-HCUIN03-1060 |  | Install Ladder / Tray | 60d | 2026-04-01 A | 2026-06-09 | 2.2-HCUIN03-1050 SS, 2.2-HCUIN03-1050 FF | 20% | 22d |  |  | 47d | 0d | LABOUR [6000 h]; Construction Material [600] | UDF_G3 | 0 | IN | Non | HCU | EIT2.2 |  |  |  |  |  |  |
| 2.2-HCUIN03-1070 |  | Install Conduits | 60d | 2026-04-01 A | 2026-06-09 | 2.2-HCUIN03-1060 SS | 20% | 22d |  |  | 47d | 0d | LABOUR [2000 h]; Construction Material [600] | UDF_G3 | 0 | IN | Non | HCU | EIT2.2 |  |  |  |  |  |  |
| 2.2-HCUIN03-1080 |  | Clear punch | 10d | 2026-05-15 | 2026-05-26 | 2.2-HCUIN03-1070 SS, 2.2-HCUIN03-1060 SS |  |  |  |  | 47d | 0d | LABOUR [500 h]; Construction Material [100] | UDF_G3 | 0 | IN | Non | HCU | EIT2.2 |  |  |  |  |  |  |
| 2.2-HCUIN03-1090 |  | Complete QA/QC document | 15d | 2026-05-15 | 2026-06-01 | 2.2-HCUIN03-1080 SS |  |  |  |  | 47d | 0d | LABOUR [822.12 h]; Construction Material [150] | UDF_G3 | 0 | IN | Non | HCU | EIT2.2 |  |  |  |  |  |  |
|  | 8 | **AG Cable Pull Primary Cable** |  | 2026-04-24 | 2026-09-14 |  |  |  |  |  |  |  |  |  |  |  |  |  |  |  |  |  |  |  |  |
| 2.2-HCUIN01-1150 |  | Pull Cable | 50d | 2026-04-24 A | 2026-07-11 | 2.2-HCUIN03-1090 SS | 3% | 50d | 2026-07-09 | 2026-09-04 | 47d | 0d | LABOUR [15000 h]; Cable Pull; Construction Material [500] | UDF_G3 | 0 | EE | SECI | HCU | EIT2.2 | PUL | C03a | EIT02.2 | 1 | C03a | TY1 |
| 2.2-HCUIN01-1160 |  | Megger & Continuity test | 10d | 2026-08-17 | 2026-08-27 | 2.2-HCUIN01-1150, 2.2-HCUIN01-4110 |  |  |  |  | 17d | 0d | LABOUR [1000 h]; Cable Pull; Construction Material [100] | UDF_G3 | 0 | EE | SECI | HCU | EIT2.2 |  | C03a | EIT02.2 | 1 | C03a | TY1 |
| 2.2-HCUIN01-1170 |  | Complete QA/QC document | 15d | 2026-08-28 | 2026-09-14 | 2.2-HCUIN01-1160 |  |  |  |  | 17d | 0d | LABOUR [1250.37 h]; Cable Pull; Construction Material [150] | UDF_G3 | 0 | EE | SECI | HCU | EIT2.2 |  | C03a | EIT02.2 | 1 | C03a | TY1 |
|  | 9 | **AG Cable Pull Secondary Cable** |  | 2026-04-24 | 2026-08-10 |  |  |  |  |  |  |  |  |  |  |  |  |  |  |  |  |  |  |  |  |
| 2.2-HCUIN01-1210 |  | Pull Cable | 50d | 2026-04-24 A | 2026-07-11 | 2.2-HCUIN01-1150 SS |  | 50d | 2026-07-09 | 2026-09-04 | 47d | 0d | LABOUR [15000 h]; Cable Pull; Construction Material [500] | UDF_G3 | 0 | EE | SECI | HCU | EIT2.2 | PUL | C03a | EIT02.2 | 1 | C03a | TY1 |
| 2.2-HCUIN01-1220 |  | Megger & Continuity test | 10d | 2026-07-13 | 2026-07-23 | 2.2-HCUIN01-1210 |  |  |  |  | 47d | 0d | LABOUR [1000 h]; Cable Pull; Construction Material [100] | UDF_G3 | 0 | EE | SECI | HCU | EIT2.2 |  | C03a | EIT02.2 | 1 | C03a | TY1 |
| 2.2-HCUIN01-1230 |  | Complete QA/QC document | 15d | 2026-07-24 | 2026-08-10 | 2.2-HCUIN01-1220 |  |  |  |  | 47d | 0d | LABOUR [1250.37 h]; Cable Pull; Construction Material [150] | UDF_G3 | 0 | EE | SECI | HCU | EIT2.2 |  | C03a | EIT02.2 | 1 | C03a | TY1 |
|  | 2 | **Instrument Cable Termination / Glanding** |  | 2026-04-24 | 2026-11-11 |  |  |  |  |  |  |  |  |  |  |  |  |  |  |  |  |  |  |  |  |
|  | 1 | **UG Cable Termination Cable** |  | 2026-04-24 | 2026-07-11 |  |  |  |  |  |  |  |  |  |  |  |  |  |  |  |  |  |  |  |  |
| 2.2-HCUIN02-1960 |  | Cable Termination/Glanding | 25d | 2026-04-24 A | 2026-06-12 | 2.2-HCUIN01-4060 SS | 2% | 25d | 2026-06-10 | 2026-07-08 | 72d | 0d | LABOUR [5000 h]; Construction Material [250] | UDF_G3 | 0 | EE | Non | HCU | EIT2.2 |  | C03a | EIT02.2 | 1 | C03a | TY1 |
| 2.2-HCUIN02-1970 |  | punch clear | 10d | 2026-06-13 | 2026-06-24 | 2.2-HCUIN02-1960 |  |  |  |  | 72d | 0d | LABOUR [1000 h]; Construction Material [100] | UDF_G3 | 0 | EE | Non | HCU | EIT2.2 |  | C03a | EIT02.2 | 1 | C03a | TY1 |
| 2.2-HCUIN02-1980 |  | Complete QA/QC document | 15d | 2026-06-25 | 2026-07-11 | 2.2-HCUIN02-1970 |  |  |  |  | 72d | 55d | LABOUR [1234.7 h]; Construction Material [150] | UDF_G3 | 0 | EE | Non | HCU | EIT2.2 |  | C03a | EIT02.2 | 1 | C03a | TY1 |

| ID | WBS | Activity | Duration | Start | Finish | Predecessors | Complete | Remaining | Planned start | Planned finish | Total float | Free float | Resources | On Schedule Indicator | %Completed | Disciplines | Main Activity | WBS | Types | EIT2 Main Activity | Areas | Phases | EIT WBS | EIT PKG |
| --- | --- | --- | --- | --- | --- | --- | --- | --- | --- | --- | --- | --- | --- | --- | --- | --- | --- | --- | --- | --- | --- | --- | --- | --- |
|  | 8 | **Cable Termination Primary Cable** |  | 2026-09-15 | 2026-11-11 |  |  |  |  |  |  |  |  |  |  |  |  |  |  |  |  |  |  |  |
| 2.2-HCUIN02-1150 |  | Cable Termination/Glanding | 25d | 2026-09-15 | 2026-10-13 | 2.2-HCUIN01-1170, 2.2-HCUIN02-1980 |  |  |  |  | 17d | 0d | LABOUR [5000 h]; Construction Material [250] | UDF_G3 | 0 | EE | 1 | C03a | TY1 | Non | HCU | EIT2.2 | C03a | EIT02.2 |
| 2.2-HCUIN02-1160 |  | punch clear | 10d | 2026-10-14 | 2026-10-24 | 2.2-HCUIN02-1150 |  |  |  |  | 17d | 0d | LABOUR [1000 h]; Construction Material [100] | UDF_G3 | 0 | EE | 1 | C03a | TY1 | Non | HCU | EIT2.2 | C03a | EIT02.2 |
| 2.2-HCUIN02-1170 |  | Complete QA/QC document | 15d | 2026-10-26 | 2026-11-11 | 2.2-HCUIN02-1160 |  |  |  |  | 17d | 0d | LABOUR [1234.7 h]; Construction Material [150] | UDF_G3 | 0 | EE | 1 | C03a | TY1 | Non | HCU | EIT2.2 | C03a | EIT02.2 |
|  | 9 | **Cable Termination Secondary Cable** |  | 2026-08-11 | 2026-11-11 |  |  |  |  |  |  |  |  |  |  |  |  |  |  |  |  |  |  |  |
| 2.2-HCUIN02-1210 |  | Cable Termination/Glanding | 25d | 2026-08-11 | 2026-09-08 | 2.2-HCUIN01-1230 |  |  |  |  | 47d | 0d | LABOUR [5000 h]; Construction Material [250] | UDF_G3 | 0 | EE | 1 | C03a | TY1 | Non | HCU | EIT2.2 | C03a | EIT02.2 |
| 2.2-HCUIN02-1220 |  | punch clear | 10d | 2026-09-09 | 2026-09-19 | 2.2-HCUIN02-1210 |  |  |  |  | 47d | 30d | LABOUR [1000 h]; Construction Material [100] | UDF_G3 | 0 | EE | 1 | C03a | TY1 | Non | HCU | EIT2.2 | C03a | EIT02.2 |
| 2.2-HCUIN02-1230 |  | Complete QA/QC document | 15d | 2026-10-26 | 2026-11-11 | 2.2-HCUIN02-1220, 2.2-HCUIN02-1170 FF |  |  |  |  | 17d | 0d | LABOUR [1234.7 h]; Construction Material [150] | UDF_G3 | 0 | EE | 1 | C03a | TY1 | Non | HCU | EIT2.2 | C03a | EIT02.2 |
|  | 4 | **Instrument Calibration** |  | 2026-04-29 | 2026-06-09 |  |  |  |  |  |  |  |  |  |  |  |  |  |  |  |  |  |  |  |
| 2.2-HCUIN05-2050 |  | Calibration of Gauges | 30d | 2026-04-29 A | 2026-06-09 | 2.2-HCUIN01-4060 SS | 18% | 22d | 2026-05-06 | 2026-06-09 | 38d | 0d | LABOUR [4000 h]; Construction Material [300] | UDF_G3 | 0 | EE | 1 | C03a | TY1 | Non | HCU | EIT2.2 | C03c | EIT02.2 |
| 2.2-HCUIN05-2080 |  | Calibration of Transmitters/Switches | 30d | 2026-04-29 A | 2026-06-09 | 2.2-HCUIN05-2050 SS | 18% | 22d | 2026-05-06 | 2026-06-09 | 38d | 0d | LABOUR [8303.6 h]; Construction Material [300] | UDF_G3 | 0 | IN |  |  |  | Non | HCU | EIT2.2 |  |  |
|  | 1 | **Gauges** |  | 2026-05-01 | 2026-06-20 |  |  |  |  |  |  |  |  |  |  |  |  |  |  |  |  |  |  |  |
| 2.2-HCUIN04-1260 |  | D.P Pressure Gauge Installation | 10d | 2026-05-01 A | 2026-05-16 | 2.2-HCUIN05-2050 SS | 11% | 2d | 2026-05-01 | 2026-05-12 | 216d | 0d | LABOUR [1000 h]; Construction Material [100] | UDF_G3 | 0 | IN |  |  |  | Non | HCU | EIT2.2 |  |  |
| 2.2-HCUIN04-1270 |  | Pressure Gauge Installation | 10d | 2026-05-18 | 2026-05-28 | 2.2-HCUIN04-1260 |  |  |  |  | 216d | 0d | LABOUR [2000 h]; Construction Material [100] | UDF_G3 | 0 | EE | 1 | C03a | TY1 | Non | HCU | EIT2.2 | C03c | EIT02.2 |
| 2.2-HCUIN04-1280 |  | Level Gauge Installation | 10d | 2026-05-29 | 2026-06-09 | 2.2-HCUIN04-1270 |  |  |  |  | 216d | 0d | LABOUR [1000 h]; Construction Material [100] | UDF_G3 | 0 | EE | 1 | C03a | TY1 | Non | HCU | EIT2.2 | C03c | EIT02.2 |
| 2.2-HCUIN04-1290 |  | Clear punch | 5d | 2026-06-10 | 2026-06-15 | 2.2-HCUIN04-1280 |  |  |  |  | 216d | 0d | LABOUR [500 h]; Construction Material [50] | UDF_G3 | 0 | EE | 1 | C03a | TY1 | Non | HCU | EIT2.2 | C03c | EIT02.2 |
| 2.2-HCUIN04-1300 |  | Complete QA/QC document | 5d | 2026-06-16 | 2026-06-20 | 2.2-HCUIN04-1290 |  |  |  |  | 216d | 25d | LABOUR [1009.94 h]; Construction Material [50] | UDF_G3 | 0 | EE | 1 | C03a | TY1 | Non | HCU | EIT2.2 | C03c | EIT02.2 |
|  | 6 | **Transmitters/Switches** |  | 2026-05-15 | 2026-07-20 |  |  |  |  |  |  |  |  |  |  |  |  |  |  |  |  |  |  |  |
| 2.2-HCUIN04-1320 |  | Install support / bracket | 10d | 2026-05-15 | 2026-05-26 | 2.2-HCUIN05-2080 SS |  |  |  |  | 38d | 0d | LABOUR [500 h]; Construction Material [100] | UDF_G3 | 0 | EE | 1 | C03a | TY1 | Non | HCU | EIT2.2 | C03c | EIT02.2 |
| 2.2-HCUIN04-1330 |  | Pressure transmitters Installation | 10d | 2026-05-27 | 2026-06-06 | 2.2-HCUIN04-1320 |  |  |  |  | 38d | 0d | LABOUR [1000 h]; Construction Material [100] | UDF_G3 | 0 | EE | 1 | C03a | TY1 | Non | HCU | EIT2.2 | C03c | EIT02.2 |
| 2.2-HCUIN04-1340 |  | D.P. Transmitters - HART Installation | 10d | 2026-06-08 | 2026-06-18 | 2.2-HCUIN04-1330 |  |  |  |  | 38d | 0d | LABOUR [1000 h]; Construction Material [100] | UDF_G3 | 0 | EE | 1 | C03a | TY1 | Non | HCU | EIT2.2 | C03c | EIT02.2 |
| 2.2-HCUIN04-1350 |  | Temperature Transmitters Installation | 10d | 2026-06-19 | 2026-06-30 | 2.2-HCUIN04-1340 |  |  |  |  | 191d | 0d | LABOUR [1000 h]; Construction Material [100] | UDF_G3 | 0 | EE | 1 | C03a | TY1 | Non | HCU | EIT2.2 | C03c | EIT02.2 |
| 2.2-HCUIN04-1360 |  | Level Switch Installation | 10d | 2026-07-01 | 2026-07-11 | 2.2-HCUIN04-1350 |  |  |  |  | 191d | 0d | LABOUR [1000 h]; Construction Material [100] | UDF_G3 | 0 | IN |  |  |  | Non | HCU | EIT2.2 |  |  |
| 2.2-HCUIN04-1370 |  | Clear punch | 2d | 2026-07-13 | 2026-07-14 | 2.2-HCUIN04-1360 |  |  |  |  | 191d | 0d | LABOUR [500 h]; Construction Material [20] | UDF_G3 | 0 | IN |  |  |  | Non | HCU | EIT2.2 |  |  |
| 2.2-HCUIN04-1380 |  | Complete QA/QC document | 5d | 2026-07-15 | 2026-07-20 | 2.2-HCUIN04-1370, 2.2-HCUIN04-1300 FF |  |  |  |  | 191d | 221.2d | LABOUR [509.94 h]; Construction Material [50] | UDF_G3 | 0 | IN |  |  |  | Non | HCU | EIT2.2 |  |  |

| ID | WBS | Activity | Duration | Start | Finish | Predecessors | Complete | Remaining | Planned start | Planned finish | Total float | Free float | Calendar | Resources | On Schedule Indicator | %Completed | Disciplines | Main Activity | WBS | Types | EIT2 Main Activity | Areas | Phases | EIT WBS | EIT PKG | Motor Loop |
| --- | --- | --- | --- | --- | --- | --- | --- | --- | --- | --- | --- | --- | --- | --- | --- | --- | --- | --- | --- | --- | --- | --- | --- | --- | --- | --- |
|  | 11 | **Instrument Junction Box Installation** |  | 2026-04-29 | 2026-05-25 |  |  |  |  |  |  |  |  |  |  |  |  |  |  |  |  |  |  |  |  |  |
| 2.2-HCUIN-1390 |  | Install support / bracket | 5d | 2026-04-29 A | 2026-05-20 | 2.2-HCUIN04-1320 SS | 11% | 5d | 2026-06-04 | 2026-06-09 | 59d | 0d |  | LABOUR [2000 h]; Construction Material [50] | UDF_G3 | 0 | EE | 1 | C03a | TY1 | Non | HCU | EIT2.2 | C03c | EIT02.2 |  |
| 2.2-HCUIN-1400 |  | Instrument Junction Box Installation | 5d | 2026-04-29 A | 2026-05-20 | 2.2-HCUIN-1390 SS | 11% | 5d | 2026-06-10 | 2026-06-15 | 59d | 0d |  | LABOUR [2500 h]; Construction Material [50] | UDF_G3 | 0 | EE | 1 | C03a | TY1 | Non | HCU | EIT2.2 | C03c | EIT02.2 |  |
| 2.2-HCUIN-1410 |  | Clear punch | 2d | 2026-05-21 | 2026-05-22 | 2.2-HCUIN-1400 |  |  |  |  | 59d | 0d |  | LABOUR [500 h]; Construction Material [20] | UDF_G3 | 0 | EE | 1 | C03a | TY1 | Non | HCU | EIT2.2 | C03c | EIT02.2 |  |
| 2.2-HCUIN-1420 |  | Complete QA/QC document | 2d | 2026-05-23 | 2026-05-25 | 2.2-HCUIN-1410 |  |  |  |  | 59d | 21d |  | LABOUR [509.94 h]; Construction Material [20] | UDF_G3 | 0 | EE | 1 | C03a | TY1 | Non | HCU | EIT2.2 | C03c | EIT02.2 |  |
|  | 5 | **Tubing** |  | 2026-06-19 | 2026-08-29 |  |  |  |  |  |  |  |  |  |  |  |  |  |  |  |  |  |  |  |  |  |
| 2.2-HCUIN07-1430 |  | Instrument Hook up Tubing Installation | 20d | 2026-06-19 | 2026-07-11 | 2.2-HCUIN04-1330, 2.2-HCUIN04-1340, 2.2-HCUIN-1420 |  |  |  |  | 38d | 0d |  | LABOUR [1000 h]; Construction Material [200] | UDF_G3 | 0 | IN |  |  |  | Non | HCU | EIT2.2 | C03c | EIT02.2 |  |
| 2.2-HCUIN07-1440 |  | Leak Test | 20d | 2026-07-13 | 2026-08-04 | 2.2-HCUIN07-1430 |  |  |  |  | 80.3d | 0d |  | LABOUR [500 h]; Construction Material [200] | UDF_G3 | 0 | IN |  |  |  | Non | HCU | EIT2.2 | C03c | EIT02.2 |  |
| 2.2-HCUIN07-1450 |  | Clear Punch | 10d | 2026-08-05 | 2026-08-15 | 2.2-HCUIN07-1440 |  |  |  |  | 80.3d | 0d |  | LABOUR [100 h]; Construction Material [100] | UDF_G3 | 0 | IN |  |  |  | Non | HCU | EIT2.2 | C03c | EIT02.2 |  |
| 2.2-HCUIN07-1460 |  | Complete QA/QC document | 15d | 2026-08-16 | 2026-08-29 | 2.2-HCUIN07-1450 |  |  |  |  | 102.62d | 80.88d | 7 - Day Workweek (No Holidays) | LABOUR [114.53 h]; Construction Material [120] | UDF_G3 | 0 | IN |  |  |  | Non | HCU | EIT2.2 | C03c | EIT02.2 |  |
|  | 7 | **Instrument Loop Check** |  | 2026-11-12 | 2027-02-08 |  |  |  |  |  |  |  |  |  |  |  |  |  |  |  |  |  |  |  |  |  |
| 2.2-HCUIN09-1470 |  | Instrument Loop check | 42d | 2026-11-12 | 2026-12-30 | 2.2-HCUIN02-1230, 2.2-HCUIN07-1460 |  |  |  |  | 17d | 0d |  | LABOUR [6000 h]; Construction Material [420] | UDF_G3 | 0 | IN |  |  |  | Non | HCU | EIT2.2 | C03c | EIT02.2 | LO |
| 2.2-HCUIN09-1480 |  | Clear Punch | 15d | 2026-12-31 | 2027-01-16 | 2.2-HCUIN09-1470 |  |  |  |  | 17d | 0d |  | LABOUR [1000 h]; Construction Material [150] | UDF_G3 | 0 | IN |  |  |  | Non | HCU | EIT2.2 | C03c | EIT02.2 | LO |
| 2.2-HCUIN09-1490 |  | Complete QA/QC document | 19d | 2027-01-18 | 2027-02-08 | 2.2-HCUIN09-1480 |  |  |  |  | 17d | 47.2d |  | LABOUR [2425.48 h]; Construction Material [190] | UDF_G3 | 0 | IN |  |  |  | Non | HCU | EIT2.2 | C03c | EIT02.2 | LO |
|  | 5 | **Telecommunication** |  | 2026-05-01 | 2027-01-14 |  |  |  |  |  |  |  |  |  |  |  |  |  |  |  |  |  |  |  |  |  |
|  | 3 | **Telecom** |  | 2026-05-01 | 2027-01-14 |  |  |  |  |  |  |  |  |  |  |  |  |  |  |  |  |  |  |  |  |  |
|  | 3 | **Telecom Cable Tray/Ladder Installation** |  | 2026-06-19 | 2026-09-08 |  |  |  |  |  |  |  |  |  |  |  |  |  |  |  |  |  |  |  |  |  |
| 2.2-HCUTE03-1100 |  | Install support / bracket | 50d | 2026-06-19 | 2026-08-15 | 2.2-HCUIN07-1430 SS |  |  |  |  | 38d | 0d |  | LABOUR [3 h]; Construction Material [500] | UDF_G3 | 0 | EE | 1 | C03a | TY1 | Non | HCU | EIT2.2 | C03a | EIT02.2 |  |
| 2.2-HCUTE03-1110 |  | Install Ladder / Tray | 50d | 2026-06-19 | 2026-08-15 | 2.2-HCUTE03-1100 SS, 2.2-HCUTE03-1100 FF |  |  |  |  | 38d | 0d |  | LABOUR [77 h]; Construction Material [500] | UDF_G3 | 0 | EE | 1 | C03a | TY1 | Non | HCU | EIT2.2 | C03a | EIT02.2 |  |
| 2.2-HCUTE03-1120 |  | Conduit Install | 50d | 2026-06-19 | 2026-08-15 | 2.2-HCUTE03-1100 SS, 2.2-HCUTE03-1110 FF |  |  |  |  | 38d | 0d |  | LABOUR [500 h]; Construction Material [500] | UDF_G3 | 0 | TE |  |  |  | Non | HCU | EIT2.2 | C03a | EIT02.2 |  |
| 2.2-HCUTE03-1130 |  | Clear punch | 5d | 2026-08-17 | 2026-08-21 | 2.2-HCUTE03-1110, 2.2-HCUTE03-1120 |  |  |  |  | 38d | 0d |  | LABOUR [75 h]; Construction Material [50] | UDF_G3 | 0 | EE | 1 | C03a | TY1 | Non | HCU | EIT2.2 | C03a | EIT02.2 |  |
| 2.2-HCUTE03-1140 |  | Complete QA/QC document | 15d | 2026-08-22 | 2026-09-08 | 2.2-HCUTE03-1130 |  |  |  |  | 38d | 0d |  | LABOUR [75 h]; Construction Material [150] | UDF_G3 | 0 | EE | 1 | C03a | TY1 | Non | HCU | EIT2.2 | C03a | EIT02.2 |  |
|  | 1 | **AG Telecommunication Cable Installation** |  | 2026-05-01 | 2026-11-11 |  |  |  |  |  |  |  |  |  |  |  |  |  |  |  |  |  |  |  |  |  |
| 2.2-HCUTE01-1030 |  | Ground Pull Cable | 30d | 2026-05-01 A | 2026-10-13 | 2.2-HCUTE03-1140 | 27% | 30d | 2026-09-02 | 2026-10-06 | 38d | 0d |  | LABOUR [1500 h]; Construction Material [300] | UDF_G3 | 0 | EE | 1 | C03a | TY1 | Non | HCU | EIT2.2 | C03c | EIT02.2 |  |
| 2.2-HCUTE01-1040 |  | Megger & Continuity test | 10d | 2026-10-14 | 2026-10-24 | 2.2-HCUTE01-1030 |  |  |  |  | 38d | 0d |  | LABOUR [200 h]; Construction Material [100] | UDF_G3 | 0 | EE | 1 | C03a | TY1 | Non | HCU | EIT2.2 | C03c | EIT02.2 |  |
| 2.2-HCUTE01-1050 |  | Complete QA/QC document | 15d | 2026-10-26 | 2026-11-11 | 2.2-HCUTE01-1040 |  |  |  |  | 38d | 0d |  | LABOUR [300 h]; Construction Material [150] | UDF_G3 | 0 | EE | 1 | C03a | TY1 | Non | HCU | EIT2.2 | C03c | EIT02.2 |  |

| ID | WBS | Activity | Duration | Start | Finish | Predecessors | Total float | Free float | Resources | On Schedule Indicator | %Completed | Disciplines | Main Activity | WBS | Types | EIT2 Main Activity | Areas | Phases | EIT WBS | EIT PKG | Cable Pull & Laying |
| --- | --- | --- | --- | --- | --- | --- | --- | --- | --- | --- | --- | --- | --- | --- | --- | --- | --- | --- | --- | --- | --- |
|  | 4 | **Telecommunication Termination / Glanding** |  | 2026-11-12 | 2027-01-14 |  |  |  |  |  |  |  |  |  |  |  |  |  |  |  |  |
| 2.2-HCUTE02-1030 |  | Cable Termination/Glanding | 30d | 2026-11-12 | 2026-12-16 | 2.2-HCUTE01-1050 | 38d | 0d | LABOUR [500 h]; Construction Material [300] | UDF_G3 | 0 | EE | 1 | C03a | TY1 | Non | HCU | EIT2.2 | C03a | EIT02.2 |  |
| 2.2-HCUTE02-1040 |  | punch clear | 10d | 2026-12-17 | 2026-12-28 | 2.2-HCUTE02-1030 | 38d | 0d | LABOUR [200 h]; Construction Material [100] | UDF_G3 | 0 | EE | 1 | C03a | TY1 | Non | HCU | EIT2.2 | C03a | EIT02.2 |  |
| 2.2-HCUTE02-1050 |  | Complete QA/QC document | 15d | 2026-12-29 | 2027-01-14 | 2.2-HCUTE02-1040, 2.2-HCUTE03-1080 | 38d | 68.2d | LABOUR [253.1 h]; Construction Material [150] | UDF_G3 | 0 | EE | 1 | C03a | TY1 | Non | HCU | EIT2.2 | C03a | EIT02.2 |  |
|  | 2 | **Telecommunication Equipment Installation** |  | 2026-09-09 | 2026-10-30 |  |  |  |  |  |  |  |  |  |  |  |  |  |  |  |  |
| 2.2-HCUTE03-1060 |  | Telecom Equpiment Installation | 30d | 2026-09-09 | 2026-10-13 | 2.2-HCUTE03-1140 | 88d | 0d | LABOUR [500 h]; Construction Material [300] | UDF_G3 | 0 | EE | 1 | C03a | TY1 | Non | HCU | EIT2.2 | C03c | EIT02.2 |  |
| 2.2-HCUTE03-1070 |  | Clear Punch | 10d | 2026-10-14 | 2026-10-24 | 2.2-HCUTE03-1060 | 88d | 0d | LABOUR [100 h]; Construction Material [100] | UDF_G3 | 0 | EE | 1 | C03a | TY1 | Non | HCU | EIT2.2 | C03c | EIT02.2 |  |
| 2.2-HCUTE03-1080 |  | Complete QA/QC document | 5d | 2026-10-26 | 2026-10-30 | 2.2-HCUTE03-1070 | 88d | 50d | LABOUR [187.26 h]; Construction Material [50] | UDF_G3 | 0 | EE | 1 | C03a | TY1 | Non | HCU | EIT2.2 | C03c | EIT02.2 |  |
|  | 4 | **HCU ZONE-B** |  | 2026-06-17 | 2027-04-05 |  |  |  |  |  |  |  |  |  |  |  |  |  |  |  |  |
|  | 1 | **Electrical Works** |  | 2026-06-19 | 2027-03-16 |  |  |  |  |  |  |  |  |  |  |  |  |  |  |  |  |
|  | 6 | **Cable trench Excavation buried** |  | 2026-06-19 | 2026-08-31 |  |  |  |  |  |  |  |  |  |  |  |  |  |  |  |  |
|  | 8 | **C03-ETD-142/854/504/852/508/824/216/515/666/207/478/206/513/512/522** |  | 2026-06-19 | 2026-07-27 |  |  |  |  |  |  |  |  |  |  |  |  |  |  |  |  |
| 2.2-HCUEE09-1060 |  | Cable trench Excavation | 30d | 2026-06-19 | 2026-07-23 | 2.2-HCUEE09-1000 | -30.1d | 0d | Construction Material [300] | UDF_G3 | 0 | EE |  |  |  | Non | HCU | EIT2.2 | C03c | EIT02.2 |  |
| 2.2-HCUEE09-1070 |  | Sand Filling Compaction | 3d | 2026-07-24 | 2026-07-27 | 2.2-HCUEE09-1060 | 23d | 27d | Construction Material [30] | UDF_G3 | 0 | EE |  |  |  | Non | HCU | EIT2.2 | C03c | EIT02.2 |  |
|  | 36 | **C03-ETD-511/480/250/141/506/699/628/487/502/145/501/190/143/624/813/814** |  | 2026-07-24 | 2026-08-31 |  |  |  |  |  |  |  |  |  |  |  |  |  |  |  |  |
| 2.2-HCUEE09-1080 |  | Cable trench Excavation | 30d | 2026-07-24 | 2026-08-27 | 2.2-HCUEE09-1060 | -14d | 0d | Construction Material [300] | UDF_G3 | 0 | EE |  |  |  | Non | HCU | EIT2.2 | C03c | EIT02.2 |  |
| 2.2-HCUEE09-1090 |  | Sand Filling Compaction | 3d | 2026-08-28 | 2026-08-31 | 2.2-HCUEE09-1080, 2.2-HCUEE09-1070 | -4d | 6d | Construction Material [30] | UDF_G3 | 0 | EE |  |  |  | Non | HCU | EIT2.2 | C03c | EIT02.2 |  |
|  | 8 | **Cable Laying Direct buried** |  | 2026-07-24 | 2026-11-13 |  |  |  |  |  |  |  |  |  |  |  |  |  |  |  |  |
|  | 8 | **C03-ETD-142/854/504/852/508/824/216/515/666/207/478/206/513/512/522** |  | 2026-07-24 | 2026-10-16 |  |  |  |  |  |  |  |  |  |  |  |  |  |  |  |  |
| 2.2-HCUEE01-3095 |  | Sand Filling First Layer | 4d | 2026-07-24 | 2026-07-28 | 2.2-HCUEE09-1060 | -30.1d | 0d | Cable Pull; Construction Material [40] | UDF_G3 | 0 | EE |  |  |  | PRIC | HCU | EIT2.2 |  |  |  |
| 2.2-HCUEE01-3100 |  | Cable Laying | 30d | 2026-07-29 | 2026-09-01 | 2.2-HCUEE01-3095 | -30.1d | 0d | Cable Pull [22250 h]; Construction Material [300] | UDF_G3 | 0 | EE |  |  |  | PRIC | HCU | EIT2.2 | C03c | EIT02.2 | PUL |
| 2.2-HCUEE01-3110 |  | Megger & Continuity test | 5d | 2026-09-02 | 2026-09-07 | 2.2-HCUEE01-3100 | -10d | 0d | Cable Pull; Construction Material [50] | UDF_G3 | 0 | EE |  |  |  | PRIC | HCU | EIT2.2 | C03c | EIT02.2 |  |
| 2.2-HCUEE01-3120 |  | punch Clear | 5d | 2026-09-08 | 2026-09-12 | 2.2-HCUEE01-3110, 2.2-HCUEE09-1090 | -10d | 0d | Cable Pull; Construction Material [50] | UDF_G3 | 0 | EE |  |  |  | PRIC | HCU | EIT2.2 | C03c | EIT02.2 |  |
| 2.2-HCUEE01-3130 |  | Sand Filling Compaction | 4d | 2026-09-14 | 2026-09-17 | 2.2-HCUEE01-3120 | -10d | 0d | Cable Pull; Construction Material [40] | UDF_G3 | 0 | EE |  |  |  | PRIC | HCU | EIT2.2 |  |  |  |
| 2.2-HCUEE01-3140 |  | Complete QA/QC document | 5d | 2026-09-18 | 2026-09-23 | 2.2-HCUEE01-3130 | -10d | 0d | Cable Pull; Construction Material [50] | UDF_G3 | 0 | EE |  |  |  | PRIC | HCU | EIT2.2 | C03c | EIT02.2 |  |
| 2.2-HCUEE01-3150 |  | Back Filling | 20d | 2026-09-24 | 2026-10-16 | 2.2-HCUEE01-3140 | -10d | 4d | Cable Pull; Construction Material [200] | UDF_G3 | 0 | EE |  |  |  | PRIC | HCU | EIT2.2 | C03c | EIT02.2 |  |

| ID | WBS | Activity | Duration | Start | Finish | Predecessors | Total float | Free float | Resources | On Schedule Indicator | %Completed | Disciplines | EIT2 Main Activity | Areas | Phases | Cable Pull & Laying | EIT WBS | EIT PKG |
| --- | --- | --- | --- | --- | --- | --- | --- | --- | --- | --- | --- | --- | --- | --- | --- | --- | --- | --- |
|  | 36 | **C03-ETD-511/480/250/141/506/699/628/487/502/145/501/190/143/624/813/814** |  | 2026-08-28 | 2026-11-13 |  |  |  |  |  |  |  |  |  |  |  |  |  |
| 2.2-HCUEE01-3155 |  | Sand Filling First layer | 4d | 2026-08-28 | 2026-09-01 | 2.2-HCUEE09-1080 | -14d | 0d | Cable Pull; Construction Material [40] | UDF_G3 | 0 | EE | PRIC | HCU | EIT2.2 |  |  |  |
| 2.2-HCUEE01-3160 |  | Cable Laying | 25d | 2026-09-02 | 2026-09-30 | 2.2-HCUEE01-3155 | -14d | 0d | Cable Pull [22250 h]; Construction Material [250] | UDF_G3 | 0 | EE | PRIC | HCU | EIT2.2 | PUL | C03c | EIT02.2 |
| 2.2-HCUEE01-3170 |  | Megger & Continuity test | 5d | 2026-10-01 | 2026-10-06 | 2.2-HCUEE01-3160 | -14d | 0d | Cable Pull; Construction Material [50] | UDF_G3 | 0 | EE | PRIC | HCU | EIT2.2 |  | C03c | EIT02.2 |
| 2.2-HCUEE01-3180 |  | punch Clear | 5d | 2026-10-07 | 2026-10-12 | 2.2-HCUEE01-3170 | -14d | 0d | Cable Pull; Construction Material [50] | UDF_G3 | 0 | EE | PRIC | HCU | EIT2.2 |  | C03c | EIT02.2 |
| 2.2-HCUEE01-3190 |  | Sand Filling Compaction | 4d | 2026-10-13 | 2026-10-16 | 2.2-HCUEE01-3180 | -14d | 0d | Cable Pull; Construction Material [40] | UDF_G3 | 0 | EE | PRIC | HCU | EIT2.2 |  |  |  |
| 2.2-HCUEE01-3200 |  | Complete QA/QC document | 4d | 2026-10-17 | 2026-10-21 | 2.2-HCUEE01-3190 | -14d | 0d | Cable Pull; Construction Material [40] | UDF_G3 | 0 | EE | PRIC | HCU | EIT2.2 |  | C03c | EIT02.2 |
| 2.2-HCUEE01-3210 |  | Back Filling | 20d | 2026-10-22 | 2026-11-13 | 2.2-HCUEE01-3200, 2.2-HCUEE01-3150 | -14d | 0d | Cable Pull; Construction Material [200] | UDF_G3 | 0 | EE | PRIC | HCU | EIT2.2 |  | C03c | EIT02.2 |
|  | 13 | **Cable Laying Concrete Trench** |  | 2026-07-29 | 2026-11-13 |  |  |  |  |  |  |  |  |  |  |  |  |  |
|  | 1 | **C03-ETC-111/1233/158/426/430/425/174/145** |  | 2026-07-29 | 2026-10-22 |  |  |  |  |  |  |  |  |  |  |  |  |  |
| 2.2-HCUEE01-1000 |  | Cable Laying | 30d | 2026-07-29 | 2026-09-01 | 2.2-HCUEE01-3100 SS | -30.1d | 0d | Cable Pull [22250 h]; Construction Material [300] | UDF_G3 | 0 | EE | PRIC | HCU | EIT2.2 | PUL | C03c | EIT02.2 |
| 2.2-HCUEE01-1010 |  | Megger & Continuity test | 5d | 2026-09-02 | 2026-09-07 | 2.2-HCUEE01-1000 | 5d | 0d | Cable Pull; Construction Material [50] | UDF_G3 | 0 | EE | PRIC | HCU | EIT2.2 |  | C03c | EIT02.2 |
| 2.2-HCUEE01-1020 |  | punch Clear | 5d | 2026-09-08 | 2026-09-12 | 2.2-HCUEE01-1010 | 5d | 0d | Cable Pull; Construction Material [50] | UDF_G3 | 0 | EE | PRIC | HCU | EIT2.2 |  | C03c | EIT02.2 |
| 2.2-HCUEE01-1030 |  | Sand Filling Compaction | 4d | 2026-09-14 | 2026-09-17 | 2.2-HCUEE01-1020 | 5d | 0d | Cable Pull; Construction Material [40] | UDF_G3 | 0 | EE | PRIC | HCU | EIT2.2 |  |  |  |
| 2.2-HCUEE01-1040 |  | Complete QA/QC document | 10d | 2026-09-18 | 2026-09-29 | 2.2-HCUEE01-1030 | 5d | 0d | Cable Pull; Construction Material [100] | UDF_G3 | 0 | EE | PRIC | HCU | EIT2.2 |  | C03c | EIT02.2 |
| 2.2-HCUEE01-1050 |  | Back Filling | 20d | 2026-09-30 | 2026-10-22 | 2.2-HCUEE01-1040 | 5d | 19d | Cable Pull; Construction Material [200] | UDF_G3 | 0 | EE | PRIC | HCU | EIT2.2 |  | C03c | EIT02.2 |
|  | 2 | **C03-ETC-195/193/124/577/434/192/107/138/159** |  | 2026-09-02 | 2026-11-13 |  |  |  |  |  |  |  |  |  |  |  |  |  |
| 2.2-HCUEE01-1500 |  | Cable Laying | 25d | 2026-09-02 | 2026-09-30 | 2.2-HCUEE01-1000 | -30.1d | 0d | Cable Pull [22250 h]; Construction Material [250] | UDF_G3 | 0 | EE | PRIC | HCU | EIT2.2 | PUL | C03c | EIT02.2 |
| 2.2-HCUEE01-1510 |  | Megger & Continuity test | 5d | 2026-10-01 | 2026-10-06 | 2.2-HCUEE01-1500 | -14d | 0d | Cable Pull; Construction Material [50] | UDF_G3 | 0 | EE | PRIC | HCU | EIT2.2 |  | C03c | EIT02.2 |
| 2.2-HCUEE01-1520 |  | punch Clear | 5d | 2026-10-07 | 2026-10-12 | 2.2-HCUEE01-1510 | -14d | 0d | Cable Pull; Construction Material [50] | UDF_G3 | 0 | EE | PRIC | HCU | EIT2.2 |  | C03c | EIT02.2 |
| 2.2-HCUEE01-1530 |  | Sand Filling Compaction | 4d | 2026-10-13 | 2026-10-16 | 2.2-HCUEE01-1520 | -14d | 0d | Cable Pull; Construction Material [40] | UDF_G3 | 0 | EE | PRIC | HCU | EIT2.2 |  |  |  |
| 2.2-HCUEE01-1540 |  | Complete QA/QC document | 4d | 2026-10-17 | 2026-10-21 | 2.2-HCUEE01-1530 | -14d | 0d | Cable Pull; Construction Material [40] | UDF_G3 | 0 | EE | PRIC | HCU | EIT2.2 |  | C03c | EIT02.2 |
| 2.2-HCUEE01-1550 |  | Back Filling | 20d | 2026-10-22 | 2026-11-13 | 2.2-HCUEE01-1540, 2.2-HCUEE01-1050 FF, 2.2-HCUEE01-3210 FF | -14d | 0d | Cable Pull; Construction Material [200] | UDF_G3 | 0 | EE | PRIC | HCU | EIT2.2 |  | C03c | EIT02.2 |
|  | 1 | **Electrical Cable Tray/Ladder Installation** |  | 2026-06-19 | 2026-09-23 |  |  |  |  |  |  |  |  |  |  |  |  |  |
| 2.2-HCUEE01-1560 |  | Install support / bracket | 58d | 2026-06-19 | 2026-08-25 | 2.2-HCUEE09-1060 SS | -6d | 0d | Construction Material [900] | UDF_G3 | 0 | EE | Non | HCU | EIT2.2 |  |  |  |
| 2.2-HCUEE01-1570 |  | Install Ladder / Tray | 58d | 2026-06-19 | 2026-08-25 | 2.2-HCUEE01-1560 SS | 7d | 0d | Construction Material [900] | UDF_G3 | 0 | EE | Non | HCU | EIT2.2 |  |  |  |
| 2.2-HCUEE01-1580 |  | Install Conduits | 58d | 2026-06-19 | 2026-08-25 | 2.2-HCUEE01-1570 SS | 20d | 0d | Construction Material [900] | UDF_G3 | 0 | EE | Non | HCU | EIT2.2 |  |  |  |
| 2.2-HCUEE01-1590 |  | Clear punch | 10d | 2026-08-26 | 2026-09-05 | 2.2-HCUEE01-1580, 2.2-HCUEE01-1570 | 20d | 0d | Construction Material [100] | UDF_G3 | 0 | EE | Non | HCU | EIT2.2 |  |  |  |
| 2.2-HCUEE01-1600 |  | Complete QA/QC document | 15d | 2026-09-07 | 2026-09-23 | 2.2-HCUEE01-1590 | 20d | 34d | Construction Material [150] | UDF_G3 | 0 | EE | Non | HCU | EIT2.2 |  |  |  |

| ID | WBS | Activity | Duration | Start | Finish | Predecessors | Total float | Free float | Resources | On Schedule Indicator | %Completed | Disciplines | Main Activity | WBS | Types | EIT2 Main Activity | Areas | Phases | Cable Pull & Laying | EIT WBS | EIT PKG |
| --- | --- | --- | --- | --- | --- | --- | --- | --- | --- | --- | --- | --- | --- | --- | --- | --- | --- | --- | --- | --- | --- |
|  | 9 | **AG Cable Pull LV Cable** |  | 2026-08-26 | 2026-12-01 |  |  |  |  |  |  |  |  |  |  |  |  |  |  |  |  |
| 2.2-HCUEE01-1610 |  | Pull Cable | 30d | 2026-08-26 | 2026-09-29 | 2.2-HCUEE01-1570 | 7d | 0d | Cable Pull; Construction Material [300] | UDF_G3 | 0 | EE | 1 | C03a | TY1 | SECE | HCU | EIT2.2 | PUL | C03c | EIT02.2 |
| 2.2-HCUEE01-1620 |  | Megger & Continuity test | 10d | 2026-11-03 | 2026-11-13 | 2.2-HCUEE01-1610, 2.2-HCUEE01-1550 FF, 2.2-HCUEE01-1600 | -14d | 0d | Cable Pull; Construction Material [100] | UDF_G3 | 0 | EE | 1 | C03a | TY1 | SECE | HCU | EIT2.2 |  | C03c | EIT02.2 |
| 2.2-HCUEE01-1630 |  | Complete QA/QC document | 15d | 2026-11-14 | 2026-12-01 | 2.2-HCUEE01-1620 | -14d | 0d | Cable Pull; Construction Material [150] | UDF_G3 | 0 | EE | 1 | C03a | TY1 | SECE | HCU | EIT2.2 |  | C03c | EIT02.2 |
|  | 10 | **AG Cable Pull Control Cable** |  | 2026-08-26 | 2026-12-30 |  |  |  |  |  |  |  |  |  |  |  |  |  |  |  |  |
| 2.2-HCUEE01-1640 |  | Ground Pull Cable | 60d | 2026-08-26 | 2026-11-03 | 2.2-HCUEE01-1610 SS | 7d | 0d | Cable Pull; Construction Material [600] | UDF_G3 | 0 | EE | 1 | C03a | TY1 | SECE | HCU | EIT2.2 | PUL | C03a | EIT02.2 |
| 2.2-HCUEE01-1650 |  | Megger & Continuity test | 10d | 2026-12-02 | 2026-12-12 | 2.2-HCUEE01-1640, 2.2-HCUEE01-1630 | -14d | 0d | Cable Pull; Construction Material [100] | UDF_G3 | 0 | EE | 1 | C03a | TY1 | SECE | HCU | EIT2.2 |  | C03a | EIT02.2 |
| 2.2-HCUEE01-1660 |  | Complete QA/QC document | 15d | 2026-12-14 | 2026-12-30 | 2.2-HCUEE01-1650 | -14d | 0d | Cable Pull; Construction Material [150] | UDF_G3 | 0 | EE | 1 | C03a | TY1 | SECE | HCU | EIT2.2 |  | C03a | EIT02.2 |
|  | 11 | **AG Lighting Cable** |  | 2026-08-26 | 2026-12-31 |  |  |  |  |  |  |  |  |  |  |  |  |  |  |  |  |
| 2.2-HCUEE01-1670 |  | Ground Pull Cable | 60d | 2026-08-26 | 2026-11-03 | 2.2-HCUEE01-1640 SS | 7d | 0d | Cable Pull; Construction Material [600] | UDF_G3 | 0 | EE | 1 | C03a | TY1 | SECE | HCU | EIT2.2 | PUL | C03a | EIT02.2 |
| 2.2-HCUEE01-1680 |  | Megger & Continuity test | 30d | 2026-11-04 | 2026-12-08 | 2.2-HCUEE01-1670 | 7d | 0d | Cable Pull; Construction Material [300] | UDF_G3 | 0 | EE | 1 | C03a | TY1 | SECE | HCU | EIT2.2 |  | C03a | EIT02.2 |
| 2.2-HCUEE01-1690 |  | Complete QA/QC document | 20d | 2026-12-09 | 2026-12-31 | 2.2-HCUEE01-1680 | 7d | 0d | Cable Pull; Construction Material [200] | UDF_G3 | 0 | EE | 1 | C03a | TY1 | SECE | HCU | EIT2.2 |  | C03a | EIT02.2 |
|  | 4 | **Electrical Cable Termination / Glanding** |  | 2026-09-30 | 2027-03-16 |  |  |  |  |  |  |  |  |  |  |  |  |  |  |  |  |
|  | 1 | **Termination MV Cable** |  | 2026-10-01 | 2026-11-21 |  |  |  |  |  |  |  |  |  |  |  |  |  |  |  |  |
| 2.2-HCUEE02-2380 |  | Cable Termination/Glanding | 30d | 2026-10-01 | 2026-11-04 | 2.2-HCUEE01-1500 | -30.1d | 0d | Construction Material [300] | UDF_G3 | 0 | EE | 1 | C03a | TY1 | Non | HCU | EIT2.2 |  | C03a | EIT02.2 |
| 2.2-HCUEE02-2390 |  | Clear punch | 5d | 2026-11-05 | 2026-11-10 | 2.2-HCUEE02-2380 | -30.1d | 0d | Construction Material [50] | UDF_G3 | 0 | EE | 1 | C03a | TY1 | Non | HCU | EIT2.2 |  | C03a | EIT02.2 |
| 2.2-HCUEE02-2400 |  | Complete QA/QC document | 10d | 2026-11-11 | 2026-11-21 | 2.2-HCUEE02-2390 | -30.1d | 0d | Construction Material [100] | UDF_G3 | 0 | EE | 1 | C03a | TY1 | Non | HCU | EIT2.2 |  | C03a | EIT02.2 |
|  | 2 | **Termination LV Cable** |  | 2026-09-30 | 2026-12-02 |  |  |  |  |  |  |  |  |  |  |  |  |  |  |  |  |
| 2.2-HCUEE02-2410 |  | Cable Termination/Glanding | 30d | 2026-09-30 | 2026-11-03 | 2.2-HCUEE01-1610 | 50d | 0d | Construction Material [300] | UDF_G3 | 0 | EE | 1 | C03a | TY1 | Non | HCU | EIT2.2 |  | C03a | EIT02.2 |
| 2.2-HCUEE02-2420 |  | Clear punch | 10d | 2026-11-04 | 2026-11-14 | 2.2-HCUEE02-2410 | 50d | 0d | Construction Material [100] | UDF_G3 | 0 | EE | 1 | C03a | TY1 | Non | HCU | EIT2.2 |  | C03a | EIT02.2 |
| 2.2-HCUEE02-2430 |  | Complete QA/QC document | 15d | 2026-11-16 | 2026-12-02 | 2.2-HCUEE02-2420 | 50d | 64d | Construction Material [150] | UDF_G3 | 0 | EE | 1 | C03a | TY1 | Non | HCU | EIT2.2 |  | C03a | EIT02.2 |
|  | 3 | **Termination Control Cable** |  | 2026-12-31 | 2027-03-04 |  |  |  |  |  |  |  |  |  |  |  |  |  |  |  |  |
| 2.2-HCUEE02-2440 |  | Cable Termination/Glanding | 30d | 2026-12-31 | 2027-02-03 | 2.2-HCUEE01-1660 | -14d | 0d | Construction Material [300] | UDF_G3 | 0 | EE | 1 | C03a | TY1 | Non | HCU | EIT2.2 |  | C03a | EIT02.2 |
| 2.2-HCUEE02-2450 |  | Clear punch | 10d | 2027-02-04 | 2027-02-15 | 2.2-HCUEE02-2440 | -14d | 0d | Construction Material [100] | UDF_G3 | 0 | EE | 1 | C03a | TY1 | Non | HCU | EIT2.2 |  | C03a | EIT02.2 |
| 2.2-HCUEE02-2460 |  | Complete QA/QC document | 15d | 2027-02-16 | 2027-03-04 | 2.2-HCUEE02-2450, 2.2-HCUEE02-2430 | -14d | 0d | Construction Material [150] | UDF_G3 | 0 | EE | 1 | C03a | TY1 | Non | HCU | EIT2.2 |  | C03a | EIT02.2 |

| ID | WBS | Activity | Duration | Start | Finish | Predecessors | Total float | Free float | Calendar | Resources | On Schedule Indicator | %Completed | Disciplines | Main Activity | WBS | Types | EIT2 Main Activity | Areas | Phases | EIT WBS | EIT PKG | Motor Loop | Cable Pull & Laying |
| --- | --- | --- | --- | --- | --- | --- | --- | --- | --- | --- | --- | --- | --- | --- | --- | --- | --- | --- | --- | --- | --- | --- | --- |
|  | 4 | **Termination Lighting Cable** |  | 2027-01-01 | 2027-03-16 |  |  |  |  |  |  |  |  |  |  |  |  |  |  |  |  |  |  |
| 2.2-HCUEE02-2470 |  | Cable Termination/Glanding | 28d | 2027-01-01 | 2027-02-02 | 2.2-HCUEE01-1690 | 7d | 0d |  | Construction Material [280] | UDF_G3 | 0 | EE | 1 | C03a | TY1 | Non | HCU | EIT2.2 | C03a | EIT02.2 |  |  |
| 2.2-HCUEE02-2480 |  | Clear punch | 5d | 2027-02-03 | 2027-02-08 | 2.2-HCUEE02-2470 | 7d | 21d |  | Construction Material [50] | UDF_G3 | 0 | EE | 1 | C03a | TY1 | Non | HCU | EIT2.2 | C03a | EIT02.2 |  |  |
| 2.2-HCUEE02-2490 |  | Complete QA/QC document | 10d | 2027-03-05 | 2027-03-16 | 2.2-HCUEE02-2480, 2.2-HCUEE02-2460 | -14d | 16.2d |  | Construction Material [100] | UDF_G3 | 0 | EE | 1 | C03a | TY1 | Non | HCU | EIT2.2 | C03a | EIT02.2 |  |  |
|  | 7 | **Electrical Earthing / Lightning Installation** |  | 2026-06-19 | 2026-10-28 |  |  |  |  |  |  |  |  |  |  |  |  |  |  |  |  |  |  |
| 2.1-HCUEE05-1100 |  | Install Equipment Earthing / Inspection PIT / Install earthing pull and Connecttion | 88d | 2026-06-19 | 2026-09-29 | 2.2-HCUEE01-1560 SS | 24d | 0d |  | Construction Material [1200] | UDF_G3 | 0 | EE | 1 | C03a | TY1 | Non | HCU | EIT2.2 | C03a | EIT02.2 |  |  |
| 2.1-HCUEE05-1110 |  | Punch Clear | 10d | 2026-09-30 | 2026-10-10 | 2.1-HCUEE05-1100 | 24d | 0d |  | Construction Material [100] | UDF_G3 | 0 | EE | 1 | C03a | TY1 | Non | HCU | EIT2.2 | C03a | EIT02.2 |  |  |
| 2.1-HCUEE05-1120 |  | Complete QA/QC document | 15d | 2026-10-12 | 2026-10-28 | 2.1-HCUEE05-1110 | 24d | 10d |  | Construction Material [150] | UDF_G3 | 0 | EE | 1 | C03a | TY1 | Non | HCU | EIT2.2 | C03a | EIT02.2 |  |  |
|  | 5 | **Lighting Fixture Installation** |  | 2026-08-26 | 2026-11-09 |  |  |  |  |  |  |  |  |  |  |  |  |  |  |  |  |  |  |
| 2.2-HCUEE05-1590 |  | Install support / bracket / Pole | 40d | 2026-08-26 | 2026-10-10 | 2.2-HCUEE01-1570 | 14d | 0d |  | Construction Material [400] | UDF_G3 | 0 | EE | 1 | C03a | TY1 | Non | HCU | EIT2.2 | C03a | EIT02.2 |  |  |
| 2.2-HCUEE05-1600 |  | lighting fixture | 40d | 2026-08-26 | 2026-10-10 | 2.2-HCUEE05-1590 SS | 14d | 0d |  | Construction Material [400] | UDF_G3 | 0 | EE | 1 | C03a | TY1 | Non | HCU | EIT2.2 | C03a | EIT02.2 |  |  |
| 2.2-HCUEE05-1610 |  | Clear punch | 10d | 2026-10-12 | 2026-10-22 | 2.2-HCUEE05-1600 | 14d | 0d |  | Construction Material [100] | UDF_G3 | 0 | EE | 1 | C03a | TY1 | Non | HCU | EIT2.2 | C03a | EIT02.2 |  |  |
| 2.2-HCUEE05-1620 |  | Complete QA/QC document | 15d | 2026-10-23 | 2026-11-09 | 2.2-HCUEE05-1610, 2.1-HCUEE05-1120 FF | 14d | 0d |  | Construction Material [150] | UDF_G3 | 0 | EE | 1 | C03a | TY1 | Non | HCU | EIT2.2 | C03a | EIT02.2 |  |  |
|  | 12 | **Small Power Equipment Installation** |  | 2026-08-26 | 2026-11-09 |  |  |  |  |  |  |  |  |  |  |  |  |  |  |  |  |  |  |
| 2.2-HCUEE05-1630 |  | Install support / bracket | 40d | 2026-08-26 | 2026-10-10 | 2.2-HCUEE05-1590 SS | 14d | 0d |  | Construction Material [400] | UDF_G3 | 0 | EE | 1 | C03a | TY1 | Non | HCU | EIT2.2 | C03a | EIT02.2 |  |  |
| 2.2-HCUEE05-1640 |  | Install Distribution panel, convenience outlet | 40d | 2026-08-26 | 2026-10-10 | 2.2-HCUEE05-1630 SS | 14d | 0d |  | Construction Material [400] | UDF_G3 | 0 | EE | 1 | C03a | TY1 | Non | HCU | EIT2.2 | C03a | EIT02.2 |  |  |
| 2.2-HCUEE05-1650 |  | Clear punch | 10d | 2026-10-12 | 2026-10-22 | 2.2-HCUEE05-1640 | 14d | 0d |  | Construction Material [100] | UDF_G3 | 0 | EE | 1 | C03a | TY1 | Non | HCU | EIT2.2 | C03a | EIT02.2 |  |  |
| 2.2-HCUEE05-1660 |  | Complete QA/QC document | 15d | 2026-10-23 | 2026-11-09 | 2.2-HCUEE05-1650, 2.2-HCUEE05-1620 FF | 14d | 44.2d |  | Construction Material [150] | UDF_G3 | 0 | EE | 1 | C03a | TY1 | Non | HCU | EIT2.2 | C03a | EIT02.2 |  |  |
|  | 2 | **Motor Solo Run** |  | 2026-11-23 | 2027-01-18 |  |  |  |  |  |  |  |  |  |  |  |  |  |  |  |  |  |  |
| 2.1-HCUEE-1120 |  | Motor solo run | 25d | 2026-11-23 | 2026-12-21 | 2.2-HCUEE02-2400 | -30.1d | 0.1d |  | Construction Material [250] | UDF_G3 | 0 | EE |  |  |  | Non | HCU | EIT2.2 | C03a | EIT02.2 | MO |  |
| 2.1-HCUEE-1130 |  | Punch Clear | 10d | 2026-12-22 | 2026-12-31 | 2.1-HCUEE-1120 | -38.25d | 0d | 7 - Day Workweek (No Holidays) | Construction Material [80] | UDF_G3 | 0 | EE |  |  |  | Non | HCU | EIT2.2 | C03a | EIT02.2 | MO |  |
| 2.1-HCUEE-1140 |  | Complete QA/QC document | 15d | 2026-12-31 | 2027-01-18 | 2.1-HCUEE-1130, 2.2-HCUEE05-1660 | -30.2d | 0d |  | Construction Material [150] | UDF_G3 | 0 | EE |  |  |  | Non | HCU | EIT2.2 | C03a | EIT02.2 | MO |  |
|  | 3 | **Instrument Works** |  | 2026-06-17 | 2027-04-05 |  |  |  |  |  |  |  |  |  |  |  |  |  |  |  |  |  |  |
|  | 10 | **Cable Laying concrete Trench** |  | 2026-06-17 | 2026-11-07 |  |  |  |  |  |  |  |  |  |  |  |  |  |  |  |  |  |  |
|  | 3 | **C03-JTR-044/045/041/043/049/005/047/046/106/094/095/096/097/091/098** |  | 2026-06-17 | 2026-11-07 |  |  |  |  |  |  |  |  |  |  |  |  |  |  |  |  |  |  |
| 2.2-HCUIN01 -4100 |  | Cable Laying | 70d | 2026-06-17 | 2026-09-05 | 2.2-HCUIN01-4060 | -6d | 0d |  | Cable Pull [71404 h]; Construction Material [700] | UDF_G3 | 0 | IN |  |  |  | PRICI | HCU | EIT2.2 | C03c | EIT02.2 |  | PUL |
| 2.2-HCUIN01 -4110 |  | Megger & Continuity test | 5d | 2026-09-07 | 2026-09-11 | 2.2-HCUIN01 -4100 | -6d | 0d |  | Cable Pull; Construction Material [50] | UDF_G3 | 0 | IN |  |  |  | PRICI | HCU | EIT2.2 | C03c | EIT02.2 |  |  |
| 2.2-HCUIN01 -4120 |  | punch Clear | 5d | 2026-09-12 | 2026-09-17 | 2.2-HCUIN01 -4110 | -6d | 0d |  | Cable Pull; Construction Material [50] | UDF_G3 | 0 | IN |  |  |  | PRICI | HCU | EIT2.2 | C03c | EIT02.2 |  |  |
| 2.2-HCUIN01 -4130 |  | Sand Filling Compaction | 5d | 2026-09-18 | 2026-09-23 | 2.2-HCUIN01 -4120 | -6d | 0d |  | Cable Pull; Construction Material [50] | UDF_G3 | 0 | IN |  |  |  | PRICI | HCU | EIT2.2 |  |  |  |  |
| 2.2-HCUIN01 -4140 |  | Complete QA/QC document | 5d | 2026-09-24 | 2026-09-29 | 2.2-HCUIN01 -4130 | -6d | 0d |  | Cable Pull; Construction Material [50] | UDF_G3 | 0 | IN |  |  |  | PRICI | HCU | EIT2.2 | C03c | EIT02.2 |  |  |
| 2.2-HCUIN01 -4150 |  | Back Filling | 34d | 2026-09-30 | 2026-11-07 | 2.2-HCUIN01 -4140 | -6d | 0d |  | Cable Pull; Construction Material [340] | UDF_G3 | 0 | IN |  |  |  | PRICI | HCU | EIT2.2 | C03c | EIT02.2 |  |  |

| ID | WBS | Activity | Duration | Start | Finish | Predecessors | Total float | Free float | Resources | On Schedule Indicator | %Completed | Disciplines | Main Activity | WBS | Types | EIT2 Main Activity | Areas | Phases | EIT WBS | EIT PKG | Cable Pull & Laying |
| --- | --- | --- | --- | --- | --- | --- | --- | --- | --- | --- | --- | --- | --- | --- | --- | --- | --- | --- | --- | --- | --- |
|  | 3 | **Instrument Cable Tray/Ladder Installation** |  | 2026-06-17 | 2026-09-23 |  |  |  |  |  |  |  |  |  |  |  |  |  |  |  |  |
| 2.2-HCUIN-1430 |  | Install support / bracket | 60d | 2026-06-17 | 2026-08-25 | 2.2-HCUIN01 -4100 SS | -6d | 0d | Construction Material [600] | UDF_G3 | 0 | EE | 1 | C03a | TY1 | Non | HCU | EIT2.2 | C03a | EIT02.2 |  |
| 2.2-HCUIN-1440 |  | Install Ladder / Tray | 60d | 2026-06-17 | 2026-08-25 | 2.2-HCUIN-1450 SS, 2.2-HCUIN-1430 FF | -6d | 0d | Construction Material [600] | UDF_G3 | 0 | EE | 1 | C03a | TY1 | Non | HCU | EIT2.2 | C03a | EIT02.2 |  |
| 2.2-HCUIN-1450 |  | Steel Conduits for Cable tray | 60d | 2026-06-17 | 2026-08-25 | 2.2-HCUIN-1430 SS | -6d | 0d | Construction Material [600] | UDF_G3 | 0 | EE | 1 | C03a | TY1 | Non | HCU | EIT2.2 | C03a | EIT02.2 |  |
| 2.2-HCUIN-1460 |  | punch clear | 10d | 2026-08-26 | 2026-09-05 | 2.2-HCUIN-1440, 2.2-HCUIN-1450 | -6d | 0d | Construction Material [100] | UDF_G3 | 0 | EE | 1 | C03a | TY1 | Non | HCU | EIT2.2 | C03a | EIT02.2 |  |
| 2.2-HCUIN-1470 |  | Complete QA/QC document | 15d | 2026-09-07 | 2026-09-23 | 2.2-HCUIN-1460 | -6d | 0d | Construction Material [150] | UDF_G3 | 0 | EE | 1 | C03a | TY1 | Non | HCU | EIT2.2 | C03a | EIT02.2 |  |
|  | 8 | **AG Cable Pull Primary Cable** |  | 2026-09-24 | 2027-01-18 |  |  |  |  |  |  |  |  |  |  |  |  |  |  |  |  |
| 2.2-HCUIN01-1770 |  | Above Ground Pull Cable | 50d | 2026-09-24 | 2026-11-20 | 2.2-HCUIN-1470 | -6d | 0d | Cable Pull; Construction Material [500] | UDF_G3 | 0 | EE | 1 | C03a | TY1 | SECI | HCU | EIT2.2 | C03a | EIT02.2 | PUL |
| 2.2-HCUIN01-1780 |  | Megger & Continuity test | 10d | 2026-11-21 | 2026-12-02 | 2.2-HCUIN01-1770 | -6d | 24.2d | Cable Pull; Construction Material [100] | UDF_G3 | 0 | EE | 1 | C03a | TY1 | SECI | HCU | EIT2.2 | C03a | EIT02.2 |  |
| 2.2-HCUIN01-1790 |  | Complete QA/QC document | 15d | 2026-12-31 | 2027-01-18 | 2.2-HCUIN01-1780, 2.1-HCUEE-1140 FF | -30.2d | 0d | Cable Pull; Construction Material [150] | UDF_G3 | 0 | EE | 1 | C03a | TY1 | SECI | HCU | EIT2.2 | C03a | EIT02.2 |  |
|  | 9 | **AG Cable Pull Secondary Cable** |  | 2026-09-24 | 2027-01-18 |  |  |  |  |  |  |  |  |  |  |  |  |  |  |  |  |
| 2.2-HCUIN01-1800 |  | Above Ground Pull Cable | 50d | 2026-09-24 | 2026-11-20 | 2.2-HCUIN-1470 | -6d | 0d | Cable Pull; Construction Material [500] | UDF_G3 | 0 | EE | 1 | C03a | TY1 | SECI | HCU | EIT2.2 | C03a | EIT02.2 | PUL |
| 2.2-HCUIN01-1810 |  | Megger & Continuity test | 10d | 2026-11-21 | 2026-12-02 | 2.2-HCUIN01-1800 | -6d | 24.2d | Cable Pull; Construction Material [100] | UDF_G3 | 0 | EE | 1 | C03a | TY1 | SECI | HCU | EIT2.2 | C03a | EIT02.2 |  |
| 2.2-HCUIN01-1820 |  | Complete QA/QC document | 15d | 2026-12-31 | 2027-01-18 | 2.2-HCUIN01-1810, 2.2-HCUIN01-1790 FF | -30.2d | 0d | Cable Pull; Construction Material [150] | UDF_G3 | 0 | EE | 1 | C03a | TY1 | SECI | HCU | EIT2.2 | C03a | EIT02.2 |  |
|  | 2 | **Instrument Cable Termination / Glanding** |  | 2026-11-09 | 2027-02-22 |  |  |  |  |  |  |  |  |  |  |  |  |  |  |  |  |
|  | 1 | **UG Cable Termination Cable** |  | 2026-11-09 | 2026-12-12 |  |  |  |  |  |  |  |  |  |  |  |  |  |  |  |  |
| 2.2-HCUIN02-1900 |  | Cable Termination/Glanding | 20d | 2026-11-09 | 2026-12-01 | 2.2-HCUIN01 -4150 | 0d |  | Construction Material [200] | UDF_G3 | 0 | EE | 1 | C03a | TY1 | Non | HCU | EIT2.2 | C03a | EIT02.2 |  |
| 2.2-HCUIN02-1910 |  | punch clear | 5d | 2026-12-02 | 2026-12-07 | 2.2-HCUIN02-1900 | 0d |  | Construction Material [50] | UDF_G3 | 0 | EE | 1 | C03a | TY1 | Non | HCU | EIT2.2 | C03a | EIT02.2 |  |
| 2.2-HCUIN02-1920 |  | Complete QA/QC document | 5d | 2026-12-08 | 2026-12-12 | 2.2-HCUIN02-1910 | 0d | 30.2d | Construction Material [50] | UDF_G3 | 0 | EE | 1 | C03a | TY1 | Non | HCU | EIT2.2 | C03a | EIT02.2 |  |
|  | 8 | **Cable Termination Primary Cable** |  | 2027-01-18 | 2027-02-22 |  |  |  |  |  |  |  |  |  |  |  |  |  |  |  |  |
| 2.2-HCUIN02-1780 |  | Cable Termination/Glanding | 20d | 2027-01-18 | 2027-02-10 | 2.2-HCUIN01-1790, 2.2-HCUIN02-1920 | -30.2d | 0d | Construction Material [200] | UDF_G3 | 0 | EE | 1 | C03a | TY1 | Non | HCU | EIT2.2 | C03a | EIT02.2 |  |
| 2.2-HCUIN02-1790 |  | punch clear | 5d | 2027-02-10 | 2027-02-16 | 2.2-HCUIN02-1780 | -30.2d | 0d | Construction Material [50] | UDF_G3 | 0 | EE | 1 | C03a | TY1 | Non | HCU | EIT2.2 | C03a | EIT02.2 |  |
| 2.2-HCUIN02-1800 |  | Complete QA/QC document | 5d | 2027-02-16 | 2027-02-22 | 2.2-HCUIN02-1790 | -30.2d | 0d | Construction Material [50] | UDF_G3 | 0 | EE | 1 | C03a | TY1 | Non | HCU | EIT2.2 | C03a | EIT02.2 |  |
|  | 9 | **Cable Termination Secondary Cable** |  | 2027-01-18 | 2027-02-22 |  |  |  |  |  |  |  |  |  |  |  |  |  |  |  |  |
| 2.2-HCUIN02-1810 |  | Cable Termination/Glanding | 20d | 2027-01-18 | 2027-02-10 | 2.2-HCUIN01-1820 | -30.2d | 0d | Construction Material [200] | UDF_G3 | 0 | EE | 1 | C03a | TY1 | Non | HCU | EIT2.2 | C03a | EIT02.2 |  |
| 2.2-HCUIN02-1820 |  | punch clear | 5d | 2027-02-10 | 2027-02-16 | 2.2-HCUIN02-1810 | -30.2d | 0d | Construction Material [50] | UDF_G3 | 0 | EE | 1 | C03a | TY1 | Non | HCU | EIT2.2 | C03a | EIT02.2 |  |
| 2.2-HCUIN02-1830 |  | Complete QA/QC document | 5d | 2027-02-16 | 2027-02-22 | 2.2-HCUIN02-1820, 2.2-HCUIN02-1800 FF | -30.2d | 0d | Construction Material [50] | UDF_G3 | 0 | EE | 1 | C03a | TY1 | Non | HCU | EIT2.2 | C03a | EIT02.2 |  |

| ID | WBS | Activity | Duration | Start | Finish | Predecessors | Total float | Free float | Calendar | Resources | On Schedule Indicator | %Completed | Disciplines | Main Activity | WBS | Types | EIT2 Main Activity | Areas | Phases | EIT WBS | EIT PKG |
| --- | --- | --- | --- | --- | --- | --- | --- | --- | --- | --- | --- | --- | --- | --- | --- | --- | --- | --- | --- | --- | --- |
|  | 4 | **Instrument Calibration** |  | 2026-08-26 | 2026-09-29 |  |  |  |  |  |  |  |  |  |  |  |  |  |  |  |  |
| 2.2-HCUIN05-2060 |  | Calibration of Gauges | 30d | 2026-08-26 | 2026-09-29 | 2.2-HCUIN-1440 | 2.3d | 0d |  | Construction Material [300] | UDF_G3 | 0 | EE | 1 | C03a | TY1 | Non | HCU | EIT2.2 | C03c | EIT02.2 |
| 2.2-HCUIN05-2090 |  | Calibration of Transmitters/Switches | 30d | 2026-08-26 | 2026-09-29 | 2.2-HCUIN05-2060 SS, 2.2-HCUIN05-2060 FF | 2.3d | 0d |  | Construction Material [300] | UDF_G3 | 0 | IN |  |  |  | Non | HCU | EIT2.2 |  |  |
|  | 1 | **Gauges** |  | 2026-08-26 | 2026-10-10 |  |  |  |  |  |  |  |  |  |  |  |  |  |  |  |  |
| 2.2-HCUIN04-1440 |  | D.P Pressure Gauge Installation | 10d | 2026-08-26 | 2026-09-05 | 2.2-HCUIN05-2060 SS | 62.3d | 0d |  | Construction Material [100] | UDF_G3 | 0 | IN |  |  |  | Non | HCU | EIT2.2 |  |  |
| 2.2-HCUIN04-1450 |  | Pressure Gauge Installation | 10d | 2026-09-07 | 2026-09-17 | 2.2-HCUIN04-1440 | 62.3d | 0d |  | Construction Material [100] | UDF_G3 | 0 | EE | 1 | C03a | TY1 | Non | HCU | EIT2.2 | C03c | EIT02.2 |
| 2.2-HCUIN04-1460 |  | Level Gauge Installation | 10d | 2026-09-18 | 2026-09-29 | 2.2-HCUIN04-1450 | 62.3d | 0d |  | Construction Material [100] | UDF_G3 | 0 | EE | 1 | C03a | TY1 | Non | HCU | EIT2.2 | C03c | EIT02.2 |
| 2.2-HCUIN04-1470 |  | Clear punch | 5d | 2026-09-30 | 2026-10-05 | 2.2-HCUIN04-1460 | 62.3d | 0d |  | Construction Material [50] | UDF_G3 | 0 | EE | 1 | C03a | TY1 | Non | HCU | EIT2.2 | C03c | EIT02.2 |
| 2.2-HCUIN04-1475 |  | Complete QA/QC document | 5d | 2026-10-06 | 2026-10-10 | 2.2-HCUIN04-1470 | 62.3d | 47d |  | Construction Material [50] | UDF_G3 | 0 | EE | 1 | C03a | TY1 | Non | HCU | EIT2.2 | C03c | EIT02.2 |
|  | 6 | **Transmitters/Switches** |  | 2026-09-30 | 2026-12-04 |  |  |  |  |  |  |  |  |  |  |  |  |  |  |  |  |
| 2.2-HCUIN04-1480 |  | Install support / bracket | 10d | 2026-09-30 | 2026-10-10 | 2.2-HCUIN05-2090 | 2.3d | 0d |  | Construction Material [100] | UDF_G3 | 0 | EE | 1 | C03a | TY1 | Non | HCU | EIT2.2 | C03c | EIT02.2 |
| 2.2-HCUIN04-1490 |  | Pressure transmitters Installation | 10d | 2026-10-12 | 2026-10-22 | 2.2-HCUIN04-1480 | 2.3d | 0d |  | Construction Material [100] | UDF_G3 | 0 | EE | 1 | C03a | TY1 | Non | HCU | EIT2.2 | C03c | EIT02.2 |
| 2.2-HCUIN04-1500 |  | D.P. Transmitters - HART Installation | 10d | 2026-10-23 | 2026-11-03 | 2.2-HCUIN04-1490 | 2.3d | 0d |  | Construction Material [100] | UDF_G3 | 0 | EE | 1 | C03a | TY1 | Non | HCU | EIT2.2 | C03c | EIT02.2 |
| 2.2-HCUIN04-1510 |  | Temperature Transmitters Installation | 10d | 2026-11-04 | 2026-11-14 | 2.2-HCUIN04-1500 | 15.3d | 0d |  | Construction Material [100] | UDF_G3 | 0 | EE | 1 | C03a | TY1 | Non | HCU | EIT2.2 | C03c | EIT02.2 |
| 2.2-HCUIN04-1520 |  | Level Switch Installation | 10d | 2026-11-16 | 2026-11-26 | 2.2-HCUIN04-1510 | 15.3d | 0d |  | Construction Material [100] | UDF_G3 | 0 | IN |  |  |  | Non | HCU | EIT2.2 |  |  |
| 2.2-HCUIN04-1530 |  | Clear punch | 2d | 2026-11-27 | 2026-11-28 | 2.2-HCUIN04-1520 | 15.3d | 0d |  | Construction Material [20] | UDF_G3 | 0 | IN |  |  |  | Non | HCU | EIT2.2 |  |  |
| 2.2-HCUIN04-1540 |  | Complete QA/QC document | 5d | 2026-11-30 | 2026-12-04 | 2.2-HCUIN04-1530, 2.2-HCUIN04-1475 FF | 15.3d | 13d |  | Construction Material [50] | UDF_G3 | 0 | IN |  |  |  | Non | HCU | EIT2.2 |  |  |
|  | 11 | **Instrument Junction Box Installation** |  | 2026-10-12 | 2026-10-27 |  |  |  |  |  |  |  |  |  |  |  |  |  |  |  |  |
| 2.2-HCUIN-1480 |  | Install support / bracket | 5d | 2026-10-12 | 2026-10-16 | 2.2-HCUIN04-1480 | 8.3d | 0d |  | Construction Material [50] | UDF_G3 | 0 | EE | 1 | C03a | TY1 | Non | HCU | EIT2.2 | C03c | EIT02.2 |
| 2.2-HCUIN-1490 |  | Instrument Junction Box Installation | 5d | 2026-10-17 | 2026-10-22 | 2.2-HCUIN-1480 | 8.3d | 0d |  | Construction Material [50] | UDF_G3 | 0 | EE | 1 | C03a | TY1 | Non | HCU | EIT2.2 | C03c | EIT02.2 |
| 2.2-HCUIN-1500 |  | Clear punch | 2d | 2026-10-23 | 2026-10-24 | 2.2-HCUIN-1490 | 8.3d | 0d |  | Construction Material [20] | UDF_G3 | 0 | EE | 1 | C03a | TY1 | Non | HCU | EIT2.2 | C03c | EIT02.2 |
| 2.2-HCUIN-1510 |  | Complete QA/QC document | 2d | 2026-10-26 | 2026-10-27 | 2.2-HCUIN-1500 | 8.3d | 6d |  | Construction Material [20] | UDF_G3 | 0 | EE | 1 | C03a | TY1 | Non | HCU | EIT2.2 | C03c | EIT02.2 |
|  | 5 | **Tubing** |  | 2026-11-04 | 2027-01-14 |  |  |  |  |  |  |  |  |  |  |  |  |  |  |  |  |
| 2.2-HCUIN07-1470 |  | Instrument Hook up Tubing Installation | 20d | 2026-11-04 | 2026-11-26 | 2.2-HCUIN04-1490, 2.2-HCUIN04-1500, 2.2-HCUIN-1510 | 2.3d | 0d |  | Construction Material [200] | UDF_G3 | 0 | IN |  |  |  | Non | HCU | EIT2.2 | C03c | EIT02.2 |
| 2.2-HCUIN07-1480 |  | Leak Test | 20d | 2026-11-27 | 2026-12-19 | 2.2-HCUIN07-1470 | 2.3d | 0d |  | Construction Material [200] | UDF_G3 | 0 | IN |  |  |  | Non | HCU | EIT2.2 | C03c | EIT02.2 |
| 2.2-HCUIN07-1490 |  | Clear Punch | 10d | 2026-12-21 | 2026-12-31 | 2.2-HCUIN07-1480, 2.2-HCUIN04-1540 | 2.3d | 0.1d |  | Construction Material [100] | UDF_G3 | 0 | IN |  |  |  | Non | HCU | EIT2.2 | C03c | EIT02.2 |
| 2.2-HCUIN07-1500 |  | Complete QA/QC document | 15d | 2027-01-01 | 2027-01-14 | 2.2-HCUIN07-1490 | 3.38d | 41.62d | 7 - Day Workweek (No Holidays) | Construction Material [120] | UDF_G3 | 0 | IN |  |  |  | Non | HCU | EIT2.2 | C03c | EIT02.2 |

| ID | WBS | Activity | Duration | Start | Finish | Predecessors | Total float | Free float | Resources | On Schedule Indicator | %Completed | Disciplines | EIT2 Main Activity | Areas | Phases | EIT WBS | EIT PKG | Motor Loop | Main Activity | WBS | Types |
| --- | --- | --- | --- | --- | --- | --- | --- | --- | --- | --- | --- | --- | --- | --- | --- | --- | --- | --- | --- | --- | --- |
|  | 7 | **Instrument Loop Check** |  | 2027-02-22 | 2027-04-05 |  |  |  |  |  |  |  |  |  |  |  |  |  |  |  |  |
| 2.2-HCUIN09-1500 |  | Instrument Loop check | 25d | 2027-02-22 | 2027-03-23 | 2.2-HCUIN02-1830, 2.2-HCUIN07-1500 | -30.2d | 0d | Construction Material [250] | UDF_G3 | 0 | IN | Non | HCU | EIT2.2 | C03c | EIT02.2 | LO |  |  |  |
| 2.2-HCUIN09-1510 |  | Clear Punch | 5d | 2027-03-23 | 2027-03-29 | 2.2-HCUIN09-1500 | -30.2d | 0d | Construction Material [50] | UDF_G3 | 0 | IN | Non | HCU | EIT2.2 | C03c | EIT02.2 | LO |  |  |  |
| 2.2-HCUIN09-1520 |  | Complete QA/QC document | 6d | 2027-03-29 | 2027-04-05 | 2.2-HCUIN09-1510 | -30.2d | 0d | Construction Material [60] | UDF_G3 | 0 | IN | Non | HCU | EIT2.2 | C03c | EIT02.2 | LO |  |  |  |
|  | 5 | **Telecommunication** |  | 2026-08-26 | 2027-03-06 |  |  |  |  |  |  |  |  |  |  |  |  |  |  |  |  |
|  | 3 | **Telecom** |  | 2026-08-26 | 2027-03-06 |  |  |  |  |  |  |  |  |  |  |  |  |  |  |  |  |
|  | 3 | **Telecom Cable Tray/Ladder Installation** |  | 2026-08-26 | 2026-11-14 |  |  |  |  |  |  |  |  |  |  |  |  |  |  |  |  |
| 2.2-HCUTE03-1150 |  | Install support / bracket | 50d | 2026-08-26 | 2026-10-22 | 2.2-HCUEE01-1560 | -6d | 0d | Construction Material [500] | UDF_G3 | 0 | EE | Non | HCU | EIT2.2 | C03a | EIT02.2 |  | 1 | C03a | TY1 |
| 2.2-HCUTE03-1160 |  | Install Ladder / Tray | 50d | 2026-08-26 | 2026-10-22 | 2.2-HCUTE03-1150 SS, 2.2-HCUTE03-1150 FF | -6d | 0d | Construction Material [500] | UDF_G3 | 0 | EE | Non | HCU | EIT2.2 | C03a | EIT02.2 |  | 1 | C03a | TY1 |
| 2.2-HCUTE03-1170 |  | Conduit Install | 50d | 2026-08-26 | 2026-10-22 | 2.2-HCUTE03-1150 SS | -6d | 0d | Construction Material [500] | UDF_G3 | 0 | TE | Non | HCU | EIT2.2 | C03a | EIT02.2 |  |  |  |  |
| 2.2-HCUTE03-1180 |  | Clear punch | 5d | 2026-10-23 | 2026-10-28 | 2.2-HCUTE03-1160, 2.2-HCUTE03-1170 | -6d | 0d | Construction Material [50] | UDF_G3 | 0 | EE | Non | HCU | EIT2.2 | C03a | EIT02.2 |  | 1 | C03a | TY1 |
| 2.2-HCUTE03-1190 |  | Complete QA/QC document | 15d | 2026-10-29 | 2026-11-14 | 2.2-HCUTE03-1180 | -6d | 0d | Construction Material [150] | UDF_G3 | 0 | EE | Non | HCU | EIT2.2 | C03a | EIT02.2 |  | 1 | C03a | TY1 |
|  | 1 | **AG Telecommunication Cable Installation** |  | 2026-11-16 | 2027-01-18 |  |  |  |  |  |  |  |  |  |  |  |  |  |  |  |  |
| 2.2-HCUTE01-1310 |  | Above Ground Pull Cable | 30d | 2026-11-16 | 2026-12-19 | 2.2-HCUTE03-1190 | -6d | 0d | Construction Material [300] | UDF_G3 | 0 | EE | Non | HCU | EIT2.2 | C03a | EIT02.2 |  | 1 | C03a | TY1 |
| 2.2-HCUTE01-1320 |  | Megger & Continuity test | 10d | 2026-12-21 | 2026-12-31 | 2.2-HCUTE01-1310 | -6d | 0d | Construction Material [100] | UDF_G3 | 0 | EE | Non | HCU | EIT2.2 | C03a | EIT02.2 |  | 1 | C03a | TY1 |
| 2.2-HCUTE01-1330 |  | Complete QA/QC document | 15d | 2027-01-01 | 2027-01-18 | 2.2-HCUTE01-1320 | -6d | 0d | Construction Material [150] | UDF_G3 | 0 | EE | Non | HCU | EIT2.2 | C03a | EIT02.2 |  | 1 | C03a | TY1 |
|  | 4 | **Telecommunication Termination / Glanding** |  | 2027-01-19 | 2027-03-06 |  |  |  |  |  |  |  |  |  |  |  |  |  |  |  |  |
| 2.2-HCUTE02-1330 |  | Cable Termination/Glanding | 20d | 2027-01-19 | 2027-02-10 | 2.2-HCUTE01-1330 | -6d | 0d | Construction Material [200] | UDF_G3 | 0 | EE | Non | HCU | EIT2.2 | C03a | EIT02.2 |  | 1 | C03a | TY1 |
| 2.2-HCUTE02-1340 |  | Clear punch | 6d | 2027-02-11 | 2027-02-17 | 2.2-HCUTE02-1330 | -6d | 0d | Construction Material [60] | UDF_G3 | 0 | EE | Non | HCU | EIT2.2 | C03a | EIT02.2 |  | 1 | C03a | TY1 |
| 2.2-HCUTE02-1350 |  | Complete QA/QC document | 15d | 2027-02-18 | 2027-03-06 | 2.2-HCUTE02-1340, 2.2-HCUTE01-1480 | -6d | 24.2d | Construction Material [150] | UDF_G3 | 0 | EE | Non | HCU | EIT2.2 | C03a | EIT02.2 |  | 1 | C03a | TY1 |
|  | 2 | **Telecommunication Equipment Installation** |  | 2026-11-16 | 2027-01-18 |  |  |  |  |  |  |  |  |  |  |  |  |  |  |  |  |
| 2.2-HCUTE01-1460 |  | Telecom Equpiment Installation | 30d | 2026-11-16 | 2026-12-19 | 2.2-HCUTE03-1190 | 20d | 0d | Construction Material [300] | UDF_G3 | 0 | EE | Non | HCU | EIT2.2 | C03a | EIT02.2 |  | 1 | C03a | TY1 |
| 2.2-HCUTE01-1470 |  | Clear Punch | 10d | 2026-12-21 | 2026-12-31 | 2.2-HCUTE01-1460 | 20d | 0d | Construction Material [100] | UDF_G3 | 0 | EE | Non | HCU | EIT2.2 | C03a | EIT02.2 |  | 1 | C03a | TY1 |
| 2.2-HCUTE01-1480 |  | Complete QA/QC document | 15d | 2027-01-01 | 2027-01-18 | 2.2-HCUTE01-1470 | 20d | 26d | Construction Material [150] | UDF_G3 | 0 | EE | Non | HCU | EIT2.2 | C03a | EIT02.2 |  | 1 | C03a | TY1 |

| ID | WBS | Activity | Duration | Start | Finish | Predecessors | Total float | Free float | Resources | On Schedule Indicator | %Completed | Disciplines | EIT2 Main Activity | Areas | Phases | EIT WBS | EIT PKG | Cable Pull & Laying |
| --- | --- | --- | --- | --- | --- | --- | --- | --- | --- | --- | --- | --- | --- | --- | --- | --- | --- | --- |
|  | 1 | **HCU ZONE-C** |  | 2026-04-20 | 2027-03-13 |  |  |  |  |  |  |  |  |  |  |  |  |  |
|  | 1 | **Electrical Works** |  | 2026-07-24 | 2027-03-13 |  |  |  |  |  |  |  |  |  |  |  |  |  |
|  | 6 | **Cable trench Excavation buried** |  | 2026-07-24 | 2026-09-14 |  |  |  |  |  |  |  |  |  |  |  |  |  |
|  | 8 | **C03-ETD-624/684/640/557/521/522/523/629/535/154** |  | 2026-07-24 | 2026-08-21 |  |  |  |  |  |  |  |  |  |  |  |  |  |
| 2.2-HCUEE09-1100 |  | Cable trench Excavation | 20d | 2026-07-24 | 2026-08-15 | 2.2-HCUEE09-1060 | -12d | 0d | LABOUR [800 h]; Construction Material [200] | UDF_G3 | 0 | EE | Non | HCU | EIT2.2 | C03c | EIT02.2 |  |
| 2.2-HCUEE09-1110 |  | Sand Filling Compaction | 5d | 2026-08-17 | 2026-08-21 | 2.2-HCUEE09-1100 | 27d | 15d | LABOUR [201.33 h]; Construction Material [50] | UDF_G3 | 0 | EE | Non | HCU | EIT2.2 | C03c | EIT02.2 |  |
|  | 36 | **C03-ETD-200/441/527/528/208/528/210/211/241/531/533** |  | 2026-08-17 | 2026-09-14 |  |  |  |  |  |  |  |  |  |  |  |  |  |
| 2.2-HCUEE09-1120 |  | Cable trench Excavation | 20d | 2026-08-17 | 2026-09-08 | 2.2-HCUEE09-1100 | -10d | 0d | LABOUR [800 h]; Construction Material [200] | UDF_G3 | 0 | EE | Non | HCU | EIT2.2 | C03c | EIT02.2 |  |
| 2.2-HCUEE09-1130 |  | Sand Filling Compaction | 5d | 2026-09-09 | 2026-09-14 | 2.2-HCUEE09-1120, 2.2-HCUEE09-1110 | 12d | 4d | LABOUR [201.33 h]; Construction Material [50] | UDF_G3 | 0 | EE | Non | HCU | EIT2.2 | C03c | EIT02.2 |  |
|  | 8 | **Cable Laying Direct buried** |  | 2026-08-17 | 2026-11-12 |  |  |  |  |  |  |  |  |  |  |  |  |  |
|  | 8 | **C03-ETD-624/684/640/557/521/522/523/629/535/154** |  | 2026-08-17 | 2026-10-22 |  |  |  |  |  |  |  |  |  |  |  |  |  |
| 2.2-HCUEE01-3425 |  | Sand Filling First layer | 4d | 2026-08-17 | 2026-08-20 | 2.2-HCUEE09-1100 | -7d | 0d | LABOUR [500 h]; Cable Pull; Construction Material [40] | UDF_G3 | 0 | EE | PRIC | HCU | EIT2.2 |  |  |  |
| 2.2-HCUEE01-3430 |  | Cable Laying | 15d | 2026-08-21 | 2026-09-07 | 2.2-HCUEE01-3425 | -7d | 0d | LABOUR [4000 h]; Cable Pull [22250 h]; Construction Material [150] | UDF_G3 | 0 | EE | PRIC | HCU | EIT2.2 | C03c | EIT02.2 | PUL |
| 2.2-HCUEE01-3440 |  | Megger & Continuity test | 5d | 2026-09-08 | 2026-09-12 | 2.2-HCUEE01-3430 | 8d | 0d | LABOUR [300 h]; Cable Pull; Construction Material [50] | UDF_G3 | 0 | EE | PRIC | HCU | EIT2.2 | C03c | EIT02.2 |  |
| 2.2-HCUEE01-3450 |  | punch Clear | 5d | 2026-09-14 | 2026-09-18 | 2.2-HCUEE01-3440 | 8d | 0d | LABOUR [200 h]; Cable Pull; Construction Material [50] | UDF_G3 | 0 | EE | PRIC | HCU | EIT2.2 | C03c | EIT02.2 |  |
| 2.2-HCUEE01-3460 |  | Sand Filling Compaction | 4d | 2026-09-19 | 2026-09-23 | 2.2-HCUEE01-3450, 2.2-HCUEE09-1130 | 8d | 0d | LABOUR [500 h]; Cable Pull; Construction Material [40] | UDF_G3 | 0 | EE | PRIC | HCU | EIT2.2 |  |  |  |
| 2.2-HCUEE01-3470 |  | Complete QA/QC document | 10d | 2026-09-24 | 2026-10-05 | 2.2-HCUEE01-3460 | 8d | 0d | LABOUR [500 h]; Cable Pull; Construction Material [100] | UDF_G3 | 0 | EE | PRIC | HCU | EIT2.2 | C03c | EIT02.2 |  |
| 2.2-HCUEE01-3480 |  | Back Filling | 15d | 2026-10-06 | 2026-10-22 | 2.2-HCUEE01-3470 | 8d | 18d | LABOUR [786.99 h]; Cable Pull; Construction Material [150] | UDF_G3 | 0 | EE | PRIC | HCU | EIT2.2 | C03c | EIT02.2 |  |
|  | 36 | **C03-ETD-200/441/527/528/208/528/210/211/241/531/533** |  | 2026-09-09 | 2026-11-12 |  |  |  |  |  |  |  |  |  |  |  |  |  |
| 2.2-HCUEE01-3485 |  | Sand Filling First layer | 4d | 2026-09-09 | 2026-09-12 | 2.2-HCUEE09-1120 | -10d | 0d | LABOUR [500 h]; Cable Pull; Construction Material [40] | UDF_G3 | 0 | EE | PRIC | HCU | EIT2.2 |  |  |  |
| 2.2-HCUEE01-3490 |  | Cable Laying | 15d | 2026-09-14 | 2026-09-30 | 2.2-HCUEE01-3485 | -10d | 0d | LABOUR [4000 h]; Cable Pull [22250 h]; Construction Material [150] | UDF_G3 | 0 | EE | PRIC | HCU | EIT2.2 | C03c | EIT02.2 | PUL |
| 2.2-HCUEE01-3500 |  | Megger & Continuity test | 5d | 2026-10-01 | 2026-10-06 | 2.2-HCUEE01-3490 | -10d | 0d | LABOUR [300 h]; Cable Pull; Construction Material [50] | UDF_G3 | 0 | EE | PRIC | HCU | EIT2.2 | C03c | EIT02.2 |  |
| 2.2-HCUEE01-3510 |  | punch Clear | 5d | 2026-10-07 | 2026-10-12 | 2.2-HCUEE01-3500 | -10d | 0d | LABOUR [200 h]; Cable Pull; Construction Material [50] | UDF_G3 | 0 | EE | PRIC | HCU | EIT2.2 | C03c | EIT02.2 |  |
| 2.2-HCUEE01-3520 |  | Sand Filling Compaction | 4d | 2026-10-13 | 2026-10-16 | 2.2-HCUEE01-3510 | -10d | 0d | LABOUR [500 h]; Cable Pull; Construction Material [40] | UDF_G3 | 0 | EE | PRIC | HCU | EIT2.2 |  |  |  |
| 2.2-HCUEE01-3530 |  | Complete QA/QC document | 8d | 2026-10-17 | 2026-10-26 | 2.2-HCUEE01-3520 | -10d | 0d | LABOUR [500 h]; Cable Pull; Construction Material [80] | UDF_G3 | 0 | EE | PRIC | HCU | EIT2.2 | C03c | EIT02.2 |  |
| 2.2-HCUEE01-3540 |  | Back Filling | 15d | 2026-10-27 | 2026-11-12 | 2.2-HCUEE01-3530, 2.2-HCUEE01-3480 FF | -10d | 1d | LABOUR [786.99 h]; Cable Pull; Construction Material [150] | UDF_G3 | 0 | EE | PRIC | HCU | EIT2.2 | C03c | EIT02.2 |  |

| ID | WBS | Activity | Duration | Start | Finish | Predecessors | Total float | Free float | Resources | On Schedule Indicator | %Completed | Disciplines | EIT2 Main Activity | Areas | Phases | Cable Pull & Laying | EIT WBS | EIT PKG | Main Activity | WBS | Types |
| --- | --- | --- | --- | --- | --- | --- | --- | --- | --- | --- | --- | --- | --- | --- | --- | --- | --- | --- | --- | --- | --- |
|  | 13 | **Cable Laying Concrete Trench** |  | 2026-08-21 | 2026-11-09 |  |  |  |  |  |  |  |  |  |  |  |  |  |  |  |  |
|  | 1 | **C03-ETC-154/137/199/132/130/404/103/131/167/127/196/197** |  | 2026-08-21 | 2026-11-09 |  |  |  |  |  |  |  |  |  |  |  |  |  |  |  |  |
| 2.2-HCUEE01-3310 |  | Cable Laying | 30d | 2026-08-21 | 2026-09-24 | 2.2-HCUEE01-3430 SS | -7d | 0d | LABOUR [4500 h]; Cable Pull [22250 h]; Construction Material [300] | UDF_G3 | 0 | EE | PRIC | HCU | EIT2.2 | PUL | C03c | EIT02.2 |  |  |  |
| 2.2-HCUEE01-3320 |  | Megger & Continuity test | 5d | 2026-09-25 | 2026-09-30 | 2.2-HCUEE01-3310 | -7d | 0d | LABOUR [300 h]; Cable Pull; Construction Material [50] | UDF_G3 | 0 | EE | PRIC | HCU | EIT2.2 |  | C03c | EIT02.2 |  |  |  |
| 2.2-HCUEE01-3330 |  | punch Clear | 5d | 2026-10-01 | 2026-10-06 | 2.2-HCUEE01-3320 | -7d | 0d | LABOUR [200 h]; Cable Pull; Construction Material [50] | UDF_G3 | 0 | EE | PRIC | HCU | EIT2.2 |  | C03c | EIT02.2 |  |  |  |
| 2.2-HCUEE01-3340 |  | Sand Filling Compaction | 4d | 2026-10-07 | 2026-10-10 | 2.2-HCUEE01-3330 | -7d | 0d | LABOUR [500 h]; Cable Pull; Construction Material [40] | UDF_G3 | 0 | EE | PRIC | HCU | EIT2.2 |  |  |  |  |  |  |
| 2.2-HCUEE01-3350 |  | Complete QA/QC document | 5d | 2026-10-12 | 2026-10-16 | 2.2-HCUEE01-3340 | -7d | 0d | LABOUR [500 h]; Cable Pull; Construction Material [50] | UDF_G3 | 0 | EE | PRIC | HCU | EIT2.2 |  | C03c | EIT02.2 |  |  |  |
| 2.2-HCUEE01-3360 |  | Back Filling | 20d | 2026-10-17 | 2026-11-09 | 2.2-HCUEE01-3350 | -7d | 4d | LABOUR [786.99 h]; Cable Pull; Construction Material [200] | UDF_G3 | 0 | EE | PRIC | HCU | EIT2.2 |  | C03c | EIT02.2 |  |  |  |
|  | 2 | **C03-ETC-134/181/169/421/170/422/135/136/171/423/547/126** |  | 2026-08-21 | 2026-11-03 |  |  |  |  |  |  |  |  |  |  |  |  |  |  |  |  |
| 2.2-HCUEE01-3370 |  | Cable Laying | 30d | 2026-08-21 | 2026-09-24 | 2.2-HCUEE01-3310 SS | -2d | 0d | LABOUR [4500 h]; Cable Pull [22250 h]; Construction Material [300] | UDF_G3 | 0 | EE | PRIC | HCU | EIT2.2 | PUL | C03c | EIT02.2 |  |  |  |
| 2.2-HCUEE01-3380 |  | Megger & Continuity test | 5d | 2026-09-25 | 2026-09-30 | 2.2-HCUEE01-3370 | -2d | 0d | LABOUR [300 h]; Cable Pull; Construction Material [50] | UDF_G3 | 0 | EE | PRIC | HCU | EIT2.2 |  | C03c | EIT02.2 |  |  |  |
| 2.2-HCUEE01-3390 |  | punch Clear | 5d | 2026-10-01 | 2026-10-06 | 2.2-HCUEE01-3380 | -2d | 0d | LABOUR [200 h]; Cable Pull; Construction Material [50] | UDF_G3 | 0 | EE | PRIC | HCU | EIT2.2 |  | C03c | EIT02.2 |  |  |  |
| 2.2-HCUEE01-3400 |  | Sand Filling Compaction | 4d | 2026-10-07 | 2026-10-10 | 2.2-HCUEE01-3390 | -2d | 0d | LABOUR [500 h]; Cable Pull; Construction Material [40] | UDF_G3 | 0 | EE | PRIC | HCU | EIT2.2 |  |  |  |  |  |  |
| 2.2-HCUEE01-3410 |  | Complete QA/QC document | 5d | 2026-10-12 | 2026-10-16 | 2.2-HCUEE01-3400 | -2d | 0d | LABOUR [500 h]; Cable Pull; Construction Material [50] | UDF_G3 | 0 | EE | PRIC | HCU | EIT2.2 |  | C03c | EIT02.2 |  |  |  |
| 2.2-HCUEE01-3420 |  | Back Filling | 15d | 2026-10-17 | 2026-11-03 | 2.2-HCUEE01-3410 | -2d | 0d | LABOUR [786.99 h]; Cable Pull; Construction Material [150] | UDF_G3 | 0 | EE | PRIC | HCU | EIT2.2 |  | C03c | EIT02.2 |  |  |  |
|  | 1 | **Electrical Cable Tray/Ladder Installation** |  | 2026-07-24 | 2026-10-30 |  |  |  |  |  |  |  |  |  |  |  |  |  |  |  |  |
| 2.2-HCUEE03-1010 |  | Install support / bracket | 60d | 2026-07-24 | 2026-10-01 | 2.2-HCUEE09-1100 SS | -12d | 0d | LABOUR [1000 h]; Construction Material [600] | UDF_G3 | 0 | EE | Non | HCU | EIT2.2 |  | C03a | EIT02.2 | 1 | C03a | TY1 |
| 2.2-HCUEE03-1020 |  | Install Ladder / Tray | 60d | 2026-07-24 | 2026-10-01 | 2.2-HCUEE03-1010 SS | -12d | 0d | LABOUR [2000 h]; Construction Material [600] | UDF_G3 | 0 | EE | Non | HCU | EIT2.2 |  | C03a | EIT02.2 | 1 | C03a | TY1 |
| 2.2-HCUEE03-1030 |  | Install Conduits | 60d | 2026-07-24 | 2026-10-01 | 2.2-HCUEE03-1020 SS | 23d | 0d | LABOUR [500 h]; Construction Material [600] | UDF_G3 | 0 | EE | Non | HCU | EIT2.2 |  | C03a | EIT02.2 | 1 | C03a | TY1 |
| 2.2-HCUEE03-1040 |  | Clear punch | 10d | 2026-10-02 | 2026-10-13 | 2.2-HCUEE03-1030, 2.2-HCUEE03-1020 | 23d | 0d | LABOUR [500 h]; Construction Material [100] | UDF_G3 | 0 | EE | Non | HCU | EIT2.2 |  | C03a | EIT02.2 | 1 | C03a | TY1 |
| 2.2-HCUEE03-1050 |  | Complete QA/QC document | 15d | 2026-10-14 | 2026-10-30 | 2.2-HCUEE03-1040 | 23d | 35d | LABOUR [383.3 h]; Construction Material [150] | UDF_G3 | 0 | EE | Non | HCU | EIT2.2 |  | C03a | EIT02.2 | 1 | C03a | TY1 |
|  | 9 | **AG Cable Pull LV Cable** |  | 2026-10-02 | 2027-01-08 |  |  |  |  |  |  |  |  |  |  |  |  |  |  |  |  |
| 2.2-HCUEE01-3220 |  | Above Ground Pull Cable | 60d | 2026-10-02 | 2026-12-10 | 2.2-HCUEE03-1020, 2.2-HCUEE01-3360 FF, 2.2-HCUEE03-1050 FF | -12d | 0d | LABOUR [7000 h]; Cable Pull; Construction Material [600] | UDF_G3 | 0 | EE | SECE | HCU | EIT2.2 | PUL | C03a | EIT02.2 | 1 | C03a | TY1 |
| 2.2-HCUEE01-3240 |  | Megger & Continuity test | 10d | 2026-12-11 | 2026-12-22 | 2.2-HCUEE01-3220 | -12d | 0d | LABOUR [1049.3 h]; Cable Pull; Construction Material [100] | UDF_G3 | 0 | EE | SECE | HCU | EIT2.2 |  | C03a | EIT02.2 | 1 | C03a | TY1 |
| 2.2-HCUEE01-3230 |  | Complete QA/QC document | 15d | 2026-12-23 | 2027-01-08 | 2.2-HCUEE01-3240 | -12d | 0d | LABOUR [1000 h]; Cable Pull; Construction Material [150] | UDF_G3 | 0 | EE | SECE | HCU | EIT2.2 |  | C03a | EIT02.2 | 1 | C03a | TY1 |

| ID | WBS | Activity | Duration | Start | Finish | Predecessors | Total float | Free float | Resources | On Schedule Indicator | %Completed | Disciplines | Main Activity | WBS | Types | EIT2 Main Activity | Areas | Phases | Cable Pull & Laying | EIT WBS | EIT PKG |
| --- | --- | --- | --- | --- | --- | --- | --- | --- | --- | --- | --- | --- | --- | --- | --- | --- | --- | --- | --- | --- | --- |
|  | 10 | **AG Cable Pull Control Cable** |  | 2026-10-02 | 2026-12-02 |  |  |  |  |  |  |  |  |  |  |  |  |  |  |  |  |
| 2.2-HCUEE01-3250 |  | Above Ground Pull Cable | 28d | 2026-10-02 | 2026-11-03 | 2.2-HCUEE01-3220 SS | 7d | 0d | LABOUR [7000 h]; Cable Pull; Construction Material [600] | UDF_G3 | 0 | EE | 1 | C03a | TY1 | SECE | HCU | EIT2.2 | PUL | C03a | EIT02.2 |
| 2.2-HCUEE01-3270 |  | Megger & Continuity test | 10d | 2026-11-04 | 2026-11-14 | 2.2-HCUEE01-3250 | 20d | 0d | LABOUR [1049.3 h]; Cable Pull; Construction Material [100] | UDF_G3 | 0 | EE | 1 | C03a | TY1 | SECE | HCU | EIT2.2 |  | C03a | EIT02.2 |
| 2.2-HCUEE01-3260 |  | Complete QA/QC document | 15d | 2026-11-16 | 2026-12-02 | 2.2-HCUEE01-3270 | 20d | 0d | LABOUR [1000 h]; Cable Pull; Construction Material [150] | UDF_G3 | 0 | EE | 1 | C03a | TY1 | SECE | HCU | EIT2.2 |  | C03a | EIT02.2 |
|  | 11 | **Lighting Cable** |  | 2026-10-02 | 2026-12-31 |  |  |  |  |  |  |  |  |  |  |  |  |  |  |  |  |
| 2.2-HCUEE01-3280 |  | Above Ground Pull Cable | 28d | 2026-10-02 | 2026-11-03 | 2.2-HCUEE01-3250 SS | 7d | 0d | LABOUR [7000 h]; Construction Material [600] | UDF_G3 | 0 | EE | 1 | C03a | TY1 | Non | HCU | EIT2.2 |  | C03a | EIT02.2 |
| 2.2-HCUEE01-3300 |  | Megger & Continuity test | 30d | 2026-11-04 | 2026-12-08 | 2.2-HCUEE01-3280 | 7d | 0d | LABOUR [1049.3 h]; Construction Material [300] | UDF_G3 | 0 | EE | 1 | C03a | TY1 | Non | HCU | EIT2.2 |  | C03a | EIT02.2 |
| 2.2-HCUEE01-3290 |  | Complete QA/QC document | 20d | 2026-12-09 | 2026-12-31 | 2.2-HCUEE01-3300 | 7d | 0d | LABOUR [1000 h]; Construction Material [200] | UDF_G3 | 0 | EE | 1 | C03a | TY1 | Non | HCU | EIT2.2 |  | C03a | EIT02.2 |
|  | 4 | **Electrical Cable Termination / Glanding** |  | 2026-11-04 | 2027-03-13 |  |  |  |  |  |  |  |  |  |  |  |  |  |  |  |  |
|  | 1 | **Termination MV Cable** |  | 2026-11-04 | 2026-12-25 |  |  |  |  |  |  |  |  |  |  |  |  |  |  |  |  |
| 2.2-HCUEE02-2500 |  | Cable Termination/Glanding | 30d | 2026-11-04 | 2026-12-08 | 2.2-HCUEE01-3420 | 6.9d | 0d | LABOUR [3000 h]; Construction Material [300] | UDF_G3 | 0 | EE | 1 | C03a | TY1 | Non | HCU | EIT2.2 |  | C03a | EIT02.2 |
| 2.2-HCUEE02-2510 |  | Clear punch | 5d | 2026-12-09 | 2026-12-14 | 2.2-HCUEE02-2500 | 6.9d | 0d | LABOUR [500 h]; Construction Material [50] | UDF_G3 | 0 | EE | 1 | C03a | TY1 | Non | HCU | EIT2.2 |  | C03a | EIT02.2 |
| 2.2-HCUEE02-2520 |  | Complete QA/QC document | 10d | 2026-12-15 | 2026-12-25 | 2.2-HCUEE02-2510 | 6.9d | 0d | LABOUR [925.66 h]; Construction Material [100] | UDF_G3 | 0 | EE | 1 | C03a | TY1 | Non | HCU | EIT2.2 |  | C03a | EIT02.2 |
|  | 2 | **Termination LV Cable** |  | 2027-01-09 | 2027-03-13 |  |  |  |  |  |  |  |  |  |  |  |  |  |  |  |  |
| 2.2-HCUEE02-2530 |  | Cable Termination/Glanding | 30d | 2027-01-09 | 2027-02-12 | 2.2-HCUEE01-3230 | -12d | 0d | LABOUR [3000 h]; Construction Material [300] | UDF_G3 | 0 | EE | 1 | C03a | TY1 | Non | HCU | EIT2.2 |  | C03a | EIT02.2 |
| 2.2-HCUEE02-2540 |  | Clear punch | 10d | 2027-02-13 | 2027-02-24 | 2.2-HCUEE02-2530 | -12d | 0d | LABOUR [500 h]; Construction Material [100] | UDF_G3 | 0 | EE | 1 | C03a | TY1 | Non | HCU | EIT2.2 |  | C03a | EIT02.2 |
| 2.2-HCUEE02-2550 |  | Complete QA/QC document | 15d | 2027-02-25 | 2027-03-13 | 2.2-HCUEE02-2540 | -12d | 0d | LABOUR [925.66 h]; Construction Material [150] | UDF_G3 | 0 | EE | 1 | C03a | TY1 | Non | HCU | EIT2.2 |  | C03a | EIT02.2 |
|  | 3 | **Termination Control Cable** |  | 2026-12-03 | 2027-03-13 |  |  |  |  |  |  |  |  |  |  |  |  |  |  |  |  |
| 2.2-HCUEE02-2560 |  | Cable Termination/Glanding | 30d | 2026-12-03 | 2027-01-06 | 2.2-HCUEE01-3260 | 20d | 0d | LABOUR [3000 h]; Construction Material [300] | UDF_G3 | 0 | EE | 1 | C03a | TY1 | Non | HCU | EIT2.2 |  | C03a | EIT02.2 |
| 2.2-HCUEE02-2570 |  | Clear punch | 10d | 2027-01-07 | 2027-01-18 | 2.2-HCUEE02-2560 | 20d | 32d | LABOUR [500 h]; Construction Material [100] | UDF_G3 | 0 | EE | 1 | C03a | TY1 | Non | HCU | EIT2.2 |  | C03a | EIT02.2 |
| 2.2-HCUEE02-2580 |  | Complete QA/QC document | 15d | 2027-02-25 | 2027-03-13 | 2.2-HCUEE02-2570, 2.2-HCUEE02-2550 FF | -12d | 0d | LABOUR [925.66 h]; Construction Material [150] | UDF_G3 | 0 | EE | 1 | C03a | TY1 | Non | HCU | EIT2.2 |  | C03a | EIT02.2 |
|  | 4 | **Termination Lighting Cable** |  | 2027-01-01 | 2027-03-13 |  |  |  |  |  |  |  |  |  |  |  |  |  |  |  |  |
| 2.2-HCUEE02-2590 |  | Cable Termination/Glanding | 28d | 2027-01-01 | 2027-02-02 | 2.2-HCUEE01-3290 | 7d | 0d | LABOUR [3000 h]; Construction Material [280] | UDF_G3 | 0 | EE | 1 | C03a | TY1 | Non | HCU | EIT2.2 |  | C03a | EIT02.2 |
| 2.2-HCUEE02-2600 |  | Clear punch | 5d | 2027-02-03 | 2027-02-08 | 2.2-HCUEE02-2590 | 7d | 19d | LABOUR [500 h]; Construction Material [50] | UDF_G3 | 0 | EE | 1 | C03a | TY1 | Non | HCU | EIT2.2 |  | C03a | EIT02.2 |
| 2.2-HCUEE02-2610 |  | Complete QA/QC document | 10d | 2027-03-03 | 2027-03-13 | 2.2-HCUEE02-2600, 2.2-HCUEE02-2580 FF | -12d | 18.2d | LABOUR [925.66 h]; Construction Material [100] | UDF_G3 | 0 | EE | 1 | C03a | TY1 | Non | HCU | EIT2.2 |  | C03a | EIT02.2 |

| ID | WBS | Activity | Duration | Start | Finish | Predecessors | Complete | Remaining | Total float | Free float | Constraint | Calendar | Resources | On Schedule Indicator | %Completed | Disciplines | Main Activity | WBS | Types | EIT2 Main Activity | Areas | Phases | EIT WBS | EIT PKG | Motor Loop | Cable Pull & Laying |
| --- | --- | --- | --- | --- | --- | --- | --- | --- | --- | --- | --- | --- | --- | --- | --- | --- | --- | --- | --- | --- | --- | --- | --- | --- | --- | --- |
|  | 7 | **Electrical Earthing / Lightning Installation** |  | 2026-07-24 | 2026-10-28 |  |  |  |  |  |  |  |  |  |  |  |  |  |  |  |  |  |  |  |  |  |
| 2.1-HCUEE05-1130 |  | Install Equipment Earthing / Inspection PIT / Install earthing pull and Connecttion | 58d | 2026-07-24 | 2026-09-29 | 2.2-HCUEE03-1010 SS |  |  | 56.9d | 0d |  |  | LABOUR [18000 h]; Construction Material [900] | UDF_G3 | 0 | EE | 1 | C03a | TY1 | Non | HCU | EIT2.2 | C03a | EIT02.2 |  |  |
| 2.1-HCUEE05-1140 |  | Punch Clear | 10d | 2026-09-30 | 2026-10-10 | 2.1-HCUEE05-1130 |  |  | 56.9d | 0d |  |  | LABOUR [1000 h]; Construction Material [100] | UDF_G3 | 0 | EE | 1 | C03a | TY1 | Non | HCU | EIT2.2 | C03a | EIT02.2 |  |  |
| 2.1-HCUEE05-1150 |  | Complete QA/QC document | 15d | 2026-10-12 | 2026-10-28 | 2.1-HCUEE05-1140 |  |  | 56.9d | 42d |  |  | LABOUR [2638 h]; Construction Material [150] | UDF_G3 | 0 | EE | 1 | C03a | TY1 | Non | HCU | EIT2.2 | C03a | EIT02.2 |  |  |
|  | 5 | **Lighting Fixture Installation** |  | 2026-10-02 | 2026-12-16 |  |  |  |  |  |  |  |  |  |  |  |  |  |  |  |  |  |  |  |  |  |
| 2.2-HCUEE05-1670 |  | Install support / bracket / Pole | 40d | 2026-10-02 | 2026-11-17 | 2.2-HCUEE03-1010 |  |  | 14.9d | 0d |  |  | LABOUR [1000 h]; Construction Material [400] | UDF_G3 | 0 | EE | 1 | C03a | TY1 | Non | HCU | EIT2.2 | C03a | EIT02.2 |  |  |
| 2.2-HCUEE05-1680 |  | lighting fixture | 40d | 2026-10-02 | 2026-11-17 | 2.2-HCUEE05-1670 SS, 2.2-HCUEE05-1670 FF |  |  | 14.9d | 0d |  |  | LABOUR [2000 h]; Construction Material [400] | UDF_G3 | 0 | EE | 1 | C03a | TY1 | Non | HCU | EIT2.2 | C03a | EIT02.2 |  |  |
| 2.2-HCUEE05-1690 |  | Clear punch | 10d | 2026-11-18 | 2026-11-28 | 2.2-HCUEE05-1680 |  |  | 14.9d | 0d |  |  | LABOUR [300 h]; Construction Material [100] | UDF_G3 | 0 | EE | 1 | C03a | TY1 | Non | HCU | EIT2.2 | C03a | EIT02.2 |  |  |
| 2.2-HCUEE05-1700 |  | Complete QA/QC document | 15d | 2026-11-30 | 2026-12-16 | 2.2-HCUEE05-1690, 2.1-HCUEE05-1150 FF |  |  | 14.9d | 0d |  |  | LABOUR [342.08 h]; Construction Material [150] | UDF_G3 | 0 | EE | 1 | C03a | TY1 | Non | HCU | EIT2.2 | C03a | EIT02.2 |  |  |
|  | 12 | **Small Power Equipment Installation** |  | 2026-10-02 | 2026-12-16 |  |  |  |  |  |  |  |  |  |  |  |  |  |  |  |  |  |  |  |  |  |
| 2.2-HCUEE05-1710 |  | Install support / bracket | 40d | 2026-10-02 | 2026-11-17 | 2.2-HCUEE05-1670 SS |  |  | 14.9d | 0d |  |  | LABOUR [1000 h]; Construction Material [400] | UDF_G3 | 0 | EE | 1 | C03a | TY1 | Non | HCU | EIT2.2 | C03a | EIT02.2 |  |  |
| 2.2-HCUEE05-1720 |  | Install Distribution panel, convenience outlet | 40d | 2026-10-02 | 2026-11-17 | 2.2-HCUEE05-1710 SS, 2.2-HCUEE05-1710 FF |  |  | 14.9d | 0d |  |  | LABOUR [2000 h]; Construction Material [400] | UDF_G3 | 0 | EE | 1 | C03a | TY1 | Non | HCU | EIT2.2 | C03a | EIT02.2 |  |  |
| 2.2-HCUEE05-1730 |  | Clear punch | 10d | 2026-11-18 | 2026-11-28 | 2.2-HCUEE05-1720 |  |  | 14.9d | 0d |  |  | LABOUR [300 h]; Construction Material [100] | UDF_G3 | 0 | EE | 1 | C03a | TY1 | Non | HCU | EIT2.2 | C03a | EIT02.2 |  |  |
| 2.2-HCUEE05-1740 |  | Complete QA/QC document | 15d | 2026-11-30 | 2026-12-16 | 2.2-HCUEE05-1730, 2.2-HCUEE05-1700 FF |  |  | 14.9d | 8d |  |  | LABOUR [342.08 h]; Construction Material [150] | UDF_G3 | 0 | EE | 1 | C03a | TY1 | Non | HCU | EIT2.2 | C03a | EIT02.2 |  |  |
|  | 2 | **Motor Solo Run** |  | 2026-12-26 | 2027-02-19 |  |  |  |  |  |  |  |  |  |  |  |  |  |  |  |  |  |  |  |  |  |
| 2.1-HCUEE-1150 |  | Motor solo run | 25d | 2026-12-26 | 2027-01-23 | 2.2-HCUEE02-2520, 2.2-HCUEE05-1740 |  |  | 6.9d | 0d |  |  | LABOUR; Construction Material [250] | UDF_G3 | 0 | EE |  |  |  | Non | HCU | EIT2.2 | C03a | EIT02.2 | MO |  |
| 2.1-HCUEE-1160 |  | Punch Clear | 10d | 2027-01-24 | 2027-02-02 | 2.1-HCUEE-1150 |  |  | 9.62d | 0d |  | 7 - Day Workweek (No Holidays) | LABOUR; Construction Material [80] | UDF_G3 | 0 | EE |  |  |  | Non | HCU | EIT2.2 | C03a | EIT02.2 | MO |  |
| 2.1-HCUEE-1170 |  | Complete QA/QC document | 15d | 2027-02-02 | 2027-02-19 | 2.1-HCUEE-1160 |  |  | 7.7d | 37.9d |  |  | LABOUR; Construction Material [150] | UDF_G3 | 0 | EE |  |  |  | Non | HCU | EIT2.2 | C03a | EIT02.2 | MO |  |
|  | 3 | **Instrument Works** |  | 2026-04-20 | 2027-02-27 |  |  |  |  |  |  |  |  |  |  |  |  |  |  |  |  |  |  |  |  |  |
|  | 10 | **Cable Laying concrete Trench** |  | 2026-04-20 | 2026-10-31 |  |  |  |  |  |  |  |  |  |  |  |  |  |  |  |  |  |  |  |  |  |
|  | 3 | **C03-JTR-008/010/011/012/015/017/018/019/024/014/026/235/032/033/039** |  | 2026-04-20 | 2026-08-25 |  |  |  |  |  |  |  |  |  |  |  |  |  |  |  |  |  |  |  |  |  |
| 2.2-HCUIN01- 4150 |  | Cable Laying | 60d | 2026-04-20 A | 2026-06-27 |  | 10% | 38d | 0d |  | start on or after 2026-04-20 |  | LABOUR [12000 h]; Cable Pull [71404 h]; Construction Material [600] | UDF_G3 | 0 | IN |  |  |  | PRICI | HCU | EIT2.2 | C03c | EIT02.2 |  | PUL |
| 2.2-HCUIN01- 4160 |  | Megger & Continuity test | 5d | 2026-06-29 | 2026-07-03 | 2.2-HCUIN01- 4150 |  |  | 10d | 0d |  |  | LABOUR [500 h]; Cable Pull; Construction Material [50] | UDF_G3 | 0 | IN |  |  |  | PRICI | HCU | EIT2.2 | C03c | EIT02.2 |  |  |
| 2.2-HCUIN01- 4170 |  | punch Clear | 5d | 2026-07-04 | 2026-07-09 | 2.2-HCUIN01- 4160 |  |  | 10d | 0d |  |  | LABOUR [500 h]; Cable Pull; Construction Material [50] | UDF_G3 | 0 | IN |  |  |  | PRICI | HCU | EIT2.2 | C03c | EIT02.2 |  |  |
| 2.2-HCUIN01- 4175 |  | Sand Filling Compaction | 5d | 2026-07-10 | 2026-07-15 | 2.2-HCUIN01- 4170 |  |  | 10d | 0d |  |  | LABOUR [500 h]; Cable Pull; Construction Material [50] | UDF_G3 | 0 | IN |  |  |  | PRICI | HCU | EIT2.2 |  |  |  |  |
| 2.2-HCUIN01- 4180 |  | Complete QA/QC document | 10d | 2026-07-16 | 2026-07-27 | 2.2-HCUIN01- 4175 |  |  | 10d | 0d |  |  | LABOUR [500 h]; Cable Pull; Construction Material [100] | UDF_G3 | 0 | IN |  |  |  | PRICI | HCU | EIT2.2 | C03c | EIT02.2 |  |  |
| 2.2-HCUIN01- 4190 |  | Back Filling | 25d | 2026-07-28 | 2026-08-25 | 2.2-HCUIN01- 4180 |  |  | 10d |  |  |  | LABOUR [3250.37 h]; Cable Pull; Construction Material [250] | UDF_G3 | 0 | IN |  |  |  | PRICI | HCU | EIT2.2 | C03c | EIT02.2 |  |  |

| ID | WBS | Activity | Duration | Start | Finish | Predecessors | Complete | Remaining | Total float | Free float | Resources | On Schedule Indicator | %Completed | Disciplines | EIT2 Main Activity | Areas | Phases | Cable Pull & Laying | EIT WBS | EIT PKG | Main Activity | WBS | Types |
| --- | --- | --- | --- | --- | --- | --- | --- | --- | --- | --- | --- | --- | --- | --- | --- | --- | --- | --- | --- | --- | --- | --- | --- |
|  | 1 | **C03-JTR-023/037/038/036/022/029/035/028/021/034/105/115** |  | 2026-06-29 | 2026-10-31 |  |  |  |  |  |  |  |  |  |  |  |  |  |  |  |  |  |  |
| 2.2-HCUIN01- 4200 |  | Cable Laying | 60d | 2026-06-29 | 2026-09-05 | 2.2-HCUIN01- 4150, 2.2-HCUIN01- 4190 FF |  |  | 0d |  | LABOUR [12000 h]; Cable Pull [71404 h]; Construction Material [600] | UDF_G3 | 0 | IN | PRICI | HCU | EIT2.2 | PUL | C03c | EIT02.2 |  |  |  |
| 2.2-HCUIN01- 4210 |  | Megger & Continuity test | 5d | 2026-09-07 | 2026-09-11 | 2.2-HCUIN01- 4200 |  |  | 0d |  | LABOUR [500 h]; Cable Pull; Construction Material [50] | UDF_G3 | 0 | IN | PRICI | HCU | EIT2.2 |  | C03c | EIT02.2 |  |  |  |
| 2.2-HCUIN01- 4220 |  | punch Clear | 5d | 2026-09-12 | 2026-09-17 | 2.2-HCUIN01- 4210 |  |  | 0d |  | LABOUR [500 h]; Cable Pull; Construction Material [50] | UDF_G3 | 0 | IN | PRICI | HCU | EIT2.2 |  | C03c | EIT02.2 |  |  |  |
| 2.2-HCUIN01- 4225 |  | Sand Filling Compaction | 5d | 2026-09-18 | 2026-09-23 | 2.2-HCUIN01- 4220 |  |  | 0d |  | LABOUR [500 h]; Cable Pull; Construction Material [50] | UDF_G3 | 0 | IN | PRICI | HCU | EIT2.2 |  |  |  |  |  |  |
| 2.2-HCUIN01- 4230 |  | Complete QA/QC document | 8d | 2026-09-24 | 2026-10-02 | 2.2-HCUIN01- 4225 |  |  | 0d |  | LABOUR [500 h]; Cable Pull; Construction Material [80] | UDF_G3 | 0 | IN | PRICI | HCU | EIT2.2 |  | C03c | EIT02.2 |  |  |  |
| 2.2-HCUIN01- 4240 |  | Back Filling | 25d | 2026-10-03 | 2026-10-31 | 2.2-HCUIN01- 4230 |  |  | 0d | 11d | LABOUR [3250.37 h]; Cable Pull; Construction Material [250] | UDF_G3 | 0 | IN | PRICI | HCU | EIT2.2 |  | C03c | EIT02.2 |  |  |  |
|  | 3 | **Instrument Cable Tray/Ladder Installation** |  | 2026-04-20 | 2026-07-27 |  |  |  |  |  |  |  |  |  |  |  |  |  |  |  |  |  |  |
| 2.2-HCUIN-1520 |  | Install support / bracket | 60d | 2026-04-20 A | 2026-06-27 | 2.2-HCUIN01- 4150 SS | 26% | 38d | 0d |  | LABOUR; Construction Material [600] | UDF_G3 | 0 | EE | Non | HCU | EIT2.2 |  | C03a | EIT02.2 | 1 | C03a | TY1 |
| 2.2-HCUIN-1530 |  | Install Ladder / Tray | 60d | 2026-04-20 A | 2026-06-27 | 2.2-HCUIN-1540 SS, 2.2-HCUIN-1520 FF | 26% | 38d | 0d |  | LABOUR [6500 h]; Construction Material [600] | UDF_G3 | 0 | EE | Non | HCU | EIT2.2 |  | C03a | EIT02.2 | 1 | C03a | TY1 |
| 2.2-HCUIN-1540 |  | Steel Conduits for Cable tray | 60d | 2026-04-20 A | 2026-06-27 | 2.2-HCUIN-1520 SS | 26% | 38d | 0d |  | LABOUR [1000 h]; Construction Material [600] | UDF_G3 | 0 | EE | Non | HCU | EIT2.2 |  | C03a | EIT02.2 | 1 | C03a | TY1 |
| 2.2-HCUIN-1550 |  | punch clear | 10d | 2026-06-29 | 2026-07-09 | 2.2-HCUIN-1530, 2.2-HCUIN-1540 |  |  | 0d |  | LABOUR [500 h]; Construction Material [100] | UDF_G3 | 0 | EE | Non | HCU | EIT2.2 |  | C03a | EIT02.2 | 1 | C03a | TY1 |
| 2.2-HCUIN-1560 |  | Complete QA/QC document | 15d | 2026-07-10 | 2026-07-27 | 2.2-HCUIN-1550 |  |  | 0d |  | LABOUR [1322.12 h]; Construction Material [150] | UDF_G3 | 0 | EE | Non | HCU | EIT2.2 |  | C03a | EIT02.2 | 1 | C03a | TY1 |
|  | 8 | **AG Cable Pull Primary Cable** |  | 2026-07-28 | 2026-10-22 |  |  |  |  |  |  |  |  |  |  |  |  |  |  |  |  |  |  |
| 2.2-HCUIN01-1830 |  | Above Ground Pull Cable | 50d | 2026-07-28 | 2026-09-23 | 2.2-HCUIN-1560 |  |  | 0d |  | LABOUR [14000 h]; Cable Pull; Construction Material [500] | UDF_G3 | 0 | EE | SECI | HCU | EIT2.2 | PUL | C03a | EIT02.2 | 1 | C03a | TY1 |
| 2.2-HCUIN01-1840 |  | Megger & Continuity test | 10d | 2026-09-24 | 2026-10-05 | 2.2-HCUIN01-1830 |  |  | 0d |  | LABOUR [1000 h]; Cable Pull; Construction Material [100] | UDF_G3 | 0 | EE | SECI | HCU | EIT2.2 |  | C03a | EIT02.2 | 1 | C03a | TY1 |
| 2.2-HCUIN01-1850 |  | Complete QA/QC document | 15d | 2026-10-06 | 2026-10-22 | 2.2-HCUIN01-1840 |  |  | 0d |  | LABOUR [2250.37 h]; Cable Pull; Construction Material [150] | UDF_G3 | 0 | EE | SECI | HCU | EIT2.2 |  | C03a | EIT02.2 | 1 | C03a | TY1 |
|  | 9 | **AG Cable Pull Secondary Cable** |  | 2026-07-28 | 2026-10-22 |  |  |  |  |  |  |  |  |  |  |  |  |  |  |  |  |  |  |
| 2.2-HCUIN01-1860 |  | Above Ground Pull Cable | 50d | 2026-07-28 | 2026-09-23 | 2.2-HCUIN-1560 |  |  | 0d |  | LABOUR [14000 h]; Cable Pull; Construction Material [500] | UDF_G3 | 0 | EE | SECI | HCU | EIT2.2 | PUL | C03a | EIT02.2 | 1 | C03a | TY1 |
| 2.2-HCUIN01-1870 |  | Megger & Continuity test | 10d | 2026-09-24 | 2026-10-05 | 2.2-HCUIN01-1860 |  |  | 0d |  | LABOUR [1000 h]; Cable Pull; Construction Material [100] | UDF_G3 | 0 | EE | SECI | HCU | EIT2.2 |  | C03a | EIT02.2 | 1 | C03a | TY1 |
| 2.2-HCUIN01-1880 |  | Complete QA/QC document | 15d | 2026-10-06 | 2026-10-22 | 2.2-HCUIN01-1870, 2.2-HCUIN01-1850 FF |  |  | 0d |  | LABOUR [2250.37 h]; Cable Pull; Construction Material [150] | UDF_G3 | 0 | EE | SECI | HCU | EIT2.2 |  | C03a | EIT02.2 | 1 | C03a | TY1 |
|  | 2 | **Instrument Cable Termination / Glanding** |  | 2026-09-07 | 2026-12-19 |  |  |  |  |  |  |  |  |  |  |  |  |  |  |  |  |  |  |
|  | 1 | **UG Cable Termination Cable** |  | 2026-09-07 | 2026-11-03 |  |  |  |  |  |  |  |  |  |  |  |  |  |  |  |  |  |  |
| 2.2-HCUIN02-1930 |  | Cable Termination/Glanding | 25d | 2026-09-07 | 2026-10-05 | 2.2-HCUIN01- 4200 |  |  | 40d | 0d | LABOUR [5000 h]; Construction Material [250] | UDF_G3 | 0 | EE | Non | HCU | EIT2.2 |  | C03a | EIT02.2 | 1 | C03a | TY1 |
| 2.2-HCUIN02-1940 |  | punch clear | 10d | 2026-10-06 | 2026-10-16 | 2.2-HCUIN02-1930 |  |  | 40d | 0d | LABOUR [1000 h]; Construction Material [100] | UDF_G3 | 0 | EE | Non | HCU | EIT2.2 |  | C03a | EIT02.2 | 1 | C03a | TY1 |
| 2.2-HCUIN02-1950 |  | Complete QA/QC document | 15d | 2026-10-17 | 2026-11-03 | 2.2-HCUIN02-1940, 2.2-HCUIN01-1880 FF |  |  | 40d |  | LABOUR [1234.71 h]; Construction Material [150] | UDF_G3 | 0 | EE | Non | HCU | EIT2.2 |  | C03a | EIT02.2 | 1 | C03a | TY1 |

| ID | WBS | Activity | Duration | Start | Finish | Predecessors | Total float | Free float | Resources | On Schedule Indicator | %Completed | Disciplines | Main Activity | WBS | Types | EIT2 Main Activity | Areas | Phases | EIT WBS | EIT PKG |
| --- | --- | --- | --- | --- | --- | --- | --- | --- | --- | --- | --- | --- | --- | --- | --- | --- | --- | --- | --- | --- |
|  | 8 | **Cable Termination Primary Cable** |  | 2026-10-23 | 2026-12-19 |  |  |  |  |  |  |  |  |  |  |  |  |  |  |  |
| 2.2-HCUIN02-1840 |  | Cable Termination/Glanding | 25d | 2026-10-23 | 2026-11-20 | 2.2-HCUIN01-1850 | 0d |  | LABOUR [5000 h]; Construction Material [250] | UDF_G3 | 0 | EE | 1 | C03a | TY1 | Non | HCU | EIT2.2 | C03a | EIT02.2 |
| 2.2-HCUIN02-1850 |  | punch clear | 10d | 2026-11-21 | 2026-12-02 | 2.2-HCUIN02-1840 | 0d |  | LABOUR [1000 h]; Construction Material [100] | UDF_G3 | 0 | EE | 1 | C03a | TY1 | Non | HCU | EIT2.2 | C03a | EIT02.2 |
| 2.2-HCUIN02-1860 |  | Complete QA/QC document | 15d | 2026-12-03 | 2026-12-19 | 2.2-HCUIN02-1850, 2.2-HCUIN02-1950 FF | 0d |  | LABOUR [1234.71 h]; Construction Material [150] | UDF_G3 | 0 | EE | 1 | C03a | TY1 | Non | HCU | EIT2.2 | C03a | EIT02.2 |
|  | 9 | **Cable Termination Secondary Cable** |  | 2026-10-23 | 2026-12-19 |  |  |  |  |  |  |  |  |  |  |  |  |  |  |  |
| 2.2-HCUIN02-1870 |  | Cable Termination/Glanding | 25d | 2026-10-23 | 2026-11-20 | 2.2-HCUIN01-1880 | 0d |  | LABOUR [5000 h]; Construction Material [250] | UDF_G3 | 0 | EE | 1 | C03a | TY1 | Non | HCU | EIT2.2 | C03a | EIT02.2 |
| 2.2-HCUIN02-1880 |  | punch clear | 10d | 2026-11-21 | 2026-12-02 | 2.2-HCUIN02-1870 | 0d |  | LABOUR [1000 h]; Construction Material [100] | UDF_G3 | 0 | EE | 1 | C03a | TY1 | Non | HCU | EIT2.2 | C03a | EIT02.2 |
| 2.2-HCUIN02-1890 |  | Complete QA/QC document | 15d | 2026-12-03 | 2026-12-19 | 2.2-HCUIN02-1880, 2.2-HCUIN02-1860 FF, 2.2-HCUIN05-2100 | 0d |  | LABOUR [1234.71 h]; Construction Material [150] | UDF_G3 | 0 | EE | 1 | C03a | TY1 | Non | HCU | EIT2.2 | C03a | EIT02.2 |
|  | 4 | **Instrument Calibration** |  | 2026-06-29 | 2026-09-05 |  |  |  |  |  |  |  |  |  |  |  |  |  |  |  |
| 2.2-HCUIN05-2070 |  | Calibration of Gauges | 30d | 2026-06-29 | 2026-08-01 | 2.2-HCUIN01- 4150 | 28.3d | 0d | LABOUR [4000 h]; Construction Material [300] | UDF_G3 | 0 | EE | 1 | C03a | TY1 | Non | HCU | EIT2.2 | C03c | EIT02.2 |
| 2.2-HCUIN05-2100 |  | Calibration of Transmitters/Switches | 30d | 2026-08-03 | 2026-09-05 | 2.2-HCUIN05-2070 | 28.3d | 0d | LABOUR [8033.6 h]; Construction Material [300] | UDF_G3 | 0 | IN |  |  |  | Non | HCU | EIT2.2 |  |  |
|  | 1 | **Gauges** |  | 2026-06-29 | 2026-08-13 |  |  |  |  |  |  |  |  |  |  |  |  |  |  |  |
| 2.2-HCUIN04-1560 |  | D.P Pressure Gauge Installation | 10d | 2026-06-29 | 2026-07-09 | 2.2-HCUIN05-2070 SS | 88.3d | 0d | LABOUR [1000 h]; Construction Material [100] | UDF_G3 | 0 | IN |  |  |  | Non | HCU | EIT2.2 |  |  |
| 2.2-HCUIN04-1570 |  | Pressure Gauge Installation | 10d | 2026-07-10 | 2026-07-21 | 2.2-HCUIN04-1560 | 88.3d | 0d | LABOUR [1000 h]; Construction Material [100] | UDF_G3 | 0 | EE | 1 | C03a | TY1 | Non | HCU | EIT2.2 | C03c | EIT02.2 |
| 2.2-HCUIN04-1580 |  | Level Gauge Installation | 10d | 2026-07-22 | 2026-08-01 | 2.2-HCUIN04-1570 | 88.3d | 0d | LABOUR [1000 h]; Construction Material [100] | UDF_G3 | 0 | EE | 1 | C03a | TY1 | Non | HCU | EIT2.2 | C03c | EIT02.2 |
| 2.2-HCUIN04-1590 |  | Clear punch | 5d | 2026-08-03 | 2026-08-07 | 2.2-HCUIN04-1580 | 88.3d | 0d | LABOUR [1000 h]; Construction Material [50] | UDF_G3 | 0 | EE | 1 | C03a | TY1 | Non | HCU | EIT2.2 | C03c | EIT02.2 |
| 2.2-HCUIN04-1595 |  | Complete QA/QC document | 5d | 2026-08-08 | 2026-08-13 | 2.2-HCUIN04-1590 | 88.3d | 47d | LABOUR [1509.94 h]; Construction Material [50] | UDF_G3 | 0 | EE | 1 | C03a | TY1 | Non | HCU | EIT2.2 | C03c | EIT02.2 |
|  | 6 | **Transmitters/Switches** |  | 2026-08-03 | 2026-10-07 |  |  |  |  |  |  |  |  |  |  |  |  |  |  |  |
| 2.2-HCUIN04-1600 |  | Install support / bracket | 10d | 2026-08-03 | 2026-08-13 | 2.2-HCUIN05-2100 SS | 28.3d | 0d | LABOUR [500 h]; Construction Material [100] | UDF_G3 | 0 | EE | 1 | C03a | TY1 | Non | HCU | EIT2.2 | C03c | EIT02.2 |
| 2.2-HCUIN04-1610 |  | Pressure transmitters Installation | 10d | 2026-08-14 | 2026-08-25 | 2.2-HCUIN04-1600 | 28.3d | 0d | LABOUR [1000 h]; Construction Material [100] | UDF_G3 | 0 | EE | 1 | C03a | TY1 | Non | HCU | EIT2.2 | C03c | EIT02.2 |
| 2.2-HCUIN04-1620 |  | D.P. Transmitters - HART Installation | 10d | 2026-08-26 | 2026-09-05 | 2.2-HCUIN04-1610 | 28.3d | 0d | LABOUR [700 h]; Construction Material [100] | UDF_G3 | 0 | EE | 1 | C03a | TY1 | Non | HCU | EIT2.2 | C03c | EIT02.2 |
| 2.2-HCUIN04-1630 |  | Temperature Transmitters Installation | 10d | 2026-09-07 | 2026-09-17 | 2.2-HCUIN04-1620 | 41.3d | 0d | LABOUR [1000 h]; Construction Material [100] | UDF_G3 | 0 | EE | 1 | C03a | TY1 | Non | HCU | EIT2.2 | C03c | EIT02.2 |
| 2.2-HCUIN04-1640 |  | Level Switch Installation | 10d | 2026-09-18 | 2026-09-29 | 2.2-HCUIN04-1630 | 41.3d | 0d | LABOUR [1000 h]; Construction Material [100] | UDF_G3 | 0 | IN |  |  |  | Non | HCU | EIT2.2 |  |  |
| 2.2-HCUIN04-1650 |  | Clear punch | 2d | 2026-09-30 | 2026-10-01 | 2.2-HCUIN04-1640 | 41.3d | 0d | LABOUR [300 h]; Construction Material [20] | UDF_G3 | 0 | IN |  |  |  | Non | HCU | EIT2.2 |  |  |
| 2.2-HCUIN04-1660 |  | Complete QA/QC document | 5d | 2026-10-02 | 2026-10-07 | 2.2-HCUIN04-1650, 2.2-HCUIN04-1595 FF | 41.3d | 13d | LABOUR [1009.94 h]; Construction Material [50] | UDF_G3 | 0 | IN |  |  |  | Non | HCU | EIT2.2 |  |  |

| ID | WBS | Activity | Duration | Start | Finish | Predecessors | Total float | Free float | Calendar | Resources | On Schedule Indicator | %Completed | Disciplines | Main Activity | WBS | Types | EIT2 Main Activity | Areas | Phases | EIT WBS | EIT PKG | Motor Loop |
| --- | --- | --- | --- | --- | --- | --- | --- | --- | --- | --- | --- | --- | --- | --- | --- | --- | --- | --- | --- | --- | --- | --- |
|  | 11 | **Instrument Junction Box Installation** |  | 2026-07-28 | 2026-08-12 |  |  |  |  |  |  |  |  |  |  |  |  |  |  |  |  |  |
| 2.2-HCUIN-1570 |  | Install support / bracket | 5d | 2026-07-28 | 2026-08-03 | 2.2-HCUIN04-1600 SF | 49.3d | 0d |  | LABOUR [1000 h]; Construction Material [50] | UDF_G3 | 0 | EE | 1 | C03a | TY1 | Non | HCU | EIT2.2 | C03c | EIT02.2 |  |
| 2.2-HCUIN-1580 |  | Instrument Junction Box Installation | 5d | 2026-08-03 | 2026-08-07 | 2.2-HCUIN-1570 | 49.3d | 0d |  | LABOUR [3000 h]; Construction Material [50] | UDF_G3 | 0 | EE | 1 | C03a | TY1 | Non | HCU | EIT2.2 | C03c | EIT02.2 |  |
| 2.2-HCUIN-1590 |  | Clear punch | 2d | 2026-08-08 | 2026-08-10 | 2.2-HCUIN-1580 | 49.3d | 0d |  | LABOUR [500 h]; Construction Material [20] | UDF_G3 | 0 | EE | 1 | C03a | TY1 | Non | HCU | EIT2.2 | C03c | EIT02.2 |  |
| 2.2-HCUIN-1600 |  | Complete QA/QC document | 2d | 2026-08-11 | 2026-08-12 | 2.2-HCUIN-1590 | 49.3d | 21d |  | LABOUR [1009.94 h]; Construction Material [20] | UDF_G3 | 0 | EE | 1 | C03a | TY1 | Non | HCU | EIT2.2 | C03c | EIT02.2 |  |
|  | 5 | **Tubing** |  | 2026-09-07 | 2026-11-17 |  |  |  |  |  |  |  |  |  |  |  |  |  |  |  |  |  |
| 2.2-HCUIN07-1510 |  | Instrument Hook up Tubing Installation | 20d | 2026-09-07 | 2026-09-29 | 2.2-HCUIN04-1610, 2.2-HCUIN04-1620, 2.2-HCUIN-1600 | 28.3d | 0d |  | LABOUR [1000 h]; Construction Material [200] | UDF_G3 | 0 | IN |  |  |  | Non | HCU | EIT2.2 | C03c | EIT02.2 |  |
| 2.2-HCUIN07-1520 |  | Leak Test | 20d | 2026-09-30 | 2026-10-22 | 2.2-HCUIN07-1510 | 28.3d | 0d |  | LABOUR [500 h]; Construction Material [200] | UDF_G3 | 0 | IN |  |  |  | Non | HCU | EIT2.2 | C03c | EIT02.2 |  |
| 2.2-HCUIN07-1530 |  | Clear Punch | 10d | 2026-10-23 | 2026-11-03 | 2.2-HCUIN07-1520, 2.2-HCUIN04-1660 | 28.3d | 0.1d |  | LABOUR [100 h]; Construction Material [100] | UDF_G3 | 0 | IN |  |  |  | Non | HCU | EIT2.2 | C03c | EIT02.2 |  |
| 2.2-HCUIN07-1540 |  | Complete QA/QC document | 15d | 2026-11-04 | 2026-11-17 | 2.2-HCUIN07-1530 | 36.12d |  | 7 - Day Workweek (No Holidays) | LABOUR [114.53 h]; Construction Material [120] | UDF_G3 | 0 | IN |  |  |  | Non | HCU | EIT2.2 | C03c | EIT02.2 |  |
|  | 7 | **Instrument Loop Check** |  | 2026-12-21 | 2027-02-27 |  |  |  |  |  |  |  |  |  |  |  |  |  |  |  |  |  |
| 2.2-HCUIN09-1530 |  | Instrument Loop check | 30d | 2026-12-21 | 2027-01-23 | 2.2-HCUIN02-1890, 2.2-HCUIN07-1540 | 0d |  |  | LABOUR [6000 h]; Construction Material [300] | UDF_G3 | 0 | IN |  |  |  | Non | HCU | EIT2.2 | C03c | EIT02.2 | LO |
| 2.2-HCUIN09-1540 |  | Clear Punch | 15d | 2027-01-25 | 2027-02-10 | 2.2-HCUIN09-1530 | 0d |  |  | LABOUR [1000 h]; Construction Material [150] | UDF_G3 | 0 | IN |  |  |  | Non | HCU | EIT2.2 | C03c | EIT02.2 | LO |
| 2.2-HCUIN09-1550 |  | Complete QA/QC document | 15d | 2027-02-11 | 2027-02-27 | 2.2-HCUIN09-1540 | 0d | 30.2d |  | LABOUR [2428.48 h]; Construction Material [150] | UDF_G3 | 0 | IN |  |  |  | Non | HCU | EIT2.2 | C03c | EIT02.2 | LO |
|  | 5 | **Telecommunication** |  | 2026-10-02 | 2027-03-05 |  |  |  |  |  |  |  |  |  |  |  |  |  |  |  |  |  |
|  | 3 | **Telecom** |  | 2026-10-02 | 2027-03-05 |  |  |  |  |  |  |  |  |  |  |  |  |  |  |  |  |  |
|  | 3 | **Telecom Cable Tray/Ladder Installation** |  | 2026-10-02 | 2026-11-14 |  |  |  |  |  |  |  |  |  |  |  |  |  |  |  |  |  |
| 2.2-HCUTE03-1200 |  | Install support / bracket | 18d | 2026-10-02 | 2026-10-22 | 2.2-HCUEE03-1010 | -5d | 0d |  | LABOUR [3 h]; Construction Material [500] | UDF_G3 | 0 | EE | 1 | C03a | TY1 | Non | HCU | EIT2.2 | C03a | EIT02.2 |  |
| 2.2-HCUTE03-1210 |  | Install Ladder / Tray | 18d | 2026-10-02 | 2026-10-22 | 2.2-HCUTE03-1200 SS, 2.2-HCUTE03-1200 FF | -5d | 0d |  | LABOUR [77 h]; Construction Material [500] | UDF_G3 | 0 | EE | 1 | C03a | TY1 | Non | HCU | EIT2.2 | C03a | EIT02.2 |  |
| 2.2-HCUTE03-1220 |  | Conduit Install | 18d | 2026-10-02 | 2026-10-22 | 2.2-HCUTE03-1200 SS | -5d | 0d |  | LABOUR [500 h]; Construction Material [500] | UDF_G3 | 0 | TE |  |  |  | Non | HCU | EIT2.2 | C03a | EIT02.2 |  |
| 2.2-HCUTE03-1230 |  | Clear punch | 5d | 2026-10-23 | 2026-10-28 | 2.2-HCUTE03-1210, 2.2-HCUTE03-1220 | -5d | 0d |  | LABOUR [75 h]; Construction Material [50] | UDF_G3 | 0 | EE | 1 | C03a | TY1 | Non | HCU | EIT2.2 | C03a | EIT02.2 |  |
| 2.2-HCUTE03-1240 |  | Complete QA/QC document | 15d | 2026-10-29 | 2026-11-14 | 2.2-HCUTE03-1230 | -5d | 0d |  | LABOUR [75 h]; Construction Material [150] | UDF_G3 | 0 | EE | 1 | C03a | TY1 | Non | HCU | EIT2.2 | C03a | EIT02.2 |  |
|  | 1 | **AG Telecommunication Cable Installation** |  | 2026-11-16 | 2027-01-18 |  |  |  |  |  |  |  |  |  |  |  |  |  |  |  |  |  |
| 2.1-HCUTE01-1340 |  | Above Ground Pull Cable | 30d | 2026-11-16 | 2026-12-19 | 2.2-HCUTE03-1240 | -5d | 0d |  | LABOUR [1000 h]; Construction Material [300] | UDF_G3 | 0 | EE | 1 | C03a | TY1 | Non | HCU | EIT2.2 | C03a | EIT02.2 |  |
| 2.1-HCUTE01-1350 |  | Megger & Continuity test | 10d | 2026-12-21 | 2026-12-31 | 2.1-HCUTE01-1340 | -5d | 0d |  | LABOUR [500 h]; Construction Material [100] | UDF_G3 | 0 | EE | 1 | C03a | TY1 | Non | HCU | EIT2.2 | C03a | EIT02.2 |  |
| 2.1-HCUTE01-1360 |  | Complete QA/QC document | 15d | 2027-01-01 | 2027-01-18 | 2.1-HCUTE01-1350 | -5d | 0d |  | LABOUR [500 h]; Construction Material [150] | UDF_G3 | 0 | EE | 1 | C03a | TY1 | Non | HCU | EIT2.2 | C03a | EIT02.2 |  |

| ID | WBS | Activity | Duration | Start | Finish | Predecessors | Total float | Free float | Resources | On Schedule Indicator | %Completed | Disciplines | Main Activity | WBS | Types | EIT2 Main Activity | Areas | Phases | EIT WBS | EIT PKG | Cable Pull & Laying |
| --- | --- | --- | --- | --- | --- | --- | --- | --- | --- | --- | --- | --- | --- | --- | --- | --- | --- | --- | --- | --- | --- |
|  | 4 | **Telecommunication Termination / Glanding** |  | 2027-01-19 | 2027-03-05 |  |  |  |  |  |  |  |  |  |  |  |  |  |  |  |  |
| 2.1-HCUTE02-1360 |  | Cable Termination/Glanding | 20d | 2027-01-19 | 2027-02-10 | 2.1-HCUTE01-1360 | -5d | 0d | LABOUR [500 h]; Construction Material [200] | UDF_G3 | 0 | EE | 1 | C03a | TY1 | Non | HCU | EIT2.2 | C03a | EIT02.2 |  |
| 2.1-HCUTE02-1370 |  | Clear punch | 10d | 2027-02-11 | 2027-02-22 | 2.1-HCUTE02-1360 | -5d | 0d | LABOUR [200 h]; Construction Material [100] | UDF_G3 | 0 | EE | 1 | C03a | TY1 | Non | HCU | EIT2.2 | C03a | EIT02.2 |  |
| 2.1-HCUTE02-1380 |  | Complete QA/QC document | 10d | 2027-02-23 | 2027-03-05 | 2.1-HCUTE02-1370, 2.1-HCUTE01.1-1410 | -5d | 25.2d | LABOUR [253.1 h]; Construction Material [100] | UDF_G3 | 0 | EE | 1 | C03a | TY1 | Non | HCU | EIT2.2 | C03a | EIT02.2 |  |
|  | 2 | **Telecommunication Equipment Installation** |  | 2026-11-16 | 2027-01-18 |  |  |  |  |  |  |  |  |  |  |  |  |  |  |  |  |
| 2.1-HCUTE01.1-1390 |  | Telecom Equpiment Installation | 30d | 2026-11-16 | 2026-12-19 | 2.2-HCUTE03-1240 | 25d | 0d | LABOUR [150 h]; Construction Material [300] | UDF_G3 | 0 | EE | 1 | C03a | TY1 | Non | HCU | EIT2.2 | C03a | EIT02.2 |  |
| 2.1-HCUTE01.1-1400 |  | Clear Punch | 10d | 2026-12-21 | 2026-12-31 | 2.1-HCUTE01.1-1390 | 25d | 0d | LABOUR [50 h]; Construction Material [100] | UDF_G3 | 0 | EE | 1 | C03a | TY1 | Non | HCU | EIT2.2 | C03a | EIT02.2 |  |
| 2.1-HCUTE01.1-1410 |  | Complete QA/QC document | 15d | 2027-01-01 | 2027-01-18 | 2.1-HCUTE01.1-1400 | 25d | 30d | LABOUR [62.42 h]; Construction Material [150] | UDF_G3 | 0 | EE | 1 | C03a | TY1 | Non | HCU | EIT2.2 | C03a | EIT02.2 |  |
|  | EIT-2.21 | **WBS : C03b RHCU (Residue Hydrocracking Unit)** |  | 2026-04-01 | 2027-06-08 |  |  |  |  |  |  |  |  |  |  |  |  |  |  |  |  |
|  | 1 | **RHCU ZONE 1** |  | 2026-04-01 | 2027-01-22 |  |  |  |  |  |  |  |  |  |  |  |  |  |  |  |  |
|  | 1 | **Electrical Works** |  | 2026-04-01 | 2027-01-04 |  |  |  |  |  |  |  |  |  |  |  |  |  |  |  |  |
|  | 6 | **Cable trench Excavation buried** |  | 2026-05-15 | 2026-05-25 |  |  |  |  |  |  |  |  |  |  |  |  |  |  |  |  |
|  | 8 | **C03-ETD-325/326/390/391/310/655/644/816/660/661/703/381** |  | 2026-05-15 | 2026-05-25 |  |  |  |  |  |  |  |  |  |  |  |  |  |  |  |  |
| 2.2-RHCUEE09-1000 |  | Cable trench Excavation | 4d | 2026-05-15 | 2026-05-19 | 2.2-HCUEE09-1000 SS | -12d | 0d | LABOUR; Construction Material [300] | UDF_G3 | 0 | EE |  |  |  | Non | RHCU | EIT2.2 | C03c | EIT02.2 |  |
| 2.2-RHCUEE09-1010 |  | Sand Filling Compaction | 5d | 2026-05-20 | 2026-05-25 | 2.2-RHCUEE09-1000 | 13.9d | 0d | LABOUR; Construction Material [50] | UDF_G3 | 0 | EE |  |  |  | Non | RHCU | EIT2.2 | C03c | EIT02.2 |  |
|  | 8 | **Cable Laying Direct buried** |  | 2026-05-20 | 2026-08-11 |  |  |  |  |  |  |  |  |  |  |  |  |  |  |  |  |
|  | 8 | **C03-ETD-325/326/390/391/310/655/644/816/660/661/703/381** |  | 2026-05-20 | 2026-08-11 |  |  |  |  |  |  |  |  |  |  |  |  |  |  |  |  |
| 2.2-RHCUEE01-0990 |  | Sand Filling First layer | 4d | 2026-05-20 | 2026-05-23 | 2.2-RHCUEE09-1000 | 14.9d | 1d | LABOUR [100 h]; Cable Pull; Construction Material [40] | UDF_G3 | 0 | EE |  |  |  | PRIC | RHCU | EIT2.2 |  |  |  |
| 2.2-RHCUEE01-1000 |  | Cable Laying | 23d | 2026-05-26 | 2026-06-20 | 2.2-RHCUEE01-0990, 2.2-RHCUEE09-1010 | 13.9d | 0d | LABOUR [1000 h]; Cable Pull [5975 h]; Construction Material [300] | UDF_G3 | 0 | EE |  |  |  | PRIC | RHCU | EIT2.2 | C03c | EIT02.2 | PUL |
| 2.2-RHCUEE01-1010 |  | Megger & Continuity test | 5d | 2026-06-22 | 2026-06-26 | 2.2-RHCUEE01-1000, 2.2-RHCUEE09-1010 | 56d | 0d | LABOUR [200 h]; Cable Pull; Construction Material [50] | UDF_G3 | 0 | EE |  |  |  | PRIC | RHCU | EIT2.2 | C03c | EIT02.2 |  |
| 2.2-RHCUEE01-1020 |  | punch Clear | 5d | 2026-06-27 | 2026-07-02 | 2.2-RHCUEE01-1010 | 56d | 0d | LABOUR [200 h]; Cable Pull; Construction Material [50] | UDF_G3 | 0 | EE |  |  |  | PRIC | RHCU | EIT2.2 | C03c | EIT02.2 |  |
| 2.2-RHCUEE01-1030 |  | Sand Filling Compaction | 4d | 2026-07-03 | 2026-07-07 | 2.2-RHCUEE01-1020 | 56d | 0d | LABOUR [200 h]; Cable Pull; Construction Material [40] | UDF_G3 | 0 | EE |  |  |  | PRIC | RHCU | EIT2.2 |  |  |  |
| 2.2-RHCUEE01-1040 |  | Complete QA/QC document | 10d | 2026-07-08 | 2026-07-18 | 2.2-RHCUEE01-1030 | 56d | 0d | LABOUR [200 h]; Cable Pull; Construction Material [100] | UDF_G3 | 0 | EE |  |  |  | PRIC | RHCU | EIT2.2 | C03c | EIT02.2 |  |
| 2.2-RHCUEE01-1050 |  | Back Filling | 20d | 2026-07-20 | 2026-08-11 | 2.2-RHCUEE01-1040 | 56d | 5d | LABOUR [780.7 h]; Cable Pull; Construction Material [200] | UDF_G3 | 0 | EE |  |  |  | PRIC | RHCU | EIT2.2 | C03c | EIT02.2 |  |

| ID | WBS | Activity | Duration | Start | Finish | Predecessors | Complete | Remaining | Total float | Free float | Resources | On Schedule Indicator | %Completed | Disciplines | EIT2 Main Activity | Areas | Phases | Cable Pull & Laying | EIT WBS | EIT PKG | Main Activity | WBS | Types |
| --- | --- | --- | --- | --- | --- | --- | --- | --- | --- | --- | --- | --- | --- | --- | --- | --- | --- | --- | --- | --- | --- | --- | --- |
|  | 13 | **Cable Laying Concrete Trench** |  | 2026-05-26 | 2026-11-06 |  |  |  |  |  |  |  |  |  |  |  |  |  |  |  |  |  |  |
|  | 1 | **C03-ETC-267/277/268/590/440/278/269/218/279/300/211/280/379/560/287/274/275** |  | 2026-05-26 | 2026-08-17 |  |  |  |  |  |  |  |  |  |  |  |  |  |  |  |  |  |  |
| 2.2-RHCUEE01-1060 |  | Cable Laying | 28d | 2026-05-26 | 2026-06-26 | 2.2-RHCUEE01-1000 SS |  |  | 13.9d | 0d | LABOUR [1100 h]; Cable Pull [5975 h]; Construction Material [350] | UDF_G3 | 0 | EE | PRIC | RHCU | EIT2.2 | PUL | C03c | EIT02.2 |  |  |  |
| 2.2-RHCUEE01-1070 |  | Megger & Continuity test | 5d | 2026-06-27 | 2026-07-02 | 2.2-RHCUEE01-1060 |  |  | 51d | 0d | LABOUR [200 h]; Cable Pull; Construction Material [50] | UDF_G3 | 0 | EE | PRIC | RHCU | EIT2.2 |  | C03c | EIT02.2 |  |  |  |
| 2.2-RHCUEE01-1080 |  | punch Clear | 5d | 2026-07-03 | 2026-07-08 | 2.2-RHCUEE01-1070 |  |  | 51d | 0d | LABOUR [200 h]; Cable Pull; Construction Material [50] | UDF_G3 | 0 | EE | PRIC | RHCU | EIT2.2 |  | C03c | EIT02.2 |  |  |  |
| 2.2-RHCUEE01-1090 |  | Sand Filling Compaction | 4d | 2026-07-09 | 2026-07-13 | 2.2-RHCUEE01-1080 |  |  | 51d | 0d | LABOUR [200 h]; Cable Pull; Construction Material [40] | UDF_G3 | 0 | EE | PRIC | RHCU | EIT2.2 |  |  |  |  |  |  |
| 2.2-RHCUEE01-1100 |  | Complete QA/QC document | 10d | 2026-07-14 | 2026-07-24 | 2.2-RHCUEE01-1090 |  |  | 51d | 0d | LABOUR [200 h]; Cable Pull; Construction Material [100] | UDF_G3 | 0 | EE | PRIC | RHCU | EIT2.2 |  | C03c | EIT02.2 |  |  |  |
| 2.2-RHCUEE01-1110 |  | Back Filling | 20d | 2026-07-25 | 2026-08-17 | 2.2-RHCUEE01-1100, 2.2-RHCUEE01-1050 FF |  |  | 51d | 1d | LABOUR [780.7 h]; Cable Pull; Construction Material [200] | UDF_G3 | 0 | EE | PRIC | RHCU | EIT2.2 |  | C03c | EIT02.2 |  |  |  |
|  | 2 | **C03-ETC-380/381/299/273/216/217/376/378/272/382/296/281/383/214/295/588/294** |  | 2026-06-27 | 2026-10-02 |  |  |  |  |  |  |  |  |  |  |  |  |  |  |  |  |  |  |
| 2.2-RHCUEE01-1120 |  | Cable Laying | 40d | 2026-06-27 | 2026-08-12 | 2.2-RHCUEE01-1060 |  |  | 13.9d | 0d | LABOUR [1100 h]; Cable Pull [5974 h]; Construction Material [400] | UDF_G3 | 0 | EE | PRIC | RHCU | EIT2.2 | PUL | C03c | EIT02.2 |  |  |  |
| 2.2-RHCUEE01-1130 |  | Megger & Continuity test | 5d | 2026-08-13 | 2026-08-18 | 2.2-RHCUEE01-1120 |  |  | 50d | 0d | LABOUR [200 h]; Cable Pull; Construction Material [50] | UDF_G3 | 0 | EE | PRIC | RHCU | EIT2.2 |  | C03c | EIT02.2 |  |  |  |
| 2.2-RHCUEE01-1140 |  | punch Clear | 5d | 2026-08-19 | 2026-08-24 | 2.2-RHCUEE01-1130, 2.2-RHCUEE01-1110 |  |  | 50d | 0d | LABOUR [200 h]; Cable Pull; Construction Material [50] | UDF_G3 | 0 | EE | PRIC | RHCU | EIT2.2 |  | C03c | EIT02.2 |  |  |  |
| 2.2-RHCUEE01-1150 |  | Sand Filling Compaction | 4d | 2026-08-25 | 2026-08-28 | 2.2-RHCUEE01-1140 |  |  | 50d | 0d | LABOUR [200 h]; Cable Pull; Construction Material [40] | UDF_G3 | 0 | EE | PRIC | RHCU | EIT2.2 |  |  |  |  |  |  |
| 2.2-RHCUEE01-1160 |  | Complete QA/QC document | 10d | 2026-08-29 | 2026-09-09 | 2.2-RHCUEE01-1150 |  |  | 50d | 0d | LABOUR [200 h]; Cable Pull; Construction Material [100] | UDF_G3 | 0 | EE | PRIC | RHCU | EIT2.2 |  | C03c | EIT02.2 |  |  |  |
| 2.2-RHCUEE01-1170 |  | Back Filling | 20d | 2026-09-10 | 2026-10-02 | 2.2-RHCUEE01-1160 |  |  | 50d | 30d | LABOUR [780.7 h]; Cable Pull; Construction Material [200] | UDF_G3 | 0 | EE | PRIC | RHCU | EIT2.2 |  | C03c | EIT02.2 |  |  |  |
|  | 3 | **C03-ETC-311/587/384/385/214/215/588/553/289/382/272/216** |  | 2026-08-13 | 2026-11-06 |  |  |  |  |  |  |  |  |  |  |  |  |  |  |  |  |  |  |
| 2.2-RHCUEE01-1180 |  | Cable Laying | 30d | 2026-08-13 | 2026-09-16 | 2.2-RHCUEE01-1120 |  |  | 13.9d | 0d | LABOUR [1100 h]; Cable Pull [5974 h]; Construction Material [300] | UDF_G3 | 0 | EE | PRIC | RHCU | EIT2.2 | PUL | C03c | EIT02.2 |  |  |  |
| 2.2-RHCUEE01-1190 |  | Megger & Continuity test | 5d | 2026-09-17 | 2026-09-22 | 2.2-RHCUEE01-1180 |  |  | 20d | 0d | LABOUR [200 h]; Cable Pull; Construction Material [50] | UDF_G3 | 0 | EE | PRIC | RHCU | EIT2.2 |  | C03c | EIT02.2 |  |  |  |
| 2.2-RHCUEE01-1200 |  | punch Clear | 5d | 2026-09-23 | 2026-09-28 | 2.2-RHCUEE01-1190 |  |  | 20d | 0d | LABOUR [200 h]; Cable Pull; Construction Material [50] | UDF_G3 | 0 | EE | PRIC | RHCU | EIT2.2 |  | C03c | EIT02.2 |  |  |  |
| 2.2-RHCUEE01-1210 |  | Sand Filling Compaction | 4d | 2026-09-29 | 2026-10-02 | 2.2-RHCUEE01-1200 |  |  | 20d | 0d | LABOUR [200 h]; Cable Pull; Construction Material [40] | UDF_G3 | 0 | EE | PRIC | RHCU | EIT2.2 |  |  |  |  |  |  |
| 2.2-RHCUEE01-1220 |  | Complete QA/QC document | 10d | 2026-10-03 | 2026-10-14 | 2.2-RHCUEE01-1210 |  |  | 20d | 0d | LABOUR [200 h]; Cable Pull; Construction Material [100] | UDF_G3 | 0 | EE | PRIC | RHCU | EIT2.2 |  | C03c | EIT02.2 |  |  |  |
| 2.2-RHCUEE01-1230 |  | Back Filling | 20d | 2026-10-15 | 2026-11-06 | 2.2-RHCUEE01-1220, 2.2-RHCUEE01-1170 FF |  |  | 20d | 32d | LABOUR [780.7 h]; Cable Pull; Construction Material [200] | UDF_G3 | 0 | EE | PRIC | RHCU | EIT2.2 |  | C03c | EIT02.2 |  |  |  |
|  | 1 | **Electrical Cable Tray/Ladder Installation** |  | 2026-04-01 | 2026-07-08 |  |  |  |  |  |  |  |  |  |  |  |  |  |  |  |  |  |  |
| 2.2-RHCUEE03-1000 |  | Install support / bracket | 60d | 2026-04-01 A | 2026-06-09 | 2.2-RHCUEE09-1000 SS | 4% | 22d | 30d | 0d | LABOUR [1000 h]; Construction Material [460] | UDF_G3 | 0 | EE | Non | RHCU | EIT2.2 |  | C03a | EIT02.2 | 1 | C03a | TY1 |
| 2.2-RHCUEE03-1010 |  | Install Ladder / Tray | 60d | 2026-04-01 A | 2026-06-09 | 2.2-RHCUEE03-1000 SS, 2.2-RHCUEE03-1000 FF | 4% | 22d | 30d | 0d | LABOUR [5000 h]; Construction Material [460] | UDF_G3 | 0 | EE | Non | RHCU | EIT2.2 |  | C03a | EIT02.2 | 1 | C03a | TY1 |
| 2.2-RHCUEE03-1020 |  | Install Conduits | 60d | 2026-04-01 A | 2026-06-09 | 2.2-RHCUEE03-1010 SS | 4% | 22d | 97d | 0d | LABOUR [1000 h]; Construction Material [600] | UDF_G3 | 0 | EE | Non | RHCU | EIT2.2 |  | C03a | EIT02.2 | 1 | C03a | TY1 |
| 2.2-RHCUEE03-1030 |  | Clear punch | 10d | 2026-06-10 | 2026-06-20 | 2.2-RHCUEE03-1020, 2.2-RHCUEE03-1010 |  |  | 97d | 0d | LABOUR [500 h]; Construction Material [100] | UDF_G3 | 0 | EE | Non | RHCU | EIT2.2 |  | C03a | EIT02.2 | 1 | C03a | TY1 |
| 2.2-RHCUEE03-1040 |  | Complete QA/QC document | 15d | 2026-06-22 | 2026-07-08 | 2.2-RHCUEE03-1030 |  |  | 97d | 13d | LABOUR [1229.78 h]; Construction Material [150] | UDF_G3 | 0 | EE | Non | RHCU | EIT2.2 |  | C03a | EIT02.2 | 1 | C03a | TY1 |

| ID | WBS | Activity | Duration | Start | Finish | Predecessors | Complete | Remaining | Planned start | Planned finish | Total float | Free float | Resources | On Schedule Indicator | %Completed | Disciplines | Main Activity | WBS | Types | EIT2 Main Activity | Areas | Phases | Cable Pull & Laying | EIT WBS | EIT PKG |
| --- | --- | --- | --- | --- | --- | --- | --- | --- | --- | --- | --- | --- | --- | --- | --- | --- | --- | --- | --- | --- | --- | --- | --- | --- | --- |
|  | 9 | **AG Cable Pull LV Cable** |  | 2026-04-24 | 2026-08-10 |  |  |  |  |  |  |  |  |  |  |  |  |  |  |  |  |  |  |  |  |
| 2.2-RHCUEE01-1240 |  | Pull Cable | 60d | 2026-04-24 A | 2026-07-23 | 2.2-RHCUEE03-1010 SS | 6% | 60d | 2026-06-10 | 2026-08-18 | 30d | 0d | LABOUR [1800 h]; Cable Pull; Construction Material [600] | UDF_G3 | 0 | EE | 1 | C03a | TY1 | SECE | RHCU | EIT2.2 | PUL | C03a | EIT02.2 |
| 2.2-RHCUEE01-1250 |  | Megger & Continuity test | 10d | 2026-07-24 | 2026-08-04 | 2.2-RHCUEE01-1240, 2.2-RHCUEE03-1040 |  |  |  |  | 84d | 0d | LABOUR [200 h]; Cable Pull; Construction Material [100] | UDF_G3 | 0 | EE | 1 | C03a | TY1 | SECE | RHCU | EIT2.2 |  | C03a | EIT02.2 |
| 2.2-RHCUEE01-1260 |  | Complete QA/QC document | 15d | 2026-07-24 | 2026-08-10 | 2.2-RHCUEE01-1250 SS |  |  |  |  | 84d | 0d | LABOUR [680 h]; Cable Pull; Construction Material [150] | UDF_G3 | 0 | EE | 1 | C03a | TY1 | SECE | RHCU | EIT2.2 |  | C03a | EIT02.2 |
|  | 10 | **AG Cable Pull Control Cable** |  | 2026-04-27 | 2026-09-16 |  |  |  |  |  |  |  |  |  |  |  |  |  |  |  |  |  |  |  |  |
| 2.2-RHCUEE01-1270 |  | Pull Cable | 60d | 2026-04-27 A | 2026-08-18 | 2.2-RHCUEE01-1240 SS | 6% | 82d | 2026-06-10 | 2026-08-18 | 30d | 0d | LABOUR [1800 h]; Cable Pull; Construction Material [600] | UDF_G3 | 0 | EE | 1 | C03a | TY1 | SECE | RHCU | EIT2.2 | PUL | C03a | EIT02.2 |
| 2.2-RHCUEE01-1280 |  | Megger & Continuity test | 10d | 2026-08-19 | 2026-08-29 | 2.2-RHCUEE01-1270 |  |  |  |  | 52d | 0d | LABOUR [200 h]; Cable Pull; Construction Material [100] | UDF_G3 | 0 | EE | 1 | C03a | TY1 | SECE | RHCU | EIT2.2 |  | C03a | EIT02.2 |
| 2.2-RHCUEE01-1290 |  | Complete QA/QC document | 15d | 2026-08-31 | 2026-09-16 | 2.2-RHCUEE01-1280 |  |  |  |  | 52d | 0d | LABOUR [680 h]; Cable Pull; Construction Material [150] | UDF_G3 | 0 | EE | 1 | C03a | TY1 | SECE | RHCU | EIT2.2 |  | C03a | EIT02.2 |
|  | 11 | **AG Lighting Cable** |  | 2026-04-27 | 2026-10-15 |  |  |  |  |  |  |  |  |  |  |  |  |  |  |  |  |  |  |  |  |
| 2.2-RHCUEE01-1300 |  | Pull Cable | 60d | 2026-04-27 A | 2026-08-18 | 2.2-RHCUEE01-1270 SS | 24% | 82d | 2026-06-10 | 2026-08-18 | 30d | 0d | LABOUR [1800 h]; Cable Pull; Construction Material [600] | UDF_G3 | 0 | EE | 1 | C03a | TY1 | SECE | RHCU | EIT2.2 | PUL | C03a | EIT02.2 |
| 2.2-RHCUEE01-1310 |  | Megger & Continuity test | 30d | 2026-08-19 | 2026-09-22 | 2.2-RHCUEE01-1300 |  |  |  |  | 30d | 0d | LABOUR [200 h]; Cable Pull; Construction Material [300] | UDF_G3 | 0 | EE | 1 | C03a | TY1 | SECE | RHCU | EIT2.2 |  | C03a | EIT02.2 |
| 2.2-RHCUEE01-1320 |  | Complete QA/QC document | 20d | 2026-09-23 | 2026-10-15 | 2.2-RHCUEE01-1310 |  |  |  |  | 30d | 0d | LABOUR [680 h]; Cable Pull; Construction Material [200] | UDF_G3 | 0 | EE | 1 | C03a | TY1 | SECE | RHCU | EIT2.2 |  | C03a | EIT02.2 |
|  | 4 | **Electrical Cable Termination / Glanding** |  | 2026-04-27 | 2026-11-11 |  |  |  |  |  |  |  |  |  |  |  |  |  |  |  |  |  |  |  |  |
|  | 1 | **Termination MV Cable** |  | 2026-09-17 | 2026-11-07 |  |  |  |  |  |  |  |  |  |  |  |  |  |  |  |  |  |  |  |  |
| 2.2-RHCUEE02-1000 |  | Cable Termination/Glanding | 30d | 2026-09-17 | 2026-10-21 | 2.2-RHCUEE01-1180 |  |  |  |  | 13.9d | 0d | LABOUR [1800 h]; Construction Material [300] | UDF_G3 | 0 | EE | 1 | C03a | TY1 | Non | RHCU | EIT2.2 |  | C03a | EIT02.2 |
| 2.2-RHCUEE02-1010 |  | Clear punch | 5d | 2026-10-22 | 2026-10-27 | 2.2-RHCUEE02-1000 |  |  |  |  | 13.9d | 0d | LABOUR [200 h]; Construction Material [50] | UDF_G3 | 0 | EE | 1 | C03a | TY1 | Non | RHCU | EIT2.2 |  | C03a | EIT02.2 |
| 2.2-RHCUEE02-1020 |  | Complete QA/QC document | 10d | 2026-10-28 | 2026-11-07 | 2.2-RHCUEE02-1010 |  |  |  |  | 13.9d | 0d | LABOUR [639.63 h]; Construction Material [100] | UDF_G3 | 0 | EE | 1 | C03a | TY1 | Non | RHCU | EIT2.2 |  | C03a | EIT02.2 |
|  | 2 | **Termination LV Cable** |  | 2026-04-27 | 2026-09-25 |  |  |  |  |  |  |  |  |  |  |  |  |  |  |  |  |  |  |  |  |
| 2.2-RHCUEE02-1030 |  | Cable Termination/Glanding | 30d | 2026-04-27 A | 2026-08-27 | 2.2-RHCUEE01-1260 SS | 1% | 30d | 2026-09-17 | 2026-10-21 | 84d | 0d | LABOUR [1800 h]; Construction Material [300] | UDF_G3 | 0 | EE | 1 | C03a | TY1 | Non | RHCU | EIT2.2 |  | C03a | EIT02.2 |
| 2.2-RHCUEE02-1050 |  | Clear punch | 10d | 2026-08-28 | 2026-09-08 | 2.2-RHCUEE02-1030 |  |  |  |  | 84d | 0d | LABOUR [639.63 h]; Construction Material [100] | UDF_G3 | 0 | EE | 1 | C03a | TY1 | Non | RHCU | EIT2.2 |  | C03a | EIT02.2 |
| 2.2-RHCUEE02-1040 |  | Complete QA/QC document | 15d | 2026-09-09 | 2026-09-25 | 2.2-RHCUEE02-1050 |  |  |  |  | 84d | 32d | LABOUR [200 h]; Construction Material [150] | UDF_G3 | 0 | EE | 1 | C03a | TY1 | Non | RHCU | EIT2.2 |  | C03a | EIT02.2 |
|  | 3 | **Termination Control Cable** |  | 2026-04-27 | 2026-11-02 |  |  |  |  |  |  |  |  |  |  |  |  |  |  |  |  |  |  |  |  |
| 2.2-RHCUEE02-1060 |  | Cable Termination/Glanding | 30d | 2026-04-27 A | 2026-10-03 | 2.2-RHCUEE01-1290 SS | 27% | 30d | 2026-09-17 | 2026-10-21 | 52d | 0d | LABOUR [1800 h]; Construction Material [300] | UDF_G3 | 0 | EE | 1 | C03a | TY1 | Non | RHCU | EIT2.2 |  | C03a | EIT02.2 |
| 2.2-RHCUEE02-1070 |  | Clear punch | 10d | 2026-10-05 | 2026-10-15 | 2.2-RHCUEE02-1060 |  |  |  |  | 52d | 0d | LABOUR [200 h]; Construction Material [100] | UDF_G3 | 0 | EE | 1 | C03a | TY1 | Non | RHCU | EIT2.2 |  | C03a | EIT02.2 |
| 2.2-RHCUEE02-1080 |  | Complete QA/QC document | 15d | 2026-10-16 | 2026-11-02 | 2.2-RHCUEE02-1070, 2.2-RHCUEE02-1040 FF |  |  |  |  | 52d | 8d | LABOUR [639.63 h]; Construction Material [150] | UDF_G3 | 0 | EE | 1 | C03a | TY1 | Non | RHCU | EIT2.2 |  | C03a | EIT02.2 |

| ID | WBS | Activity | Duration | Start | Finish | Predecessors | Complete | Remaining | Planned start | Planned finish | Total float | Free float | Calendar | Resources | On Schedule Indicator | %Completed | Disciplines | Main Activity | WBS | Types | EIT2 Main Activity | Areas | Phases | EIT WBS | EIT PKG | Motor Loop | Cable Pull & Laying |
| --- | --- | --- | --- | --- | --- | --- | --- | --- | --- | --- | --- | --- | --- | --- | --- | --- | --- | --- | --- | --- | --- | --- | --- | --- | --- | --- | --- |
|  | 4 | **Termination Lighting Cable** |  | 2026-04-27 | 2026-11-11 |  |  |  |  |  |  |  |  |  |  |  |  |  |  |  |  |  |  |  |  |  |  |
| 2.2-RHCUEE02-1090 |  | Cable Termination/Glanding | 28d | 2026-04-27 A | 2026-10-24 | 2.2-RHCUEE01-1320 SS | 1% | 28d | 2026-10-16 | 2026-11-17 | 44d | 0d |  | LABOUR [1800 h]; Construction Material [280] | UDF_G3 | 0 | EE | 1 | C03a | TY1 | Non | RHCU | EIT2.2 | C03a | EIT02.2 |  |  |
| 2.2-RHCUEE02-1100 |  | Clear punch | 5d | 2026-10-26 | 2026-10-30 | 2.2-RHCUEE02-1090 |  |  |  |  | 44d | 0d |  | LABOUR [200 h]; Construction Material [50] | UDF_G3 | 0 | EE | 1 | C03a | TY1 | Non | RHCU | EIT2.2 | C03a | EIT02.2 |  |  |
| 2.2-RHCUEE02-1110 |  | Complete QA/QC document | 10d | 2026-10-31 | 2026-11-11 | 2.2-RHCUEE02-1100, 2.2-RHCUEE02-1080 FF |  |  |  |  | 44d | 30.2d |  | LABOUR [639.63 h]; Construction Material [100] | UDF_G3 | 0 | EE | 1 | C03a | TY1 | Non | RHCU | EIT2.2 | C03a | EIT02.2 |  |  |
|  | 7 | **Electrical Earthing / Lightning Installation** |  | 2026-04-01 | 2026-08-12 |  |  |  |  |  |  |  |  |  |  |  |  |  |  |  |  |  |  |  |  |  |  |
| 2.2-RHCUEE06-1000 |  | Install Equipment Earthing / Inspection PIT / Install earthing pull and Connecttion | 90d | 2026-04-01 A | 2026-07-14 | 2.2-RHCUEE03-1000 SS | 20% | 52d |  |  | 88.9d | 0d |  | LABOUR [3000 h]; Construction Material [760] | UDF_G3 | 0 | EE | 1 | C03a | TY1 | Non | RHCU | EIT2.2 | C03a | EIT02.2 |  |  |
| 2.2-RHCUEE06-1010 |  | Punch Clear | 10d | 2026-07-15 | 2026-07-25 | 2.2-RHCUEE06-1000 SS, 2.2-RHCUEE06-1000 |  |  |  |  | 88.9d | 0d |  | LABOUR [500 h]; Construction Material [100] | UDF_G3 | 0 | EE | 1 | C03a | TY1 | Non | RHCU | EIT2.2 | C03a | EIT02.2 |  |  |
| 2.2-RHCUEE06-1020 |  | Complete QA/QC document | 15d | 2026-07-27 | 2026-08-12 | 2.2-RHCUEE06-1010 |  |  |  |  | 88.9d | 0d |  | LABOUR [763.82 h]; Construction Material [150] | UDF_G3 | 0 | EE | 1 | C03a | TY1 | Non | RHCU | EIT2.2 | C03a | EIT02.2 |  |  |
|  | 5 | **Lighting Fixture Installation** |  | 2026-04-27 | 2026-08-12 |  |  |  |  |  |  |  |  |  |  |  |  |  |  |  |  |  |  |  |  |  |  |
| 2.2-RHCUEE05-1000 |  | Install support / bracket / Pole | 40d | 2026-04-27 A | 2026-06-30 | 2.2-RHCUEE03-1000 SS | 4% | 40d | 2026-06-10 | 2026-07-25 | 100.9d | 0d |  | LABOUR [500 h]; Construction Material [400] | UDF_G3 | 0 | EE | 1 | C03a | TY1 | Non | RHCU | EIT2.2 | C03a | EIT02.2 |  |  |
| 2.2-RHCUEE05-1010 |  | lighting fixture | 40d | 2026-04-27 A | 2026-06-30 | 2.2-RHCUEE05-1000 SS, 2.2-RHCUEE05-1000 FF | 4% | 40d | 2026-06-10 | 2026-07-25 | 100.9d | 0d |  | LABOUR [1500 h]; Construction Material [400] | UDF_G3 | 0 | EE | 1 | C03a | TY1 | Non | RHCU | EIT2.2 | C03a | EIT02.2 |  |  |
| 2.2-RHCUEE05-1020 |  | Clear punch | 10d | 2026-07-01 | 2026-07-11 | 2.2-RHCUEE05-1010 |  |  |  |  | 100.9d | 12d |  | LABOUR [50 h]; Construction Material [100] | UDF_G3 | 0 | EE | 1 | C03a | TY1 | Non | RHCU | EIT2.2 | C03a | EIT02.2 |  |  |
| 2.2-RHCUEE05-1030 |  | Complete QA/QC document | 15d | 2026-07-27 | 2026-08-12 | 2.2-RHCUEE05-1020, 2.2-RHCUEE06-1020 FF |  |  |  |  | 88.9d | 0d |  | LABOUR [116.75 h]; Construction Material [150] | UDF_G3 | 0 | EE | 1 | C03a | TY1 | Non | RHCU | EIT2.2 | C03a | EIT02.2 |  |  |
|  | 12 | **Small Power Equipment Installation** |  | 2026-04-27 | 2026-08-12 |  |  |  |  |  |  |  |  |  |  |  |  |  |  |  |  |  |  |  |  |  |  |
| 2.2-RHCUEE05-1040 |  | Install support / bracket | 40d | 2026-04-27 A | 2026-06-30 | 2.2-RHCUEE05-1000 SS | 4% | 40d | 2026-06-10 | 2026-07-25 | 100.9d | 0d |  | LABOUR [500 h]; Construction Material [400] | UDF_G3 | 0 | EE | 1 | C03a | TY1 | Non | RHCU | EIT2.2 | C03a | EIT02.2 |  |  |
| 2.2-RHCUEE05-1050 |  | Install Distribution panel, convenience outlet | 40d | 2026-04-27 A | 2026-06-30 | 2.2-RHCUEE05-1040 SS, 2.2-RHCUEE05-1040 FF | 4% | 40d | 2026-06-10 | 2026-07-25 | 100.9d | 0d |  | LABOUR [1500 h]; Construction Material [400] | UDF_G3 | 0 | EE | 1 | C03a | TY1 | Non | RHCU | EIT2.2 | C03a | EIT02.2 |  |  |
| 2.2-RHCUEE05-1060 |  | Clear punch | 10d | 2026-07-01 | 2026-07-11 | 2.2-RHCUEE05-1050 |  |  |  |  | 100.9d | 12d |  | LABOUR [50 h]; Construction Material [100] | UDF_G3 | 0 | EE | 1 | C03a | TY1 | Non | RHCU | EIT2.2 | C03a | EIT02.2 |  |  |
| 2.2-RHCUEE05-1070 |  | Complete QA/QC document | 15d | 2026-07-27 | 2026-08-12 | 2.2-RHCUEE05-1060, 2.2-RHCUEE05-1030 FF |  |  |  |  | 88.9d | 75d |  | LABOUR [116.75 h]; Construction Material [150] | UDF_G3 | 0 | EE | 1 | C03a | TY1 | Non | RHCU | EIT2.2 | C03a | EIT02.2 |  |  |
|  | 2 | **Motor Solo Run** |  | 2026-11-09 | 2027-01-04 |  |  |  |  |  |  |  |  |  |  |  |  |  |  |  |  |  |  |  |  |  |  |
| 2.2-RHCUEE00-1000 |  | Motor solo run | 25d | 2026-11-09 | 2026-12-07 | 2.2-RHCUEE02-1020, 2.2-RHCUEE05-1070 |  |  |  |  | 13.9d | 0.1d |  | LABOUR; Construction Material [250] | UDF_G3 | 0 | EE |  |  |  | Non | RHCU | EIT2.2 | C03a | EIT02.2 | MO |  |
| 2.2-RHCUEE00-1020 |  | Punch Clear | 10d | 2026-12-08 | 2026-12-17 | 2.2-RHCUEE00-1000, 2.2-RHCUEE02-1110 FF |  |  |  |  | 17.38d | 0d | 7 - Day Workweek (No Holidays) | LABOUR; Construction Material [80] | UDF_G3 | 0 | EE |  |  |  | Non | RHCU | EIT2.2 | C03a | EIT02.2 | MO |  |
| 2.2-RHCUEE00-1030 |  | Complete QA/QC document | 15d | 2026-12-17 | 2027-01-04 | 2.2-RHCUEE00-1020 |  |  |  |  | 13.8d | 19d |  | LABOUR; Construction Material [150] | UDF_G3 | 0 | EE |  |  |  | Non | RHCU | EIT2.2 | C03a | EIT02.2 | MO |  |
|  | 3 | **Instrument Works** |  | 2026-04-01 | 2027-01-22 |  |  |  |  |  |  |  |  |  |  |  |  |  |  |  |  |  |  |  |  |  |  |
|  | 10 | **Cable Laying concrete Trench** |  | 2026-04-01 | 2026-08-06 |  |  |  |  |  |  |  |  |  |  |  |  |  |  |  |  |  |  |  |  |  |  |
|  | 3 | **C03-JTR-302/378/379/298/397/395/394/406/392/300/303/296/295** |  | 2026-04-01 | 2026-08-06 |  |  |  |  |  |  |  |  |  |  |  |  |  |  |  |  |  |  |  |  |  |  |
| 2.2-RHCUIN01-1000 |  | Cable Laying | 60d | 2026-04-01 A | 2026-06-09 | 2.2-HCUIN01-4000 SS | 10% | 22d |  |  | -6d | 0d |  | LABOUR [9000 h]; Cable Pull [47360 h]; Construction Material [460] | UDF_G3 | 0 | IN |  |  |  | PRICI | RHCU | EIT2.2 | C03a | EIT02.2 |  | PUL |
| 2.2-RHCUIN01-1010 |  | Megger & Continuity test | 5d | 2026-06-10 | 2026-06-15 | 2.2-RHCUIN01-1000 |  |  |  |  | 99d | 0d |  | LABOUR [500 h]; Cable Pull; Construction Material [50] | UDF_G3 | 0 | IN |  |  |  | PRICI | RHCU | EIT2.2 | C03a | EIT02.2 |  |  |
| 2.2-RHCUIN01-1020 |  | Clear punch | 5d | 2026-06-16 | 2026-06-20 | 2.2-RHCUIN01-1010 |  |  |  |  | 99d | 0d |  | LABOUR [200 h]; Cable Pull; Construction Material [50] | UDF_G3 | 0 | IN |  |  |  | PRICI | RHCU | EIT2.2 | C03a | EIT02.2 |  |  |
| 2.2-RHCUIN01-1030 |  | Sand Filling compaction | 10d | 2026-06-22 | 2026-07-02 | 2.2-RHCUIN01-1020 |  |  |  |  | 99d | 0d |  | LABOUR [300 h]; Cable Pull; Construction Material [100] | UDF_G3 | 0 | IN |  |  |  | PRICI | RHCU | EIT2.2 |  |  |  |  |
| 2.2-RHCUIN01-1040 |  | Complete QA/QC document | 10d | 2026-06-22 | 2026-07-02 | 2.2-RHCUIN01-1020 |  |  |  |  | 99d | 0d |  | LABOUR [500 h]; Cable Pull; Construction Material [100] | UDF_G3 | 0 | IN |  |  |  | PRICI | RHCU | EIT2.2 | C03a | EIT02.2 |  |  |
| 2.2-RHCUIN01-1050 |  | Back Filling | 30d | 2026-07-03 | 2026-08-06 | 2.2-RHCUIN01-1040, 2.2-RHCUIN01-1030 |  |  |  |  | 99d | 10d |  | LABOUR [4970.5 h]; Cable Pull; Construction Material [300] | UDF_G3 | 0 | IN |  |  |  | PRICI | RHCU | EIT2.2 | C03a | EIT02.2 |  |  |

| ID | WBS | Activity | Duration | Start | Finish | Predecessors | Complete | Remaining | Planned start | Planned finish | Total float | Free float | Resources | On Schedule Indicator | %Completed | Disciplines | Main Activity | WBS | Types | EIT2 Main Activity | Areas | Phases | EIT WBS | EIT PKG | Cable Pull & Laying |
| --- | --- | --- | --- | --- | --- | --- | --- | --- | --- | --- | --- | --- | --- | --- | --- | --- | --- | --- | --- | --- | --- | --- | --- | --- | --- |
|  | 3 | **Instrument Cable Tray/Ladder Installation** |  | 2026-04-01 | 2026-07-08 |  |  |  |  |  |  |  |  |  |  |  |  |  |  |  |  |  |  |  |  |
| 2.2-RHCUIN03-1000 |  | Install support / bracket | 60d | 2026-04-01 A | 2026-06-09 | 2.2-RHCUIN01-1000 SS | 37% | 22d |  |  | 34d | 0d | LABOUR [1000 h]; Construction Material [600] | UDF_G3 | 0 | EE | 1 | C03a | TY1 | Non | RHCU | EIT2.2 | C03a | EIT02.2 |  |
| 2.2-RHCUIN03-1010 |  | Install Ladder / Tray | 60d | 2026-04-01 A | 2026-06-09 | 2.2-RHCUIN03-1020 SS, 2.2-RHCUIN03-1000 FF | 37% | 22d |  |  | 117d | 0d | LABOUR [3000 h]; Construction Material [600] | UDF_G3 | 0 | EE | 1 | C03a | TY1 | Non | RHCU | EIT2.2 | C03a | EIT02.2 |  |
| 2.2-RHCUIN03-1020 |  | Steel Conduits for Cable tray | 60d | 2026-04-01 A | 2026-06-09 | 2.2-RHCUIN03-1000 SS | 37% | 22d |  |  | 117d | 0d | LABOUR [1000 h]; Construction Material [600] | UDF_G3 | 0 | EE | 1 | C03a | TY1 | Non | RHCU | EIT2.2 | C03a | EIT02.2 |  |
| 2.2-RHCUIN03-1030 |  | punch clear | 10d | 2026-06-10 | 2026-06-20 | 2.2-RHCUIN03-1010, 2.2-RHCUIN03-1020 |  |  |  |  | 117d | 0d | LABOUR [200 h]; Construction Material [100] | UDF_G3 | 0 | EE | 1 | C03a | TY1 | Non | RHCU | EIT2.2 | C03a | EIT02.2 |  |
| 2.2-RHCUIN03-1040 |  | Complete QA/QC document | 15d | 2026-06-22 | 2026-07-08 | 2.2-RHCUIN03-1030 |  |  |  |  | 117d | 0d | LABOUR [392.97 h]; Construction Material [150] | UDF_G3 | 0 | EE | 1 | C03a | TY1 | Non | RHCU | EIT2.2 | C03a | EIT02.2 |  |
|  | 8 | **AG Cable Pull Primary Cable** |  | 2026-04-29 | 2026-09-16 |  |  |  |  |  |  |  |  |  |  |  |  |  |  |  |  |  |  |  |  |
| 2.2-RHCUIN01-1060 |  | Pull Cable | 50d | 2026-04-29 A | 2026-08-18 | 2.2-RHCUIN03-1040 SS | 5% | 50d | 2026-07-09 | 2026-09-04 | 117d | 0d | LABOUR [14000 h]; Cable Pull; Construction Material [500] | UDF_G3 | 0 | EE | 1 | C03a | TY1 | SECI | RHCU | EIT2.2 | C03a | EIT02.2 | PUL |
| 2.2-RHCUIN01-1070 |  | Megger & Continuity test | 10d | 2026-08-19 | 2026-08-29 | 2.2-RHCUIN01-1060, 2.2-RHCUIN01-1050 |  |  |  |  | 117d | 0d | LABOUR [500 h]; Cable Pull; Construction Material [100] | UDF_G3 | 0 | EE | 1 | C03a | TY1 | SECI | RHCU | EIT2.2 | C03a | EIT02.2 |  |
| 2.2-RHCUIN01-1080 |  | Complete QA/QC document | 15d | 2026-08-31 | 2026-09-16 | 2.2-RHCUIN01-1070 |  |  |  |  | 117d | 0d | LABOUR [970.5 h]; Cable Pull; Construction Material [150] | UDF_G3 | 0 | EE | 1 | C03a | TY1 | SECI | RHCU | EIT2.2 | C03a | EIT02.2 |  |
|  | 9 | **AG Cable Pull Secondary Cable** |  | 2026-04-29 | 2026-09-16 |  |  |  |  |  |  |  |  |  |  |  |  |  |  |  |  |  |  |  |  |
| 2.2-RHCUIN01-1090 |  | Pull Cable | 50d | 2026-04-29 A | 2026-08-18 | 2.2-RHCUIN03-1040 SS | 4% | 50d | 2026-07-09 | 2026-09-04 | 117d | 0d | LABOUR [14000 h]; Cable Pull; Construction Material [500] | UDF_G3 | 0 | EE | 1 | C03a | TY1 | SECI | RHCU | EIT2.2 | C03a | EIT02.2 | PUL |
| 2.2-RHCUIN01-1100 |  | Megger & Continuity test | 10d | 2026-08-19 | 2026-08-29 | 2.2-RHCUIN01-1090 |  |  |  |  | 117d | 0d | LABOUR [500 h]; Cable Pull; Construction Material [100] | UDF_G3 | 0 | EE | 1 | C03a | TY1 | SECI | RHCU | EIT2.2 | C03a | EIT02.2 |  |
| 2.2-RHCUIN01-1110 |  | Complete QA/QC document | 15d | 2026-08-31 | 2026-09-16 | 2.2-RHCUIN01-1100 |  |  |  |  | 117d | 0d | LABOUR [970.5 h]; Cable Pull; Construction Material [150] | UDF_G3 | 0 | EE | 1 | C03a | TY1 | SECI | RHCU | EIT2.2 | C03a | EIT02.2 |  |
|  | 2 | **Instrument Cable Termination / Glanding** |  | 2026-04-29 | 2026-11-13 |  |  |  |  |  |  |  |  |  |  |  |  |  |  |  |  |  |  |  |  |
|  | 1 | **UG Cable Termination Cable** |  | 2026-04-29 | 2026-07-11 |  |  |  |  |  |  |  |  |  |  |  |  |  |  |  |  |  |  |  |  |
| 2.2-RHCUIN02-1300 |  | Cable Termination/Glanding | 25d | 2026-04-29 A | 2026-06-12 | 2.2-RHCUIN01-1000 SS | 2% | 25d | 2026-06-10 | 2026-07-08 | 174d | 0d | LABOUR [3000 h]; Construction Material [250] | UDF_G3 | 0 | EE | 1 | C03a | TY1 | Non | RHCU | EIT2.2 | C03a | EIT02.2 |  |
| 2.2-RHCUIN02-1310 |  | punch clear | 10d | 2026-06-13 | 2026-06-24 | 2.2-RHCUIN02-1300 |  |  |  |  | 174d | 0d | LABOUR [500 h]; Construction Material [100] | UDF_G3 | 0 | EE | 1 | C03a | TY1 | Non | RHCU | EIT2.2 | C03a | EIT02.2 |  |
| 2.2-RHCUIN02-1320 |  | Complete QA/QC document | 15d | 2026-06-25 | 2026-07-11 | 2.2-RHCUIN02-1310 |  |  |  |  | 174d | 57d | LABOUR [907.72 h]; Construction Material [150] | UDF_G3 | 0 | EE | 1 | C03a | TY1 | Non | RHCU | EIT2.2 | C03a | EIT02.2 |  |
|  | 8 | **Cable Termination Primary Cable** |  | 2026-09-17 | 2026-11-13 |  |  |  |  |  |  |  |  |  |  |  |  |  |  |  |  |  |  |  |  |
| 2.2-RHCUIN02-1000 |  | Cable Termination/Glanding | 25d | 2026-09-17 | 2026-10-15 | 2.2-RHCUIN01-1080, 2.2-RHCUIN02-1320 |  |  |  |  | 117d | 0d | LABOUR [3000 h]; Construction Material [250] | UDF_G3 | 0 | EE | 1 | C03a | TY1 | Non | RHCU | EIT2.2 | C03a | EIT02.2 |  |
| 2.2-RHCUIN02-1010 |  | punch clear | 10d | 2026-10-16 | 2026-10-27 | 2.2-RHCUIN02-1000 |  |  |  |  | 117d | 0d | LABOUR [500 h]; Construction Material [100] | UDF_G3 | 0 | EE | 1 | C03a | TY1 | Non | RHCU | EIT2.2 | C03a | EIT02.2 |  |
| 2.2-RHCUIN02-1020 |  | Complete QA/QC document | 15d | 2026-10-28 | 2026-11-13 | 2.2-RHCUIN02-1010 |  |  |  |  | 117d | 0d | LABOUR [907.72 h]; Construction Material [150] | UDF_G3 | 0 | EE | 1 | C03a | TY1 | Non | RHCU | EIT2.2 | C03a | EIT02.2 |  |
|  | 9 | **Cable Termination Secondary Cable** |  | 2026-09-17 | 2026-11-13 |  |  |  |  |  |  |  |  |  |  |  |  |  |  |  |  |  |  |  |  |
| 2.2-RHCUIN02-1030 |  | Cable Termination/Glanding | 25d | 2026-09-17 | 2026-10-15 | 2.2-RHCUIN01-1110 |  |  |  |  | 117d | 0d | LABOUR [3000 h]; Construction Material [250] | UDF_G3 | 0 | EE | 1 | C03a | TY1 | Non | RHCU | EIT2.2 | C03a | EIT02.2 |  |
| 2.2-RHCUIN02-1040 |  | punch clear | 10d | 2026-10-16 | 2026-10-27 | 2.2-RHCUIN02-1030 |  |  |  |  | 117d | 0d | LABOUR [500 h]; Construction Material [100] | UDF_G3 | 0 | EE | 1 | C03a | TY1 | Non | RHCU | EIT2.2 | C03a | EIT02.2 |  |
| 2.2-RHCUIN02-1050 |  | Complete QA/QC document | 15d | 2026-10-28 | 2026-11-13 | 2.2-RHCUIN02-1040, 2.2-RHCUIN02-1020 FF |  |  |  |  | 117d | 0d | LABOUR [907.72 h]; Construction Material [150] | UDF_G3 | 0 | EE | 1 | C03a | TY1 | Non | RHCU | EIT2.2 | C03a | EIT02.2 |  |

| ID | WBS | Activity | Duration | Start | Finish | Predecessors | Complete | Remaining | Planned start | Planned finish | Total float | Free float | Calendar | Resources | On Schedule Indicator | %Completed | Disciplines | Main Activity | WBS | Types | EIT2 Main Activity | Areas | Phases | EIT WBS | EIT PKG |
| --- | --- | --- | --- | --- | --- | --- | --- | --- | --- | --- | --- | --- | --- | --- | --- | --- | --- | --- | --- | --- | --- | --- | --- | --- | --- |
|  | 4 | **Instrument Calibration** |  | 2026-04-29 | 2026-06-18 |  |  |  |  |  |  |  |  |  |  |  |  |  |  |  |  |  |  |  |  |
| 2.2-RHCUIN05-1000 |  | Calibration of Gauges | 30d | 2026-04-29 A | 2026-06-18 | 2.2-RHCUIN01-1000 SS | 1% | 30d | 2026-06-10 | 2026-07-14 | 50.3d | 0d |  | LABOUR [3000 h]; Construction Material [300] | UDF_G3 | 0 | EE | 1 | C03a | TY1 | Non | RHCU | EIT2.2 | C03c | EIT02.2 |
| 2.2-RHCUIN05-1050 |  | Calibration of Transmitters/Switches | 30d | 2026-04-29 A | 2026-06-18 | 2.2-RHCUIN05-1000 SS, 2.2-RHCUIN05-1000 FF | 1% | 30d | 2026-06-10 | 2026-07-14 | 50.3d | 0d |  | LABOUR [4396.55 h]; Construction Material [300] | UDF_G3 | 0 | IN |  |  |  | Non | RHCU | EIT2.2 |  |  |
|  | 1 | **Gauges** |  | 2026-06-19 | 2026-08-01 |  |  |  |  |  |  |  |  |  |  |  |  |  |  |  |  |  |  |  |  |
| 2.2-RHCUIN04-1000 |  | D.P Pressure Gauge Installation | 8d | 2026-06-19 | 2026-06-27 | 2.2-RHCUIN05-1000 SS, 2.2-RHCUIN05-1050 |  |  |  |  | 50.3d | 0d |  | LABOUR [750 h]; Construction Material [100] | UDF_G3 | 0 | IN |  |  |  | Non | RHCU | EIT2.2 |  |  |
| 2.2-RHCUIN04-1010 |  | Pressure Gauge Installation | 10d | 2026-06-29 | 2026-07-09 | 2.2-RHCUIN04-1000 |  |  |  |  | 50.3d | 0d |  | LABOUR [750 h]; Construction Material [100] | UDF_G3 | 0 | EE | 1 | C03a | TY1 | Non | RHCU | EIT2.2 | C03c | EIT02.2 |
| 2.2-RHCUIN04-1020 |  | Level Gauge Installation | 10d | 2026-07-10 | 2026-07-21 | 2.2-RHCUIN04-1010 |  |  |  |  | 50.3d | 0d |  | LABOUR [1000 h]; Construction Material [100] | UDF_G3 | 0 | EE | 1 | C03a | TY1 | Non | RHCU | EIT2.2 | C03c | EIT02.2 |
| 2.2-RHCUIN04-1030 |  | Clear punch | 5d | 2026-07-22 | 2026-07-27 | 2.2-RHCUIN04-1020 |  |  |  |  | 50.3d | 0d |  | LABOUR [200 h]; Construction Material [50] | UDF_G3 | 0 | EE | 1 | C03a | TY1 | Non | RHCU | EIT2.2 | C03c | EIT02.2 |
| 2.2-RHCUIN04-1040 |  | Complete QA/QC document | 5d | 2026-07-28 | 2026-08-01 | 2.2-RHCUIN04-1030 |  |  |  |  | 50.3d | 0d |  | LABOUR [296.58 h]; Construction Material [50] | UDF_G3 | 0 | EE | 1 | C03a | TY1 | Non | RHCU | EIT2.2 | C03c | EIT02.2 |
|  | 6 | **Transmitters/Switches** |  | 2026-05-15 | 2026-08-20 |  |  |  |  |  |  |  |  |  |  |  |  |  |  |  |  |  |  |  |  |
| 2.2-RHCUIN04-1050 |  | Install support / bracket | 10d | 2026-05-15 | 2026-05-26 | 2.2-RHCUIN05-1050 SS |  |  |  |  | 64.3d | 0d |  | LABOUR [300 h]; Construction Material [100] | UDF_G3 | 0 | EE | 1 | C03a | TY1 | Non | RHCU | EIT2.2 | C03c | EIT02.2 |
| 2.2-RHCUIN04-1060 |  | Pressure transmitters Installation | 10d | 2026-05-27 | 2026-06-06 | 2.2-RHCUIN04-1050 |  |  |  |  | 64.3d | 0d |  | LABOUR [500 h]; Construction Material [100] | UDF_G3 | 0 | EE | 1 | C03a | TY1 | Non | RHCU | EIT2.2 | C03c | EIT02.2 |
| 2.2-RHCUIN04-1070 |  | D.P. Transmitters - HART Installation | 10d | 2026-06-08 | 2026-06-18 | 2.2-RHCUIN04-1060 |  |  |  |  | 64.3d | 0d |  | LABOUR [500 h]; Construction Material [100] | UDF_G3 | 0 | EE | 1 | C03a | TY1 | Non | RHCU | EIT2.2 | C03c | EIT02.2 |
| 2.2-RHCUIN04-1080 |  | Temperature Transmitters Installation | 10d | 2026-06-19 | 2026-06-30 | 2.2-RHCUIN04-1070 |  |  |  |  | 78.3d | 28d |  | LABOUR [500 h]; Construction Material [100] | UDF_G3 | 0 | IN |  |  |  | Non | RHCU | EIT2.2 |  |  |
| 2.2-RHCUIN04-1090 |  | Level Switch Installation | 10d | 2026-08-03 | 2026-08-13 | 2.2-RHCUIN04-1080, 2.2-RHCUIN04-1040 |  |  |  |  | 50.3d | 0d |  | LABOUR [500 h]; Construction Material [100] | UDF_G3 | 0 | IN |  |  |  | Non | RHCU | EIT2.2 |  |  |
| 2.2-RHCUIN04-1100 |  | Clear punch | 2d | 2026-08-14 | 2026-08-15 | 2.2-RHCUIN04-1090 |  |  |  |  | 50.3d | 0d |  | LABOUR [200 h]; Construction Material [20] | UDF_G3 | 0 | IN |  |  |  | Non | RHCU | EIT2.2 |  |  |
| 2.2-RHCUIN04-1110 |  | Complete QA/QC document | 4d | 2026-08-17 | 2026-08-20 | 2.2-RHCUIN04-1100 |  |  |  |  | 50.3d | 0d |  | LABOUR [496.58 h]; Construction Material [40] | UDF_G3 | 0 | IN |  |  |  | Non | RHCU | EIT2.2 |  |  |
|  | 11 | **Instrument Junction Box Installation** |  | 2026-04-29 | 2026-05-30 |  |  |  |  |  |  |  |  |  |  |  |  |  |  |  |  |  |  |  |  |
| 2.2-RHCUIN04-1120 |  | Install support / bracket | 10d | 2026-04-29 A | 2026-05-26 | 2.2-RHCUIN04-1050 SS | 30% | 10d | 2026-06-22 | 2026-07-02 | 100.3d | 0d |  | LABOUR [1000 h]; Construction Material [100] | UDF_G3 | 0 | EE | 1 | C03a | TY1 | Non | RHCU | EIT2.2 | C03c | EIT02.2 |
| 2.2-RHCUIN04-1130 |  | Instrument Junction Box Installation | 10d | 2026-04-29 A | 2026-05-26 | 2.2-RHCUIN04-1120 SS | 30% | 10d | 2026-07-03 | 2026-07-14 | 100.3d | 0d |  | LABOUR [1500 h]; Construction Material [100] | UDF_G3 | 0 | EE | 1 | C03a | TY1 | Non | RHCU | EIT2.2 | C03c | EIT02.2 |
| 2.2-RHCUIN04-1140 |  | Clear punch | 2d | 2026-05-27 | 2026-05-28 | 2.2-RHCUIN04-1130 |  |  |  |  | 100.3d | 0d |  | LABOUR [300 h]; Construction Material [20] | UDF_G3 | 0 | EE | 1 | C03a | TY1 | Non | RHCU | EIT2.2 | C03c | EIT02.2 |
| 2.2-RHCUIN04-1150 |  | Complete QA/QC document | 2d | 2026-05-29 | 2026-05-30 | 2.2-RHCUIN04-1140 |  |  |  |  | 100.3d | 36d |  | LABOUR [196.58 h]; Construction Material [20] | UDF_G3 | 0 | EE | 1 | C03a | TY1 | Non | RHCU | EIT2.2 | C03c | EIT02.2 |
|  | 5 | **Tubing** |  | 2026-06-19 | 2026-09-15 |  |  |  |  |  |  |  |  |  |  |  |  |  |  |  |  |  |  |  |  |
| 2.2-RHCUIN07-1000 |  | Instrument Hook up Tubing Installation | 20d | 2026-06-19 | 2026-07-11 | 2.2-RHCUIN04-1060, 2.2-RHCUIN04-1070 |  |  |  |  | 64.3d | 0d |  | LABOUR [100 h]; Construction Material [200] | UDF_G3 | 0 | IN |  |  |  | Non | RHCU | EIT2.2 | C03c | EIT02.2 |
| 2.2-RHCUIN07-1010 |  | Leak Test | 20d | 2026-07-13 | 2026-08-04 | 2.2-RHCUIN07-1000, 2.2-RHCUIN04-1150 |  |  |  |  | 64.3d | 14d |  | LABOUR [30 h]; Construction Material [200] | UDF_G3 | 0 | IN |  |  |  | Non | RHCU | EIT2.2 | C03c | EIT02.2 |
| 2.2-RHCUIN07-1020 |  | Clear Punch | 10d | 2026-08-21 | 2026-09-01 | 2.2-RHCUIN07-1010, 2.2-RHCUIN04-1110 |  |  |  |  | 50.3d | 0.1d |  | LABOUR [20 h]; Construction Material [100] | UDF_G3 | 0 | IN |  |  |  | Non | RHCU | EIT2.2 | C03c | EIT02.2 |
| 2.2-RHCUIN07-1030 |  | Complete QA/QC document | 15d | 2026-09-02 | 2026-09-15 | 2.2-RHCUIN07-1020 |  |  |  |  | 63.5d | 20.88d | 7 - Day Workweek (No Holidays) | LABOUR [29.2 h]; Construction Material [120] | UDF_G3 | 0 | IN |  |  |  | Non | RHCU | EIT2.2 | C03c | EIT02.2 |

| ID | WBS | Activity | Duration | Start | Finish | Predecessors | Complete | Remaining | Planned start | Planned finish | Total float | Free float | Resources | On Schedule Indicator | %Completed | Disciplines | EIT2 Main Activity | Areas | Phases | EIT WBS | EIT PKG | Motor Loop | Main Activity | WBS | Types |
| --- | --- | --- | --- | --- | --- | --- | --- | --- | --- | --- | --- | --- | --- | --- | --- | --- | --- | --- | --- | --- | --- | --- | --- | --- | --- |
|  | 7 | **Instrument Loop Check** |  | 2026-11-14 | 2027-01-22 |  |  |  |  |  |  |  |  |  |  |  |  |  |  |  |  |  |  |  |  |
| 2.2-RHCUIN00-1000 |  | Instrument Loop check | 30d | 2026-11-14 | 2026-12-18 | 2.2-RHCUIN02-1050 |  |  |  |  | 117d | 0d | LABOUR [3000 h]; Construction Material [300] | UDF_G3 | 0 | IN | Non | RHCU | EIT2.2 | C03c | EIT02.2 | LO |  |  |  |
| 2.2-RHCUIN00-1010 |  | Clear Punch | 15d | 2026-12-19 | 2027-01-05 | 2.2-RHCUIN00-1000 |  |  |  |  | 117d | 0d | LABOUR [1000 h]; Construction Material [150] | UDF_G3 | 0 | IN | Non | RHCU | EIT2.2 | C03c | EIT02.2 | LO |  |  |  |
| 2.2-RHCUIN00-1020 |  | Complete QA/QC document | 15d | 2027-01-06 | 2027-01-22 | 2.2-RHCUIN00-1010 |  |  |  |  | 117d |  | LABOUR [1281.31 h]; Construction Material [150] | UDF_G3 | 0 | IN | Non | RHCU | EIT2.2 | C03c | EIT02.2 | LO |  |  |  |
|  | 5 | **Telecommunication** |  | 2026-05-01 | 2026-12-18 |  |  |  |  |  |  |  |  |  |  |  |  |  |  |  |  |  |  |  |  |
|  | 3 | **Telecom** |  | 2026-05-01 | 2026-12-18 |  |  |  |  |  |  |  |  |  |  |  |  |  |  |  |  |  |  |  |  |
|  | 3 | **Telecom Cable Tray/Ladder Installation** |  | 2026-06-10 | 2026-08-29 |  |  |  |  |  |  |  |  |  |  |  |  |  |  |  |  |  |  |  |  |
| 2.2-RHCUTE03-1000 |  | Install support / bracket | 50d | 2026-06-10 | 2026-08-06 | 2.2-RHCUIN03-1000 |  |  |  |  | 34d | 0d | LABOUR [3 h]; Construction Material [500] | UDF_G3 | 0 | EE | Non | RHCU | EIT2.2 | C03a | EIT02.2 |  | 1 | C03a | TY1 |
| 2.2-RHCUTE03-1010 |  | Install Ladder / Tray | 50d | 2026-06-10 | 2026-08-06 | 2.2-RHCUTE03-1020 SS, 2.2-RHCUTE03-1000 FF |  |  |  |  | 34d | 0d | LABOUR [77 h]; Construction Material [500] | UDF_G3 | 0 | EE | Non | RHCU | EIT2.2 | C03a | EIT02.2 |  | 1 | C03a | TY1 |
| 2.2-RHCUTE03-1020 |  | Steel Conduits for Cable tray | 50d | 2026-06-10 | 2026-08-06 | 2.2-RHCUTE03-1000 SS |  |  |  |  | 34d | 0d | LABOUR [3 h]; Construction Material [500] | UDF_G3 | 0 | EE | Non | RHCU | EIT2.2 | C03a | EIT02.2 |  | 1 | C03a | TY1 |
| 2.2-RHCUTE03-1030 |  | punch clear | 5d | 2026-08-07 | 2026-08-12 | 2.2-RHCUTE03-1010, 2.2-RHCUTE03-1020 |  |  |  |  | 34d | 0d | LABOUR [75 h]; Construction Material [50] | UDF_G3 | 0 | EE | Non | RHCU | EIT2.2 | C03a | EIT02.2 |  | 1 | C03a | TY1 |
| 2.2-RHCUTE03-1040 |  | Complete QA/QC document | 15d | 2026-08-13 | 2026-08-29 | 2.2-RHCUTE03-1030 |  |  |  |  | 34d | 0d | LABOUR [75 h]; Construction Material [150] | UDF_G3 | 0 | EE | Non | RHCU | EIT2.2 | C03a | EIT02.2 |  | 1 | C03a | TY1 |
|  | 1 | **AG Telecommunication Cable Installation** |  | 2026-05-01 | 2026-11-02 |  |  |  |  |  |  |  |  |  |  |  |  |  |  |  |  |  |  |  |  |
| 2.2-RHCUTE01-1000 |  | Above Ground Pull Cable | 30d | 2026-05-01 A | 2026-10-03 | 2.2-RHCUTE03-1040 | 6% | 30d | 2026-09-07 | 2026-10-10 | 34d | 0d | LABOUR [1000 h]; Construction Material [300] | UDF_G3 | 0 | EE | Non | RHCU | EIT2.2 | C03a | EIT02.2 |  | 1 | C03a | TY1 |
| 2.2-RHCUTE01-1010 |  | Megger & Continuity test | 10d | 2026-10-05 | 2026-10-15 | 2.2-RHCUTE01-1000, 2.2-RHCUIN07-1030 |  |  |  |  | 34d | 0d | LABOUR [200 h]; Construction Material [100] | UDF_G3 | 0 | EE | Non | RHCU | EIT2.2 | C03a | EIT02.2 |  | 1 | C03a | TY1 |
| 2.2-RHCUTE01-1020 |  | Complete QA/QC document | 15d | 2026-10-16 | 2026-11-02 | 2.2-RHCUTE01-1010 |  |  |  |  | 34d | 0d | LABOUR [100 h]; Construction Material [150] | UDF_G3 | 0 | EE | Non | RHCU | EIT2.2 | C03a | EIT02.2 |  | 1 | C03a | TY1 |
|  | 4 | **Telecommunication Termination / Glanding** |  | 2026-11-03 | 2026-12-18 |  |  |  |  |  |  |  |  |  |  |  |  |  |  |  |  |  |  |  |  |
| 2.2-RHCUTE02-1000 |  | Cable Termination/Glanding | 20d | 2026-11-03 | 2026-11-25 | 2.2-RHCUTE01-1020 |  |  |  |  | 34d | 0d | LABOUR [200 h]; Construction Material [200] | UDF_G3 | 0 | EE | Non | RHCU | EIT2.2 | C03a | EIT02.2 |  | 1 | C03a | TY1 |
| 2.2-RHCUTE02-1010 |  | Clear punch | 10d | 2026-11-26 | 2026-12-07 | 2.2-RHCUTE02-1000 |  |  |  |  | 34d | 0d | LABOUR [100 h]; Construction Material [100] | UDF_G3 | 0 | EE | Non | RHCU | EIT2.2 | C03a | EIT02.2 |  | 1 | C03a | TY1 |
| 2.2-RHCUTE02-1020 |  | Complete QA/QC document | 10d | 2026-12-08 | 2026-12-18 | 2.2-RHCUTE02-1010, 2.2-RHCUTE04-1020 |  |  |  |  | 34d | 36d | LABOUR [233.99 h]; Construction Material [100] | UDF_G3 | 0 | EE | Non | RHCU | EIT2.2 | C03a | EIT02.2 |  | 1 | C03a | TY1 |
|  | 2 | **Telecommunication Equipment Installation** |  | 2026-08-31 | 2026-11-02 |  |  |  |  |  |  |  |  |  |  |  |  |  |  |  |  |  |  |  |  |
| 2.2-RHCUTE04-1000 |  | Telecom Equpiment Installation | 30d | 2026-08-31 | 2026-10-03 | 2.2-RHCUTE03-1040 |  |  |  |  | 64d | 0d | LABOUR [120 h]; Construction Material [300] | UDF_G3 | 0 | EE | Non | RHCU | EIT2.2 | C03a | EIT02.2 |  | 1 | C03a | TY1 |
| 2.2-RHCUTE04-1010 |  | Clear Punch | 10d | 2026-10-05 | 2026-10-15 | 2.2-RHCUTE04-1000 |  |  |  |  | 64d | 0d | LABOUR [30 h]; Construction Material [100] | UDF_G3 | 0 | EE | Non | RHCU | EIT2.2 | C03a | EIT02.2 |  | 1 | C03a | TY1 |
| 2.2-RHCUTE04-1020 |  | Complete QA/QC document | 15d | 2026-10-16 | 2026-11-02 | 2.2-RHCUTE04-1010 |  |  |  |  | 64d | 30d | LABOUR [40.57 h]; Construction Material [150] | UDF_G3 | 0 | EE | Non | RHCU | EIT2.2 | C03a | EIT02.2 |  | 1 | C03a | TY1 |

| ID | WBS | Activity | Duration | Start | Finish | Predecessors | Total float | Free float | Resources | On Schedule Indicator | %Completed | Disciplines | EIT2 Main Activity | Areas | Phases | EIT WBS | EIT PKG | Cable Pull & Laying |
| --- | --- | --- | --- | --- | --- | --- | --- | --- | --- | --- | --- | --- | --- | --- | --- | --- | --- | --- |
|  | 2 | **RHCU ZONE 2** |  | 2026-05-20 | 2027-04-20 |  |  |  |  |  |  |  |  |  |  |  |  |  |
|  | 1 | **Electrical Works** |  | 2026-05-20 | 2027-02-24 |  |  |  |  |  |  |  |  |  |  |  |  |  |
|  | 6 | **Cable trench Excavation buried** |  | 2026-05-20 | 2026-07-27 |  |  |  |  |  |  |  |  |  |  |  |  |  |
|  | 8 | **CO3-ETD-386/695/285/284/809/253/251/252/808/352/289/291/313/290/373** |  | 2026-05-20 | 2026-06-22 |  |  |  |  |  |  |  |  |  |  |  |  |  |
| 2.2-RHCUEE09-1020 |  | Cable trench Excavation | 24d | 2026-05-20 | 2026-06-16 | 2.2-RHCUEE09-1000 | -6d | 0d | LABOUR; Construction Material [300] | UDF_G3 | 0 | EE | Non | RHCU | EIT2.2 | C03c | EIT02.2 |  |
| 2.2-RHCUEE09-1030 |  | Sand Filling Compaction | 5d | 2026-06-17 | 2026-06-22 | 2.2-RHCUEE09-1020 | 74d | 25d | LABOUR; Construction Material [50] | UDF_G3 | 0 | EE | Non | RHCU | EIT2.2 | C03c | EIT02.2 |  |
|  | 1 | **C03-ETD-812/254/811/288/631/397/802/832/286/322/307/308/309/672/304/305/815** |  | 2026-06-17 | 2026-07-27 |  |  |  |  |  |  |  |  |  |  |  |  |  |
| 2.2-RHCUEE09-1040 |  | Cable trench Excavation | 30d | 2026-06-17 | 2026-07-21 | 2.2-RHCUEE09-1020 | 35d | 0d | LABOUR; Construction Material [300] | UDF_G3 | 0 | EE | Non | RHCU | EIT2.2 | C03c | EIT02.2 |  |
| 2.2-RHCUEE09-1050 |  | Sand Filling Compaction | 5d | 2026-07-22 | 2026-07-27 | 2.2-RHCUEE09-1040, 2.2-RHCUEE09-1030 | 49d | 4d | LABOUR; Construction Material [50] | UDF_G3 | 0 | EE | Non | RHCU | EIT2.2 | C03c | EIT02.2 |  |
|  | 8 | **Cable Laying Direct buried** |  | 2026-06-17 | 2026-10-20 |  |  |  |  |  |  |  |  |  |  |  |  |  |
|  | 8 | **CO3-ETD-386/695/285/284/809/253/251/252/808/352/289/291/313/290/373** |  | 2026-06-17 | 2026-09-15 |  |  |  |  |  |  |  |  |  |  |  |  |  |
| 2.2-RHCUEE01-1415 |  | Sand Filling First layer | 4d | 2026-06-17 | 2026-06-20 | 2.2-RHCUEE09-1020 | 20d | 0d | LABOUR [100 h]; Cable Pull; Construction Material [40] | UDF_G3 | 0 | EE | PRIC | RHCU | EIT2.2 |  |  |  |
| 2.2-RHCUEE01-1420 |  | Cable Laying | 30d | 2026-06-22 | 2026-07-25 | 2.2-RHCUEE01-1415 | 20d | 0d | LABOUR [1500 h]; Cable Pull [5974 h]; Construction Material [300] | UDF_G3 | 0 | EE | PRIC | RHCU | EIT2.2 | C03c | EIT02.2 | PUL |
| 2.2-RHCUEE01-1430 |  | Megger & Continuity test | 5d | 2026-07-27 | 2026-07-31 | 2.2-RHCUEE01-1420 | 45d | 0d | LABOUR [100 h]; Cable Pull; Construction Material [50] | UDF_G3 | 0 | EE | PRIC | RHCU | EIT2.2 | C03c | EIT02.2 |  |
| 2.2-RHCUEE01-1440 |  | punch Clear | 5d | 2026-08-01 | 2026-08-06 | 2.2-RHCUEE01-1430, 2.2-RHCUEE09-1050 | 45d | 0d | LABOUR [100 h]; Cable Pull; Construction Material [50] | UDF_G3 | 0 | EE | PRIC | RHCU | EIT2.2 | C03c | EIT02.2 |  |
| 2.2-RHCUEE01-1450 |  | Sand Filling Compaction | 4d | 2026-08-07 | 2026-08-11 | 2.2-RHCUEE01-1440 | 45d | 0d | LABOUR [100 h]; Cable Pull; Construction Material [40] | UDF_G3 | 0 | EE | PRIC | RHCU | EIT2.2 |  |  |  |
| 2.2-RHCUEE01-1460 |  | Complete QA/QC document | 10d | 2026-08-12 | 2026-08-22 | 2.2-RHCUEE01-1450 | 45d | 0d | LABOUR [100 h]; Cable Pull; Construction Material [100] | UDF_G3 | 0 | EE | PRIC | RHCU | EIT2.2 | C03c | EIT02.2 |  |
| 2.2-RHCUEE01-1470 |  | Back Filling | 20d | 2026-08-24 | 2026-09-15 | 2.2-RHCUEE01-1460 | 45d | 10d | LABOUR [680.7 h]; Cable Pull; Construction Material [200] | UDF_G3 | 0 | EE | PRIC | RHCU | EIT2.2 | C03c | EIT02.2 |  |
|  | 1 | **C03-ETD-812/254/811/288/631/397/802/832/286/322/307/308/309/672/304/305/815** |  | 2026-07-22 | 2026-10-20 |  |  |  |  |  |  |  |  |  |  |  |  |  |
| 2.2-RHCUEE01-1550 |  | Sand Filling First layer | 4d | 2026-07-22 | 2026-07-25 | 2.2-RHCUEE09-1040 | 35d | 0d | LABOUR [100 h]; Cable Pull; Construction Material [40] | UDF_G3 | 0 | EE | PRIC | RHCU | EIT2.2 |  |  |  |
| 2.2-RHCUEE01-1660 |  | Cable Laying | 30d | 2026-07-27 | 2026-08-29 | 2.2-RHCUEE01-1550 | 35d | 0d | LABOUR [1500 h]; Cable Pull [5974 h]; Construction Material [300] | UDF_G3 | 0 | EE | PRIC | RHCU | EIT2.2 | C03c | EIT02.2 | PUL |
| 2.2-RHCUEE01-1670 |  | Megger & Continuity test | 5d | 2026-08-31 | 2026-09-04 | 2.2-RHCUEE01-1660 | 35d | 0d | LABOUR [100 h]; Cable Pull; Construction Material [50] | UDF_G3 | 0 | EE | PRIC | RHCU | EIT2.2 | C03c | EIT02.2 |  |
| 2.2-RHCUEE01-1680 |  | punch Clear | 5d | 2026-09-05 | 2026-09-10 | 2.2-RHCUEE01-1670 | 35d | 0d | LABOUR [100 h]; Cable Pull; Construction Material [50] | UDF_G3 | 0 | EE | PRIC | RHCU | EIT2.2 | C03c | EIT02.2 |  |
| 2.2-RHCUEE01-1690 |  | Sand Filling Compaction | 4d | 2026-09-11 | 2026-09-15 | 2.2-RHCUEE01-1680 | 35d | 0d | LABOUR [100 h]; Cable Pull; Construction Material [40] | UDF_G3 | 0 | EE | PRIC | RHCU | EIT2.2 |  |  |  |
| 2.2-RHCUEE01-1700 |  | Complete QA/QC document | 10d | 2026-09-16 | 2026-09-26 | 2.2-RHCUEE01-1690 | 35d | 0d | LABOUR [100 h]; Cable Pull; Construction Material [100] | UDF_G3 | 0 | EE | PRIC | RHCU | EIT2.2 | C03c | EIT02.2 |  |
| 2.2-RHCUEE01-1710 |  | Back Filling | 20d | 2026-09-28 | 2026-10-20 | 2.2-RHCUEE01-1700, 2.2-RHCUEE01-1470 | 35d | 15d | LABOUR [680.7 h]; Cable Pull; Construction Material [200] | UDF_G3 | 0 | EE | PRIC | RHCU | EIT2.2 | C03c | EIT02.2 |  |

| ID | WBS | Activity | Duration | Start | Finish | Predecessors | Total float | Free float | Resources | On Schedule Indicator | %Completed | Disciplines | EIT2 Main Activity | Areas | Phases | Cable Pull & Laying | EIT WBS | EIT PKG | Main Activity | WBS | Types |
| --- | --- | --- | --- | --- | --- | --- | --- | --- | --- | --- | --- | --- | --- | --- | --- | --- | --- | --- | --- | --- | --- |
|  | 13 | **Cable Laying Concrete Trench** |  | 2026-06-22 | 2026-11-06 |  |  |  |  |  |  |  |  |  |  |  |  |  |  |  |  |
|  | 1 | **C03-ETC-484/536/219/245/483/237/544/236/235/284/538/201/552/290/507** |  | 2026-06-22 | 2026-09-21 |  |  |  |  |  |  |  |  |  |  |  |  |  |  |  |  |
| 2.2-RHCUEE01-1480 |  | Cable Laying | 35d | 2026-06-22 | 2026-07-31 | 2.2-RHCUEE01-1420 SS | 20d | 0d | LABOUR [1500 h]; Cable Pull [5974 h]; Construction Material [350] | UDF_G3 | 0 | EE | PRIC | RHCU | EIT2.2 | PUL | C03c | EIT02.2 |  |  |  |
| 2.2-RHCUEE01-1490 |  | Megger & Continuity test | 5d | 2026-08-01 | 2026-08-06 | 2.2-RHCUEE01-1480 | 40d | 0d | LABOUR [100 h]; Cable Pull; Construction Material [50] | UDF_G3 | 0 | EE | PRIC | RHCU | EIT2.2 |  | C03c | EIT02.2 |  |  |  |
| 2.2-RHCUEE01-1500 |  | punch Clear | 5d | 2026-08-07 | 2026-08-12 | 2.2-RHCUEE01-1490 | 40d | 0d | LABOUR [100 h]; Cable Pull; Construction Material [50] | UDF_G3 | 0 | EE | PRIC | RHCU | EIT2.2 |  | C03c | EIT02.2 |  |  |  |
| 2.2-RHCUEE01-1510 |  | Sand Filling Compaction | 4d | 2026-08-13 | 2026-08-17 | 2.2-RHCUEE01-1500 | 40d | 0d | LABOUR [100 h]; Cable Pull; Construction Material [40] | UDF_G3 | 0 | EE | PRIC | RHCU | EIT2.2 |  |  |  |  |  |  |
| 2.2-RHCUEE01-1520 |  | Complete QA/QC document | 10d | 2026-08-18 | 2026-08-28 | 2.2-RHCUEE01-1510 | 40d | 0d | LABOUR [100 h]; Cable Pull; Construction Material [100] | UDF_G3 | 0 | EE | PRIC | RHCU | EIT2.2 |  | C03c | EIT02.2 |  |  |  |
| 2.2-RHCUEE01-1530 |  | Back Filling | 20d | 2026-08-29 | 2026-09-21 | 2.2-RHCUEE01-1520 | 40d | 20d | LABOUR [780.7 h]; Cable Pull; Construction Material [200] | UDF_G3 | 0 | EE | PRIC | RHCU | EIT2.2 |  | C03c | EIT02.2 |  |  |  |
|  | 2 | **CO3-ETC-213/561/416/250/238/246/202/247/285** |  | 2026-08-01 | 2026-11-06 |  |  |  |  |  |  |  |  |  |  |  |  |  |  |  |  |
| 2.2-RHCUEE01-1540 |  | Cable Laying | 40d | 2026-08-01 | 2026-09-16 | 2.2-RHCUEE01-1480 | 20d | 0d | LABOUR [1500 h]; Cable Pull [5974 h]; Construction Material [400] | UDF_G3 | 0 | EE | PRIC | RHCU | EIT2.2 | PUL | C03c | EIT02.2 |  |  |  |
| 2.2-RHCUEE01-1560 |  | Megger & Continuity test | 5d | 2026-09-17 | 2026-09-22 | 2.2-RHCUEE01-1540 | 20d | 0d | LABOUR [100 h]; Cable Pull; Construction Material [50] | UDF_G3 | 0 | EE | PRIC | RHCU | EIT2.2 |  | C03c | EIT02.2 |  |  |  |
| 2.2-RHCUEE01-1570 |  | punch Clear | 5d | 2026-09-23 | 2026-09-28 | 2.2-RHCUEE01-1560 | 20d | 0d | LABOUR [100 h]; Cable Pull; Construction Material [50] | UDF_G3 | 0 | EE | PRIC | RHCU | EIT2.2 |  | C03c | EIT02.2 |  |  |  |
| 2.2-RHCUEE01-1580 |  | Sand Filling Compaction | 4d | 2026-09-29 | 2026-10-02 | 2.2-RHCUEE01-1570 | 20d | 0d | LABOUR [100 h]; Cable Pull; Construction Material [40] | UDF_G3 | 0 | EE | PRIC | RHCU | EIT2.2 |  |  |  |  |  |  |
| 2.2-RHCUEE01-1590 |  | Complete QA/QC document | 10d | 2026-10-03 | 2026-10-14 | 2.2-RHCUEE01-1580 | 20d | 0d | LABOUR [100 h]; Cable Pull; Construction Material [100] | UDF_G3 | 0 | EE | PRIC | RHCU | EIT2.2 |  | C03c | EIT02.2 |  |  |  |
| 2.2-RHCUEE01-1600 |  | Back Filling | 20d | 2026-10-15 | 2026-11-06 | 2.2-RHCUEE01-1590, 2.2-RHCUEE01-1530, 2.2-RHCUEE01-1710 FF | 20d | 0d | LABOUR [780.7 h]; Cable Pull; Construction Material [200] | UDF_G3 | 0 | EE | PRIC | RHCU | EIT2.2 |  | C03c | EIT02.2 |  |  |  |
|  | 1 | **Electrical Cable Tray/Ladder Installation** |  | 2026-05-20 | 2026-08-19 |  |  |  |  |  |  |  |  |  |  |  |  |  |  |  |  |
| 2.2-RHCUEE03-1050 |  | Install support / bracket | 54d | 2026-05-20 | 2026-07-21 | 2.2-RHCUEE09-1020 SS | 111d | 0d | LABOUR [1000 h]; Construction Material [600] | UDF_G3 | 0 | EE | Non | RHCU | EIT2.2 |  | C03a | EIT02.2 | 1 | C03a | TY1 |
| 2.2-RHCUEE03-1060 |  | Install Ladder / Tray | 54d | 2026-05-20 | 2026-07-21 | 2.2-RHCUEE03-1050 SS | 123d | 0d | LABOUR [5000 h]; Construction Material [600] | UDF_G3 | 0 | EE | Non | RHCU | EIT2.2 |  | C03a | EIT02.2 | 1 | C03a | TY1 |
| 2.2-RHCUEE03-1070 |  | Install Conduits | 54d | 2026-05-20 | 2026-07-21 | 2.2-RHCUEE03-1060 SS | 181d | 0d | LABOUR [1000 h]; Construction Material [600] | UDF_G3 | 0 | EE | Non | RHCU | EIT2.2 |  | C03a | EIT02.2 | 1 | C03a | TY1 |
| 2.2-RHCUEE03-1080 |  | Clear punch | 10d | 2026-07-22 | 2026-08-01 | 2.2-RHCUEE03-1070, 2.2-RHCUEE03-1060 | 181d | 0d | LABOUR [500 h]; Construction Material [100] | UDF_G3 | 0 | EE | Non | RHCU | EIT2.2 |  | C03a | EIT02.2 | 1 | C03a | TY1 |
| 2.2-RHCUEE03-1090 |  | Complete QA/QC document | 15d | 2026-08-03 | 2026-08-19 | 2.2-RHCUEE03-1080 | 181d | 45d | LABOUR [1229.78 h]; Construction Material [150] | UDF_G3 | 0 | EE | Non | RHCU | EIT2.2 |  | C03a | EIT02.2 | 1 | C03a | TY1 |
|  | 9 | **AG Cable Pull LV Cable** |  | 2026-07-22 | 2026-10-28 |  |  |  |  |  |  |  |  |  |  |  |  |  |  |  |  |
| 2.2-RHCUEE01-1330 |  | Pull Cable | 60d | 2026-07-22 | 2026-09-29 | 2.2-RHCUEE03-1060 | 123d | 0d | LABOUR [2000 h]; Cable Pull; Construction Material [600] | UDF_G3 | 0 | EE | SECE | RHCU | EIT2.2 | PUL | C03a | EIT02.2 | 1 | C03a | TY1 |
| 2.2-RHCUEE01-1340 |  | Megger & Continuity test | 10d | 2026-09-30 | 2026-10-10 | 2.2-RHCUEE01-1330 | 136d | 0d | LABOUR [300 h]; Cable Pull; Construction Material [100] | UDF_G3 | 0 | EE | SECE | RHCU | EIT2.2 |  | C03a | EIT02.2 | 1 | C03a | TY1 |
| 2.2-RHCUEE01-1350 |  | Complete QA/QC document | 15d | 2026-10-12 | 2026-10-28 | 2.2-RHCUEE01-1340, 2.2-RHCUEE03-1090 | 136d | 0d | LABOUR [380.7 h]; Cable Pull; Construction Material [150] | UDF_G3 | 0 | EE | SECE | RHCU | EIT2.2 |  | C03a | EIT02.2 | 1 | C03a | TY1 |

| ID | WBS | Activity | Duration | Start | Finish | Predecessors | Total float | Free float | Resources | On Schedule Indicator | %Completed | Disciplines | Main Activity | WBS | Types | EIT2 Main Activity | Areas | Phases | Cable Pull & Laying | EIT WBS | EIT PKG |
| --- | --- | --- | --- | --- | --- | --- | --- | --- | --- | --- | --- | --- | --- | --- | --- | --- | --- | --- | --- | --- | --- |
|  | 10 | **AG Cable Pull Control Cable** |  | 2026-07-22 | 2026-10-28 |  |  |  |  |  |  |  |  |  |  |  |  |  |  |  |  |
| 2.2-RHCUEE01-1360 |  | Pull Cable | 60d | 2026-07-22 | 2026-09-29 | 2.2-RHCUEE01-1330 SS | 123d | 0d | LABOUR [2000 h]; Cable Pull; Construction Material [600] | UDF_G3 | 0 | EE | 1 | C03a | TY1 | SECE | RHCU | EIT2.2 | PUL | C03a | EIT02.2 |
| 2.2-RHCUEE01-1370 |  | Megger & Continuity test | 10d | 2026-09-30 | 2026-10-10 | 2.2-RHCUEE01-1360 | 136d | 0d | LABOUR [300 h]; Cable Pull; Construction Material [100] | UDF_G3 | 0 | EE | 1 | C03a | TY1 | SECE | RHCU | EIT2.2 |  | C03a | EIT02.2 |
| 2.2-RHCUEE01-1380 |  | Complete QA/QC document | 15d | 2026-10-12 | 2026-10-28 | 2.2-RHCUEE01-1370 | 136d | 0d | LABOUR [380.7 h]; Cable Pull; Construction Material [150] | UDF_G3 | 0 | EE | 1 | C03a | TY1 | SECE | RHCU | EIT2.2 |  | C03a | EIT02.2 |
|  | 11 | **AG Lighting Cable** |  | 2026-07-22 | 2026-11-26 |  |  |  |  |  |  |  |  |  |  |  |  |  |  |  |  |
| 2.2-RHCUEE01-1390 |  | Pull Cable | 60d | 2026-07-22 | 2026-09-29 | 2.2-RHCUEE01-1360 SS | 123d | 0d | LABOUR [2000 h]; Cable Pull; Construction Material [600] | UDF_G3 | 0 | EE | 1 | C03a | TY1 | SECE | RHCU | EIT2.2 | PUL | C03a | EIT02.2 |
| 2.2-RHCUEE01-1400 |  | Megger & Continuity test | 30d | 2026-09-30 | 2026-11-03 | 2.2-RHCUEE01-1390 | 123d | 0d | LABOUR [300 h]; Cable Pull; Construction Material [300] | UDF_G3 | 0 | EE | 1 | C03a | TY1 | SECE | RHCU | EIT2.2 |  | C03a | EIT02.2 |
| 2.2-RHCUEE01-1410 |  | Complete QA/QC document | 20d | 2026-11-04 | 2026-11-26 | 2.2-RHCUEE01-1400 | 123d | 0d | LABOUR [380.7 h]; Cable Pull; Construction Material [200] | UDF_G3 | 0 | EE | 1 | C03a | TY1 | SECE | RHCU | EIT2.2 |  | C03a | EIT02.2 |
|  | 4 | **Electrical Cable Termination / Glanding** |  | 2026-10-29 | 2027-01-15 |  |  |  |  |  |  |  |  |  |  |  |  |  |  |  |  |
|  | 1 | **Termination MV Cable** |  | 2026-11-07 | 2026-12-29 |  |  |  |  |  |  |  |  |  |  |  |  |  |  |  |  |
| 2.2-RHCUEE02-1120 |  | Cable Termination/Glanding | 30d | 2026-11-07 | 2026-12-11 | 2.2-RHCUEE01-1600 | 89.9d | 0d | LABOUR [2000 h]; Construction Material [300] | UDF_G3 | 0 | EE | 1 | C03a | TY1 | Non | RHCU | EIT2.2 |  | C03a | EIT02.2 |
| 2.2-RHCUEE02-1130 |  | Clear punch | 5d | 2026-12-12 | 2026-12-17 | 2.2-RHCUEE02-1120 | 89.9d | 0d | LABOUR [300 h]; Construction Material [50] | UDF_G3 | 0 | EE | 1 | C03a | TY1 | Non | RHCU | EIT2.2 |  | C03a | EIT02.2 |
| 2.2-RHCUEE02-1140 |  | Complete QA/QC document | 10d | 2026-12-18 | 2026-12-29 | 2.2-RHCUEE02-1130 | 89.9d | 0d | LABOUR [339.6 h]; Construction Material [100] | UDF_G3 | 0 | EE | 1 | C03a | TY1 | Non | RHCU | EIT2.2 |  | C03a | EIT02.2 |
|  | 2 | **Termination LV Cable** |  | 2026-10-29 | 2026-12-31 |  |  |  |  |  |  |  |  |  |  |  |  |  |  |  |  |
| 2.2-RHCUEE02-1150 |  | Cable Termination/Glanding | 30d | 2026-10-29 | 2026-12-02 | 2.2-RHCUEE01-1350 | 136d | 0d | LABOUR [2000 h]; Construction Material [300] | UDF_G3 | 0 | EE | 1 | C03a | TY1 | Non | RHCU | EIT2.2 |  | C03a | EIT02.2 |
| 2.2-RHCUEE02-1160 |  | Clear punch | 10d | 2026-12-03 | 2026-12-14 | 2.2-RHCUEE02-1150 | 136d | 0d | LABOUR [300 h]; Construction Material [100] | UDF_G3 | 0 | EE | 1 | C03a | TY1 | Non | RHCU | EIT2.2 |  | C03a | EIT02.2 |
| 2.2-RHCUEE02-1170 |  | Complete QA/QC document | 15d | 2026-12-15 | 2026-12-31 | 2.2-RHCUEE02-1160 | 136d | 0d | LABOUR [339.6 h]; Construction Material [150] | UDF_G3 | 0 | EE | 1 | C03a | TY1 | Non | RHCU | EIT2.2 |  | C03a | EIT02.2 |
|  | 3 | **Termination Control Cable** |  | 2026-10-29 | 2026-12-31 |  |  |  |  |  |  |  |  |  |  |  |  |  |  |  |  |
| 2.2-RHCUEE02-1180 |  | Cable Termination/Glanding | 30d | 2026-10-29 | 2026-12-02 | 2.2-RHCUEE01-1380 | 136d | 0d | LABOUR [2000 h]; Construction Material [300] | UDF_G3 | 0 | EE | 1 | C03a | TY1 | Non | RHCU | EIT2.2 |  | C03a | EIT02.2 |
| 2.2-RHCUEE02-1190 |  | Clear punch | 10d | 2026-12-03 | 2026-12-14 | 2.2-RHCUEE02-1180 | 136d | 0d | LABOUR [300 h]; Construction Material [100] | UDF_G3 | 0 | EE | 1 | C03a | TY1 | Non | RHCU | EIT2.2 |  | C03a | EIT02.2 |
| 2.2-RHCUEE02-1200 |  | Complete QA/QC document | 15d | 2026-12-15 | 2026-12-31 | 2.2-RHCUEE02-1190, 2.2-RHCUEE02-1170 FF | 136d | 13d | LABOUR [339.6 h]; Construction Material [150] | UDF_G3 | 0 | EE | 1 | C03a | TY1 | Non | RHCU | EIT2.2 |  | C03a | EIT02.2 |
|  | 4 | **Termination Lighting Cable** |  | 2026-11-27 | 2027-01-15 |  |  |  |  |  |  |  |  |  |  |  |  |  |  |  |  |
| 2.2-RHCUEE02-1210 |  | Cable Termination/Glanding | 28d | 2026-11-27 | 2026-12-29 | 2.2-RHCUEE01-1410 | 123d | 0d | LABOUR [2000 h]; Construction Material [280] | UDF_G3 | 0 | EE | 1 | C03a | TY1 | Non | RHCU | EIT2.2 |  | C03a | EIT02.2 |
| 2.2-RHCUEE02-1220 |  | Clear punch | 5d | 2026-12-30 | 2027-01-04 | 2.2-RHCUEE02-1210 | 123d | 0d | LABOUR [300 h]; Construction Material [50] | UDF_G3 | 0 | EE | 1 | C03a | TY1 | Non | RHCU | EIT2.2 |  | C03a | EIT02.2 |
| 2.2-RHCUEE02-1230 |  | Complete QA/QC document | 10d | 2027-01-05 | 2027-01-15 | 2.2-RHCUEE02-1220, 2.2-RHCUEE02-1200 FF | 123d |  | LABOUR [339.6 h]; Construction Material [100] | UDF_G3 | 0 | EE | 1 | C03a | TY1 | Non | RHCU | EIT2.2 |  | C03a | EIT02.2 |

| ID | WBS | Activity | Duration | Start | Finish | Predecessors | Total float | Free float | Calendar | Resources | On Schedule Indicator | %Completed | Disciplines | Main Activity | WBS | Types | EIT2 Main Activity | Areas | Phases | EIT WBS | EIT PKG | Motor Loop | Cable Pull & Laying |
| --- | --- | --- | --- | --- | --- | --- | --- | --- | --- | --- | --- | --- | --- | --- | --- | --- | --- | --- | --- | --- | --- | --- | --- |
|  | 7 | **Electrical Earthing / Lightning Installation** |  | 2026-05-20 | 2026-09-23 |  |  |  |  |  |  |  |  |  |  |  |  |  |  |  |  |  |  |
| 2.2-RHCUEE06-1030 |  | Install Equipment Earthing / Inspection PIT / Install earthing pull and Connecttion | 84d | 2026-05-20 | 2026-08-25 | 2.2-RHCUEE03-1050 SS | 172.9d | 0d |  | LABOUR [3000 h]; Construction Material [900] | UDF_G3 | 0 | EE | 1 | C03a | TY1 | Non | RHCU | EIT2.2 | C03a | EIT02.2 |  |  |
| 2.2-RHCUEE06-1040 |  | Punch Clear | 10d | 2026-08-26 | 2026-09-05 | 2.2-RHCUEE06-1030 | 172.9d | 0d |  | LABOUR [500 h]; Construction Material [100] | UDF_G3 | 0 | EE | 1 | C03a | TY1 | Non | RHCU | EIT2.2 | C03a | EIT02.2 |  |  |
| 2.2-RHCUEE06-1050 |  | Complete QA/QC document | 15d | 2026-09-07 | 2026-09-23 | 2.2-RHCUEE06-1040 | 172.9d | 10d |  | LABOUR [763.82 h]; Construction Material [150] | UDF_G3 | 0 | EE | 1 | C03a | TY1 | Non | RHCU | EIT2.2 | C03a | EIT02.2 |  |  |
|  | 5 | **Lighting Fixture Installation** |  | 2026-07-22 | 2026-10-05 |  |  |  |  |  |  |  |  |  |  |  |  |  |  |  |  |  |  |
| 2.2-RHCUEE05-1080 |  | Install support / bracket / Pole | 40d | 2026-07-22 | 2026-09-05 | 2.2-RHCUEE03-1050 | 111d | 0d |  | LABOUR [500 h]; Construction Material [400] | UDF_G3 | 0 | EE | 1 | C03a | TY1 | Non | RHCU | EIT2.2 | C03a | EIT02.2 |  |  |
| 2.2-RHCUEE05-1090 |  | lighting fixture | 40d | 2026-07-22 | 2026-09-05 | 2.2-RHCUEE05-1080 SS | 162.9d | 0d |  | LABOUR [1500 h]; Construction Material [400] | UDF_G3 | 0 | EE | 1 | C03a | TY1 | Non | RHCU | EIT2.2 | C03a | EIT02.2 |  |  |
| 2.2-RHCUEE05-1100 |  | Clear punch | 10d | 2026-09-07 | 2026-09-17 | 2.2-RHCUEE05-1090 | 162.9d | 0d |  | LABOUR [50 h]; Construction Material [100] | UDF_G3 | 0 | EE | 1 | C03a | TY1 | Non | RHCU | EIT2.2 | C03a | EIT02.2 |  |  |
| 2.2-RHCUEE05-1110 |  | Complete QA/QC document | 15d | 2026-09-18 | 2026-10-05 | 2.2-RHCUEE05-1100, 2.2-RHCUEE06-1050 FF | 162.9d | 0d |  | LABOUR [116.75 h]; Construction Material [150] | UDF_G3 | 0 | EE |  |  |  | Non | RHCU | EIT2.2 |  |  |  |  |
|  | 12 | **Small Power Equipment Installation** |  | 2026-07-22 | 2026-10-05 |  |  |  |  |  |  |  |  |  |  |  |  |  |  |  |  |  |  |
| 2.2-RHCUEE05-1120 |  | Install support / bracket | 40d | 2026-07-22 | 2026-09-05 | 2.2-RHCUEE05-1080 SS | 111d | 0d |  | LABOUR [500 h]; Construction Material [400] | UDF_G3 | 0 | EE | 1 | C03a | TY1 | Non | RHCU | EIT2.2 | C03a | EIT02.2 |  |  |
| 2.2-RHCUEE05-1130 |  | Install Distribution panel, convenience outlet | 40d | 2026-07-22 | 2026-09-05 | 2.2-RHCUEE05-1120 SS | 162.9d | 0d |  | LABOUR [1500 h]; Construction Material [400] | UDF_G3 | 0 | EE | 1 | C03a | TY1 | Non | RHCU | EIT2.2 | C03a | EIT02.2 |  |  |
| 2.2-RHCUEE05-1140 |  | Clear punch | 10d | 2026-09-07 | 2026-09-17 | 2.2-RHCUEE05-1130 | 162.9d | 0d |  | LABOUR [50 h]; Construction Material [100] | UDF_G3 | 0 | EE | 1 | C03a | TY1 | Non | RHCU | EIT2.2 | C03a | EIT02.2 |  |  |
| 2.2-RHCUEE05-1150 |  | Complete QA/QC document | 15d | 2026-09-18 | 2026-10-05 | 2.2-RHCUEE05-1140, 2.2-RHCUEE05-1110 FF | 162.9d | 73d |  | LABOUR [116.75 h]; Construction Material [150] | UDF_G3 | 0 | EE |  |  |  | Non | RHCU | EIT2.2 |  |  |  |  |
|  | 2 | **Motor Solo Run** |  | 2026-12-30 | 2027-02-24 |  |  |  |  |  |  |  |  |  |  |  |  |  |  |  |  |  |  |
| 2.2-RHCUEE00-1040 |  | Motor solo run | 25d | 2026-12-30 | 2027-01-27 | 2.2-RHCUEE02-1140, 2.2-RHCUEE05-1150 | 89.9d | 0.1d |  | LABOUR; Construction Material [250] | UDF_G3 | 0 | EE |  |  |  | Non | RHCU | EIT2.2 | C03a | EIT02.2 | MO |  |
| 2.2-RHCUEE00-1050 |  | Punch Clear | 10d | 2027-01-28 | 2027-02-06 | 2.2-RHCUEE00-1040 | 114.25d | 0d | 7 - Day Workweek (No Holidays) | LABOUR; Construction Material [80] | UDF_G3 | 0 | EE |  |  |  | Non | RHCU | EIT2.2 | C03a | EIT02.2 | MO |  |
| 2.2-RHCUEE00-1060 |  | Complete QA/QC document | 15d | 2027-02-06 | 2027-02-24 | 2.2-RHCUEE00-1050 | 89.8d |  |  | LABOUR; Construction Material [150] | UDF_G3 | 0 | EE |  |  |  | Non | RHCU | EIT2.2 | C03a | EIT02.2 | MO |  |
|  | 3 | **Instrument Works** |  | 2026-06-10 | 2027-04-20 |  |  |  |  |  |  |  |  |  |  |  |  |  |  |  |  |  |  |
|  | 10 | **Cable Laying concrete Trench** |  | 2026-06-10 | 2026-10-03 |  |  |  |  |  |  |  |  |  |  |  |  |  |  |  |  |  |  |
|  | 3 | **C03-JTR-278/271/272/275/273/274/276/265/263** |  | 2026-06-10 | 2026-10-03 |  |  |  |  |  |  |  |  |  |  |  |  |  |  |  |  |  |  |
| 2.2-RHCUIN01-1180 |  | Cable Laying | 50d | 2026-06-10 | 2026-08-06 | 2.2-RHCUIN01-1000 | 0d |  |  | LABOUR [10000 h]; Cable Pull [47360 h]; Construction Material [500] | UDF_G3 | 0 | IN |  |  |  | PRICI | RHCU | EIT2.2 | C03a | EIT02.2 |  | PUL |
| 2.2-RHCUIN01-1190 |  | Megger & Continuity test | 5d | 2026-08-07 | 2026-08-12 | 2.2-RHCUIN01-1180 | 49d | 0d |  | LABOUR [200 h]; Cable Pull; Construction Material [50] | UDF_G3 | 0 | IN |  |  |  | PRICI | RHCU | EIT2.2 | C03a | EIT02.2 |  |  |
| 2.2-RHCUIN01-1200 |  | Clear punch | 5d | 2026-08-13 | 2026-08-18 | 2.2-RHCUIN01-1190 | 49d | 0d |  | LABOUR [300 h]; Cable Pull; Construction Material [50] | UDF_G3 | 0 | IN |  |  |  | PRICI | RHCU | EIT2.2 | C03a | EIT02.2 |  |  |
| 2.2-RHCUIN01-1210 |  | Sand Filling compaction | 10d | 2026-08-19 | 2026-08-29 | 2.2-RHCUIN01-1200 | 49d | 0d |  | LABOUR [500 h]; Cable Pull; Construction Material [100] | UDF_G3 | 0 | IN |  |  |  | PRICI | RHCU | EIT2.2 |  |  |  |  |
| 2.2-RHCUIN01-1220 |  | Complete QA/QC document | 10d | 2026-08-19 | 2026-08-29 | 2.2-RHCUIN01-1200 | 49d | 0d |  | LABOUR [500 h]; Cable Pull; Construction Material [100] | UDF_G3 | 0 | IN |  |  |  | PRICI | RHCU | EIT2.2 | C03a | EIT02.2 |  |  |
| 2.2-RHCUIN01-1230 |  | Back Filling | 30d | 2026-08-31 | 2026-10-03 | 2.2-RHCUIN01-1220, 2.2-RHCUIN01-1210 | 49d | 35d |  | LABOUR [3970.51 h]; Cable Pull; Construction Material [300] | UDF_G3 | 0 | IN |  |  |  | PRICI | RHCU | EIT2.2 | C03a | EIT02.2 |  |  |

| ID | WBS | Activity | Duration | Start | Finish | Predecessors | Total float | Free float | Resources | On Schedule Indicator | %Completed | Disciplines | Main Activity | WBS | Types | EIT2 Main Activity | Areas | Phases | EIT WBS | EIT PKG | Cable Pull & Laying |
| --- | --- | --- | --- | --- | --- | --- | --- | --- | --- | --- | --- | --- | --- | --- | --- | --- | --- | --- | --- | --- | --- |
|  | 3 | **Instrument Cable Tray/Ladder Installation** |  | 2026-06-10 | 2026-09-16 |  |  |  |  |  |  |  |  |  |  |  |  |  |  |  |  |
| 2.2-RHCUIN03-1050 |  | Install support / bracket | 60d | 2026-06-10 | 2026-08-18 | 2.2-RHCUIN01-1180 SS | 42d | 0d | LABOUR [3 h]; Construction Material [600] | UDF_G3 | 0 | EE | 1 | C03a | TY1 | Non | RHCU | EIT2.2 | C03a | EIT02.2 |  |
| 2.2-RHCUIN03-1060 |  | Install Ladder / Tray | 60d | 2026-06-10 | 2026-08-18 | 2.2-RHCUIN03-1070 SS, 2.2-RHCUIN03-1050 FF | 42d | 0d | LABOUR [77 h]; Construction Material [600] | UDF_G3 | 0 | EE | 1 | C03a | TY1 | Non | RHCU | EIT2.2 | C03a | EIT02.2 |  |
| 2.2-RHCUIN03-1070 |  | Steel Conduits for Cable tray | 60d | 2026-06-10 | 2026-08-18 | 2.2-RHCUIN03-1050 SS | 42d | 0d | LABOUR [3 h]; Construction Material [600] | UDF_G3 | 0 | EE | 1 | C03a | TY1 | Non | RHCU | EIT2.2 | C03a | EIT02.2 |  |
| 2.2-RHCUIN03-1080 |  | punch clear | 10d | 2026-08-19 | 2026-08-29 | 2.2-RHCUIN03-1060, 2.2-RHCUIN03-1070 | 42d | 0d | LABOUR [75 h]; Construction Material [100] | UDF_G3 | 0 | EE | 1 | C03a | TY1 | Non | RHCU | EIT2.2 | C03a | EIT02.2 |  |
| 2.2-RHCUIN03-1090 |  | Complete QA/QC document | 15d | 2026-08-31 | 2026-09-16 | 2.2-RHCUIN03-1080 | 42d | 0d | LABOUR [75 h]; Construction Material [150] | UDF_G3 | 0 | EE | 1 | C03a | TY1 | Non | RHCU | EIT2.2 | C03a | EIT02.2 |  |
|  | 8 | **AG Cable Pull Primary Cable** |  | 2026-09-17 | 2026-12-12 |  |  |  |  |  |  |  |  |  |  |  |  |  |  |  |  |
| 2.2-RHCUIN01-1120 |  | Pull Cable | 50d | 2026-09-17 | 2026-11-13 | 2.2-RHCUIN03-1090, 2.2-RHCUIN01-1230 FF | 42d | 0d | LABOUR [14000 h]; Cable Pull; Construction Material [500] | UDF_G3 | 0 | EE | 1 | C03a | TY1 | SECI | RHCU | EIT2.2 | C03a | EIT02.2 | PUL |
| 2.2-RHCUIN01-1130 |  | Megger & Continuity test | 10d | 2026-11-14 | 2026-11-25 | 2.2-RHCUIN01-1120 | 42d | 0d | LABOUR [500 h]; Cable Pull; Construction Material [100] | UDF_G3 | 0 | EE | 1 | C03a | TY1 | SECI | RHCU | EIT2.2 | C03a | EIT02.2 |  |
| 2.2-RHCUIN01-1140 |  | Complete QA/QC document | 15d | 2026-11-26 | 2026-12-12 | 2.2-RHCUIN01-1130 | 42d | 0d | LABOUR [970.51 h]; Cable Pull; Construction Material [150] | UDF_G3 | 0 | EE | 1 | C03a | TY1 | SECI | RHCU | EIT2.2 | C03a | EIT02.2 |  |
|  | 9 | **AG Cable Pull Secondary Cable** |  | 2026-09-17 | 2026-12-12 |  |  |  |  |  |  |  |  |  |  |  |  |  |  |  |  |
| 2.2-RHCUIN01-1150 |  | Pull Cable | 50d | 2026-09-17 | 2026-11-13 | 2.2-RHCUIN03-1090 | 42d | 0d | LABOUR [14000 h]; Cable Pull; Construction Material [500] | UDF_G3 | 0 | EE | 1 | C03a | TY1 | SECI | RHCU | EIT2.2 | C03a | EIT02.2 | PUL |
| 2.2-RHCUIN01-1160 |  | Megger & Continuity test | 10d | 2026-11-14 | 2026-11-25 | 2.2-RHCUIN01-1150 | 42d | 0d | LABOUR [500 h]; Cable Pull; Construction Material [100] | UDF_G3 | 0 | EE | 1 | C03a | TY1 | SECI | RHCU | EIT2.2 | C03a | EIT02.2 |  |
| 2.2-RHCUIN01-1170 |  | Complete QA/QC document | 15d | 2026-11-26 | 2026-12-12 | 2.2-RHCUIN01-1160 | 42d | 0d | LABOUR [970.51 h]; Cable Pull; Construction Material [150] | UDF_G3 | 0 | EE | 1 | C03a | TY1 | SECI | RHCU | EIT2.2 | C03a | EIT02.2 |  |
|  | 2 | **Instrument Cable Termination / Glanding** |  | 2026-08-07 | 2027-02-09 |  |  |  |  |  |  |  |  |  |  |  |  |  |  |  |  |
|  | 1 | **UG Cable Termination Cable** |  | 2026-08-07 | 2026-10-03 |  |  |  |  |  |  |  |  |  |  |  |  |  |  |  |  |
| 2.2-RHCUIN02-1330 |  | Cable Termination/Glanding | 25d | 2026-08-07 | 2026-09-04 | 2.2-RHCUIN01-1180 | 102d | 0d | LABOUR [3000 h]; Construction Material [250] | UDF_G3 | 0 | EE | 1 | C03a | TY1 | Non | RHCU | EIT2.2 | C03a | EIT02.2 |  |
| 2.2-RHCUIN02-1340 |  | punch clear | 10d | 2026-09-05 | 2026-09-16 | 2.2-RHCUIN02-1330 | 102d | 0d | LABOUR [500 h]; Construction Material [100] | UDF_G3 | 0 | EE | 1 | C03a | TY1 | Non | RHCU | EIT2.2 | C03a | EIT02.2 |  |
| 2.2-RHCUIN02-1350 |  | Complete QA/QC document | 15d | 2026-09-17 | 2026-10-03 | 2.2-RHCUIN02-1340 | 102d | 60d | LABOUR [907.72 h]; Construction Material [150] | UDF_G3 | 0 | EE | 1 | C03a | TY1 | Non | RHCU | EIT2.2 | C03a | EIT02.2 |  |
|  | 8 | **Cable Termination Primary Cable** |  | 2026-12-14 | 2027-02-09 |  |  |  |  |  |  |  |  |  |  |  |  |  |  |  |  |
| 2.2-RHCUIN02-1060 |  | Cable Termination/Glanding | 25d | 2026-12-14 | 2027-01-11 | 2.2-RHCUIN01-1140, 2.2-RHCUIN02-1350 | 42d | 0d | LABOUR [3000 h]; Construction Material [250] | UDF_G3 | 0 | EE | 1 | C03a | TY1 | Non | RHCU | EIT2.2 | C03a | EIT02.2 |  |
| 2.2-RHCUIN02-1070 |  | punch clear | 10d | 2027-01-12 | 2027-01-22 | 2.2-RHCUIN02-1060 | 42d | 0d | LABOUR [500 h]; Construction Material [100] | UDF_G3 | 0 | EE | 1 | C03a | TY1 | Non | RHCU | EIT2.2 | C03a | EIT02.2 |  |
| 2.2-RHCUIN02-1080 |  | Complete QA/QC document | 15d | 2027-01-23 | 2027-02-09 | 2.2-RHCUIN02-1070 | 42d | 0d | LABOUR [907.72 h]; Construction Material [150] | UDF_G3 | 0 | EE | 1 | C03a | TY1 | Non | RHCU | EIT2.2 | C03a | EIT02.2 |  |
|  | 9 | **Cable Termination Secondary Cable** |  | 2026-12-14 | 2027-02-09 |  |  |  |  |  |  |  |  |  |  |  |  |  |  |  |  |
| 2.2-RHCUIN02-1090 |  | Cable Termination/Glanding | 25d | 2026-12-14 | 2027-01-11 | 2.2-RHCUIN01-1170 | 42d | 0d | LABOUR [3000 h]; Construction Material [250] | UDF_G3 | 0 | EE | 1 | C03a | TY1 | Non | RHCU | EIT2.2 | C03a | EIT02.2 |  |
| 2.2-RHCUIN02-1100 |  | punch clear | 10d | 2027-01-12 | 2027-01-22 | 2.2-RHCUIN02-1090 | 42d | 0d | LABOUR [500 h]; Construction Material [100] | UDF_G3 | 0 | EE | 1 | C03a | TY1 | Non | RHCU | EIT2.2 | C03a | EIT02.2 |  |
| 2.2-RHCUIN02-1110 |  | Complete QA/QC document | 15d | 2027-01-23 | 2027-02-09 | 2.2-RHCUIN02-1100, 2.2-RHCUIN02-1080 FF | 42d | 0d | LABOUR [907.72 h]; Construction Material [150] | UDF_G3 | 0 | EE | 1 | C03a | TY1 | Non | RHCU | EIT2.2 | C03a | EIT02.2 |  |

| ID | WBS | Activity | Duration | Start | Finish | Predecessors | Total float | Free float | Calendar | Resources | On Schedule Indicator | %Completed | Disciplines | Main Activity | WBS | Types | EIT2 Main Activity | Areas | Phases | EIT WBS | EIT PKG |
| --- | --- | --- | --- | --- | --- | --- | --- | --- | --- | --- | --- | --- | --- | --- | --- | --- | --- | --- | --- | --- | --- |
|  | 4 | **Instrument Calibration** |  | 2026-08-07 | 2026-09-10 |  |  |  |  |  |  |  |  |  |  |  |  |  |  |  |  |
| 2.2-RHCUIN05-1010 |  | Calibration of Gauges | 30d | 2026-08-07 | 2026-09-10 | 2.2-RHCUIN01-1180 | 130.3d | 0d |  | LABOUR [3000 h]; Construction Material [300] | UDF_G3 | 0 | EE | 1 | C03a | TY1 | Non | RHCU | EIT2.2 | C03c | EIT02.2 |
| 2.2-RHCUIN05-1060 |  | Calibration of Transmitters/Switches | 30d | 2026-08-07 | 2026-09-10 | 2.2-RHCUIN05-1010 SS, 2.2-RHCUIN05-1010 FF | 156.3d | 0d |  | LABOUR [4396.55 h]; Construction Material [300] | UDF_G3 | 0 | IN |  |  |  | Non | RHCU | EIT2.2 |  |  |
|  | 1 | **Gauges** |  | 2026-08-07 | 2026-09-22 |  |  |  |  |  |  |  |  |  |  |  |  |  |  |  |  |
| 2.2-RHCUIN04-1155 |  | D.P Pressure Gauge Installation | 10d | 2026-08-07 | 2026-08-18 | 2.2-RHCUIN05-1010 SS | 130.3d | 0d |  | LABOUR [750 h]; Construction Material [100] | UDF_G3 | 0 | IN |  |  |  | Non | RHCU | EIT2.2 |  |  |
| 2.2-RHCUIN04-1160 |  | Pressure Gauge Installation | 10d | 2026-08-19 | 2026-08-29 | 2.2-RHCUIN04-1155 | 156.3d | 0d |  | LABOUR [750 h]; Construction Material [100] | UDF_G3 | 0 | EE | 1 | C03a | TY1 | Non | RHCU | EIT2.2 | C03c | EIT02.2 |
| 2.2-RHCUIN04-1170 |  | Level Gauge Installation | 10d | 2026-08-31 | 2026-09-10 | 2.2-RHCUIN04-1160, 2.2-RHCUIN05-1060 FF | 156.3d | 0d |  | LABOUR [1000 h]; Construction Material [100] | UDF_G3 | 0 | EE | 1 | C03a | TY1 | Non | RHCU | EIT2.2 | C03c | EIT02.2 |
| 2.2-RHCUIN04-1180 |  | Clear punch | 5d | 2026-09-11 | 2026-09-16 | 2.2-RHCUIN04-1170 | 156.3d | 0d |  | LABOUR [200 h]; Construction Material [50] | UDF_G3 | 0 | EE | 1 | C03a | TY1 | Non | RHCU | EIT2.2 | C03c | EIT02.2 |
| 2.2-RHCUIN04-1190 |  | Complete QA/QC document | 5d | 2026-09-17 | 2026-09-22 | 2.2-RHCUIN04-1180 | 156.3d | 14d |  | LABOUR [296.58 h]; Construction Material [50] | UDF_G3 | 0 | EE | 1 | C03a | TY1 | Non | RHCU | EIT2.2 | C03c | EIT02.2 |
|  | 6 | **Transmitters/Switches** |  | 2026-08-07 | 2026-10-13 |  |  |  |  |  |  |  |  |  |  |  |  |  |  |  |  |
| 2.2-RHCUIN04-1200 |  | Install support / bracket | 10d | 2026-08-07 | 2026-08-18 | 2.2-RHCUIN04-1155 SS | 130.3d | 0d |  | LABOUR [300 h]; Construction Material [100] | UDF_G3 | 0 | EE | 1 | C03a | TY1 | Non | RHCU | EIT2.2 | C03c | EIT02.2 |
| 2.2-RHCUIN04-1210 |  | Pressure transmitters Installation | 10d | 2026-08-19 | 2026-08-29 | 2.2-RHCUIN04-1200 | 130.3d | 0d |  | LABOUR [500 h]; Construction Material [100] | UDF_G3 | 0 | EE | 1 | C03a | TY1 | Non | RHCU | EIT2.2 | C03c | EIT02.2 |
| 2.2-RHCUIN04-1220 |  | D.P. Transmitters - HART Installation | 10d | 2026-08-31 | 2026-09-10 | 2.2-RHCUIN04-1210 | 130.3d | 0d |  | LABOUR [500 h]; Construction Material [100] | UDF_G3 | 0 | EE | 1 | C03a | TY1 | Non | RHCU | EIT2.2 | C03c | EIT02.2 |
| 2.2-RHCUIN04-1230 |  | Temperature Transmitters Installation | 10d | 2026-09-11 | 2026-09-22 | 2.2-RHCUIN04-1220 | 142.3d | 0d |  | LABOUR [500 h]; Construction Material [100] | UDF_G3 | 0 | EE | 1 | C03a | TY1 | Non | RHCU | EIT2.2 | C03c | EIT02.2 |
| 2.2-RHCUIN04-1280 |  | Level Switch Installation | 10d | 2026-09-23 | 2026-10-03 | 2.2-RHCUIN04-1230 | 142.3d | 0d |  | LABOUR [500 h]; Construction Material [100] | UDF_G3 | 0 | IN |  |  |  | Non | RHCU | EIT2.2 |  |  |
| 2.2-RHCUIN04-1290 |  | Clear Punch | 4d | 2026-10-05 | 2026-10-08 | 2.2-RHCUIN04-1280 | 142.3d | 0d |  | LABOUR [200 h]; Construction Material [40] | UDF_G3 | 0 | IN |  |  |  | Non | RHCU | EIT2.2 |  |  |
| 2.2-RHCUIN04-1300 |  | Complete QA/QC document | 4d | 2026-10-09 | 2026-10-13 | 2.2-RHCUIN04-1290, 2.2-RHCUIN04-1190 | 142.3d | 12d |  | LABOUR [496.58 h]; Construction Material [40] | UDF_G3 | 0 | IN |  |  |  | Non | RHCU | EIT2.2 |  |  |
|  | 11 | **Instrument Junction Box Installation** |  | 2026-08-19 | 2026-09-15 |  |  |  |  |  |  |  |  |  |  |  |  |  |  |  |  |
| 2.2-RHCUIN04-1240 |  | Install support / bracket | 10d | 2026-08-19 | 2026-08-29 | 2.2-RHCUIN04-1200 | 146.3d | 0d |  | LABOUR [1000 h]; Construction Material [100] | UDF_G3 | 0 | EE | 1 | C03a | TY1 | Non | RHCU | EIT2.2 | C03c | EIT02.2 |
| 2.2-RHCUIN04-1250 |  | Instrument Junction Box Installation | 10d | 2026-08-31 | 2026-09-10 | 2.2-RHCUIN04-1240 | 146.3d | 0d |  | LABOUR [1500 h]; Construction Material [100] | UDF_G3 | 0 | EE | 1 | C03a | TY1 | Non | RHCU | EIT2.2 | C03c | EIT02.2 |
| 2.2-RHCUIN04-1260 |  | Clear punch | 2d | 2026-09-11 | 2026-09-12 | 2.2-RHCUIN04-1250 | 146.3d | 0d |  | LABOUR [300 h]; Construction Material [20] | UDF_G3 | 0 | EE | 1 | C03a | TY1 | Non | RHCU | EIT2.2 | C03c | EIT02.2 |
| 2.2-RHCUIN04-1270 |  | Complete QA/QC document | 2d | 2026-09-14 | 2026-09-15 | 2.2-RHCUIN04-1260 | 146.3d | 16d |  | LABOUR [196.58 h]; Construction Material [20] | UDF_G3 | 0 | EE | 1 | C03a | TY1 | Non | RHCU | EIT2.2 | C03c | EIT02.2 |
|  | 5 | **Tubing** |  | 2026-09-11 | 2026-11-21 |  |  |  |  |  |  |  |  |  |  |  |  |  |  |  |  |
| 2.2-RHCUIN07-1040 |  | Instrument Hook up Tubing Installation | 20d | 2026-09-11 | 2026-10-03 | 2.2-RHCUIN04-1210, 2.2-RHCUIN04-1220 | 130.3d | 0d |  | LABOUR [100 h]; Construction Material [200] | UDF_G3 | 0 | IN |  |  |  | Non | RHCU | EIT2.2 | C03c | EIT02.2 |
| 2.2-RHCUIN07-1050 |  | Leak Test | 20d | 2026-10-05 | 2026-10-27 | 2.2-RHCUIN07-1040, 2.2-RHCUIN04-1270 | 130.3d | 0d |  | LABOUR [30 h]; Construction Material [200] | UDF_G3 | 0 | IN |  |  |  | Non | RHCU | EIT2.2 | C03c | EIT02.2 |
| 2.2-RHCUIN07-1060 |  | Clear Punch | 10d | 2026-10-28 | 2026-11-07 | 2.2-RHCUIN07-1050, 2.2-RHCUIN04-1300 | 130.3d | 0d |  | LABOUR [20 h]; Construction Material [100] | UDF_G3 | 0 | IN |  |  |  | Non | RHCU | EIT2.2 | C03c | EIT02.2 |
| 2.2-RHCUIN07-1070 |  | Complete QA/QC document | 15d | 2026-11-08 | 2026-11-21 | 2.2-RHCUIN07-1060 | 165.88d | 25.25d | 7 - Day Workweek (No Holidays) | LABOUR [29.2 h]; Construction Material [120] | UDF_G3 | 0 | IN |  |  |  | Non | RHCU | EIT2.2 | C03c | EIT02.2 |

| ID | WBS | Activity | Duration | Start | Finish | Predecessors | Total float | Free float | Resources | On Schedule Indicator | %Completed | Disciplines | EIT2 Main Activity | Areas | Phases | EIT WBS | EIT PKG | Motor Loop | Main Activity | WBS | Types |
| --- | --- | --- | --- | --- | --- | --- | --- | --- | --- | --- | --- | --- | --- | --- | --- | --- | --- | --- | --- | --- | --- |
|  | 7 | **Instrument Loop Check** |  | 2027-02-10 | 2027-04-20 |  |  |  |  |  |  |  |  |  |  |  |  |  |  |  |  |
| 2.2-RHCUIN00-1030 |  | Instrument Loop check | 30d | 2027-02-10 | 2027-03-16 | 2.2-RHCUIN02-1110 | 42d | 0d | LABOUR [3000 h]; Construction Material [300] | UDF_G3 | 0 | IN | Non | RHCU | EIT2.2 | C03c | EIT02.2 | LO |  |  |  |
| 2.2-RHCUIN00-1040 |  | Clear Punch | 15d | 2027-03-17 | 2027-04-02 | 2.2-RHCUIN00-1030 | 42d | 0d | LABOUR [1000 h]; Construction Material [150] | UDF_G3 | 0 | IN | Non | RHCU | EIT2.2 | C03c | EIT02.2 | LO |  |  |  |
| 2.2-RHCUIN00-1050 |  | Complete QA/QC document | 15d | 2027-04-03 | 2027-04-20 | 2.2-RHCUIN00-1040 | 42d |  | LABOUR [1281.31 h]; Construction Material [150] | UDF_G3 | 0 | IN | Non | RHCU | EIT2.2 | C03c | EIT02.2 | LO |  |  |  |
|  | 5 | **Telecommunication** |  | 2026-07-22 | 2027-01-29 |  |  |  |  |  |  |  |  |  |  |  |  |  |  |  |  |
|  | 3 | **Telecom** |  | 2026-07-22 | 2027-01-29 |  |  |  |  |  |  |  |  |  |  |  |  |  |  |  |  |
|  | 3 | **Telecom Cable Tray/Ladder Installation** |  | 2026-07-22 | 2026-10-10 |  |  |  |  |  |  |  |  |  |  |  |  |  |  |  |  |
| 2.2-RHCUTE03-1050 |  | Install support / bracket | 50d | 2026-07-22 | 2026-09-17 | 2.2-RHCUEE05-1120 SS | 111d | 0d | LABOUR [3 h]; Construction Material [500] | UDF_G3 | 0 | EE | Non | RHCU | EIT2.2 | C03a | EIT02.2 |  | 1 | C03a | TY1 |
| 2.2-RHCUTE03-1060 |  | Install Ladder / Tray | 50d | 2026-07-22 | 2026-09-17 | 2.2-RHCUTE03-1070 SS, 2.2-RHCUTE03-1050 FF | 111d | 0d | LABOUR [77 h]; Construction Material [500] | UDF_G3 | 0 | EE | Non | RHCU | EIT2.2 | C03a | EIT02.2 |  | 1 | C03a | TY1 |
| 2.2-RHCUTE03-1070 |  | Steel Conduits for Cable tray | 50d | 2026-07-22 | 2026-09-17 | 2.2-RHCUTE03-1050 SS | 111d | 0d | LABOUR [3 h]; Construction Material [500] | UDF_G3 | 0 | EE | Non | RHCU | EIT2.2 | C03a | EIT02.2 |  | 1 | C03a | TY1 |
| 2.2-RHCUTE03-1080 |  | punch clear | 5d | 2026-09-18 | 2026-09-23 | 2.2-RHCUTE03-1060, 2.2-RHCUTE03-1070 | 111d | 0d | LABOUR [75 h]; Construction Material [50] | UDF_G3 | 0 | EE | Non | RHCU | EIT2.2 | C03a | EIT02.2 |  | 1 | C03a | TY1 |
| 2.2-RHCUTE03-1090 |  | Complete QA/QC document | 15d | 2026-09-24 | 2026-10-10 | 2.2-RHCUTE03-1080 | 111d | 0d | LABOUR [75 h]; Construction Material [150] | UDF_G3 | 0 | EE | Non | RHCU | EIT2.2 | C03a | EIT02.2 |  | 1 | C03a | TY1 |
|  | 1 | **AG Telecommunication Cable Installation** |  | 2026-10-12 | 2026-12-14 |  |  |  |  |  |  |  |  |  |  |  |  |  |  |  |  |
| 2.2-RHCUTE01-1030 |  | Above Ground Pull Cable | 30d | 2026-10-12 | 2026-11-14 | 2.2-RHCUTE03-1090 | 111d | 0d | LABOUR [1300 h]; Construction Material [300] | UDF_G3 | 0 | EE | Non | RHCU | EIT2.2 | C03a | EIT02.2 |  | 1 | C03a | TY1 |
| 2.2-RHCUTE01-1040 |  | Megger & Continuity test | 10d | 2026-11-16 | 2026-11-26 | 2.2-RHCUTE01-1030 | 111d | 0d | LABOUR [200 h]; Construction Material [100] | UDF_G3 | 0 | EE | Non | RHCU | EIT2.2 | C03a | EIT02.2 |  | 1 | C03a | TY1 |
| 2.2-RHCUTE01-1050 |  | Complete QA/QC document | 15d | 2026-11-27 | 2026-12-14 | 2.2-RHCUTE01-1040, 2.2-RHCUIN07-1070 FF | 111d | 0d | LABOUR [100 h]; Construction Material [150] | UDF_G3 | 0 | EE | Non | RHCU | EIT2.2 | C03a | EIT02.2 |  | 1 | C03a | TY1 |
|  | 4 | **Telecommunication Termination / Glanding** |  | 2026-12-15 | 2027-01-29 |  |  |  |  |  |  |  |  |  |  |  |  |  |  |  |  |
| 2.2-RHCUTE02-1030 |  | Cable Termination/Glanding | 20d | 2026-12-15 | 2027-01-06 | 2.2-RHCUTE01-1050 | 111d | 0d | LABOUR [200 h]; Construction Material [200] | UDF_G3 | 0 | EE | Non | RHCU | EIT2.2 | C03a | EIT02.2 |  | 1 | C03a | TY1 |
| 2.2-RHCUTE02-1040 |  | Clear punch | 10d | 2027-01-07 | 2027-01-18 | 2.2-RHCUTE02-1030 | 111d | 0d | LABOUR [100 h]; Construction Material [100] | UDF_G3 | 0 | EE | Non | RHCU | EIT2.2 | C03a | EIT02.2 |  | 1 | C03a | TY1 |
| 2.2-RHCUTE02-1050 |  | Complete QA/QC document | 10d | 2027-01-19 | 2027-01-29 | 2.2-RHCUTE02-1040 | 111d |  | LABOUR [233.99 h]; Construction Material [100] | UDF_G3 | 0 | EE | Non | RHCU | EIT2.2 | C03a | EIT02.2 |  | 1 | C03a | TY1 |
|  | 2 | **Telecommunication Equipment Installation** |  | 2026-10-12 | 2026-12-14 |  |  |  |  |  |  |  |  |  |  |  |  |  |  |  |  |
| 2.2-RHCUTE04-1030 |  | Telecom Equpiment Installation | 30d | 2026-10-12 | 2026-11-14 | 2.2-RHCUTE01-1030 SS | 151d | 0d | LABOUR [120 h]; Construction Material [300] | UDF_G3 | 0 | EE | Non | RHCU | EIT2.2 | C03a | EIT02.2 |  | 1 | C03a | TY1 |
| 2.2-RHCUTE04-1040 |  | Clear Punch | 10d | 2026-11-16 | 2026-11-26 | 2.2-RHCUTE04-1030 | 151d | 0d | LABOUR [30 h]; Construction Material [100] | UDF_G3 | 0 | EE | Non | RHCU | EIT2.2 | C03a | EIT02.2 |  | 1 | C03a | TY1 |
| 2.2-RHCUTE04-1050 |  | Complete QA/QC document | 15d | 2026-11-27 | 2026-12-14 | 2.2-RHCUTE04-1040 | 151d |  | LABOUR [40.57 h]; Construction Material [150] | UDF_G3 | 0 | EE | Non | RHCU | EIT2.2 | C03a | EIT02.2 |  | 1 | C03a | TY1 |

| ID | WBS | Activity | Duration | Start | Finish | Predecessors | Total float | Free float | Resources | On Schedule Indicator | %Completed | Disciplines | EIT2 Main Activity | Areas | Phases | EIT WBS | EIT PKG | Cable Pull & Laying |
| --- | --- | --- | --- | --- | --- | --- | --- | --- | --- | --- | --- | --- | --- | --- | --- | --- | --- | --- |
|  | 3 | **RHCU ZONE 3** |  | 2026-05-20 | 2027-05-29 |  |  |  |  |  |  |  |  |  |  |  |  |  |
|  | 1 | **Electrical Works** |  | 2026-05-20 | 2027-01-18 |  |  |  |  |  |  |  |  |  |  |  |  |  |
|  | 6 | **Cable trench Excavation buried** |  | 2026-05-20 | 2026-08-31 |  |  |  |  |  |  |  |  |  |  |  |  |  |
|  | 8 | **C03-ETD-642/385/810/638/283/376/316/302/702/337/336/639/353/350/354/318** |  | 2026-05-20 | 2026-06-22 |  |  |  |  |  |  |  |  |  |  |  |  |  |
| 2.2-RHCUEE09-1060 |  | Cable trench Excavation | 24d | 2026-05-20 | 2026-06-16 | 2.2-RHCUEE09-1020 SS | -6d | 0d | LABOUR; Construction Material [300] | UDF_G3 | 0 | EE | Non | RHCU | EIT2.2 | C03c | EIT02.2 |  |
| 2.2-RHCUEE09-1070 |  | Sand Filling Compaction | 5d | 2026-06-17 | 2026-06-22 | 2.2-RHCUEE09-1060 | 44d | 25d | LABOUR; Construction Material [50] | UDF_G3 | 0 | EE | Non | RHCU | EIT2.2 | C03c | EIT02.2 |  |
|  | 1 | **C03-ETD-293/270/333/296/276//275/277/266/269/279/369/264/280/368/319/320** |  | 2026-06-17 | 2026-07-27 |  |  |  |  |  |  |  |  |  |  |  |  |  |
| 2.2-RHCUEE09-1080 |  | Cable trench Excavation | 30d | 2026-06-17 | 2026-07-21 | 2.2-RHCUEE09-1060 | -6d | 0d | LABOUR; Construction Material [300] | UDF_G3 | 0 | EE | Non | RHCU | EIT2.2 | C03c | EIT02.2 |  |
| 2.2-RHCUEE09-1090 |  | Sand Filling Compaction | 5d | 2026-07-22 | 2026-07-27 | 2.2-RHCUEE09-1080, 2.2-RHCUEE09-1070 | 19d | 25d | LABOUR; Construction Material [50] | UDF_G3 | 0 | EE | Non | RHCU | EIT2.2 | C03c | EIT02.2 |  |
|  | 2 | **C03-ETD-366/256/257/260/259/321/210** |  | 2026-07-22 | 2026-08-31 |  |  |  |  |  |  |  |  |  |  |  |  |  |
| 2.2-RHCUEE09-1100 |  | Cable trench Excavation | 30d | 2026-07-22 | 2026-08-25 | 2.2-RHCUEE09-1080 | -6d | 0d | LABOUR; Construction Material [300] | UDF_G3 | 0 | EE | Non | RHCU | EIT2.2 | C03c | EIT02.2 |  |
| 2.2-RHCUEE09-1110 |  | Sand Filling Compaction | 5d | 2026-08-26 | 2026-08-31 | 2.2-RHCUEE09-1100, 2.2-RHCUEE09-1090 | -6d | 0d | LABOUR; Construction Material [50] | UDF_G3 | 0 | EE | Non | RHCU | EIT2.2 | C03c | EIT02.2 |  |
|  | 8 | **Cable Laying Direct buried** |  | 2026-06-17 | 2026-09-15 |  |  |  |  |  |  |  |  |  |  |  |  |  |
|  | 8 | **C03-ETD-642/385/810/638/283/376/316/302/702/337/336/639/353/350/354/318** |  | 2026-06-17 | 2026-09-15 |  |  |  |  |  |  |  |  |  |  |  |  |  |
| 2.2-RHCUEE01-1805 |  | Sand Filling First layer | 4d | 2026-06-17 | 2026-06-20 | 2.2-RHCUEE09-1060 | -4.1d | 0d | LABOUR [100 h]; Cable Pull; Construction Material [40] | UDF_G3 | 0 | EE | PRIC | RHCU | EIT2.2 |  |  |  |
| 2.2-RHCUEE01-1810 |  | Cable Laying | 30d | 2026-06-22 | 2026-07-25 | 2.2-RHCUEE01-1805 | -4.1d | 0d | LABOUR [800 h]; Cable Pull [5974 h]; Construction Material [300] | UDF_G3 | 0 | EE | PRIC | RHCU | EIT2.2 | C03c | EIT02.2 | PUL |
| 2.2-RHCUEE01-1820 |  | Megger & Continuity test | 5d | 2026-07-27 | 2026-07-31 | 2.2-RHCUEE01-1810 | 21d | 0d | LABOUR [50 h]; Cable Pull; Construction Material [50] | UDF_G3 | 0 | EE | PRIC | RHCU | EIT2.2 | C03c | EIT02.2 |  |
| 2.2-RHCUEE01-1830 |  | punch Clear | 5d | 2026-08-01 | 2026-08-06 | 2.2-RHCUEE01-1820 | 21d | 0d | LABOUR [50 h]; Cable Pull; Construction Material [50] | UDF_G3 | 0 | EE | PRIC | RHCU | EIT2.2 | C03c | EIT02.2 |  |
| 2.2-RHCUEE01-1840 |  | Sand Filling Compaction | 4d | 2026-08-07 | 2026-08-11 | 2.2-RHCUEE01-1830 | 21d | 0d | LABOUR [50 h]; Cable Pull; Construction Material [40] | UDF_G3 | 0 | EE | PRIC | RHCU | EIT2.2 |  |  |  |
| 2.2-RHCUEE01-1850 |  | Complete QA/QC document | 10d | 2026-08-12 | 2026-08-22 | 2.2-RHCUEE01-1840 | 21d | 0d | LABOUR [100 h]; Cable Pull; Construction Material [100] | UDF_G3 | 0 | EE | PRIC | RHCU | EIT2.2 | C03c | EIT02.2 |  |
| 2.2-RHCUEE01-3420 |  | Back Filling | 20d | 2026-08-24 | 2026-09-15 | 2.2-RHCUEE01-1850, 2.2-RHCUEE09-1110 FF | 21d | 0d | LABOUR [555.9 h]; Cable Pull; Construction Material [200] | UDF_G3 | 0 | EE | PRIC | RHCU | EIT2.2 | C03c | EIT02.2 |  |
|  | 1 | **C03-ETD-293/270/333/296/276//275/277/266/269/279/369/264/280/368/319/320** |  | 2026-06-22 | 2026-09-15 |  |  |  |  |  |  |  |  |  |  |  |  |  |
| 2.2-RHCUEE01-1990 |  | Cable Laying | 30d | 2026-06-22 | 2026-07-25 | 2.2-RHCUEE01-1810 SS | -4.1d | 0d | LABOUR [800 h]; Cable Pull [5974 h]; Construction Material [300] | UDF_G3 | 0 | EE | PRIC | RHCU | EIT2.2 | C03c | EIT02.2 | PUL |
| 2.2-RHCUEE01-1885 |  | Sand Filling First layer | 4d | 2026-07-22 | 2026-07-25 | 2.2-RHCUEE09-1080 | 21d | 0d | LABOUR [100 h]; Cable Pull; Construction Material [40] | UDF_G3 | 0 | EE | PRIC | RHCU | EIT2.2 |  |  |  |
| 2.2-RHCUEE01-2000 |  | Megger & Continuity test | 5d | 2026-07-27 | 2026-07-31 | 2.2-RHCUEE01-1990, 2.2-RHCUEE01-1885 | 21d | 0d | LABOUR [50 h]; Cable Pull; Construction Material [50] | UDF_G3 | 0 | EE | PRIC | RHCU | EIT2.2 | C03c | EIT02.2 |  |
| 2.2-RHCUEE01-2010 |  | punch Clear | 5d | 2026-08-01 | 2026-08-06 | 2.2-RHCUEE01-2000 | 21d | 0d | LABOUR [50 h]; Cable Pull; Construction Material [50] | UDF_G3 | 0 | EE | PRIC | RHCU | EIT2.2 | C03c | EIT02.2 |  |
| 2.2-RHCUEE01-2020 |  | Sand Filling Compaction | 4d | 2026-08-07 | 2026-08-11 | 2.2-RHCUEE01-2010 | 21d | 0d | LABOUR [50 h]; Cable Pull; Construction Material [40] | UDF_G3 | 0 | EE | PRIC | RHCU | EIT2.2 |  |  |  |
| 2.2-RHCUEE01-2030 |  | Complete QA/QC document | 10d | 2026-08-12 | 2026-08-22 | 2.2-RHCUEE01-2020 | 21d | 0d | LABOUR [100 h]; Cable Pull; Construction Material [100] | UDF_G3 | 0 | EE | PRIC | RHCU | EIT2.2 | C03c | EIT02.2 |  |
| 2.2-RHCUEE01-2040 |  | Back Filling | 20d | 2026-08-24 | 2026-09-15 | 2.2-RHCUEE01-2030, 2.2-RHCUEE01-3420 FF | 21d | 0d | LABOUR [555.9 h]; Cable Pull; Construction Material [200] | UDF_G3 | 0 | EE | PRIC | RHCU | EIT2.2 | C03c | EIT02.2 |  |

| ID | WBS | Activity | Duration | Start | Finish | Predecessors | Total float | Free float | Resources | On Schedule Indicator | %Completed | Disciplines | EIT2 Main Activity | Areas | Phases | Cable Pull & Laying | EIT WBS | EIT PKG |
| --- | --- | --- | --- | --- | --- | --- | --- | --- | --- | --- | --- | --- | --- | --- | --- | --- | --- | --- |
|  | 2 | **C03-ETD-366/256/257/260/259/321/210** |  | 2026-06-22 | 2026-09-15 |  |  |  |  |  |  |  |  |  |  |  |  |  |
| 2.2-RHCUEE01-2050 |  | Cable Laying | 30d | 2026-06-22 | 2026-07-25 | 2.2-RHCUEE01-1990 SS | -4.1d | 0d | LABOUR [800 h]; Cable Pull [5974 h]; Construction Material [300] | UDF_G3 | 0 | EE | PRIC | RHCU | EIT2.2 | PUL | C03c | EIT02.2 |
| 2.2-RHCUEE01-2060 |  | Megger & Continuity test | 5d | 2026-07-27 | 2026-07-31 | 2.2-RHCUEE01-2050 | 21d | 0d | LABOUR [50 h]; Cable Pull; Construction Material [50] | UDF_G3 | 0 | EE | PRIC | RHCU | EIT2.2 |  | C03c | EIT02.2 |
| 2.2-RHCUEE01-2070 |  | punch Clear | 5d | 2026-08-01 | 2026-08-06 | 2.2-RHCUEE01-2060 | 21d | 0d | LABOUR [50 h]; Cable Pull; Construction Material [50] | UDF_G3 | 0 | EE | PRIC | RHCU | EIT2.2 |  | C03c | EIT02.2 |
| 2.2-RHCUEE01-2080 |  | Sand Filling Compaction | 4d | 2026-08-07 | 2026-08-11 | 2.2-RHCUEE01-2070 | 21d | 0d | LABOUR [50 h]; Cable Pull; Construction Material [40] | UDF_G3 | 0 | EE | PRIC | RHCU | EIT2.2 |  |  |  |
| 2.2-RHCUEE01-2090 |  | Complete QA/QC document | 10d | 2026-08-12 | 2026-08-22 | 2.2-RHCUEE01-2080 | 21d | 0d | LABOUR [100 h]; Cable Pull; Construction Material [100] | UDF_G3 | 0 | EE | PRIC | RHCU | EIT2.2 |  | C03c | EIT02.2 |
| 2.2-RHCUEE01-2100 |  | Back Filling | 20d | 2026-08-24 | 2026-09-15 | 2.2-RHCUEE01-2090, 2.2-RHCUEE01-2040 FF, 2.2-RHCUEE01-2045 FF | 21d | 15d | LABOUR [555.9 h]; Cable Pull; Construction Material [200] | UDF_G3 | 0 | EE | PRIC | RHCU | EIT2.2 |  | C03c | EIT02.2 |
| 2.2-RHCUEE01-2045 |  | Sand Filling First layer | 4d | 2026-08-26 | 2026-08-29 | 2.2-RHCUEE09-1100 | 35d | 14d | LABOUR [100 h]; Cable Pull; Construction Material [40] | UDF_G3 | 0 | EE | PRIC | RHCU | EIT2.2 |  |  |  |
|  | 13 | **Cable Laying Concrete Trench** |  | 2026-05-20 | 2026-10-02 |  |  |  |  |  |  |  |  |  |  |  |  |  |
|  | 1 | **C03-ETC-268/204/539/440/212/578/540/207/415/441/442/443/501/444/583/445/581** |  | 2026-05-20 | 2026-07-20 |  |  |  |  |  |  |  |  |  |  |  |  |  |
| 2.2-RHCUEE01-1870 |  | Cable Laying | 14d | 2026-05-20 | 2026-06-04 | 2.2-RHCUEE09-1060 SS | 11d | 0d | LABOUR [1000 h]; Cable Pull [5974 h]; Construction Material [200] | UDF_G3 | 0 | EE | PRIC | RHCU | EIT2.2 | PUL | C03c | EIT02.2 |
| 2.2-RHCUEE01-1880 |  | Megger & Continuity test | 5d | 2026-06-05 | 2026-06-10 | 2.2-RHCUEE01-1870 | 11d | 0d | LABOUR [50 h]; Cable Pull; Construction Material [50] | UDF_G3 | 0 | EE | PRIC | RHCU | EIT2.2 |  | C03c | EIT02.2 |
| 2.2-RHCUEE01-1890 |  | punch Clear | 5d | 2026-06-11 | 2026-06-16 | 2.2-RHCUEE01-1880 | 11d | 0d | LABOUR [50 h]; Cable Pull; Construction Material [50] | UDF_G3 | 0 | EE | PRIC | RHCU | EIT2.2 |  | C03c | EIT02.2 |
| 2.2-RHCUEE01-1900 |  | Sand Filling Compaction | 4d | 2026-06-17 | 2026-06-20 | 2.2-RHCUEE01-1890 | 11d | 0d | LABOUR [50 h]; Cable Pull; Construction Material [40] | UDF_G3 | 0 | EE | PRIC | RHCU | EIT2.2 |  |  |  |
| 2.2-RHCUEE01-1910 |  | Complete QA/QC document | 5d | 2026-06-22 | 2026-06-26 | 2.2-RHCUEE01-1900 | 11d | 0d | LABOUR [100 h]; Cable Pull; Construction Material [50] | UDF_G3 | 0 | EE | PRIC | RHCU | EIT2.2 |  | C03c | EIT02.2 |
| 2.2-RHCUEE01-1920 |  | Back Filling | 20d | 2026-06-27 | 2026-07-20 | 2.2-RHCUEE01-1910 | 11d | 0d | LABOUR [455.91 h]; Cable Pull; Construction Material [200] | UDF_G3 | 0 | EE | PRIC | RHCU | EIT2.2 |  | C03c | EIT02.2 |
|  | 2 | **C03-ETC-291/292/227/229/485/584/282/615/283/605/221/220/298/386/270/228/459** |  | 2026-05-20 | 2026-07-20 |  |  |  |  |  |  |  |  |  |  |  |  |  |
| 2.2-RHCUEE01-1930 |  | Cable Laying | 14d | 2026-05-20 | 2026-06-04 | 2.2-RHCUEE01-1870 SS | 11d | 0d | LABOUR [1000 h]; Cable Pull [5974 h]; Construction Material [200] | UDF_G3 | 0 | EE | PRIC | RHCU | EIT2.2 | PUL | C03c | EIT02.2 |
| 2.2-RHCUEE01-1940 |  | Megger & Continuity test | 5d | 2026-06-05 | 2026-06-10 | 2.2-RHCUEE01-1930 | 11d | 0d | LABOUR [50 h]; Cable Pull; Construction Material [50] | UDF_G3 | 0 | EE | PRIC | RHCU | EIT2.2 |  | C03c | EIT02.2 |
| 2.2-RHCUEE01-1950 |  | punch Clear | 5d | 2026-06-11 | 2026-06-16 | 2.2-RHCUEE01-1940 | 11d | 0d | LABOUR [50 h]; Cable Pull; Construction Material [50] | UDF_G3 | 0 | EE | PRIC | RHCU | EIT2.2 |  | C03c | EIT02.2 |
| 2.2-RHCUEE01-1960 |  | Sand Filling Compaction | 4d | 2026-06-17 | 2026-06-20 | 2.2-RHCUEE01-1950 | 11d | 0d | LABOUR [50 h]; Cable Pull; Construction Material [40] | UDF_G3 | 0 | EE | PRIC | RHCU | EIT2.2 |  |  |  |
| 2.2-RHCUEE01-1970 |  | Complete QA/QC document | 5d | 2026-06-22 | 2026-06-26 | 2.2-RHCUEE01-1960 | 11d | 0d | LABOUR [100 h]; Cable Pull; Construction Material [50] | UDF_G3 | 0 | EE | PRIC | RHCU | EIT2.2 |  | C03c | EIT02.2 |
| 2.2-RHCUEE01-1980 |  | Back Filling | 20d | 2026-06-27 | 2026-07-20 | 2.2-RHCUEE01-1970, 2.2-RHCUEE01-1920 FF | 11d | 5d | LABOUR [455.91 h]; Cable Pull; Construction Material [200] | UDF_G3 | 0 | EE | PRIC | RHCU | EIT2.2 |  | C03c | EIT02.2 |
|  | 3 | **C03-ETC-208/206/391/395/389/393/392/394/396/397/456/611/457/462/463/466/464** |  | 2026-07-27 | 2026-10-02 |  |  |  |  |  |  |  |  |  |  |  |  |  |
| 2.2-RHCUEE01-2110 |  | Cable Laying | 20d | 2026-07-27 | 2026-08-18 | 2.2-RHCUEE01-2050, 2.2-RHCUEE01-1980 | 6d | 0d | LABOUR [1000 h]; Cable Pull [5974 h]; Construction Material [200] | UDF_G3 | 0 | EE | PRIC | RHCU | EIT2.2 | PUL | C03c | EIT02.2 |
| 2.2-RHCUEE01-2120 |  | Megger & Continuity test | 5d | 2026-08-19 | 2026-08-24 | 2.2-RHCUEE01-2110 | 6d | 0d | LABOUR [50 h]; Cable Pull; Construction Material [50] | UDF_G3 | 0 | EE | PRIC | RHCU | EIT2.2 |  | C03c | EIT02.2 |
| 2.2-RHCUEE01-2130 |  | punch Clear | 5d | 2026-08-25 | 2026-08-29 | 2.2-RHCUEE01-2120 | 6d | 0d | LABOUR [50 h]; Cable Pull; Construction Material [50] | UDF_G3 | 0 | EE | PRIC | RHCU | EIT2.2 |  | C03c | EIT02.2 |
| 2.2-RHCUEE01-2140 |  | Sand Filling Compaction | 4d | 2026-08-31 | 2026-09-03 | 2.2-RHCUEE01-2130 | 6d | 0d | LABOUR [50 h]; Cable Pull; Construction Material [40] | UDF_G3 | 0 | EE | PRIC | RHCU | EIT2.2 |  |  |  |
| 2.2-RHCUEE01-2150 |  | Complete QA/QC document | 5d | 2026-09-04 | 2026-09-09 | 2.2-RHCUEE01-2140 | 6d | 0d | LABOUR [100 h]; Cable Pull; Construction Material [50] | UDF_G3 | 0 | EE | PRIC | RHCU | EIT2.2 |  | C03c | EIT02.2 |
| 2.2-RHCUEE01-2160 |  | Back Filling | 20d | 2026-09-10 | 2026-10-02 | 2.2-RHCUEE01-2150, 2.2-RHCUEE01-2100 FF | 6d | 0d | LABOUR [455.91 h]; Cable Pull; Construction Material [200] | UDF_G3 | 0 | EE | PRIC | RHCU | EIT2.2 |  | C03c | EIT02.2 |

| ID | WBS | Activity | Duration | Start | Finish | Predecessors | Total float | Free float | Resources | On Schedule Indicator | %Completed | Disciplines | EIT2 Main Activity | Areas | Phases | Cable Pull & Laying | EIT WBS | EIT PKG | Main Activity | WBS | Types |
| --- | --- | --- | --- | --- | --- | --- | --- | --- | --- | --- | --- | --- | --- | --- | --- | --- | --- | --- | --- | --- | --- |
|  | 4 | **C03-ETC-468/564/467/465/460/461/458/453/455/454/264/210/207/234/260/268/400** |  | 2026-07-27 | 2026-10-02 |  |  |  |  |  |  |  |  |  |  |  |  |  |  |  |  |
| 2.2-RHCUEE01-2170 |  | Cable Laying | 20d | 2026-07-27 | 2026-08-18 | 2.2-RHCUEE01-2110 SS | 6d | 0d | LABOUR [1000 h]; Cable Pull [5974 h]; Construction Material [200] | UDF_G3 | 0 | EE | PRIC | RHCU | EIT2.2 | PUL | C03c | EIT02.2 |  |  |  |
| 2.2-RHCUEE01-2180 |  | Megger & Continuity test | 5d | 2026-08-19 | 2026-08-24 | 2.2-RHCUEE01-2170 | 6d | 0d | LABOUR [50 h]; Cable Pull; Construction Material [50] | UDF_G3 | 0 | EE | PRIC | RHCU | EIT2.2 |  | C03c | EIT02.2 |  |  |  |
| 2.2-RHCUEE01-2190 |  | punch Clear | 5d | 2026-08-25 | 2026-08-29 | 2.2-RHCUEE01-2180 | 6d | 0d | LABOUR [50 h]; Cable Pull; Construction Material [50] | UDF_G3 | 0 | EE | PRIC | RHCU | EIT2.2 |  | C03c | EIT02.2 |  |  |  |
| 2.2-RHCUEE01-2200 |  | Sand Filling Compaction | 4d | 2026-08-31 | 2026-09-03 | 2.2-RHCUEE01-2190 | 6d | 0d | LABOUR [50 h]; Cable Pull; Construction Material [40] | UDF_G3 | 0 | EE | PRIC | RHCU | EIT2.2 |  |  |  |  |  |  |
| 2.2-RHCUEE01-2210 |  | Complete QA/QC document | 5d | 2026-09-04 | 2026-09-09 | 2.2-RHCUEE01-2200 | 6d | 0d | LABOUR [100 h]; Cable Pull; Construction Material [50] | UDF_G3 | 0 | EE | PRIC | RHCU | EIT2.2 |  | C03c | EIT02.2 |  |  |  |
| 2.2-RHCUEE01-2220 |  | Back Filling | 20d | 2026-09-10 | 2026-10-02 | 2.2-RHCUEE01-2210, 2.2-RHCUEE01-2160 FF | 6d | 7d | LABOUR [455.91 h]; Cable Pull; Construction Material [200] | UDF_G3 | 0 | EE | PRIC | RHCU | EIT2.2 |  | C03c | EIT02.2 |  |  |  |
|  | 5 | **C03-ETC-399/451/452/398/459/206/208** |  | 2026-06-22 | 2026-08-28 |  |  |  |  |  |  |  |  |  |  |  |  |  |  |  |  |
| 2.2-RHCUEE01-2230 |  | Cable Laying | 20d | 2026-06-22 | 2026-07-14 | 2.2-RHCUEE01-2050 SS | -4.1d | 0d | LABOUR [200 h]; Cable Pull [5974 h]; Construction Material [200] | UDF_G3 | 0 | EE | PRIC | RHCU | EIT2.2 | PUL | C03c | EIT02.2 |  |  |  |
| 2.2-RHCUEE01-2240 |  | Megger & Continuity test | 5d | 2026-07-15 | 2026-07-20 | 2.2-RHCUEE01-2230 | 26d | 0d | LABOUR [50 h]; Cable Pull; Construction Material [50] | UDF_G3 | 0 | EE | PRIC | RHCU | EIT2.2 |  | C03c | EIT02.2 |  |  |  |
| 2.2-RHCUEE01-2250 |  | punch Clear | 5d | 2026-07-21 | 2026-07-25 | 2.2-RHCUEE01-2240 | 26d | 0d | LABOUR [50 h]; Cable Pull; Construction Material [50] | UDF_G3 | 0 | EE | PRIC | RHCU | EIT2.2 |  | C03c | EIT02.2 |  |  |  |
| 2.2-RHCUEE01-2260 |  | Sand Filling Compaction | 4d | 2026-07-27 | 2026-07-30 | 2.2-RHCUEE01-2250 | 26d | 0d | LABOUR [50 h]; Cable Pull; Construction Material [40] | UDF_G3 | 0 | EE | PRIC | RHCU | EIT2.2 |  |  |  |  |  |  |
| 2.2-RHCUEE01-2270 |  | Complete QA/QC document | 5d | 2026-07-31 | 2026-08-05 | 2.2-RHCUEE01-2260 | 26d | 0d | LABOUR [100 h]; Cable Pull; Construction Material [50] | UDF_G3 | 0 | EE | PRIC | RHCU | EIT2.2 |  | C03c | EIT02.2 |  |  |  |
| 2.2-RHCUEE01-2280 |  | Back Filling | 20d | 2026-08-06 | 2026-08-28 | 2.2-RHCUEE01-2270 | 26d | 27d | LABOUR [455.91 h]; Cable Pull; Construction Material [200] | UDF_G3 | 0 | EE | PRIC | RHCU | EIT2.2 |  | C03c | EIT02.2 |  |  |  |
|  | 1 | **Electrical Cable Tray/Ladder Installation** |  | 2026-05-20 | 2026-08-19 |  |  |  |  |  |  |  |  |  |  |  |  |  |  |  |  |
| 2.2-RHCUEE03-1100 |  | Install support / bracket | 54d | 2026-05-20 | 2026-07-21 | 2.2-RHCUEE09-1060 SS | -6d | 0d | LABOUR [1000 h]; Construction Material [600] | UDF_G3 | 0 | EE | Non | RHCU | EIT2.2 |  | C03a | EIT02.2 | 1 | C03a | TY1 |
| 2.2-RHCUEE03-1110 |  | Install Ladder / Tray | 54d | 2026-05-20 | 2026-07-21 | 2.2-RHCUEE03-1100 SS, 2.2-RHCUEE03-1100 FF | -6d | 0d | LABOUR [5000 h]; Construction Material [600] | UDF_G3 | 0 | EE | Non | RHCU | EIT2.2 |  | C03a | EIT02.2 | 1 | C03a | TY1 |
| 2.2-RHCUEE03-1120 |  | Install Conduits | 54d | 2026-05-20 | 2026-07-21 | 2.2-RHCUEE03-1110 SS | 34d | 0d | LABOUR [1000 h]; Construction Material [600] | UDF_G3 | 0 | EE | Non | RHCU | EIT2.2 |  | C03a | EIT02.2 | 1 | C03a | TY1 |
| 2.2-RHCUEE03-1130 |  | Clear punch | 10d | 2026-07-22 | 2026-08-01 | 2.2-RHCUEE03-1120, 2.2-RHCUEE03-1110 | 34d | 0d | LABOUR [500 h]; Construction Material [100] | UDF_G3 | 0 | EE | Non | RHCU | EIT2.2 |  | C03a | EIT02.2 | 1 | C03a | TY1 |
| 2.2-RHCUEE03-1140 |  | Complete QA/QC document | 15d | 2026-08-03 | 2026-08-19 | 2.2-RHCUEE03-1130 | 34d | 35d | LABOUR [1229.78 h]; Construction Material [150] | UDF_G3 | 0 | EE | Non | RHCU | EIT2.2 |  | C03a | EIT02.2 | 1 | C03a | TY1 |
|  | 9 | **AG Cable Pull LV Cable** |  | 2026-07-22 | 2026-10-28 |  |  |  |  |  |  |  |  |  |  |  |  |  |  |  |  |
| 2.2-RHCUEE01-1720 |  | Pull Cable | 60d | 2026-07-22 | 2026-09-29 | 2.2-RHCUEE03-1110 | -6d | 0d | LABOUR [1400 h]; Cable Pull; Construction Material [600] | UDF_G3 | 0 | EE | SECE | RHCU | EIT2.2 | PUL | C03a | EIT02.2 | 1 | C03a | TY1 |
| 2.2-RHCUEE01-1730 |  | Megger & Continuity test | 10d | 2026-09-30 | 2026-10-10 | 2.2-RHCUEE01-1720, 2.2-RHCUEE03-1140, 2.2-RHCUEE01-2280, 2.2-RHCUEE01-2220 FF | -1d | 0d | LABOUR [100 h]; Cable Pull; Construction Material [100] | UDF_G3 | 0 | EE | SECE | RHCU | EIT2.2 |  | C03a | EIT02.2 | 1 | C03a | TY1 |
| 2.2-RHCUEE01-1740 |  | Complete QA/QC document | 15d | 2026-10-12 | 2026-10-28 | 2.2-RHCUEE01-1730 | -1d | 0d | LABOUR [205.91 h]; Cable Pull; Construction Material [150] | UDF_G3 | 0 | EE | SECE | RHCU | EIT2.2 |  | C03a | EIT02.2 | 1 | C03a | TY1 |

| ID | WBS | Activity | Duration | Start | Finish | Predecessors | Total float | Free float | Resources | On Schedule Indicator | %Completed | Disciplines | Main Activity | WBS | Types | EIT2 Main Activity | Areas | Phases | Cable Pull & Laying | EIT WBS | EIT PKG |
| --- | --- | --- | --- | --- | --- | --- | --- | --- | --- | --- | --- | --- | --- | --- | --- | --- | --- | --- | --- | --- | --- |
|  | 10 | **AG Cable Pull Control Cable** |  | 2026-07-22 | 2026-10-28 |  |  |  |  |  |  |  |  |  |  |  |  |  |  |  |  |
| 2.2-RHCUEE01-1750 |  | Pull Cable | 60d | 2026-07-22 | 2026-09-29 | 2.2-RHCUEE01-1720 SS | -6d | 0d | LABOUR [1400 h]; Cable Pull; Construction Material [600] | UDF_G3 | 0 | EE | 1 | C03a | TY1 | SECE | RHCU | EIT2.2 | PUL | C03a | EIT02.2 |
| 2.2-RHCUEE01-1760 |  | Megger & Continuity test | 10d | 2026-09-30 | 2026-10-10 | 2.2-RHCUEE01-1750 | -1d | 0d | LABOUR [100 h]; Cable Pull; Construction Material [100] | UDF_G3 | 0 | EE | 1 | C03a | TY1 | SECE | RHCU | EIT2.2 |  | C03a | EIT02.2 |
| 2.2-RHCUEE01-1770 |  | Complete QA/QC document | 15d | 2026-10-12 | 2026-10-28 | 2.2-RHCUEE01-1760, 2.2-RHCUEE01-1740 FF | -1d | 5d | LABOUR [205.91 h]; Cable Pull; Construction Material [150] | UDF_G3 | 0 | EE | 1 | C03a | TY1 | SECE | RHCU | EIT2.2 |  | C03a | EIT02.2 |
|  | 11 | **AG Lighting Cable** |  | 2026-07-22 | 2026-11-26 |  |  |  |  |  |  |  |  |  |  |  |  |  |  |  |  |
| 2.2-RHCUEE01-1780 |  | Pull Cable | 60d | 2026-07-22 | 2026-09-29 | 2.2-RHCUEE01-1750 SS | -6d | 0d | LABOUR [1400 h]; Cable Pull; Construction Material [600] | UDF_G3 | 0 | EE | 1 | C03a | TY1 | SECE | RHCU | EIT2.2 | PUL | C03a | EIT02.2 |
| 2.2-RHCUEE01-1790 |  | Megger & Continuity test | 30d | 2026-09-30 | 2026-11-03 | 2.2-RHCUEE01-1780 | -6d | 0d | LABOUR [100 h]; Cable Pull; Construction Material [300] | UDF_G3 | 0 | EE | 1 | C03a | TY1 | SECE | RHCU | EIT2.2 |  | C03a | EIT02.2 |
| 2.2-RHCUEE01-1800 |  | Complete QA/QC document | 20d | 2026-11-04 | 2026-11-26 | 2.2-RHCUEE01-1790, 2.2-RHCUEE01-1770 | -6d | 0d | LABOUR [205.91 h]; Cable Pull; Construction Material [200] | UDF_G3 | 0 | EE | 1 | C03a | TY1 | SECE | RHCU | EIT2.2 |  | C03a | EIT02.2 |
|  | 4 | **Electrical Cable Termination / Glanding** |  | 2026-07-15 | 2027-01-18 |  |  |  |  |  |  |  |  |  |  |  |  |  |  |  |  |
|  | 1 | **Termination MV Cable** |  | 2026-07-15 | 2026-09-04 |  |  |  |  |  |  |  |  |  |  |  |  |  |  |  |  |
| 2.2-RHCUEE02-1240 |  | Cable Termination/Glanding | 30d | 2026-07-15 | 2026-08-18 | 2.2-RHCUEE01-2230 | -4.1d | 0d | LABOUR [1800 h]; Construction Material [300] | UDF_G3 | 0 | EE | 1 | C03a | TY1 | Non | RHCU | EIT2.2 |  | C03a | EIT02.2 |
| 2.2-RHCUEE02-1250 |  | Clear punch | 5d | 2026-08-19 | 2026-08-24 | 2.2-RHCUEE02-1240 | -4.1d | 0d | LABOUR [200 h]; Construction Material [50] | UDF_G3 | 0 | EE | 1 | C03a | TY1 | Non | RHCU | EIT2.2 |  | C03a | EIT02.2 |
| 2.2-RHCUEE02-1260 |  | Complete QA/QC document | 10d | 2026-08-25 | 2026-09-04 | 2.2-RHCUEE02-1250 | -4.1d | 0d | LABOUR [639.63 h]; Construction Material [100] | UDF_G3 | 0 | EE | 1 | C03a | TY1 | Non | RHCU | EIT2.2 |  | C03a | EIT02.2 |
|  | 2 | **Termination LV Cable** |  | 2026-10-29 | 2026-12-31 |  |  |  |  |  |  |  |  |  |  |  |  |  |  |  |  |
| 2.2-RHCUEE02-1270 |  | Cable Termination/Glanding | 30d | 2026-10-29 | 2026-12-02 | 2.2-RHCUEE01-1740, 2.2-RHCUEE02-1260 | -1d | 0d | LABOUR [1800 h]; Construction Material [300] | UDF_G3 | 0 | EE | 1 | C03a | TY1 | Non | RHCU | EIT2.2 |  | C03a | EIT02.2 |
| 2.2-RHCUEE02-1280 |  | Clear punch | 10d | 2026-12-03 | 2026-12-14 | 2.2-RHCUEE02-1270 | -1d | 0d | LABOUR [200 h]; Construction Material [100] | UDF_G3 | 0 | EE | 1 | C03a | TY1 | Non | RHCU | EIT2.2 |  | C03a | EIT02.2 |
| 2.2-RHCUEE02-1290 |  | Complete QA/QC document | 15d | 2026-12-15 | 2026-12-31 | 2.2-RHCUEE02-1280 | -1d | 0d | LABOUR [639.63 h]; Construction Material [150] | UDF_G3 | 0 | EE | 1 | C03a | TY1 | Non | RHCU | EIT2.2 |  | C03a | EIT02.2 |
|  | 3 | **Termination Control Cable** |  | 2026-10-29 | 2026-12-31 |  |  |  |  |  |  |  |  |  |  |  |  |  |  |  |  |
| 2.2-RHCUEE02-1300 |  | Cable Termination/Glanding | 30d | 2026-10-29 | 2026-12-02 | 2.2-RHCUEE02-1270 SS | -1d | 0d | LABOUR [1800 h]; Construction Material [300] | UDF_G3 | 0 | EE | 1 | C03a | TY1 | Non | RHCU | EIT2.2 |  | C03a | EIT02.2 |
| 2.2-RHCUEE02-1310 |  | Clear punch | 10d | 2026-12-03 | 2026-12-14 | 2.2-RHCUEE02-1300 | -1d | 0d | LABOUR [200 h]; Construction Material [100] | UDF_G3 | 0 | EE | 1 | C03a | TY1 | Non | RHCU | EIT2.2 |  | C03a | EIT02.2 |
| 2.2-RHCUEE02-1320 |  | Complete QA/QC document | 15d | 2026-12-15 | 2026-12-31 | 2.2-RHCUEE02-1310, 2.2-RHCUEE02-1290 FF | -1d | 5d | LABOUR [639.63 h]; Construction Material [150] | UDF_G3 | 0 | EE | 1 | C03a | TY1 | Non | RHCU | EIT2.2 |  | C03a | EIT02.2 |
|  | 4 | **Termination Lighting Cable** |  | 2026-11-27 | 2027-01-18 |  |  |  |  |  |  |  |  |  |  |  |  |  |  |  |  |
| 2.2-RHCUEE02-1330 |  | Cable Termination/Glanding | 30d | 2026-11-27 | 2026-12-31 | 2.2-RHCUEE01-1800 | -6d | 0d | LABOUR [1800 h]; Construction Material [300] | UDF_G3 | 0 | EE | 1 | C03a | TY1 | Non | RHCU | EIT2.2 |  | C03a | EIT02.2 |
| 2.2-RHCUEE02-1340 |  | Clear punch | 5d | 2027-01-01 | 2027-01-06 | 2.2-RHCUEE02-1330 | -6d | 0d | LABOUR [200 h]; Construction Material [50] | UDF_G3 | 0 | EE | 1 | C03a | TY1 | Non | RHCU | EIT2.2 |  | C03a | EIT02.2 |
| 2.2-RHCUEE02-1350 |  | Complete QA/QC document | 10d | 2027-01-07 | 2027-01-18 | 2.2-RHCUEE02-1340, 2.2-RHCUEE02-1320 | -6d | 0d | LABOUR [639.63 h]; Construction Material [100] | UDF_G3 | 0 | EE | 1 | C03a | TY1 | Non | RHCU | EIT2.2 |  | C03a | EIT02.2 |

| ID | WBS | Activity | Duration | Start | Finish | Predecessors | Total float | Free float | Calendar | Resources | On Schedule Indicator | %Completed | Disciplines | Main Activity | WBS | Types | EIT2 Main Activity | Areas | Phases | EIT WBS | EIT PKG | Motor Loop | Cable Pull & Laying |
| --- | --- | --- | --- | --- | --- | --- | --- | --- | --- | --- | --- | --- | --- | --- | --- | --- | --- | --- | --- | --- | --- | --- | --- |
|  | 7 | **Electrical Earthing / Lightning Installation** |  | 2026-05-20 | 2026-08-19 |  |  |  |  |  |  |  |  |  |  |  |  |  |  |  |  |  |  |
| 2.2-RHCUEE06-1060 |  | Install Equipment Earthing / Inspection PIT / Install earthing pull and Connecttion | 54d | 2026-05-20 | 2026-07-21 | 2.2-RHCUEE03-1100 SS | 18d | 0d |  | LABOUR [3000 h]; Construction Material [600] | UDF_G3 | 0 | EE | 1 | C03a | TY1 | Non | RHCU | EIT2.2 | C03a | EIT02.2 |  |  |
| 2.2-RHCUEE06-1070 |  | Punch Clear | 10d | 2026-07-22 | 2026-08-01 | 2.2-RHCUEE06-1060 | 18d | 0d |  | LABOUR [500 h]; Construction Material [100] | UDF_G3 | 0 | EE | 1 | C03a | TY1 | Non | RHCU | EIT2.2 | C03a | EIT02.2 |  |  |
| 2.2-RHCUEE06-1080 |  | Complete QA/QC document | 15d | 2026-08-03 | 2026-08-19 | 2.2-RHCUEE06-1070 | 18d | 15d |  | LABOUR [763.82 h]; Construction Material [150] | UDF_G3 | 0 | EE | 1 | C03a | TY1 | Non | RHCU | EIT2.2 | C03a | EIT02.2 |  |  |
|  | 5 | **Lighting Fixture Installation** |  | 2026-07-22 | 2026-10-05 |  |  |  |  |  |  |  |  |  |  |  |  |  |  |  |  |  |  |
| 2.2-RHCUEE05-1160 |  | Install support / bracket / Pole | 40d | 2026-07-22 | 2026-09-05 | 2.2-RHCUEE03-1100 | -2d | 0d |  | LABOUR [500 h]; Construction Material [400] | UDF_G3 | 0 | EE | 1 | C03a | TY1 | Non | RHCU | EIT2.2 | C03a | EIT02.2 |  |  |
| 2.2-RHCUEE05-1170 |  | lighting fixture | 40d | 2026-07-22 | 2026-09-05 | 2.2-RHCUEE05-1160 SS, 2.2-RHCUEE05-1160 FF | 3d | 0d |  | LABOUR [1500 h]; Construction Material [400] | UDF_G3 | 0 | EE | 1 | C03a | TY1 | Non | RHCU | EIT2.2 | C03a | EIT02.2 |  |  |
| 2.2-RHCUEE05-1180 |  | Clear punch | 10d | 2026-09-07 | 2026-09-17 | 2.2-RHCUEE05-1170, 2.2-RHCUEE06-1080 | 3d | 0d |  | LABOUR [50 h]; Construction Material [100] | UDF_G3 | 0 | EE | 1 | C03a | TY1 | Non | RHCU | EIT2.2 | C03a | EIT02.2 |  |  |
| 2.2-RHCUEE05-1190 |  | Complete QA/QC document | 15d | 2026-09-18 | 2026-10-05 | 2.2-RHCUEE05-1180 | 3d | 0d |  | LABOUR [116.75 h]; Construction Material [150] | UDF_G3 | 0 | EE | 1 | C03a | TY1 | Non | RHCU | EIT2.2 | C03a | EIT02.2 |  |  |
|  | 12 | **Small Power Equipment Installation** |  | 2026-07-22 | 2026-10-05 |  |  |  |  |  |  |  |  |  |  |  |  |  |  |  |  |  |  |
| 2.2-RHCUEE05-1200 |  | Install support / bracket | 40d | 2026-07-22 | 2026-09-05 | 2.2-RHCUEE05-1160 SS | -2d | 0d |  | LABOUR [500 h]; Construction Material [400] | UDF_G3 | 0 | EE | 1 | C03a | TY1 | Non | RHCU | EIT2.2 | C03a | EIT02.2 |  |  |
| 2.2-RHCUEE05-1210 |  | Install Distribution panel, convenience outlet | 40d | 2026-07-22 | 2026-09-05 | 2.2-RHCUEE05-1200 SS | 3d | 0d |  | LABOUR [1500 h]; Construction Material [400] | UDF_G3 | 0 | EE | 1 | C03a | TY1 | Non | RHCU | EIT2.2 | C03a | EIT02.2 |  |  |
| 2.2-RHCUEE05-1220 |  | Clear punch | 10d | 2026-09-07 | 2026-09-17 | 2.2-RHCUEE05-1210 | 3d | 0d |  | LABOUR [50 h]; Construction Material [100] | UDF_G3 | 0 | EE | 1 | C03a | TY1 | Non | RHCU | EIT2.2 | C03a | EIT02.2 |  |  |
| 2.2-RHCUEE05-1230 |  | Complete QA/QC document | 15d | 2026-09-18 | 2026-10-05 | 2.2-RHCUEE05-1220, 2.2-RHCUEE05-1190 FF | 3d | 6.3d |  | LABOUR [116.75 h]; Construction Material [150] | UDF_G3 | 0 | EE | 1 | C03a | TY1 | Non | RHCU | EIT2.2 | C03a | EIT02.2 |  |  |
|  | 2 | **Motor Solo Run** |  | 2026-09-05 | 2026-10-30 |  |  |  |  |  |  |  |  |  |  |  |  |  |  |  |  |  |  |
| 2.2-RHCUEE00-1070 |  | Motor solo run | 25d | 2026-09-05 | 2026-10-03 | 2.2-RHCUEE02-1260 | -4.1d | 0d |  | LABOUR; Construction Material [250] | UDF_G3 | 0 | EE |  |  |  | Non | RHCU | EIT2.2 | C03a | EIT02.2 | MO |  |
| 2.2-RHCUEE00-1080 |  | Punch Clear | 10d | 2026-10-04 | 2026-10-13 | 2.2-RHCUEE00-1070 | -4.5d | 0d | 7 - Day Workweek (No Holidays) | LABOUR; Construction Material [80] | UDF_G3 | 0 | EE |  |  |  | Non | RHCU | EIT2.2 | C03a | EIT02.2 | MO |  |
| 2.2-RHCUEE00-1090 |  | Complete QA/QC document | 15d | 2026-10-13 | 2026-10-30 | 2.2-RHCUEE00-1080, 2.2-RHCUEE05-1230 | -3.3d | 0d |  | LABOUR; Construction Material [150] | UDF_G3 | 0 | EE |  |  |  | Non | RHCU | EIT2.2 | C03a | EIT02.2 | MO |  |
|  | 3 | **Instrument Works** |  | 2026-08-07 | 2027-05-29 |  |  |  |  |  |  |  |  |  |  |  |  |  |  |  |  |  |  |
|  | 10 | **Cable Laying concrete Trench** |  | 2026-08-07 | 2026-12-04 |  |  |  |  |  |  |  |  |  |  |  |  |  |  |  |  |  |  |
|  | 3 | **C03-JTR-327/328/329/330/311/312/314/313/315/316/317/318** |  | 2026-08-07 | 2026-12-04 |  |  |  |  |  |  |  |  |  |  |  |  |  |  |  |  |  |  |
| 2.2-RHCUIN01-1300 |  | Cable Laying | 49d | 2026-08-07 | 2026-10-02 | 2.2-RHCUIN01-1180 | 0d |  |  | LABOUR [9000 h]; Cable Pull [47366 h]; Construction Material [490] | UDF_G3 | 0 | IN |  |  |  | PRICI | RHCU | EIT2.2 | C03a | EIT02.2 |  | PUL |
| 2.2-RHCUIN01-1310 |  | Megger & Continuity test | 5d | 2026-10-03 | 2026-10-08 | 2.2-RHCUIN01-1300 | 0d |  |  | LABOUR [500 h]; Cable Pull; Construction Material [50] | UDF_G3 | 0 | IN |  |  |  | PRICI | RHCU | EIT2.2 | C03a | EIT02.2 |  |  |
| 2.2-RHCUIN01-1320 |  | Clear punch | 5d | 2026-10-09 | 2026-10-14 | 2.2-RHCUIN01-1310 | 0d |  |  | LABOUR [200 h]; Cable Pull; Construction Material [50] | UDF_G3 | 0 | IN |  |  |  | PRICI | RHCU | EIT2.2 | C03a | EIT02.2 |  |  |
| 2.2-RHCUIN01-1330 |  | Sand Filling compaction | 10d | 2026-10-15 | 2026-10-26 | 2.2-RHCUIN01-1320 | 0d | 3.3d |  | LABOUR [300 h]; Cable Pull; Construction Material [100] | UDF_G3 | 0 | IN |  |  |  | PRICI | RHCU | EIT2.2 |  |  |  |  |
| 2.2-RHCUIN01-1340 |  | Complete QA/QC document | 10d | 2026-10-15 | 2026-10-26 | 2.2-RHCUIN01-1320 | 0d | 3.3d |  | LABOUR [500 h]; Cable Pull; Construction Material [100] | UDF_G3 | 0 | IN |  |  |  | PRICI | RHCU | EIT2.2 | C03a | EIT02.2 |  |  |
| 2.2-RHCUIN01-1350 |  | Back Filling | 30d | 2026-10-30 | 2026-12-04 | 2.2-RHCUIN01-1340, 2.2-RHCUEE00-1090, 2.2-RHCUIN01-1330 | -3.3d | 8.7d |  | LABOUR [4970.5 h]; Cable Pull; Construction Material [300] | UDF_G3 | 0 | IN |  |  |  | PRICI | RHCU | EIT2.2 | C03a | EIT02.2 |  |  |

| ID | WBS | Activity | Duration | Start | Finish | Predecessors | Total float | Free float | Resources | On Schedule Indicator | %Completed | Disciplines | Main Activity | WBS | Types | EIT2 Main Activity | Areas | Phases | EIT WBS | EIT PKG | Cable Pull & Laying |
| --- | --- | --- | --- | --- | --- | --- | --- | --- | --- | --- | --- | --- | --- | --- | --- | --- | --- | --- | --- | --- | --- |
|  | 3 | **Instrument Cable Tray/Ladder Installation** |  | 2026-08-07 | 2026-11-13 |  |  |  |  |  |  |  |  |  |  |  |  |  |  |  |  |
| 2.2-RHCUIN03-1100 |  | Install support / bracket | 60d | 2026-08-07 | 2026-10-15 | 2.2-RHCUIN01-1300 SS | 8d | 0d | LABOUR [1000 h]; Construction Material [600] | UDF_G3 | 0 | EE | 1 | C03a | TY1 | Non | RHCU | EIT2.2 | C03a | EIT02.2 |  |
| 2.2-RHCUIN03-1110 |  | Install Ladder / Tray | 60d | 2026-08-07 | 2026-10-15 | 2.2-RHCUIN03-1120 SS, 2.2-RHCUIN03-1100 FF | 8d | 0d | LABOUR [3000 h]; Construction Material [600] | UDF_G3 | 0 | EE | 1 | C03a | TY1 | Non | RHCU | EIT2.2 | C03a | EIT02.2 |  |
| 2.2-RHCUIN03-1120 |  | Steel Conduits for Cable tray | 60d | 2026-08-07 | 2026-10-15 | 2.2-RHCUIN03-1100 SS | 8d | 0d | LABOUR [1000 h]; Construction Material [600] | UDF_G3 | 0 | EE | 1 | C03a | TY1 | Non | RHCU | EIT2.2 | C03a | EIT02.2 |  |
| 2.2-RHCUIN03-1130 |  | punch clear | 10d | 2026-10-16 | 2026-10-27 | 2.2-RHCUIN03-1110, 2.2-RHCUIN03-1120 | 8d | 0d | LABOUR [200 h]; Construction Material [100] | UDF_G3 | 0 | EE | 1 | C03a | TY1 | Non | RHCU | EIT2.2 | C03a | EIT02.2 |  |
| 2.2-RHCUIN03-1140 |  | Complete QA/QC document | 15d | 2026-10-28 | 2026-11-13 | 2.2-RHCUIN03-1130 | 8d | 0d | LABOUR [392.97 h]; Construction Material [150] | UDF_G3 | 0 | IN |  |  |  | Non | RHCU | EIT2.2 |  |  |  |
|  | 8 | **AG Cable Pull Primary Cable** |  | 2026-11-14 | 2027-02-09 |  |  |  |  |  |  |  |  |  |  |  |  |  |  |  |  |
| 2.2-RHCUIN01-1240 |  | Pull Cable | 50d | 2026-11-14 | 2027-01-11 | 2.2-RHCUIN03-1140, 2.2-RHCUIN01-1350 FF | 8d | 0d | LABOUR [14000 h]; Cable Pull; Construction Material [500] | UDF_G3 | 0 | EE | 1 | C03a | TY1 | SECI | RHCU | EIT2.2 | C03a | EIT02.2 | PUL |
| 2.2-RHCUIN01-1250 |  | Megger & Continuity test | 10d | 2027-01-12 | 2027-01-22 | 2.2-RHCUIN01-1240 | 8d | 0d | LABOUR [500 h]; Cable Pull; Construction Material [100] | UDF_G3 | 0 | EE | 1 | C03a | TY1 | SECI | RHCU | EIT2.2 | C03a | EIT02.2 |  |
| 2.2-RHCUIN01-1260 |  | Complete QA/QC document | 15d | 2027-01-23 | 2027-02-09 | 2.2-RHCUIN01-1250 | 8d | 0d | LABOUR [970.5 h]; Cable Pull; Construction Material [150] | UDF_G3 | 0 | EE | 1 | C03a | TY1 | SECI | RHCU | EIT2.2 | C03a | EIT02.2 |  |
|  | 9 | **AG Cable Pull Secondary Cable** |  | 2026-11-14 | 2027-02-09 |  |  |  |  |  |  |  |  |  |  |  |  |  |  |  |  |
| 2.2-RHCUIN01-1270 |  | Pull Cable | 50d | 2026-11-14 | 2027-01-11 | 2.2-RHCUIN01-1240 SS | 8d | 0d | LABOUR [14000 h]; Cable Pull; Construction Material [500] | UDF_G3 | 0 | EE | 1 | C03a | TY1 | SECI | RHCU | EIT2.2 | C03a | EIT02.2 | PUL |
| 2.2-RHCUIN01-1280 |  | Megger & Continuity test | 10d | 2027-01-12 | 2027-01-22 | 2.2-RHCUIN01-1270, 2.2-RHCUIN02-1380 | 8d | 0d | LABOUR [400 h]; Cable Pull; Construction Material [100] | UDF_G3 | 0 | EE | 1 | C03a | TY1 | SECI | RHCU | EIT2.2 | C03a | EIT02.2 |  |
| 2.2-RHCUIN01-1290 |  | Complete QA/QC document | 15d | 2027-01-23 | 2027-02-09 | 2.2-RHCUIN01-1280 | 8d | 0d | LABOUR [970.5 h]; Cable Pull; Construction Material [150] | UDF_G3 | 0 | EE | 1 | C03a | TY1 | SECI | RHCU | EIT2.2 | C03a | EIT02.2 |  |
|  | 2 | **Instrument Cable Termination / Glanding** |  | 2026-10-03 | 2027-04-08 |  |  |  |  |  |  |  |  |  |  |  |  |  |  |  |  |
|  | 1 | **UG Cable Termination Cable** |  | 2026-10-03 | 2026-12-01 |  |  |  |  |  |  |  |  |  |  |  |  |  |  |  |  |
| 2.2-RHCUIN02-1360 |  | Cable Termination/Glanding | 25d | 2026-10-03 | 2026-10-31 | 2.2-RHCUIN01-1300 | 44d | 0d | LABOUR [3000 h]; Construction Material [250] | UDF_G3 | 0 | EE | 1 | C03a | TY1 | Non | RHCU | EIT2.2 | C03a | EIT02.2 |  |
| 2.2-RHCUIN02-1370 |  | punch clear | 10d | 2026-11-02 | 2026-11-12 | 2.2-RHCUIN02-1360 | 44d | 1d | LABOUR [500 h]; Construction Material [100] | UDF_G3 | 0 | EE | 1 | C03a | TY1 | Non | RHCU | EIT2.2 | C03a | EIT02.2 |  |
| 2.2-RHCUIN02-1380 |  | Complete QA/QC document | 15d | 2026-11-14 | 2026-12-01 | 2.2-RHCUIN02-1370, 2.2-RHCUIN03-1140 | 43d | 35d | LABOUR [907.72 h]; Construction Material [150] | UDF_G3 | 0 | EE | 1 | C03a | TY1 | Non | RHCU | EIT2.2 | C03a | EIT02.2 |  |
|  | 8 | **Cable Termination Primary Cable** |  | 2027-02-10 | 2027-04-08 |  |  |  |  |  |  |  |  |  |  |  |  |  |  |  |  |
| 2.2-RHCUIN02-1120 |  | Cable Termination/Glanding | 25d | 2027-02-10 | 2027-03-10 | 2.2-RHCUIN01-1260, 2.2-RHCUIN02-1380 | 8d | 0d | LABOUR [3000 h]; Construction Material [250] | UDF_G3 | 0 | EE | 1 | C03a | TY1 | Non | RHCU | EIT2.2 | C03a | EIT02.2 |  |
| 2.2-RHCUIN02-1130 |  | punch clear | 10d | 2027-03-11 | 2027-03-22 | 2.2-RHCUIN02-1120 | 8d | 0d | LABOUR [500 h]; Construction Material [100] | UDF_G3 | 0 | EE | 1 | C03a | TY1 | Non | RHCU | EIT2.2 | C03a | EIT02.2 |  |
| 2.2-RHCUIN02-1140 |  | Complete QA/QC document | 15d | 2027-03-23 | 2027-04-08 | 2.2-RHCUIN02-1130 | 8d | 0d | LABOUR [907.72 h]; Construction Material [150] | UDF_G3 | 0 | EE | 1 | C03a | TY1 | Non | RHCU | EIT2.2 | C03a | EIT02.2 |  |
|  | 9 | **Cable Termination Secondary Cable** |  | 2027-02-10 | 2027-04-08 |  |  |  |  |  |  |  |  |  |  |  |  |  |  |  |  |
| 2.2-RHCUIN02-1150 |  | Cable Termination/Glanding | 25d | 2027-02-10 | 2027-03-10 | 2.2-RHCUIN01-1290, 2.2-RHCUIN05-1020 | 8d | 0d | LABOUR [3000 h]; Construction Material [250] | UDF_G3 | 0 | EE | 1 | C03a | TY1 | Non | RHCU | EIT2.2 | C03a | EIT02.2 |  |
| 2.2-RHCUIN02-1160 |  | punch clear | 10d | 2027-03-11 | 2027-03-22 | 2.2-RHCUIN02-1150 | 8d | 0d | LABOUR [500 h]; Construction Material [100] | UDF_G3 | 0 | EE | 1 | C03a | TY1 | Non | RHCU | EIT2.2 | C03a | EIT02.2 |  |
| 2.2-RHCUIN02-1170 |  | Complete QA/QC document | 15d | 2027-03-23 | 2027-04-08 | 2.2-RHCUIN02-1160, 2.2-RHCUIN02-1140 FF | 8d | 0d | LABOUR [907.72 h]; Construction Material [150] | UDF_G3 | 0 | EE | 1 | C03a | TY1 | Non | RHCU | EIT2.2 | C03a | EIT02.2 |  |

| ID | WBS | Activity | Duration | Start | Finish | Predecessors | Total float | Free float | Calendar | Resources | On Schedule Indicator | %Completed | Disciplines | Main Activity | WBS | Types | EIT2 Main Activity | Areas | Phases | EIT WBS | EIT PKG |
| --- | --- | --- | --- | --- | --- | --- | --- | --- | --- | --- | --- | --- | --- | --- | --- | --- | --- | --- | --- | --- | --- |
|  | 4 | **Instrument Calibration** |  | 2026-10-03 | 2026-11-06 |  |  |  |  |  |  |  |  |  |  |  |  |  |  |  |  |
| 2.2-RHCUIN05-1020 |  | Calibration of Gauges | 30d | 2026-10-03 | 2026-11-06 | 2.2-RHCUIN01-1300 | 8.3d | 0d |  | LABOUR [3000 h]; Construction Material [300] | UDF_G3 | 0 | EE | 1 | C03a | TY1 | Non | RHCU | EIT2.2 | C03c | EIT02.2 |
| 2.2-RHCUIN05-1070 |  | Calibration of Transmitters/Switches | 30d | 2026-10-03 | 2026-11-06 | 2.2-RHCUIN05-1020 SS, 2.2-RHCUIN05-1020 FF | 23.3d | 5d |  | LABOUR [4396.55 h]; Construction Material [300] | UDF_G3 | 0 | IN |  |  |  | Non | RHCU | EIT2.2 |  |  |
|  | 1 | **Gauges** |  | 2026-10-03 | 2026-11-18 |  |  |  |  |  |  |  |  |  |  |  |  |  |  |  |  |
| 2.2-RHCUIN04-1305 |  | D.P Pressure Gauge Installation | 10d | 2026-10-03 | 2026-10-14 | 2.2-RHCUIN05-1020 SS | 8.3d | 0d |  | LABOUR [750 h]; Construction Material [100] | UDF_G3 | 0 | IN |  |  |  | Non | RHCU | EIT2.2 |  |  |
| 2.2-RHCUIN04-1310 |  | Pressure Gauge Installation | 10d | 2026-10-15 | 2026-10-26 | 2.2-RHCUIN04-1305 | 18.3d | 0d |  | LABOUR [750 h]; Construction Material [100] | UDF_G3 | 0 | IN |  |  |  | Non | RHCU | EIT2.2 |  |  |
| 2.2-RHCUIN04-1320 |  | Level Gauge Installation | 10d | 2026-10-27 | 2026-11-06 | 2.2-RHCUIN04-1310 | 18.3d | 0d |  | LABOUR [1000 h]; Construction Material [100] | UDF_G3 | 0 | IN |  |  |  | Non | RHCU | EIT2.2 |  |  |
| 2.2-RHCUIN04-1330 |  | Clear punch | 5d | 2026-11-07 | 2026-11-12 | 2.2-RHCUIN04-1320 | 18.3d | 0d |  | LABOUR [200 h]; Construction Material [50] | UDF_G3 | 0 | IN |  |  |  | Non | RHCU | EIT2.2 |  |  |
| 2.2-RHCUIN04-1340 |  | Complete QA/QC document | 5d | 2026-11-13 | 2026-11-18 | 2.2-RHCUIN04-1330, 2.2-RHCUIN05-1070 | 18.3d | 0d |  | LABOUR [296.58 h]; Construction Material [50] | UDF_G3 | 0 | IN |  |  |  | Non | RHCU | EIT2.2 |  |  |
|  | 6 | **Transmitters/Switches** |  | 2026-10-03 | 2026-12-11 |  |  |  |  |  |  |  |  |  |  |  |  |  |  |  |  |
| 2.2-RHCUIN04-1350 |  | Install support / bracket | 10d | 2026-10-03 | 2026-10-14 | 2.2-RHCUIN04-1305 SS | 8.3d | 0d |  | LABOUR [300 h]; Construction Material [100] | UDF_G3 | 0 | IN |  |  |  | Non | RHCU | EIT2.2 |  |  |
| 2.2-RHCUIN04-1360 |  | Pressure transmitters Installation | 10d | 2026-10-15 | 2026-10-26 | 2.2-RHCUIN04-1350 | 8.3d | 0d |  | LABOUR [500 h]; Construction Material [100] | UDF_G3 | 0 | IN |  |  |  | Non | RHCU | EIT2.2 |  |  |
| 2.2-RHCUIN04-1370 |  | D.P. Transmitters - HART Installation | 10d | 2026-10-27 | 2026-11-06 | 2.2-RHCUIN04-1360 | 8.3d | 0d |  | LABOUR [500 h]; Construction Material [100] | UDF_G3 | 0 | IN |  |  |  | Non | RHCU | EIT2.2 |  |  |
| 2.2-RHCUIN04-1380 |  | Temperature Transmitters Installation | 10d | 2026-11-07 | 2026-11-18 | 2.2-RHCUIN04-1370 | 18.3d | 0d |  | LABOUR [500 h]; Construction Material [100] | UDF_G3 | 0 | IN |  |  |  | Non | RHCU | EIT2.2 |  |  |
| 2.2-RHCUIN04-1430 |  | Level Switch Installation | 10d | 2026-11-19 | 2026-11-30 | 2.2-RHCUIN04-1380, 2.2-RHCUIN04-1340 | 18.3d | 0d |  | LABOUR [500 h]; Construction Material [100] | UDF_G3 | 0 | IN |  |  |  | Non | RHCU | EIT2.2 |  |  |
| 2.2-RHCUIN04-1440 |  | Clear punch | 5d | 2026-12-01 | 2026-12-05 | 2.2-RHCUIN04-1430 | 18.3d | 0d |  | LABOUR [200 h]; Construction Material [50] | UDF_G3 | 0 | IN |  |  |  | Non | RHCU | EIT2.2 |  |  |
| 2.2-RHCUIN04-1450 |  | Complete QA/QC document | 5d | 2026-12-07 | 2026-12-11 | 2.2-RHCUIN04-1440, 2.2-RHCUIN04-1340 | 18.3d | 10d |  | LABOUR [496.58 h]; Construction Material [50] | UDF_G3 | 0 | IN |  |  |  | Non | RHCU | EIT2.2 |  |  |
|  | 11 | **Instrument Junction Box Installation** |  | 2026-10-15 | 2026-11-11 |  |  |  |  |  |  |  |  |  |  |  |  |  |  |  |  |
| 2.2-RHCUIN04-1390 |  | Install support / bracket | 10d | 2026-10-15 | 2026-10-26 | 2.2-RHCUIN04-1350 | 24.3d | 0d |  | LABOUR [1000 h]; Construction Material [100] | UDF_G3 | 0 | IN |  |  |  | Non | RHCU | EIT2.2 |  |  |
| 2.2-RHCUIN04-1400 |  | Instrument Junction Box Installation | 10d | 2026-10-27 | 2026-11-06 | 2.2-RHCUIN04-1390 | 24.3d | 0d |  | LABOUR [1500 h]; Construction Material [100] | UDF_G3 | 0 | EE | 1 | C03a | TY1 | Non | RHCU | EIT2.2 | C03c | EIT02.2 |
| 2.2-RHCUIN04-1410 |  | Clear punch | 2d | 2026-11-07 | 2026-11-09 | 2.2-RHCUIN04-1400 | 24.3d | 0d |  | LABOUR [300 h]; Construction Material [20] | UDF_G3 | 0 | EE | 1 | C03a | TY1 | Non | RHCU | EIT2.2 | C03c | EIT02.2 |
| 2.2-RHCUIN04-1420 |  | Complete QA/QC document | 2d | 2026-11-10 | 2026-11-11 | 2.2-RHCUIN04-1410 | 24.3d | 16d |  | LABOUR [196.58 h]; Construction Material [20] | UDF_G3 | 0 | EE | 1 | C03a | TY1 | Non | RHCU | EIT2.2 | C03c | EIT02.2 |
|  | 5 | **Tubing** |  | 2026-11-07 | 2027-01-18 |  |  |  |  |  |  |  |  |  |  |  |  |  |  |  |  |
| 2.2-RHCUIN07-1080 |  | Instrument Hook up Tubing Installation | 20d | 2026-11-07 | 2026-11-30 | 2.2-RHCUIN04-1360, 2.2-RHCUIN04-1370 | 8.3d | 0d |  | LABOUR [100 h]; Construction Material [200] | UDF_G3 | 0 | IN |  |  |  | Non | RHCU | EIT2.2 | C03c | EIT02.2 |
| 2.2-RHCUIN07-1090 |  | Leak Test | 20d | 2026-12-01 | 2026-12-23 | 2.2-RHCUIN07-1080, 2.2-RHCUIN04-1420 | 8.3d | 0d |  | LABOUR [30 h]; Construction Material [200] | UDF_G3 | 0 | IN |  |  |  | Non | RHCU | EIT2.2 | C03c | EIT02.2 |
| 2.2-RHCUIN07-1100 |  | Clear Punch | 10d | 2026-12-24 | 2027-01-04 | 2.2-RHCUIN07-1090, 2.2-RHCUIN04-1450 | 8.3d | 0.1d |  | LABOUR [20 h]; Construction Material [100] | UDF_G3 | 0 | IN |  |  |  | Non | RHCU | EIT2.2 | C03c | EIT02.2 |
| 2.2-RHCUIN07-1110 |  | Complete QA/QC document | 15d | 2027-01-05 | 2027-01-18 | 2.2-RHCUIN07-1100, 2.2-RHCUIN04-1450 | 10.12d | 12.38d | 7 - Day Workweek (No Holidays) | LABOUR [29.2 h]; Construction Material [120] | UDF_G3 | 0 | IN |  |  |  | Non | RHCU | EIT2.2 | C03c | EIT02.2 |

| ID | WBS | Activity | Duration | Start | Finish | Predecessors | Total float | Free float | Resources | On Schedule Indicator | %Completed | Disciplines | EIT2 Main Activity | Areas | Phases | EIT WBS | EIT PKG | Motor Loop | Main Activity | WBS | Types |
| --- | --- | --- | --- | --- | --- | --- | --- | --- | --- | --- | --- | --- | --- | --- | --- | --- | --- | --- | --- | --- | --- |
|  | 7 | **Instrument Loop Check** |  | 2027-04-09 | 2027-05-29 |  |  |  |  |  |  |  |  |  |  |  |  |  |  |  |  |
| 2.2-RHCUIN00-1060 |  | Instrument Loop check | 25d | 2027-04-09 | 2027-05-07 | 2.2-RHCUIN02-1170 | 8d | 0d | LABOUR [3000 h]; Construction Material [250] | UDF_G3 | 0 | IN | Non | RHCU | EIT2.2 | C03c | EIT02.2 | LO |  |  |  |
| 2.2-RHCUIN00-1070 |  | Clear Punch | 10d | 2027-05-08 | 2027-05-19 | 2.2-RHCUIN00-1060 | 8d | 0d | LABOUR [1000 h]; Construction Material [100] | UDF_G3 | 0 | IN | Non | RHCU | EIT2.2 | C03c | EIT02.2 | LO |  |  |  |
| 2.2-RHCUIN00-1080 |  | Complete QA/QC document | 9d | 2027-05-20 | 2027-05-29 | 2.2-RHCUIN00-1070 | 8d |  | LABOUR [1281.31 h]; Construction Material [90] | UDF_G3 | 0 | IN | Non | RHCU | EIT2.2 | C03c | EIT02.2 | LO |  |  |  |
|  | 5 | **Telecommunication** |  | 2026-07-22 | 2027-01-29 |  |  |  |  |  |  |  |  |  |  |  |  |  |  |  |  |
|  | 3 | **Telecom** |  | 2026-07-22 | 2027-01-29 |  |  |  |  |  |  |  |  |  |  |  |  |  |  |  |  |
|  | 3 | **Telecom Cable Tray/Ladder Installation** |  | 2026-07-22 | 2026-10-10 |  |  |  |  |  |  |  |  |  |  |  |  |  |  |  |  |
| 2.2-RHCUTE03-1100 |  | Install support / bracket | 50d | 2026-07-22 | 2026-09-17 | 2.2-RHCUEE05-1200 SS | -2d | 0d | LABOUR [3 h]; Construction Material [500] | UDF_G3 | 0 | EE | Non | RHCU | EIT2.2 | C03a | EIT02.2 |  | 1 | C03a | TY1 |
| 2.2-RHCUTE03-1110 |  | Install Ladder / Tray | 50d | 2026-07-22 | 2026-09-17 | 2.2-RHCUTE03-1120 SS, 2.2-RHCUTE03-1100 FF | -2d | 0d | LABOUR [77 h]; Construction Material [500] | UDF_G3 | 0 | EE | Non | RHCU | EIT2.2 | C03a | EIT02.2 |  | 1 | C03a | TY1 |
| 2.2-RHCUTE03-1120 |  | Steel Conduits for Cable tray | 50d | 2026-07-22 | 2026-09-17 | 2.2-RHCUTE03-1100 SS | -2d | 0d | LABOUR [3 h]; Construction Material [500] | UDF_G3 | 0 | EE | Non | RHCU | EIT2.2 | C03a | EIT02.2 |  | 1 | C03a | TY1 |
| 2.2-RHCUTE03-1130 |  | punch clear | 5d | 2026-09-18 | 2026-09-23 | 2.2-RHCUTE03-1110, 2.2-RHCUTE03-1120 | -2d | 0d | LABOUR [75 h]; Construction Material [50] | UDF_G3 | 0 | EE | Non | RHCU | EIT2.2 | C03a | EIT02.2 |  | 1 | C03a | TY1 |
| 2.2-RHCUTE03-1140 |  | Complete QA/QC document | 15d | 2026-09-24 | 2026-10-10 | 2.2-RHCUTE03-1130 | -2d | 0d | LABOUR [150 h]; Construction Material [150] | UDF_G3 | 0 | TE | Non | RHCU | EIT2.2 |  |  |  |  |  |  |
|  | 1 | **AG Telecommunication Cable Installation** |  | 2026-10-12 | 2026-12-14 |  |  |  |  |  |  |  |  |  |  |  |  |  |  |  |  |
| 2.2-RHCUTE01-1060 |  | Pull Cable | 30d | 2026-10-12 | 2026-11-14 | 2.2-RHCUTE03-1140 | -2d | 0d | LABOUR [1000 h]; Construction Material [300] | UDF_G3 | 0 | EE | Non | RHCU | EIT2.2 | C03a | EIT02.2 |  | 1 | C03a | TY1 |
| 2.2-RHCUTE01-1070 |  | Megger & Continuity test | 10d | 2026-11-16 | 2026-11-26 | 2.2-RHCUTE01-1060 | -2d | 0d | LABOUR [200 h]; Construction Material [100] | UDF_G3 | 0 | EE | Non | RHCU | EIT2.2 | C03a | EIT02.2 |  | 1 | C03a | TY1 |
| 2.2-RHCUTE01-1080 |  | Complete QA/QC document | 15d | 2026-11-27 | 2026-12-14 | 2.2-RHCUTE01-1070 | -2d | 0d | LABOUR [100 h]; Construction Material [150] | UDF_G3 | 0 | EE | Non | RHCU | EIT2.2 | C03a | EIT02.2 |  | 1 | C03a | TY1 |
|  | 4 | **Telecommunication Termination / Glanding** |  | 2026-12-15 | 2027-01-29 |  |  |  |  |  |  |  |  |  |  |  |  |  |  |  |  |
| 2.2-RHCUTE02-1060 |  | Cable Termination/Glanding | 20d | 2026-12-15 | 2027-01-06 | 2.2-RHCUTE01-1080 | -2d | 0d | LABOUR [200 h]; Construction Material [200] | UDF_G3 | 0 | EE | Non | RHCU | EIT2.2 | C03a | EIT02.2 |  | 1 | C03a | TY1 |
| 2.2-RHCUTE02-1070 |  | Clear punch | 10d | 2027-01-07 | 2027-01-18 | 2.2-RHCUTE02-1060, 2.2-RHCUTE04-1080 | -2d | 0d | LABOUR [100 h]; Construction Material [100] | UDF_G3 | 0 | EE | Non | RHCU | EIT2.2 | C03a | EIT02.2 |  | 1 | C03a | TY1 |
| 2.2-RHCUTE02-1080 |  | Complete QA/QC document | 10d | 2027-01-19 | 2027-01-29 | 2.2-RHCUTE02-1070, 2.2-RHCUIN07-1110 FF | -2d | 0d | LABOUR [233.99 h]; Construction Material [100] | UDF_G3 | 0 | EE | Non | RHCU | EIT2.2 | C03a | EIT02.2 |  | 1 | C03a | TY1 |
|  | 2 | **Telecommunication Equipment Installation** |  | 2026-10-12 | 2026-12-14 |  |  |  |  |  |  |  |  |  |  |  |  |  |  |  |  |
| 2.2-RHCUTE04-1060 |  | Telecom Equpiment Installation | 30d | 2026-10-12 | 2026-11-14 | 2.2-RHCUTE03-1140 | 18d | 0d | LABOUR [120 h]; Construction Material [300] | UDF_G3 | 0 | EE | Non | RHCU | EIT2.2 | C03a | EIT02.2 |  | 1 | C03a | TY1 |
| 2.2-RHCUTE04-1070 |  | Clear Punch | 10d | 2026-11-16 | 2026-11-26 | 2.2-RHCUTE04-1060 | 18d | 0d | LABOUR [30 h]; Construction Material [100] | UDF_G3 | 0 | EE | Non | RHCU | EIT2.2 | C03a | EIT02.2 |  | 1 | C03a | TY1 |
| 2.2-RHCUTE04-1080 |  | Complete QA/QC document | 15d | 2026-11-27 | 2026-12-14 | 2.2-RHCUTE04-1070 | 18d | 20d | LABOUR [40.57 h]; Construction Material [150] | UDF_G3 | 0 | EE | Non | RHCU | EIT2.2 | C03a | EIT02.2 |  | 1 | C03a | TY1 |

| ID | WBS | Activity | Duration | Start | Finish | Predecessors | Complete | Remaining | Planned start | Planned finish | Total float | Free float | Resources | On Schedule Indicator | %Completed | Disciplines | EIT2 Main Activity | Areas | Phases | EIT WBS | EIT PKG | Cable Pull & Laying |
| --- | --- | --- | --- | --- | --- | --- | --- | --- | --- | --- | --- | --- | --- | --- | --- | --- | --- | --- | --- | --- | --- | --- |
|  | 4 | **RHCU ZONE 4** |  | 2026-04-01 | 2027-01-29 |  |  |  |  |  |  |  |  |  |  |  |  |  |  |  |  |  |
|  | 1 | **Electrical Works** |  | 2026-04-01 | 2027-01-26 |  |  |  |  |  |  |  |  |  |  |  |  |  |  |  |  |  |
|  | 6 | **Cable trench Excavation buried** |  | 2026-04-01 | 2026-05-25 |  |  |  |  |  |  |  |  |  |  |  |  |  |  |  |  |  |
|  | 8 | **C03-ETD-358/360/254/361/301/303/362/312/334/364/827/339/876/877/365/327** |  | 2026-04-01 | 2026-05-25 |  |  |  |  |  |  |  |  |  |  |  |  |  |  |  |  |  |
| 2.2-RHCUEE09-1120 |  | Cable trench Excavation | 30d | 2026-04-01 A | 2026-05-19 | 2.2-RHCUEE09-1000 SS | 10% | 4d | 2026-04-01 | 2026-05-05 | -12d | 0d | LABOUR; Construction Material [300] | UDF_G3 | 0 | EE | Non | RHCU | EIT2.2 | C03c | EIT02.2 |  |
| 2.2-RHCUEE09-1130 |  | Sand Filling Compaction | 5d | 2026-05-20 | 2026-05-25 | 2.2-RHCUEE09-1120 |  |  |  |  | 47.9d | 33d | LABOUR; Construction Material [50] | UDF_G3 | 0 | EE | Non | RHCU | EIT2.2 | C03c | EIT02.2 |  |
|  | 8 | **Cable Laying Direct buried** |  | 2026-05-20 | 2026-08-22 |  |  |  |  |  |  |  |  |  |  |  |  |  |  |  |  |  |
|  | 8 | **C03-ETD-358/360/254/361/301/303/362/312/334/364/827/339/876/877/365/327** |  | 2026-05-20 | 2026-08-22 |  |  |  |  |  |  |  |  |  |  |  |  |  |  |  |  |  |
| 2.2-RHCUEE01-2375 |  | Sand Filling First layer | 4d | 2026-05-20 | 2026-05-23 | 2.2-RHCUEE09-1120 |  |  |  |  | -5.1d | 0d | LABOUR [100 h]; Cable Pull; Construction Material [40] | UDF_G3 | 0 | EE | PRIC | RHCU | EIT2.2 |  |  |  |
| 2.2-RHCUEE01-2380 |  | Cable Laying | 34d | 2026-05-25 | 2026-07-02 | 2.2-RHCUEE01-2375 |  |  |  |  | -5.1d | 0d | LABOUR [1000 h]; Cable Pull [5974 h]; Construction Material [400] | UDF_G3 | 0 | EE | PRIC | RHCU | EIT2.2 | C03c | EIT02.2 | PUL |
| 2.2-RHCUEE01-2390 |  | Megger & Continuity test | 5d | 2026-07-03 | 2026-07-08 | 2.2-RHCUEE01-2380, 2.2-RHCUEE09-1130 |  |  |  |  | 14.9d | 0d | LABOUR [200 h]; Cable Pull; Construction Material [50] | UDF_G3 | 0 | EE | PRIC | RHCU | EIT2.2 | C03c | EIT02.2 |  |
| 2.2-RHCUEE01-2400 |  | punch Clear | 5d | 2026-07-09 | 2026-07-14 | 2.2-RHCUEE01-2390 |  |  |  |  | 14.9d | 0d | LABOUR [200 h]; Cable Pull; Construction Material [50] | UDF_G3 | 0 | EE | PRIC | RHCU | EIT2.2 | C03c | EIT02.2 |  |
| 2.2-RHCUEE01-2410 |  | Sand Filling Compaction | 4d | 2026-07-15 | 2026-07-18 | 2.2-RHCUEE01-2400 |  |  |  |  | 14.9d | 0d | LABOUR [200 h]; Cable Pull; Construction Material [40] | UDF_G3 | 0 | EE | PRIC | RHCU | EIT2.2 |  |  |  |
| 2.2-RHCUEE01-2420 |  | Complete QA/QC document | 10d | 2026-07-20 | 2026-07-30 | 2.2-RHCUEE01-2410 |  |  |  |  | 14.9d | 0d | LABOUR [200 h]; Cable Pull; Construction Material [100] | UDF_G3 | 0 | EE | PRIC | RHCU | EIT2.2 | C03c | EIT02.2 |  |
| 2.2-RHCUEE01-2430 |  | Back Filling | 20d | 2026-07-31 | 2026-08-22 | 2.2-RHCUEE01-2420 |  |  |  |  | 14.9d | 0d | LABOUR [780.7 h]; Cable Pull; Construction Material [200] | UDF_G3 | 0 | EE | PRIC | RHCU | EIT2.2 | C03c | EIT02.2 |  |
|  | 13 | **Cable Laying Concrete Trench** |  | 2026-05-25 | 2026-10-08 |  |  |  |  |  |  |  |  |  |  |  |  |  |  |  |  |  |
|  | 1 | **C03-ETC-205/229/222/239/224/507/290/223/441/317/442/443/501/444/445/502** |  | 2026-05-25 | 2026-08-22 |  |  |  |  |  |  |  |  |  |  |  |  |  |  |  |  |  |
| 2.2-RHCUEE01-2440 |  | Cable Laying | 34d | 2026-05-25 | 2026-07-02 | 2.2-RHCUEE01-2380 SS |  |  |  |  | -5.1d | 0d | LABOUR [1100 h]; Cable Pull [5974 h]; Construction Material [400] | UDF_G3 | 0 | EE | PRIC | RHCU | EIT2.2 | C03c | EIT02.2 | PUL |
| 2.2-RHCUEE01-2450 |  | Megger & Continuity test | 5d | 2026-07-03 | 2026-07-08 | 2.2-RHCUEE01-2440 |  |  |  |  | 14.9d | 0d | LABOUR [200 h]; Cable Pull; Construction Material [50] | UDF_G3 | 0 | EE | PRIC | RHCU | EIT2.2 | C03c | EIT02.2 |  |
| 2.2-RHCUEE01-2460 |  | punch Clear | 5d | 2026-07-09 | 2026-07-14 | 2.2-RHCUEE01-2450 |  |  |  |  | 14.9d | 0d | LABOUR [200 h]; Cable Pull; Construction Material [50] | UDF_G3 | 0 | EE | PRIC | RHCU | EIT2.2 | C03c | EIT02.2 |  |
| 2.2-RHCUEE01-2470 |  | Sand Filling Compaction | 4d | 2026-07-15 | 2026-07-18 | 2.2-RHCUEE01-2460 |  |  |  |  | 14.9d | 0d | LABOUR [200 h]; Cable Pull; Construction Material [40] | UDF_G3 | 0 | EE | PRIC | RHCU | EIT2.2 |  |  |  |
| 2.2-RHCUEE01-2480 |  | Complete QA/QC document | 10d | 2026-07-20 | 2026-07-30 | 2.2-RHCUEE01-2470 |  |  |  |  | 14.9d | 0d | LABOUR [200 h]; Cable Pull; Construction Material [100] | UDF_G3 | 0 | EE | PRIC | RHCU | EIT2.2 | C03c | EIT02.2 |  |
| 2.2-RHCUEE01-2490 |  | Back Filling | 20d | 2026-07-31 | 2026-08-22 | 2.2-RHCUEE01-2480, 2.2-RHCUEE01-2430 FF |  |  |  |  | 14.9d | 0d | LABOUR [780.7 h]; Cable Pull; Construction Material [200] | UDF_G3 | 0 | EE | PRIC | RHCU | EIT2.2 | C03c | EIT02.2 |  |
|  | 2 | **C03-ETC-291/292/227/229/485/584/282/615/283/605/221/220/298/386/270/228/459** |  | 2026-05-25 | 2026-08-22 |  |  |  |  |  |  |  |  |  |  |  |  |  |  |  |  |  |
| 2.2-RHCUEE01-2500 |  | Cable Laying | 34d | 2026-05-25 | 2026-07-02 | 2.2-RHCUEE01-2440 SS |  |  |  |  | -5.1d | 0d | LABOUR [1100 h]; Cable Pull [5974 h]; Construction Material [400] | UDF_G3 | 0 | EE | PRIC | RHCU | EIT2.2 | C03c | EIT02.2 | PUL |
| 2.2-RHCUEE01-2520 |  | Megger & Continuity test | 5d | 2026-07-03 | 2026-07-08 | 2.2-RHCUEE01-2500 |  |  |  |  | 14.9d | 0d | LABOUR [200 h]; Cable Pull; Construction Material [50] | UDF_G3 | 0 | EE | PRIC | RHCU | EIT2.2 | C03c | EIT02.2 |  |
| 2.2-RHCUEE01-2530 |  | punch Clear | 5d | 2026-07-09 | 2026-07-14 | 2.2-RHCUEE01-2520 |  |  |  |  | 14.9d | 0d | LABOUR [200 h]; Cable Pull; Construction Material [50] | UDF_G3 | 0 | EE | PRIC | RHCU | EIT2.2 | C03c | EIT02.2 |  |
| 2.2-RHCUEE01-2540 |  | Sand Filling Compaction | 4d | 2026-07-15 | 2026-07-18 | 2.2-RHCUEE01-2530 |  |  |  |  | 14.9d | 0d | LABOUR [200 h]; Cable Pull; Construction Material [40] | UDF_G3 | 0 | EE | PRIC | RHCU | EIT2.2 |  |  |  |
| 2.2-RHCUEE01-2550 |  | Complete QA/QC document | 10d | 2026-07-20 | 2026-07-30 | 2.2-RHCUEE01-2540 |  |  |  |  | 14.9d | 0d | LABOUR [200 h]; Cable Pull; Construction Material [100] | UDF_G3 | 0 | EE | PRIC | RHCU | EIT2.2 | C03c | EIT02.2 |  |
| 2.2-RHCUEE01-2560 |  | Back Filling | 20d | 2026-07-31 | 2026-08-22 | 2.2-RHCUEE01-2550, 2.2-RHCUEE01-2490 FF |  |  |  |  | 14.9d | 20d | LABOUR [780.7 h]; Cable Pull; Construction Material [200] | UDF_G3 | 0 | EE | PRIC | RHCU | EIT2.2 | C03c | EIT02.2 |  |

| ID | WBS | Activity | Duration | Start | Finish | Predecessors | Total float | Free float | Resources | On Schedule Indicator | %Completed | Disciplines | EIT2 Main Activity | Areas | Phases | Cable Pull & Laying | EIT WBS | EIT PKG | Main Activity | WBS | Types |
| --- | --- | --- | --- | --- | --- | --- | --- | --- | --- | --- | --- | --- | --- | --- | --- | --- | --- | --- | --- | --- | --- |
|  | 3 | **C03-ETC-583/581/291/292/485/265/497** |  | 2026-07-03 | 2026-10-08 |  |  |  |  |  |  |  |  |  |  |  |  |  |  |  |  |
| 2.2-RHCUEE01-2680 |  | Cable Laying | 40d | 2026-07-03 | 2026-08-18 | 2.2-RHCUEE01-2500 | -5.1d | 0d | LABOUR [1100 h]; Cable Pull [5974 h]; Construction Material [400] | UDF_G3 | 0 | EE | PRIC | RHCU | EIT2.2 | PUL | C03c | EIT02.2 |  |  |  |
| 2.2-RHCUEE01-2690 |  | Megger & Continuity test | 5d | 2026-08-19 | 2026-08-24 | 2.2-RHCUEE01-2680 | -5.1d | 0d | LABOUR [200 h]; Cable Pull; Construction Material [50] | UDF_G3 | 0 | EE | PRIC | RHCU | EIT2.2 |  | C03c | EIT02.2 |  |  |  |
| 2.2-RHCUEE01-2700 |  | punch Clear | 5d | 2026-08-25 | 2026-08-29 | 2.2-RHCUEE01-2690 | -5.1d | 0d | LABOUR [200 h]; Cable Pull; Construction Material [50] | UDF_G3 | 0 | EE | PRIC | RHCU | EIT2.2 |  | C03c | EIT02.2 |  |  |  |
| 2.2-RHCUEE01-2710 |  | Sand Filling Compaction | 4d | 2026-08-31 | 2026-09-03 | 2.2-RHCUEE01-2700 | -5.1d | 0d | LABOUR [200 h]; Cable Pull; Construction Material [40] | UDF_G3 | 0 | EE | PRIC | RHCU | EIT2.2 |  |  |  |  |  |  |
| 2.2-RHCUEE01-2720 |  | Complete QA/QC document | 10d | 2026-09-04 | 2026-09-15 | 2.2-RHCUEE01-2710 | -5.1d | 0d | LABOUR [200 h]; Cable Pull; Construction Material [100] | UDF_G3 | 0 | EE | PRIC | RHCU | EIT2.2 |  | C03c | EIT02.2 |  |  |  |
| 2.2-RHCUEE01-2730 |  | Back Filling | 20d | 2026-09-16 | 2026-10-08 | 2.2-RHCUEE01-2720, 2.2-RHCUEE01-2560 | -5.1d | 0d | LABOUR [780.7 h]; Cable Pull; Construction Material [200] | UDF_G3 | 0 | EE | PRIC | RHCU | EIT2.2 |  | C03c | EIT02.2 |  |  |  |
|  | 1 | **Electrical Cable Tray/Ladder Installation** |  | 2026-05-20 | 2026-08-19 |  |  |  |  |  |  |  |  |  |  |  |  |  |  |  |  |
| 2.2-RHCUEE03-1150 |  | Install support / bracket | 54d | 2026-05-20 | 2026-07-21 | 2.2-RHCUEE09-1120 | -6d | 0d | LABOUR [1000 h]; Construction Material [600] | UDF_G3 | 0 | EE | Non | RHCU | EIT2.2 |  | C03a | EIT02.2 | 1 | C03a | TY1 |
| 2.2-RHCUEE03-1160 |  | Install Ladder / Tray | 54d | 2026-05-20 | 2026-07-21 | 2.2-RHCUEE03-1150 SS, 2.2-RHCUEE03-1150 FF | -6d | 0d | LABOUR [5000 h]; Construction Material [600] | UDF_G3 | 0 | EE | Non | RHCU | EIT2.2 |  | C03a | EIT02.2 | 1 | C03a | TY1 |
| 2.2-RHCUEE03-1170 |  | Install Conduits | 54d | 2026-05-20 | 2026-07-21 | 2.2-RHCUEE03-1160 SS | 34d | 0d | LABOUR [1000 h]; Construction Material [600] | UDF_G3 | 0 | EE | Non | RHCU | EIT2.2 |  | C03a | EIT02.2 | 1 | C03a | TY1 |
| 2.2-RHCUEE03-1180 |  | Clear punch | 10d | 2026-07-22 | 2026-08-01 | 2.2-RHCUEE03-1170, 2.2-RHCUEE03-1160 | 34d | 0d | LABOUR [500 h]; Construction Material [100] | UDF_G3 | 0 | EE | Non | RHCU | EIT2.2 |  | C03a | EIT02.2 | 1 | C03a | TY1 |
| 2.2-RHCUEE03-1190 |  | Complete QA/QC document | 15d | 2026-08-03 | 2026-08-19 | 2.2-RHCUEE03-1180 | 34d | 35d | LABOUR [1229.78 h]; Construction Material [150] | UDF_G3 | 0 | EE | Non | RHCU | EIT2.2 |  | C03a | EIT02.2 | 1 | C03a | TY1 |
|  | 9 | **AG Cable Pull LV Cable** |  | 2026-07-22 | 2026-10-28 |  |  |  |  |  |  |  |  |  |  |  |  |  |  |  |  |
| 2.2-RHCUEE01-2290 |  | Pull Cable | 60d | 2026-07-22 | 2026-09-29 | 2.2-RHCUEE03-1160 | -6d | 0d | LABOUR [1826 h]; Cable Pull; Construction Material [600] | UDF_G3 | 0 | EE | SECE | RHCU | EIT2.2 | PUL | C03a | EIT02.2 | 1 | C03a | TY1 |
| 2.2-RHCUEE01-2300 |  | Megger & Continuity test | 10d | 2026-09-30 | 2026-10-10 | 2.2-RHCUEE01-2290, 2.2-RHCUEE03-1190 | -1d | 0d | LABOUR [1826 h]; Cable Pull; Construction Material [100] | UDF_G3 | 0 | EE | SECE | RHCU | EIT2.2 |  | C03a | EIT02.2 | 1 | C03a | TY1 |
| 2.2-RHCUEE01-2310 |  | Complete QA/QC document | 15d | 2026-10-12 | 2026-10-28 | 2.2-RHCUEE01-2300 | -1d | 0d | LABOUR [150 h]; Cable Pull; Construction Material [150] | UDF_G3 | 0 | EE | SECE | RHCU | EIT2.2 |  | C03a | EIT02.2 | 1 | C03a | TY1 |
|  | 10 | **AG Cable Pull Control Cable** |  | 2026-07-22 | 2026-10-28 |  |  |  |  |  |  |  |  |  |  |  |  |  |  |  |  |
| 2.2-RHCUEE01-2320 |  | Pull Cable | 60d | 2026-07-22 | 2026-09-29 | 2.2-RHCUEE01-2290 SS | -6d | 0d | LABOUR [1826 h]; Cable Pull; Construction Material [600] | UDF_G3 | 0 | EE | SECE | RHCU | EIT2.2 | PUL | C03a | EIT02.2 | 1 | C03a | TY1 |
| 2.2-RHCUEE01-2330 |  | Megger & Continuity test | 10d | 2026-09-30 | 2026-10-10 | 2.2-RHCUEE01-2320 | -1d | 0d | LABOUR [1826 h]; Cable Pull; Construction Material [100] | UDF_G3 | 0 | EE | SECE | RHCU | EIT2.2 |  | C03a | EIT02.2 | 1 | C03a | TY1 |
| 2.2-RHCUEE01-2340 |  | Complete QA/QC document | 15d | 2026-10-12 | 2026-10-28 | 2.2-RHCUEE01-2330 | -1d | 0d | LABOUR [150 h]; Cable Pull; Construction Material [150] | UDF_G3 | 0 | EE | SECE | RHCU | EIT2.2 |  | C03a | EIT02.2 | 1 | C03a | TY1 |
|  | 11 | **AG Lighting Cable** |  | 2026-07-22 | 2026-11-26 |  |  |  |  |  |  |  |  |  |  |  |  |  |  |  |  |
| 2.2-RHCUEE01-2350 |  | Pull Cable | 60d | 2026-07-22 | 2026-09-29 | 2.2-RHCUEE01-2320 SS | -6d | 0d | LABOUR [1826 h]; Cable Pull; Construction Material [600] | UDF_G3 | 0 | EE | SECE | RHCU | EIT2.2 | PUL | C03a | EIT02.2 | 1 | C03a | TY1 |
| 2.2-RHCUEE01-2360 |  | Megger & Continuity test | 30d | 2026-09-30 | 2026-11-03 | 2.2-RHCUEE01-2350 | -6d | 0d | LABOUR [1826 h]; Cable Pull; Construction Material [300] | UDF_G3 | 0 | EE | SECE | RHCU | EIT2.2 |  | C03a | EIT02.2 | 1 | C03a | TY1 |
| 2.2-RHCUEE01-2370 |  | Complete QA/QC document | 20d | 2026-11-04 | 2026-11-26 | 2.2-RHCUEE01-2360 | -6d | 0d | LABOUR [200 h]; Cable Pull; Construction Material [200] | UDF_G3 | 0 | EE | SECE | RHCU | EIT2.2 |  | C03a | EIT02.2 | 1 | C03a | TY1 |

| ID | WBS | Activity | Duration | Start | Finish | Predecessors | Total float | Free float | Resources | On Schedule Indicator | %Completed | Disciplines | Main Activity | WBS | Types | EIT2 Main Activity | Areas | Phases | EIT WBS | EIT PKG |
| --- | --- | --- | --- | --- | --- | --- | --- | --- | --- | --- | --- | --- | --- | --- | --- | --- | --- | --- | --- | --- |
|  | 4 | **Electrical Cable Termination / Glanding** |  | 2026-10-09 | 2027-01-18 |  |  |  |  |  |  |  |  |  |  |  |  |  |  |  |
|  | 1 | **Termination MV Cable** |  | 2026-10-09 | 2026-11-30 |  |  |  |  |  |  |  |  |  |  |  |  |  |  |  |
| 2.2-RHCUEE02-1360 |  | Cable Termination/Glanding | 30d | 2026-10-09 | 2026-11-12 | 2.2-RHCUEE01-2730 | -5.1d | 0d | LABOUR [1800 h]; Construction Material [300] | UDF_G3 | 0 | EE | 1 | C03a | TY1 | Non | RHCU | EIT2.2 | C03a | EIT02.2 |
| 2.2-RHCUEE02-1370 |  | Clear punch | 5d | 2026-11-13 | 2026-11-18 | 2.2-RHCUEE02-1360 | -5.1d | 0d | LABOUR [200 h]; Construction Material [50] | UDF_G3 | 0 | EE | 1 | C03a | TY1 | Non | RHCU | EIT2.2 | C03a | EIT02.2 |
| 2.2-RHCUEE02-1380 |  | Complete QA/QC document | 10d | 2026-11-19 | 2026-11-30 | 2.2-RHCUEE02-1370 | -5.1d | 0d | LABOUR [639.63 h]; Construction Material [100] | UDF_G3 | 0 | EE | 1 | C03a | TY1 | Non | RHCU | EIT2.2 | C03a | EIT02.2 |
|  | 2 | **Termination LV Cable** |  | 2026-10-29 | 2026-12-31 |  |  |  |  |  |  |  |  |  |  |  |  |  |  |  |
| 2.2-RHCUEE02-1390 |  | Cable Termination/Glanding | 30d | 2026-10-29 | 2026-12-02 | 2.2-RHCUEE01-2310 | -1d | 0d | LABOUR [1800 h]; Construction Material [300] | UDF_G3 | 0 | EE | 1 | C03a | TY1 | Non | RHCU | EIT2.2 | C03a | EIT02.2 |
| 2.2-RHCUEE02-1400 |  | Clear punch | 10d | 2026-12-03 | 2026-12-14 | 2.2-RHCUEE02-1390 | -1d | 0d | LABOUR [200 h]; Construction Material [100] | UDF_G3 | 0 | EE | 1 | C03a | TY1 | Non | RHCU | EIT2.2 | C03a | EIT02.2 |
| 2.2-RHCUEE02-1410 |  | Complete QA/QC document | 15d | 2026-12-15 | 2026-12-31 | 2.2-RHCUEE02-1400 | -1d | 0d | LABOUR [639.63 h]; Construction Material [150] | UDF_G3 | 0 | EE | 1 | C03a | TY1 | Non | RHCU | EIT2.2 | C03a | EIT02.2 |
|  | 3 | **Termination Control Cable** |  | 2026-10-29 | 2026-12-31 |  |  |  |  |  |  |  |  |  |  |  |  |  |  |  |
| 2.2-RHCUEE02-1420 |  | Cable Termination/Glanding | 30d | 2026-10-29 | 2026-12-02 | 2.2-RHCUEE01-2340 | -1d | 0d | LABOUR [1800 h]; Construction Material [300] | UDF_G3 | 0 | EE | 1 | C03a | TY1 | Non | RHCU | EIT2.2 | C03a | EIT02.2 |
| 2.2-RHCUEE02-1430 |  | Clear punch | 10d | 2026-12-03 | 2026-12-14 | 2.2-RHCUEE02-1420 | -1d | 0d | LABOUR [200 h]; Construction Material [100] | UDF_G3 | 0 | EE | 1 | C03a | TY1 | Non | RHCU | EIT2.2 | C03a | EIT02.2 |
| 2.2-RHCUEE02-1440 |  | Complete QA/QC document | 15d | 2026-12-15 | 2026-12-31 | 2.2-RHCUEE02-1430, 2.2-RHCUEE02-1410 FF | -1d | 5d | LABOUR [639.63 h]; Construction Material [150] | UDF_G3 | 0 | EE | 1 | C03a | TY1 | Non | RHCU | EIT2.2 | C03a | EIT02.2 |
|  | 4 | **Termination Lighting Cable** |  | 2026-11-27 | 2027-01-18 |  |  |  |  |  |  |  |  |  |  |  |  |  |  |  |
| 2.2-RHCUEE02-1450 |  | Cable Termination/Glanding | 30d | 2026-11-27 | 2026-12-31 | 2.2-RHCUEE01-2370 | -6d | 0d | LABOUR [1800 h]; Construction Material [300] | UDF_G3 | 0 | EE | 1 | C03a | TY1 | Non | RHCU | EIT2.2 | C03a | EIT02.2 |
| 2.2-RHCUEE02-1460 |  | Clear punch | 5d | 2027-01-01 | 2027-01-06 | 2.2-RHCUEE02-1450 | -6d | 0d | LABOUR [200 h]; Construction Material [50] | UDF_G3 | 0 | EE | 1 | C03a | TY1 | Non | RHCU | EIT2.2 | C03a | EIT02.2 |
| 2.2-RHCUEE02-1470 |  | Complete QA/QC document | 10d | 2027-01-07 | 2027-01-18 | 2.2-RHCUEE02-1460, 2.2-RHCUEE02-1440 | -6d | 0d | LABOUR [639.63 h]; Construction Material [100] | UDF_G3 | 0 | EE | 1 | C03a | TY1 | Non | RHCU | EIT2.2 | C03a | EIT02.2 |
|  | 7 | **Electrical Earthing / Lightning Installation** |  | 2026-05-20 | 2026-08-19 |  |  |  |  |  |  |  |  |  |  |  |  |  |  |  |
| 2.2-RHCUEE06-1090 |  | Install Equipment Earthing / Inspection PIT / Install earthing pull and Connecttion | 54d | 2026-05-20 | 2026-07-21 | 2.2-RHCUEE03-1150 SS | 57.9d | 0d | LABOUR [3000 h]; Construction Material [600] | UDF_G3 | 0 | EE | 1 | C03a | TY1 | Non | RHCU | EIT2.2 | C03a | EIT02.2 |
| 2.2-RHCUEE06-1100 |  | Punch Clear | 10d | 2026-07-22 | 2026-08-01 | 2.2-RHCUEE06-1090 | 57.9d | 0d | LABOUR [500 h]; Construction Material [100] | UDF_G3 | 0 | EE | 1 | C03a | TY1 | Non | RHCU | EIT2.2 | C03a | EIT02.2 |
| 2.2-RHCUEE06-1110 |  | Complete QA/QC document | 15d | 2026-08-03 | 2026-08-19 | 2.2-RHCUEE06-1100 | 57.9d | 15d | LABOUR [763.82 h]; Construction Material [150] | UDF_G3 | 0 | EE | 1 | C03a | TY1 | Non | RHCU | EIT2.2 | C03a | EIT02.2 |
|  | 5 | **Lighting Fixture Installation** |  | 2026-07-22 | 2026-10-05 |  |  |  |  |  |  |  |  |  |  |  |  |  |  |  |
| 2.2-RHCUEE05-1240 |  | Install support / bracket / Pole | 40d | 2026-07-22 | 2026-09-05 | 2.2-RHCUEE03-1150 | 42.9d | 0d | LABOUR [500 h]; Construction Material [400] | UDF_G3 | 0 | EE | 1 | C03a | TY1 | Non | RHCU | EIT2.2 | C03a | EIT02.2 |
| 2.2-RHCUEE05-1250 |  | lighting fixture | 40d | 2026-07-22 | 2026-09-05 | 2.2-RHCUEE05-1240 SS, 2.2-RHCUEE05-1240 FF | 42.9d | 0d | LABOUR [1500 h]; Construction Material [400] | UDF_G3 | 0 | EE | 1 | C03a | TY1 | Non | RHCU | EIT2.2 | C03a | EIT02.2 |
| 2.2-RHCUEE05-1260 |  | Clear punch | 10d | 2026-09-07 | 2026-09-17 | 2.2-RHCUEE05-1250, 2.2-RHCUEE06-1110 | 42.9d | 0d | LABOUR [50 h]; Construction Material [100] | UDF_G3 | 0 | EE | 1 | C03a | TY1 | Non | RHCU | EIT2.2 | C03a | EIT02.2 |
| 2.2-RHCUEE05-1270 |  | Complete QA/QC document | 15d | 2026-09-18 | 2026-10-05 | 2.2-RHCUEE05-1260 | 42.9d | 0d | LABOUR [116.75 h]; Construction Material [150] | UDF_G3 | 0 | EE |  |  |  | Non | RHCU | EIT2.2 |  |  |

| ID | WBS | Activity | Duration | Start | Finish | Predecessors | Complete | Remaining | Planned start | Planned finish | Total float | Free float | Calendar | Resources | On Schedule Indicator | %Completed | Disciplines | Main Activity | WBS | Types | EIT2 Main Activity | Areas | Phases | EIT WBS | EIT PKG | Motor Loop | Cable Pull & Laying |
| --- | --- | --- | --- | --- | --- | --- | --- | --- | --- | --- | --- | --- | --- | --- | --- | --- | --- | --- | --- | --- | --- | --- | --- | --- | --- | --- | --- |
|  | 12 | **Small Power Equipment Installation** |  | 2026-07-22 | 2026-10-05 |  |  |  |  |  |  |  |  |  |  |  |  |  |  |  |  |  |  |  |  |  |  |
| 2.2-RHCUEE05-1280 |  | Install support / bracket | 40d | 2026-07-22 | 2026-09-05 | 2.2-RHCUEE05-1240 SS |  |  |  |  | 42.9d | 0d |  | LABOUR [500 h]; Construction Material [400] | UDF_G3 | 0 | EE | 1 | C03a | TY1 | Non | RHCU | EIT2.2 | C03a | EIT02.2 |  |  |
| 2.2-RHCUEE05-1290 |  | nstall Distribution panel, convenience outlet | 40d | 2026-07-22 | 2026-09-05 | 2.2-RHCUEE05-1280 SS, 2.2-RHCUEE05-1280 FF |  |  |  |  | 42.9d | 0d |  | LABOUR [1500 h]; Construction Material [400] | UDF_G3 | 0 | EE | 1 | C03a | TY1 | Non | RHCU | EIT2.2 | C03a | EIT02.2 |  |  |
| 2.2-RHCUEE05-1300 |  | Clear punch | 10d | 2026-09-07 | 2026-09-17 | 2.2-RHCUEE05-1290 |  |  |  |  | 42.9d | 0d |  | LABOUR [50 h]; Construction Material [100] | UDF_G3 | 0 | EE | 1 | C03a | TY1 | Non | RHCU | EIT2.2 | C03a | EIT02.2 |  |  |
| 2.2-RHCUEE05-1310 |  | Complete QA/QC document | 15d | 2026-09-18 | 2026-10-05 | 2.2-RHCUEE05-1300, 2.2-RHCUEE05-1270 FF |  |  |  |  | 42.9d | 48d |  | LABOUR [116.75 h]; Construction Material [150] | UDF_G3 | 0 | EE |  |  |  | Non | RHCU | EIT2.2 |  |  |  |  |
|  | 2 | **Motor Solo Run** |  | 2026-12-01 | 2027-01-26 |  |  |  |  |  |  |  |  |  |  |  |  |  |  |  |  |  |  |  |  |  |  |
| 2.2-RHCUEE00-1100 |  | Motor solo run | 25d | 2026-12-01 | 2026-12-29 | 2.2-RHCUEE02-1380, 2.2-RHCUEE05-1310 |  |  |  |  | -5.1d | 0.1d |  | LABOUR; Construction Material [250] | UDF_G3 | 0 | EE |  |  |  | Non | RHCU | EIT2.2 | C03a | EIT02.2 | MO |  |
| 2.2-RHCUEE00-1110 |  | Punch Clear | 10d | 2026-12-30 | 2027-01-08 | 2.2-RHCUEE00-1100 |  |  |  |  | -6.62d | 0d | 7 - Day Workweek (No Holidays) | LABOUR; Construction Material [80] | UDF_G3 | 0 | EE |  |  |  | Non | RHCU | EIT2.2 | C03a | EIT02.2 | MO |  |
| 2.2-RHCUEE00-1120 |  | Complete QA/QC document | 15d | 2027-01-08 | 2027-01-26 | 2.2-RHCUEE00-1110 |  |  |  |  | -5.2d | 0d |  | LABOUR; Construction Material [150] | UDF_G3 | 0 | EE |  |  |  | Non | RHCU | EIT2.2 | C03a | EIT02.2 | MO |  |
|  | 3 | **Instrument Works** |  | 2026-04-01 | 2027-01-28 |  |  |  |  |  |  |  |  |  |  |  |  |  |  |  |  |  |  |  |  |  |  |
|  | 10 | **Cable Laying concrete Trench** |  | 2026-04-01 | 2026-08-01 |  |  |  |  |  |  |  |  |  |  |  |  |  |  |  |  |  |  |  |  |  |  |
|  | 3 | **C03-JTR-201/202/203/204/205/215** |  | 2026-04-01 | 2026-08-01 |  |  |  |  |  |  |  |  |  |  |  |  |  |  |  |  |  |  |  |  |  |  |
| 2.2-RHCUIN01-1420 |  | Cable Laying | 50d | 2026-04-01 A | 2026-06-04 | 2.2-RHCUIN01-1000 SS | 10% | 18d | 2026-04-01 | 2026-05-28 | -6d | 0d |  | LABOUR [9000 h]; Cable Pull [47368 h]; Construction Material [500] | UDF_G3 | 0 | IN |  |  |  | PRICI | RHCU | EIT2.2 | C03a | EIT02.2 |  | PUL |
| 2.2-RHCUIN01-1430 |  | Megger & Continuity test | 5d | 2026-06-05 | 2026-06-10 | 2.2-RHCUIN01-1420 |  |  |  |  | -6d | 0d |  | LABOUR [500 h]; Cable Pull; Construction Material [50] | UDF_G3 | 0 | IN |  |  |  | PRICI | RHCU | EIT2.2 | C03a | EIT02.2 |  |  |
| 2.2-RHCUIN01-1440 |  | Clear punch | 5d | 2026-06-11 | 2026-06-16 | 2.2-RHCUIN01-1430 |  |  |  |  | -6d | 0d |  | LABOUR [200 h]; Cable Pull; Construction Material [50] | UDF_G3 | 0 | IN |  |  |  | PRICI | RHCU | EIT2.2 | C03a | EIT02.2 |  |  |
| 2.2-RHCUIN01-1450 |  | Sand Filling compaction | 10d | 2026-06-17 | 2026-06-27 | 2.2-RHCUIN01-1440 |  |  |  |  | -6d | 0d |  | LABOUR [300 h]; Cable Pull; Construction Material [100] | UDF_G3 | 0 | IN |  |  |  | PRICI | RHCU | EIT2.2 |  |  |  |  |
| 2.2-RHCUIN01-1460 |  | Complete QA/QC document | 10d | 2026-06-17 | 2026-06-27 | 2.2-RHCUIN01-1440 |  |  |  |  | -6d | 0d |  | LABOUR [500 h]; Cable Pull; Construction Material [100] | UDF_G3 | 0 | IN |  |  |  | PRICI | RHCU | EIT2.2 | C03a | EIT02.2 |  |  |
| 2.2-RHCUIN01-1470 |  | Back Filling | 30d | 2026-06-29 | 2026-08-01 | 2.2-RHCUIN01-1460, 2.2-RHCUIN01-1450 |  |  |  |  | -6d | 0d |  | LABOUR [4970.5 h]; Cable Pull; Construction Material [300] | UDF_G3 | 0 | IN |  |  |  | PRICI | RHCU | EIT2.2 | C03a | EIT02.2 |  |  |
|  | 3 | **Instrument Cable Tray/Ladder Installation** |  | 2026-04-01 | 2026-07-15 |  |  |  |  |  |  |  |  |  |  |  |  |  |  |  |  |  |  |  |  |  |  |
| 2.2-RHCUIN03-1150 |  | Install support / bracket | 60d | 2026-04-01 A | 2026-06-16 | 2.2-RHCUIN01-1420 SS | 10% | 28d | 2026-04-01 | 2026-06-09 | -6d | 0d |  | LABOUR [1000 h]; Construction Material [600] | UDF_G3 | 0 | EE | 1 | C03a | TY1 | Non | RHCU | EIT2.2 | C03a | EIT02.2 |  |  |
| 2.2-RHCUIN03-1160 |  | Install Ladder / Tray | 60d | 2026-04-01 A | 2026-06-16 | 2.2-RHCUIN03-1150 SS | 10% | 28d | 2026-04-01 | 2026-06-09 | -6d | 0d |  | LABOUR [3000 h]; Construction Material [600] | UDF_G3 | 0 | EE | 1 | C03a | TY1 | Non | RHCU | EIT2.2 | C03a | EIT02.2 |  |  |
| 2.2-RHCUIN03-1170 |  | Install Conduits | 60d | 2026-04-01 A | 2026-06-16 | 2.2-RHCUIN03-1160 SS | 10% | 28d | 2026-04-01 | 2026-06-09 | -6d | 0d |  | LABOUR [1000 h]; Construction Material [600] | UDF_G3 | 0 | EE | 1 | C03a | TY1 | Non | RHCU | EIT2.2 | C03a | EIT02.2 |  |  |
| 2.2-RHCUIN03-1180 |  | Clear punch | 10d | 2026-06-17 | 2026-06-27 | 2.2-RHCUIN03-1170, 2.2-RHCUIN03-1160 |  |  |  |  | -6d | 0d |  | LABOUR [200 h]; Construction Material [100] | UDF_G3 | 0 | EE | 1 | C03a | TY1 | Non | RHCU | EIT2.2 | C03a | EIT02.2 |  |  |
| 2.2-RHCUIN03-1190 |  | Complete QA/QC document | 15d | 2026-06-29 | 2026-07-15 | 2.2-RHCUIN03-1180 |  |  |  |  | -6d | 0d |  | LABOUR [392.97 h]; Construction Material [150] | UDF_G3 | 0 | EE | 1 | C03a | TY1 | Non | RHCU | EIT2.2 | C03a | EIT02.2 |  |  |

| ID | WBS | Activity | Duration | Start | Finish | Predecessors | Total float | Free float | Resources | On Schedule Indicator | %Completed | Disciplines | Main Activity | WBS | Types | EIT2 Main Activity | Areas | Phases | Cable Pull & Laying | EIT WBS | EIT PKG |
| --- | --- | --- | --- | --- | --- | --- | --- | --- | --- | --- | --- | --- | --- | --- | --- | --- | --- | --- | --- | --- | --- |
|  | 8 | **AG Cable Pull Primary Cable** |  | 2026-07-16 | 2026-10-10 |  |  |  |  |  |  |  |  |  |  |  |  |  |  |  |  |
| 2.2-RHCUIN01-1360 |  | Pull Cable | 50d | 2026-07-16 | 2026-09-11 | 2.2-RHCUIN03-1190 | -6d | 0d | LABOUR [14000 h]; Cable Pull; Construction Material [500] | UDF_G3 | 0 | EE | 1 | C03a | TY1 | SECI | RHCU | EIT2.2 | PUL | C03a | EIT02.2 |
| 2.2-RHCUIN01-1370 |  | Megger & Continuity test | 10d | 2026-09-12 | 2026-09-23 | 2.2-RHCUIN01-1360, 2.2-RHCUIN01-1470 | -6d | 0d | LABOUR [500 h]; Cable Pull; Construction Material [100] | UDF_G3 | 0 | EE | 1 | C03a | TY1 | SECI | RHCU | EIT2.2 |  | C03a | EIT02.2 |
| 2.2-RHCUIN01-1380 |  | Complete QA/QC document | 15d | 2026-09-24 | 2026-10-10 | 2.2-RHCUIN01-1370 | -6d | 0d | LABOUR [970.5 h]; Cable Pull; Construction Material [150] | UDF_G3 | 0 | EE | 1 | C03a | TY1 | SECI | RHCU | EIT2.2 |  | C03a | EIT02.2 |
|  | 9 | **AG Cable Pull Secondary Cable** |  | 2026-07-16 | 2026-10-10 |  |  |  |  |  |  |  |  |  |  |  |  |  |  |  |  |
| 2.2-RHCUIN01-1390 |  | Pull Cable | 50d | 2026-07-16 | 2026-09-11 | 2.2-RHCUIN03-1190 | -6d | 0d | LABOUR [14000 h]; Cable Pull; Construction Material [500] | UDF_G3 | 0 | EE | 1 | C03a | TY1 | SECI | RHCU | EIT2.2 | PUL | C03a | EIT02.2 |
| 2.2-RHCUIN01-1400 |  | Megger & Continuity test | 10d | 2026-09-12 | 2026-09-23 | 2.2-RHCUIN01-1390 | -6d | 0d | LABOUR [500 h]; Cable Pull; Construction Material [100] | UDF_G3 | 0 | EE | 1 | C03a | TY1 | SECI | RHCU | EIT2.2 |  | C03a | EIT02.2 |
| 2.2-RHCUIN01-1410 |  | Complete QA/QC document | 15d | 2026-09-24 | 2026-10-10 | 2.2-RHCUIN01-1400 | -6d | 0d | LABOUR [970.5 h]; Cable Pull; Construction Material [150] | UDF_G3 | 0 | EE | 1 | C03a | TY1 | SECI | RHCU | EIT2.2 |  | C03a | EIT02.2 |
|  | 2 | **Instrument Cable Termination / Glanding** |  | 2026-06-05 | 2026-12-08 |  |  |  |  |  |  |  |  |  |  |  |  |  |  |  |  |
|  | 1 | **UG Cable Termination Cable** |  | 2026-06-05 | 2026-08-01 |  |  |  |  |  |  |  |  |  |  |  |  |  |  |  |  |
| 2.2-RHCUIN02-1390 |  | Cable Termination/Glanding | 25d | 2026-06-05 | 2026-07-03 | 2.2-RHCUIN01-1420 | 54d | 0d | LABOUR [3000 h]; Construction Material [250] | UDF_G3 | 0 | EE | 1 | C03a | TY1 | Non | RHCU | EIT2.2 |  | C03a | EIT02.2 |
| 2.2-RHCUIN02-1400 |  | punch clear | 10d | 2026-07-04 | 2026-07-15 | 2.2-RHCUIN02-1390 | 54d | 0d | LABOUR [500 h]; Construction Material [100] | UDF_G3 | 0 | EE | 1 | C03a | TY1 | Non | RHCU | EIT2.2 |  | C03a | EIT02.2 |
| 2.2-RHCUIN02-1410 |  | Complete QA/QC document | 15d | 2026-07-16 | 2026-08-01 | 2.2-RHCUIN02-1400 | 54d | 60d | LABOUR [907.72 h]; Construction Material [150] | UDF_G3 | 0 | EE | 1 | C03a | TY1 | Non | RHCU | EIT2.2 |  | C03a | EIT02.2 |
|  | 8 | **Cable Termination Primary Cable** |  | 2026-10-12 | 2026-12-08 |  |  |  |  |  |  |  |  |  |  |  |  |  |  |  |  |
| 2.2-RHCUIN02-1180 |  | Cable Termination/Glanding | 25d | 2026-10-12 | 2026-11-09 | 2.2-RHCUIN01-1380, 2.2-RHCUIN02-1410 | -6d | 0d | LABOUR [3000 h]; Construction Material [250] | UDF_G3 | 0 | EE | 1 | C03a | TY1 | Non | RHCU | EIT2.2 |  | C03a | EIT02.2 |
| 2.2-RHCUIN02-1190 |  | punch clear | 10d | 2026-11-10 | 2026-11-20 | 2.2-RHCUIN02-1180 | -6d | 0d | LABOUR [500 h]; Construction Material [100] | UDF_G3 | 0 | EE | 1 | C03a | TY1 | Non | RHCU | EIT2.2 |  | C03a | EIT02.2 |
| 2.2-RHCUIN02-1200 |  | Complete QA/QC document | 15d | 2026-11-21 | 2026-12-08 | 2.2-RHCUIN02-1190 | -6d | 0d | LABOUR [907.72 h]; Construction Material [150] | UDF_G3 | 0 | EE | 1 | C03a | TY1 | Non | RHCU | EIT2.2 |  | C03a | EIT02.2 |
|  | 9 | **Cable Termination Secondary Cable** |  | 2026-10-12 | 2026-12-08 |  |  |  |  |  |  |  |  |  |  |  |  |  |  |  |  |
| 2.2-RHCUIN02-1210 |  | Cable Termination/Glanding | 25d | 2026-10-12 | 2026-11-09 | 2.2-RHCUIN01-1410 | -6d | 0d | LABOUR [3000 h]; Construction Material [250] | UDF_G3 | 0 | EE | 1 | C03a | TY1 | Non | RHCU | EIT2.2 |  | C03a | EIT02.2 |
| 2.2-RHCUIN02-1220 |  | punch clear | 10d | 2026-11-10 | 2026-11-20 | 2.2-RHCUIN02-1210 | -6d | 0d | LABOUR [500 h]; Construction Material [100] | UDF_G3 | 0 | EE | 1 | C03a | TY1 | Non | RHCU | EIT2.2 |  | C03a | EIT02.2 |
| 2.2-RHCUIN02-1230 |  | Complete QA/QC document | 15d | 2026-11-21 | 2026-12-08 | 2.2-RHCUIN02-1220, 2.2-RHCUIN02-1200 FF | -6d | 0d | LABOUR [907.72 h]; Construction Material [150] | UDF_G3 | 0 | EE | 1 | C03a | TY1 | Non | RHCU | EIT2.2 |  | C03a | EIT02.2 |
|  | 4 | **Instrument Calibration** |  | 2026-06-05 | 2026-07-09 |  |  |  |  |  |  |  |  |  |  |  |  |  |  |  |  |
| 2.2-RHCUIN05-1030 |  | Calibration of Gauges | 30d | 2026-06-05 | 2026-07-09 | 2.2-RHCUIN01-1420 | 62.3d | 0d | LABOUR [3000 h]; Construction Material [300] | UDF_G3 | 0 | EE | 1 | C03a | TY1 | Non | RHCU | EIT2.2 |  | C03c | EIT02.2 |
| 2.2-RHCUIN05-1080 |  | Calibration of Transmitters/Switches | 30d | 2026-06-05 | 2026-07-09 | 2.2-RHCUIN05-1030 SS, 2.2-RHCUIN05-1030 FF | 62.3d | 0d | LABOUR [4396.55 h]; Construction Material [300] | UDF_G3 | 0 | IN |  |  |  | Non | RHCU | EIT2.2 |  |  |  |

| ID | WBS | Activity | Duration | Start | Finish | Predecessors | Total float | Free float | Calendar | Resources | On Schedule Indicator | %Completed | Disciplines | EIT2 Main Activity | Areas | Phases | Main Activity | WBS | Types | EIT WBS | EIT PKG |
| --- | --- | --- | --- | --- | --- | --- | --- | --- | --- | --- | --- | --- | --- | --- | --- | --- | --- | --- | --- | --- | --- |
|  | 1 | **Gauges** |  | 2026-06-05 | 2026-07-21 |  |  |  |  |  |  |  |  |  |  |  |  |  |  |  |  |
| 2.2-RHCUIN04-1455 |  | D.P Pressure Gauge Installation | 10d | 2026-06-05 | 2026-06-16 | 2.2-RHCUIN05-1030 SS | 92.3d | 0d |  | LABOUR [750 h]; Construction Material [100] | UDF_G3 | 0 | IN | Non | RHCU | EIT2.2 |  |  |  |  |  |
| 2.2-RHCUIN04-1460 |  | Pressure Gauge Installation | 10d | 2026-06-17 | 2026-06-27 | 2.2-RHCUIN04-1455 | 92.3d | 0d |  | LABOUR [750 h]; Construction Material [100] | UDF_G3 | 0 | EE | Non | RHCU | EIT2.2 | 1 | C03a | TY1 | C03c | EIT02.2 |
| 2.2-RHCUIN04-1470 |  | Level Gauge Installation | 10d | 2026-06-29 | 2026-07-09 | 2.2-RHCUIN04-1460 | 92.3d | 0d |  | LABOUR [1000 h]; Construction Material [100] | UDF_G3 | 0 | EE | Non | RHCU | EIT2.2 | 1 | C03a | TY1 | C03c | EIT02.2 |
| 2.2-RHCUIN04-1480 |  | Clear punch | 5d | 2026-07-10 | 2026-07-15 | 2.2-RHCUIN04-1470 | 92.3d | 0d |  | LABOUR [200 h]; Construction Material [50] | UDF_G3 | 0 | EE | Non | RHCU | EIT2.2 | 1 | C03a | TY1 | C03c | EIT02.2 |
| 2.2-RHCUIN04-1490 |  | Complete QA/QC document | 5d | 2026-07-16 | 2026-07-21 | 2.2-RHCUIN04-1480, 2.2-RHCUIN05-1080 FF | 92.3d | 20d |  | LABOUR [296.58 h]; Construction Material [50] | UDF_G3 | 0 | EE | Non | RHCU | EIT2.2 | 1 | C03a | TY1 | C03c | EIT02.2 |
|  | 6 | **Transmitters/Switches** |  | 2026-06-05 | 2026-08-13 |  |  |  |  |  |  |  |  |  |  |  |  |  |  |  |  |
| 2.2-RHCUIN04-1500 |  | Install support / bracket | 10d | 2026-06-05 | 2026-06-16 | 2.2-RHCUIN05-1080 SS | 62.3d | 0d |  | LABOUR [300 h]; Construction Material [100] | UDF_G3 | 0 | EE | Non | RHCU | EIT2.2 | 1 | C03a | TY1 | C03c | EIT02.2 |
| 2.2-RHCUIN04-1510 |  | Pressure transmitters Installation | 10d | 2026-06-17 | 2026-06-27 | 2.2-RHCUIN04-1500 | 62.3d | 0d |  | LABOUR [500 h]; Construction Material [100] | UDF_G3 | 0 | EE | Non | RHCU | EIT2.2 | 1 | C03a | TY1 | C03c | EIT02.2 |
| 2.2-RHCUIN04-1520 |  | D.P. Transmitters - HART Installation | 10d | 2026-06-29 | 2026-07-09 | 2.2-RHCUIN04-1510 | 62.3d | 0d |  | LABOUR [500 h]; Construction Material [100] | UDF_G3 | 0 | EE | Non | RHCU | EIT2.2 | 1 | C03a | TY1 | C03c | EIT02.2 |
| 2.2-RHCUIN04-1530 |  | Temperature Transmitters Installation | 10d | 2026-07-10 | 2026-07-21 | 2.2-RHCUIN04-1520 | 72.3d | 0d |  | LABOUR [500 h]; Construction Material [100] | UDF_G3 | 0 | EE | Non | RHCU | EIT2.2 | 1 | C03a | TY1 | C03c | EIT02.2 |
| 2.2-RHCUIN04-1580 |  | Level Switch Installation | 10d | 2026-07-22 | 2026-08-01 | 2.2-RHCUIN04-1530 | 72.3d | 0d |  | LABOUR [500 h]; Construction Material [100] | UDF_G3 | 0 | IN | Non | RHCU | EIT2.2 |  |  |  |  |  |
| 2.2-RHCUIN04-1590 |  | Clear punch | 5d | 2026-08-03 | 2026-08-07 | 2.2-RHCUIN04-1580 | 72.3d | 0d |  | LABOUR [200 h]; Construction Material [50] | UDF_G3 | 0 | IN | Non | RHCU | EIT2.2 |  |  |  |  |  |
| 2.2-RHCUIN04-1600 |  | Complete QA/QC document | 5d | 2026-08-08 | 2026-08-13 | 2.2-RHCUIN04-1590, 2.2-RHCUIN04-1490 FF | 72.3d | 10d |  | LABOUR [496.58 h]; Construction Material [50] | UDF_G3 | 0 | IN | Non | RHCU | EIT2.2 |  |  |  |  |  |
|  | 11 | **Instrument Junction Box Installation** |  | 2026-06-17 | 2026-07-14 |  |  |  |  |  |  |  |  |  |  |  |  |  |  |  |  |
| 2.2-RHCUIN04-1540 |  | Install support / bracket | 10d | 2026-06-17 | 2026-06-27 | 2.2-RHCUIN04-1500 | 78.3d | 0d |  | LABOUR [1000 h]; Construction Material [100] | UDF_G3 | 0 | EE | Non | RHCU | EIT2.2 | 1 | C03a | TY1 | C03c | EIT02.2 |
| 2.2-RHCUIN04-1550 |  | Instrument Junction Box Installation | 10d | 2026-06-29 | 2026-07-09 | 2.2-RHCUIN04-1540 | 78.3d | 0d |  | LABOUR [1500 h]; Construction Material [100] | UDF_G3 | 0 | EE | Non | RHCU | EIT2.2 | 1 | C03a | TY1 | C03c | EIT02.2 |
| 2.2-RHCUIN04-1560 |  | Clear punch | 2d | 2026-07-10 | 2026-07-11 | 2.2-RHCUIN04-1550 | 78.3d | 0d |  | LABOUR [300 h]; Construction Material [20] | UDF_G3 | 0 | EE | Non | RHCU | EIT2.2 | 1 | C03a | TY1 | C03c | EIT02.2 |
| 2.2-RHCUIN04-1570 |  | Complete QA/QC document | 2d | 2026-07-13 | 2026-07-14 | 2.2-RHCUIN04-1560 | 78.3d | 16d |  | LABOUR [196.58 h]; Construction Material [20] | UDF_G3 | 0 | EE | Non | RHCU | EIT2.2 | 1 | C03a | TY1 | C03c | EIT02.2 |
|  | 5 | **Tubing** |  | 2026-07-10 | 2026-09-19 |  |  |  |  |  |  |  |  |  |  |  |  |  |  |  |  |
| 2.2-RHCUIN07-1120 |  | Instrument Hook up Tubing Installation | 20d | 2026-07-10 | 2026-08-01 | 2.2-RHCUIN04-1510, 2.2-RHCUIN04-1520 | 62.3d | 0d |  | LABOUR [100 h]; Construction Material [200] | UDF_G3 | 0 | IN | Non | RHCU | EIT2.2 |  |  |  | C03c | EIT02.2 |
| 2.2-RHCUIN07-1130 |  | Leak Test | 20d | 2026-08-03 | 2026-08-25 | 2.2-RHCUIN07-1120, 2.2-RHCUIN04-1600 FF, 2.2-RHCUIN04-1570 | 62.3d | 0d |  | LABOUR [30 h]; Construction Material [200] | UDF_G3 | 0 | IN | Non | RHCU | EIT2.2 |  |  |  | C03c | EIT02.2 |
| 2.2-RHCUIN07-1140 |  | Clear Punch | 10d | 2026-08-26 | 2026-09-05 | 2.2-RHCUIN07-1130 | 62.3d | 0d |  | LABOUR [20 h]; Construction Material [100] | UDF_G3 | 0 | IN | Non | RHCU | EIT2.2 |  |  |  | C03c | EIT02.2 |
| 2.2-RHCUIN07-1150 |  | Complete QA/QC document | 15d | 2026-09-06 | 2026-09-19 | 2.2-RHCUIN07-1140 | 79.75d | 87.38d | 7 - Day Workweek (No Holidays) | LABOUR [29.2 h]; Construction Material [120] | UDF_G3 | 0 | IN | Non | RHCU | EIT2.2 |  |  |  | C03c | EIT02.2 |

| ID | WBS | Activity | Duration | Start | Finish | Predecessors | Total float | Free float | Resources | On Schedule Indicator | %Completed | Disciplines | EIT2 Main Activity | Areas | Phases | EIT WBS | EIT PKG | Motor Loop | Main Activity | WBS | Types |
| --- | --- | --- | --- | --- | --- | --- | --- | --- | --- | --- | --- | --- | --- | --- | --- | --- | --- | --- | --- | --- | --- |
|  | 7 | **Instrument Loop Check** |  | 2026-12-09 | 2027-01-28 |  |  |  |  |  |  |  |  |  |  |  |  |  |  |  |  |
| 2.2-RHCUIN00-1090 |  | Instrument Loop check | 25d | 2026-12-09 | 2027-01-06 | 2.2-RHCUIN02-1230, 2.2-RHCUIN07-1150 | -6d | 0d | LABOUR [3000 h]; Construction Material [250] | UDF_G3 | 0 | IN | Non | RHCU | EIT2.2 | C03c | EIT02.2 | LO |  |  |  |
| 2.2-RHCUIN00-1100 |  | Clear Punch | 10d | 2027-01-07 | 2027-01-18 | 2.2-RHCUIN00-1090 | -6d | 0d | LABOUR [1000 h]; Construction Material [100] | UDF_G3 | 0 | IN | Non | RHCU | EIT2.2 | C03c | EIT02.2 | LO |  |  |  |
| 2.2-RHCUIN00-1110 |  | Complete QA/QC document | 9d | 2027-01-19 | 2027-01-28 | 2.2-RHCUIN00-1100 | -6d | 0d | LABOUR [1281.31 h]; Construction Material [90] | UDF_G3 | 0 | IN | Non | RHCU | EIT2.2 | C03c | EIT02.2 | LO |  |  |  |
|  | 5 | **Telecommunication** |  | 2026-07-22 | 2027-01-29 |  |  |  |  |  |  |  |  |  |  |  |  |  |  |  |  |
|  | 3 | **Telecom** |  | 2026-07-22 | 2027-01-29 |  |  |  |  |  |  |  |  |  |  |  |  |  |  |  |  |
|  | 3 | **Telecom Cable Tray/Ladder Installation** |  | 2026-07-22 | 2026-10-10 |  |  |  |  |  |  |  |  |  |  |  |  |  |  |  |  |
| 2.2-RHCUTE03-1150 |  | Install support / bracket | 50d | 2026-07-22 | 2026-09-17 | 2.2-RHCUEE03-1150 | -2d | 0d | LABOUR [3 h]; Construction Material [500] | UDF_G3 | 0 | EE | Non | RHCU | EIT2.2 | C03a | EIT02.2 |  | 1 | C03a | TY1 |
| 2.2-RHCUTE03-1160 |  | Install Ladder / Tray | 50d | 2026-07-22 | 2026-09-17 | 2.2-RHCUTE03-1150 SS, 2.2-RHCUTE03-1150 FF | -2d | 0d | LABOUR [77 h]; Construction Material [500] | UDF_G3 | 0 | EE | Non | RHCU | EIT2.2 | C03a | EIT02.2 |  | 1 | C03a | TY1 |
| 2.2-RHCUTE03-1170 |  | Conduit Install | 50d | 2026-07-22 | 2026-09-17 | 2.2-RHCUTE03-1150 SS | -2d | 0d | LABOUR [500 h]; Construction Material [500] | UDF_G3 | 0 | TE | Non | RHCU | EIT2.2 | C03a | EIT02.2 |  |  |  |  |
| 2.2-RHCUTE03-1180 |  | Clear punch | 5d | 2026-09-18 | 2026-09-23 | 2.2-RHCUTE03-1160, 2.2-RHCUTE03-1170 | -2d | 0d | LABOUR [75 h]; Construction Material [50] | UDF_G3 | 0 | EE | Non | RHCU | EIT2.2 | C03a | EIT02.2 |  | 1 | C03a | TY1 |
| 2.2-RHCUTE03-1190 |  | Complete QA/QC document | 15d | 2026-09-24 | 2026-10-10 | 2.2-RHCUTE03-1180 | -2d | 0d | LABOUR [75 h]; Construction Material [150] | UDF_G3 | 0 | EE | Non | RHCU | EIT2.2 | C03a | EIT02.2 |  | 1 | C03a | TY1 |
|  | 1 | **AG Telecommunication Cable Installation** |  | 2026-10-12 | 2026-12-14 |  |  |  |  |  |  |  |  |  |  |  |  |  |  |  |  |
| 2.2-RHCUTE01-1090 |  | Above Ground Pull Cable | 30d | 2026-10-12 | 2026-11-14 | 2.2-RHCUTE03-1190 | -2d | 0d | LABOUR [1000 h]; Construction Material [300] | UDF_G3 | 0 | EE | Non | RHCU | EIT2.2 | C03a | EIT02.2 |  | 1 | C03a | TY1 |
| 2.2-RHCUTE01-1100 |  | Megger & Continuity test | 10d | 2026-11-16 | 2026-11-26 | 2.2-RHCUTE01-1090 | -2d | 0d | LABOUR [200 h]; Construction Material [100] | UDF_G3 | 0 | EE | Non | RHCU | EIT2.2 | C03a | EIT02.2 |  | 1 | C03a | TY1 |
| 2.2-RHCUTE01-1110 |  | Complete QA/QC document | 15d | 2026-11-27 | 2026-12-14 | 2.2-RHCUTE01-1100 | -2d | 0d | LABOUR [100 h]; Construction Material [150] | UDF_G3 | 0 | EE | Non | RHCU | EIT2.2 | C03a | EIT02.2 |  | 1 | C03a | TY1 |
|  | 4 | **Telecommunication Termination / Glanding** |  | 2026-12-15 | 2027-01-29 |  |  |  |  |  |  |  |  |  |  |  |  |  |  |  |  |
| 2.2-RHCUTE02-1090 |  | Cable Termination/Glanding | 20d | 2026-12-15 | 2027-01-06 | 2.2-RHCUTE01-1110 | -2d | 0d | LABOUR [200 h]; Construction Material [200] | UDF_G3 | 0 | EE | Non | RHCU | EIT2.2 | C03a | EIT02.2 |  | 1 | C03a | TY1 |
| 2.2-RHCUTE02-1100 |  | Clear punch | 10d | 2027-01-07 | 2027-01-18 | 2.2-RHCUTE02-1090 | -2d | 0d | LABOUR [100 h]; Construction Material [100] | UDF_G3 | 0 | EE | Non | RHCU | EIT2.2 | C03a | EIT02.2 |  | 1 | C03a | TY1 |
| 2.2-RHCUTE02-1110 |  | Complete QA/QC document | 10d | 2027-01-19 | 2027-01-29 | 2.2-RHCUTE02-1100, 2.2-RHCUIN00-1110 FF, 2.2-RHCUTE04-1110 | -2d | 0d | LABOUR [233.99 h]; Construction Material [100] | UDF_G3 | 0 | EE | Non | RHCU | EIT2.2 | C03a | EIT02.2 |  | 1 | C03a | TY1 |
|  | 2 | **Telecommunication Equipment Installation** |  | 2026-10-12 | 2026-12-14 |  |  |  |  |  |  |  |  |  |  |  |  |  |  |  |  |
| 2.2-RHCUTE04-1090 |  | Telecom Equpiment Installation | 30d | 2026-10-12 | 2026-11-14 | 2.2-RHCUTE03-1190 | 28d | 0d | LABOUR [120 h]; Construction Material [300] | UDF_G3 | 0 | EE | Non | RHCU | EIT2.2 | C03a | EIT02.2 |  | 1 | C03a | TY1 |
| 2.2-RHCUTE04-1100 |  | Clear Punch | 10d | 2026-11-16 | 2026-11-26 | 2.2-RHCUTE04-1090 | 28d | 0d | LABOUR [30 h]; Construction Material [100] | UDF_G3 | 0 | EE | Non | RHCU | EIT2.2 | C03a | EIT02.2 |  | 1 | C03a | TY1 |
| 2.2-RHCUTE04-1110 |  | Complete QA/QC document | 15d | 2026-11-27 | 2026-12-14 | 2.2-RHCUTE04-1100 | 28d | 30d | LABOUR [40.57 h]; Construction Material [150] | UDF_G3 | 0 | EE | Non | RHCU | EIT2.2 | C03a | EIT02.2 |  | 1 | C03a | TY1 |

| ID | WBS | Activity | Duration | Start | Finish | Predecessors | Complete | Remaining | Planned start | Planned finish | Total float | Free float | Resources | On Schedule Indicator | %Completed | Disciplines | EIT2 Main Activity | Areas | Phases | EIT WBS | EIT PKG | Cable Pull & Laying |
| --- | --- | --- | --- | --- | --- | --- | --- | --- | --- | --- | --- | --- | --- | --- | --- | --- | --- | --- | --- | --- | --- | --- |
|  | 5 | **RHCU ZONE 5** |  | 2026-04-01 | 2027-06-08 |  |  |  |  |  |  |  |  |  |  |  |  |  |  |  |  |  |
|  | 1 | **Electrical Works** |  | 2026-04-01 | 2027-04-01 |  |  |  |  |  |  |  |  |  |  |  |  |  |  |  |  |  |
|  | 6 | **Cable trench Excavation buried** |  | 2026-04-01 | 2026-09-25 |  |  |  |  |  |  |  |  |  |  |  |  |  |  |  |  |  |
|  | 8 | **C03-ETD-816/395/875/346/809/706/482/859/461/324/838/860/632/826/396/304** |  | 2026-04-01 | 2026-06-24 |  |  |  |  |  |  |  |  |  |  |  |  |  |  |  |  |  |
| 2.2-RHCUEE09-1140 |  | Cable trench Excavation | 30d | 2026-04-01 A | 2026-06-18 | 2.2-RHCUEE09-1120 SS | 5% | 30d | 2026-04-01 | 2026-05-05 | -12d | 0d | LABOUR; Construction Material [300] | UDF_G3 | 0 | EE | Non | RHCU | EIT2.2 | C03c | EIT02.2 |  |
| 2.2-RHCUEE09-1150 |  | Sand Filling Compaction | 5d | 2026-06-19 | 2026-06-24 | 2.2-RHCUEE09-1140 |  |  |  |  | 81d | 25d | LABOUR; Construction Material [50] | UDF_G3 | 0 | EE | Non | RHCU | EIT2.2 | C03c | EIT02.2 |  |
|  | 1 | **C03-ETD-671/387/372/334/335/337/805/648/833/396/347/837/870/871/820/678** |  | 2026-06-19 | 2026-07-29 |  |  |  |  |  |  |  |  |  |  |  |  |  |  |  |  |  |
| 2.2-RHCUEE09-1160 |  | Cable trench Excavation | 30d | 2026-06-19 | 2026-07-23 | 2.2-RHCUEE09-1140 |  |  |  |  | -12d | 0d | LABOUR; Construction Material [300] | UDF_G3 | 0 | EE | Non | RHCU | EIT2.2 | C03c | EIT02.2 |  |
| 2.2-RHCUEE09-1170 |  | Sand Filling Compaction | 5d | 2026-07-24 | 2026-07-29 | 2.2-RHCUEE09-1160, 2.2-RHCUEE09-1150 |  |  |  |  | 56d | 25d | LABOUR; Construction Material [50] | UDF_G3 | 0 | EE | Non | RHCU | EIT2.2 | C03c | EIT02.2 |  |
|  | 2 | **C03-ETD-338/323/841/835/834/842/836/349/307/306/874/341/829/825/486/693** |  | 2026-07-24 | 2026-09-02 |  |  |  |  |  |  |  |  |  |  |  |  |  |  |  |  |  |
| 2.2-RHCUEE09-1180 |  | Cable trench Excavation | 30d | 2026-07-24 | 2026-08-27 | 2.2-RHCUEE09-1160 |  |  |  |  | -12d | 0d | LABOUR; Construction Material [300] | UDF_G3 | 0 | EE | Non | RHCU | EIT2.2 | C03c | EIT02.2 |  |
| 2.2-RHCUEE09-1190 |  | Sand Filling Compaction | 5d | 2026-08-28 | 2026-09-02 | 2.2-RHCUEE09-1180, 2.2-RHCUEE09-1170 |  |  |  |  | 31d | 15d | LABOUR; Construction Material [50] | UDF_G3 | 0 | EE | Non | RHCU | EIT2.2 | C03c | EIT02.2 |  |
|  | 3 | **C03-ETD-703/675/662/821/486/861/807/828/692/831/689/873/342/668** |  | 2026-08-28 | 2026-09-25 |  |  |  |  |  |  |  |  |  |  |  |  |  |  |  |  |  |
| 2.2-RHCUEE09-1200 |  | Cable trench Excavation | 20d | 2026-08-28 | 2026-09-19 | 2.2-RHCUEE09-1180 |  |  |  |  | -12d | 0d | LABOUR; Construction Material [200] | UDF_G3 | 0 | EE | Non | RHCU | EIT2.2 | C03c | EIT02.2 |  |
| 2.2-RHCUEE09-1210 |  | Sand Filling Compaction | 5d | 2026-09-21 | 2026-09-25 | 2.2-RHCUEE09-1200, 2.2-RHCUEE09-1190 |  |  |  |  | 16d | 3d | LABOUR; Construction Material [50] | UDF_G3 | 0 | EE | Non | RHCU | EIT2.2 | C03c | EIT02.2 |  |
|  | 8 | **Cable Laying Direct buried** |  | 2026-06-19 | 2026-12-14 |  |  |  |  |  |  |  |  |  |  |  |  |  |  |  |  |  |
|  | 8 | **C03-ETD-816/395/875/346/809/706/482/859/461/324/838/860/632/826/396/304** |  | 2026-06-19 | 2026-09-29 |  |  |  |  |  |  |  |  |  |  |  |  |  |  |  |  |  |
| 2.2-RHCUEE01-2825 |  | Sand Filling First layer | 4d | 2026-06-19 | 2026-06-23 | 2.2-RHCUEE09-1140 |  |  |  |  | 13d | 0d | LABOUR [50 h]; Cable Pull; Construction Material [40] | UDF_G3 | 0 | EE | PRIC | RHCU | EIT2.2 |  |  |  |
| 2.2-RHCUEE01-2830 |  | Cable Laying | 40d | 2026-06-24 | 2026-08-08 | 2.2-RHCUEE01-2825 |  |  |  |  | 13d | 0d | LABOUR [700 h]; Cable Pull [5974 h]; Construction Material [400] | UDF_G3 | 0 | EE | PRIC | RHCU | EIT2.2 | C03c | EIT02.2 | PUL |
| 2.2-RHCUEE01-2840 |  | Megger & Continuity test | 5d | 2026-08-10 | 2026-08-14 | 2.2-RHCUEE01-2830 |  |  |  |  | 13d | 0d | LABOUR [50 h]; Cable Pull; Construction Material [50] | UDF_G3 | 0 | EE | PRIC | RHCU | EIT2.2 | C03c | EIT02.2 |  |
| 2.2-RHCUEE01-2850 |  | punch Clear | 5d | 2026-08-15 | 2026-08-20 | 2.2-RHCUEE01-2840 |  |  |  |  | 13d | 0d | LABOUR [50 h]; Cable Pull; Construction Material [50] | UDF_G3 | 0 | EE | PRIC | RHCU | EIT2.2 | C03c | EIT02.2 |  |
| 2.2-RHCUEE01-2860 |  | Sand Filling Compaction | 4d | 2026-08-21 | 2026-08-25 | 2.2-RHCUEE01-2850 |  |  |  |  | 13d | 0d | LABOUR [50 h]; Cable Pull; Construction Material [40] | UDF_G3 | 0 | EE | PRIC | RHCU | EIT2.2 |  |  |  |
| 2.2-RHCUEE01-2870 |  | Complete QA/QC document | 10d | 2026-08-26 | 2026-09-05 | 2.2-RHCUEE01-2860 |  |  |  |  | 13d | 0d | LABOUR [100 h]; Cable Pull; Construction Material [100] | UDF_G3 | 0 | EE | PRIC | RHCU | EIT2.2 | C03c | EIT02.2 |  |
| 2.2-RHCUEE01-2880 |  | Back Filling | 20d | 2026-09-07 | 2026-09-29 | 2.2-RHCUEE01-2870, 2.2-RHCUEE09-1210 FF |  |  |  |  | 13d | 10d | LABOUR [563.74 h]; Cable Pull; Construction Material [200] | UDF_G3 | 0 | EE | PRIC | RHCU | EIT2.2 | C03c | EIT02.2 |  |

| ID | WBS | Activity | Duration | Start | Finish | Predecessors | Total float | Free float | Resources | On Schedule Indicator | %Completed | Disciplines | EIT2 Main Activity | Areas | Phases | Cable Pull & Laying | EIT WBS | EIT PKG |
| --- | --- | --- | --- | --- | --- | --- | --- | --- | --- | --- | --- | --- | --- | --- | --- | --- | --- | --- |
|  | 1 | **C03-ETD-671/387/372/334/335/337/805/648/833/396/347/837/870/871/820/678** |  | 2026-07-24 | 2026-11-03 |  |  |  |  |  |  |  |  |  |  |  |  |  |
| 2.2-RHCUEE01-2885 |  | Sand Filling First layer | 4d | 2026-07-24 | 2026-07-28 | 2.2-RHCUEE09-1160 | 3d | 0d | LABOUR [50 h]; Cable Pull; Construction Material [40] | UDF_G3 | 0 | EE | PRIC | RHCU | EIT2.2 |  |  |  |
| 2.2-RHCUEE01-2890 |  | Cable Laying | 40d | 2026-07-29 | 2026-09-12 | 2.2-RHCUEE01-2885 | 3d | 0d | LABOUR [700 h]; Cable Pull [5974 h]; Construction Material [400] | UDF_G3 | 0 | EE | PRIC | RHCU | EIT2.2 | PUL | C03c | EIT02.2 |
| 2.2-RHCUEE01-2900 |  | Megger & Continuity test | 5d | 2026-09-14 | 2026-09-18 | 2.2-RHCUEE01-2890 | 3d | 0d | LABOUR [50 h]; Cable Pull; Construction Material [50] | UDF_G3 | 0 | EE | PRIC | RHCU | EIT2.2 |  | C03c | EIT02.2 |
| 2.2-RHCUEE01-2910 |  | punch Clear | 5d | 2026-09-19 | 2026-09-24 | 2.2-RHCUEE01-2900 | 3d | 0d | LABOUR [50 h]; Cable Pull; Construction Material [50] | UDF_G3 | 0 | EE | PRIC | RHCU | EIT2.2 |  | C03c | EIT02.2 |
| 2.2-RHCUEE01-2920 |  | Sand Filling Compaction | 4d | 2026-09-25 | 2026-09-29 | 2.2-RHCUEE01-2910 | 3d | 0d | LABOUR [50 h]; Cable Pull; Construction Material [40] | UDF_G3 | 0 | EE | PRIC | RHCU | EIT2.2 |  |  |  |
| 2.2-RHCUEE01-2930 |  | Complete QA/QC document | 10d | 2026-09-30 | 2026-10-10 | 2.2-RHCUEE01-2920 | 3d | 0d | LABOUR [100 h]; Cable Pull; Construction Material [100] | UDF_G3 | 0 | EE | PRIC | RHCU | EIT2.2 |  | C03c | EIT02.2 |
| 2.2-RHCUEE01-2940 |  | Back Filling | 20d | 2026-10-12 | 2026-11-03 | 2.2-RHCUEE01-2930, 2.2-RHCUEE01-2880 | 3d | 10d | LABOUR [563.74 h]; Cable Pull; Construction Material [200] | UDF_G3 | 0 | EE | PRIC | RHCU | EIT2.2 |  | C03c | EIT02.2 |
|  | 2 | **C03-ETD-338/323/841/835/834/842/836/349/307/306/874/341/829/825/486/693** |  | 2026-08-28 | 2026-12-08 |  |  |  |  |  |  |  |  |  |  |  |  |  |
| 2.2-RHCUEE01-2945 |  | Sand Filling First layer | 4d | 2026-08-28 | 2026-09-01 | 2.2-RHCUEE09-1180 | -7d | 0d | LABOUR [50 h]; Cable Pull; Construction Material [40] | UDF_G3 | 0 | EE | PRIC | RHCU | EIT2.2 |  |  |  |
| 2.2-RHCUEE01-2950 |  | Cable Laying | 40d | 2026-09-02 | 2026-10-17 | 2.2-RHCUEE01-2945 | -7d | 0d | LABOUR [700 h]; Cable Pull [5974 h]; Construction Material [400] | UDF_G3 | 0 | EE | PRIC | RHCU | EIT2.2 | PUL | C03c | EIT02.2 |
| 2.2-RHCUEE01-2960 |  | Megger & Continuity test | 5d | 2026-10-19 | 2026-10-23 | 2.2-RHCUEE01-2950 | -7d | 0d | LABOUR [50 h]; Cable Pull; Construction Material [50] | UDF_G3 | 0 | EE | PRIC | RHCU | EIT2.2 |  | C03c | EIT02.2 |
| 2.2-RHCUEE01-2970 |  | punch Clear | 5d | 2026-10-24 | 2026-10-29 | 2.2-RHCUEE01-2960 | -7d | 0d | LABOUR [50 h]; Cable Pull; Construction Material [50] | UDF_G3 | 0 | EE | PRIC | RHCU | EIT2.2 |  | C03c | EIT02.2 |
| 2.2-RHCUEE01-2980 |  | Sand Filling Compaction | 4d | 2026-10-30 | 2026-11-03 | 2.2-RHCUEE01-2970 | -7d | 0d | LABOUR [50 h]; Cable Pull; Construction Material [40] | UDF_G3 | 0 | EE | PRIC | RHCU | EIT2.2 |  |  |  |
| 2.2-RHCUEE01-2990 |  | Complete QA/QC document | 10d | 2026-11-04 | 2026-11-14 | 2.2-RHCUEE01-2980 | -7d | 0d | LABOUR [100 h]; Cable Pull; Construction Material [100] | UDF_G3 | 0 | EE | PRIC | RHCU | EIT2.2 |  | C03c | EIT02.2 |
| 2.2-RHCUEE01-3000 |  | Back Filling | 20d | 2026-11-16 | 2026-12-08 | 2.2-RHCUEE01-2990, 2.2-RHCUEE01-2940 | -7d | 5d | LABOUR [563.74 h]; Cable Pull; Construction Material [200] | UDF_G3 | 0 | EE | PRIC | RHCU | EIT2.2 |  | C03c | EIT02.2 |
|  | 3 | **C03-ETD-703/675/662/821/486/861/807/828/692/831/689/873/342/668** |  | 2026-09-21 | 2026-12-14 |  |  |  |  |  |  |  |  |  |  |  |  |  |
| 2.2-RHCUEE01-3005 |  | Sand Filling First layer | 4d | 2026-09-21 | 2026-09-24 | 2.2-RHCUEE09-1200 | -12d | 0d | LABOUR [50 h]; Cable Pull; Construction Material [40] | UDF_G3 | 0 | EE | PRIC | RHCU | EIT2.2 |  |  |  |
| 2.2-RHCUEE01-3010 |  | Cable Laying | 30d | 2026-09-25 | 2026-10-29 | 2.2-RHCUEE01-3005 | -12d | 0d | LABOUR [700 h]; Cable Pull [5974 h]; Construction Material [300] | UDF_G3 | 0 | EE | PRIC | RHCU | EIT2.2 | PUL | C03c | EIT02.2 |
| 2.2-RHCUEE01-3020 |  | Megger & Continuity test | 5d | 2026-10-30 | 2026-11-04 | 2.2-RHCUEE01-3010 | -12d | 0d | LABOUR [50 h]; Cable Pull; Construction Material [50] | UDF_G3 | 0 | EE | PRIC | RHCU | EIT2.2 |  | C03c | EIT02.2 |
| 2.2-RHCUEE01-3030 |  | punch Clear | 5d | 2026-11-05 | 2026-11-10 | 2.2-RHCUEE01-3020 | -12d | 0d | LABOUR [50 h]; Cable Pull; Construction Material [50] | UDF_G3 | 0 | EE | PRIC | RHCU | EIT2.2 |  | C03c | EIT02.2 |
| 2.2-RHCUEE01-3040 |  | Sand Filling Compaction | 4d | 2026-11-11 | 2026-11-14 | 2.2-RHCUEE01-3030 | -12d | 0d | LABOUR [50 h]; Cable Pull; Construction Material [40] | UDF_G3 | 0 | EE | PRIC | RHCU | EIT2.2 |  |  |  |
| 2.2-RHCUEE01-3050 |  | Complete QA/QC document | 5d | 2026-11-16 | 2026-11-20 | 2.2-RHCUEE01-3040 | -12d | 0d | LABOUR [100 h]; Cable Pull; Construction Material [50] | UDF_G3 | 0 | EE | PRIC | RHCU | EIT2.2 |  | C03c | EIT02.2 |
| 2.2-RHCUEE01-3060 |  | Back Filling | 20d | 2026-11-21 | 2026-12-14 | 2.2-RHCUEE01-3050, 2.2-RHCUEE01-3000 FF | -12d | 0d | LABOUR [563.74 h]; Cable Pull; Construction Material [200] | UDF_G3 | 0 | EE | PRIC | RHCU | EIT2.2 |  | C03c | EIT02.2 |

| ID | WBS | Activity | Duration | Start | Finish | Predecessors | Total float | Free float | Resources | On Schedule Indicator | %Completed | Disciplines | EIT2 Main Activity | Areas | Phases | Cable Pull & Laying | EIT WBS | EIT PKG |
| --- | --- | --- | --- | --- | --- | --- | --- | --- | --- | --- | --- | --- | --- | --- | --- | --- | --- | --- |
|  | 13 | **Cable Laying Concrete Trench** |  | 2026-06-24 | 2026-12-14 |  |  |  |  |  |  |  |  |  |  |  |  |  |
|  | 1 | **C03-ETC-582/228/270/233/822/549/261/259/231/242/243/253/490/491/260/506** |  | 2026-06-24 | 2026-09-29 |  |  |  |  |  |  |  |  |  |  |  |  |  |
| 2.2-RHCUEE01-3070 |  | Cable Laying | 40d | 2026-06-24 | 2026-08-08 | 2.2-RHCUEE01-2830 SS | 13d | 0d | LABOUR [800 h]; Cable Pull [5974 h]; Construction Material [400] | UDF_G3 | 0 | EE | PRIC | RHCU | EIT2.2 | PUL | C03c | EIT02.2 |
| 2.2-RHCUEE01-3080 |  | Megger & Continuity test | 5d | 2026-08-10 | 2026-08-14 | 2.2-RHCUEE01-3070 | 13d | 0d | LABOUR [50 h]; Cable Pull; Construction Material [50] | UDF_G3 | 0 | EE | PRIC | RHCU | EIT2.2 |  | C03c | EIT02.2 |
| 2.2-RHCUEE01-3090 |  | punch Clear | 5d | 2026-08-15 | 2026-08-20 | 2.2-RHCUEE01-3080 | 13d | 0d | LABOUR [50 h]; Cable Pull; Construction Material [50] | UDF_G3 | 0 | EE | PRIC | RHCU | EIT2.2 |  | C03c | EIT02.2 |
| 2.2-RHCUEE01-3100 |  | Sand Filling Compaction | 4d | 2026-08-21 | 2026-08-25 | 2.2-RHCUEE01-3090 | 13d | 0d | LABOUR [50 h]; Cable Pull; Construction Material [40] | UDF_G3 | 0 | EE | PRIC | RHCU | EIT2.2 |  |  |  |
| 2.2-RHCUEE01-3110 |  | Complete QA/QC document | 10d | 2026-08-26 | 2026-09-05 | 2.2-RHCUEE01-3100 | 13d | 0d | LABOUR [100 h]; Cable Pull; Construction Material [100] | UDF_G3 | 0 | EE | PRIC | RHCU | EIT2.2 |  | C03c | EIT02.2 |
| 2.2-RHCUEE01-3120 |  | Back Filling | 20d | 2026-09-07 | 2026-09-29 | 2.2-RHCUEE01-3110 | 13d | 10d | LABOUR [513.74 h]; Cable Pull; Construction Material [200] | UDF_G3 | 0 | EE | PRIC | RHCU | EIT2.2 |  | C03c | EIT02.2 |
|  | 2 | **C03-ETC-505/503/504/473/470/474/620/293/478/251/230/479/500/482/555/566** |  | 2026-07-29 | 2026-11-03 |  |  |  |  |  |  |  |  |  |  |  |  |  |
| 2.2-RHCUEE01-3130 |  | Cable Laying | 40d | 2026-07-29 | 2026-09-12 | 2.2-RHCUEE01-2890 SS | 3d | 0d | LABOUR [800 h]; Cable Pull [5974 h]; Construction Material [400] | UDF_G3 | 0 | EE | PRIC | RHCU | EIT2.2 | PUL | C03c | EIT02.2 |
| 2.2-RHCUEE01-3140 |  | Megger & Continuity test | 5d | 2026-09-14 | 2026-09-18 | 2.2-RHCUEE01-3130 | 3d | 0d | LABOUR [50 h]; Cable Pull; Construction Material [50] | UDF_G3 | 0 | EE | PRIC | RHCU | EIT2.2 |  | C03c | EIT02.2 |
| 2.2-RHCUEE01-3150 |  | punch Clear | 5d | 2026-09-19 | 2026-09-24 | 2.2-RHCUEE01-3140 | 3d | 0d | LABOUR [50 h]; Cable Pull; Construction Material [50] | UDF_G3 | 0 | EE | PRIC | RHCU | EIT2.2 |  | C03c | EIT02.2 |
| 2.2-RHCUEE01-3160 |  | Sand Filling Compaction | 4d | 2026-09-25 | 2026-09-29 | 2.2-RHCUEE01-3150 | 3d | 0d | LABOUR [50 h]; Cable Pull; Construction Material [40] | UDF_G3 | 0 | EE | PRIC | RHCU | EIT2.2 |  |  |  |
| 2.2-RHCUEE01-3170 |  | Complete QA/QC document | 10d | 2026-09-30 | 2026-10-10 | 2.2-RHCUEE01-3160 | 3d | 0d | LABOUR [100 h]; Cable Pull; Construction Material [100] | UDF_G3 | 0 | EE | PRIC | RHCU | EIT2.2 |  | C03c | EIT02.2 |
| 2.2-RHCUEE01-3180 |  | Back Filling | 20d | 2026-10-12 | 2026-11-03 | 2.2-RHCUEE01-3170, 2.2-RHCUEE01-3120 | 3d | 10d | LABOUR [513.74 h]; Cable Pull; Construction Material [200] | UDF_G3 | 0 | EE | PRIC | RHCU | EIT2.2 |  | C03c | EIT02.2 |
|  | 3 | **C03-ETC-480/252/486/575/508/576/255/568/254/570/572/571/573/574/569/567** |  | 2026-09-02 | 2026-12-08 |  |  |  |  |  |  |  |  |  |  |  |  |  |
| 2.2-RHCUEE01-3190 |  | Cable Laying | 40d | 2026-09-02 | 2026-10-17 | 2.2-RHCUEE01-2950 SS | -7d | 0d | LABOUR [800 h]; Cable Pull [5974 h]; Construction Material [400] | UDF_G3 | 0 | EE | PRIC | RHCU | EIT2.2 | PUL | C03c | EIT02.2 |
| 2.2-RHCUEE01-3200 |  | Megger & Continuity test | 5d | 2026-10-19 | 2026-10-23 | 2.2-RHCUEE01-3190 | -7d | 0d | LABOUR [50 h]; Cable Pull; Construction Material [50] | UDF_G3 | 0 | EE | PRIC | RHCU | EIT2.2 |  | C03c | EIT02.2 |
| 2.2-RHCUEE01-3210 |  | punch Clear | 5d | 2026-10-24 | 2026-10-29 | 2.2-RHCUEE01-3200 | -7d | 0d | LABOUR [50 h]; Cable Pull; Construction Material [50] | UDF_G3 | 0 | EE | PRIC | RHCU | EIT2.2 |  | C03c | EIT02.2 |
| 2.2-RHCUEE01-3220 |  | Sand Filling Compaction | 4d | 2026-10-30 | 2026-11-03 | 2.2-RHCUEE01-3210 | -7d | 0d | LABOUR [50 h]; Cable Pull; Construction Material [40] | UDF_G3 | 0 | EE | PRIC | RHCU | EIT2.2 |  |  |  |
| 2.2-RHCUEE01-3230 |  | Complete QA/QC document | 10d | 2026-11-04 | 2026-11-14 | 2.2-RHCUEE01-3220 | -7d | 0d | LABOUR [100 h]; Cable Pull; Construction Material [100] | UDF_G3 | 0 | EE | PRIC | RHCU | EIT2.2 |  | C03c | EIT02.2 |
| 2.2-RHCUEE01-3240 |  | Back Filling | 20d | 2026-11-16 | 2026-12-08 | 2.2-RHCUEE01-3230, 2.2-RHCUEE01-3180 | -7d | 5d | LABOUR [513.74 h]; Cable Pull; Construction Material [200] | UDF_G3 | 0 | EE | PRIC | RHCU | EIT2.2 |  | C03c | EIT02.2 |
|  | 4 | **C03-ETC-256/566/251/450/557/476/257/546/253/241/492/601/477/542/258/472** |  | 2026-09-25 | 2026-12-14 |  |  |  |  |  |  |  |  |  |  |  |  |  |
| 2.2-RHCUEE01-3250 |  | Cable Laying | 30d | 2026-09-25 | 2026-10-29 | 2.2-RHCUEE01-3010 SS | -12d | 0d | LABOUR [800 h]; Cable Pull [5974 h]; Construction Material [300] | UDF_G3 | 0 | EE | PRIC | RHCU | EIT2.2 | PUL | C03c | EIT02.2 |
| 2.2-RHCUEE01-3260 |  | Megger & Continuity test | 5d | 2026-10-30 | 2026-11-04 | 2.2-RHCUEE01-3250 | -12d | 0d | LABOUR [50 h]; Cable Pull; Construction Material [50] | UDF_G3 | 0 | EE | PRIC | RHCU | EIT2.2 |  | C03c | EIT02.2 |
| 2.2-RHCUEE01-3270 |  | punch Clear | 5d | 2026-11-05 | 2026-11-10 | 2.2-RHCUEE01-3260 | -12d | 0d | LABOUR [50 h]; Cable Pull; Construction Material [50] | UDF_G3 | 0 | EE | PRIC | RHCU | EIT2.2 |  | C03c | EIT02.2 |
| 2.2-RHCUEE01-3280 |  | Sand Filling Compaction | 4d | 2026-11-11 | 2026-11-14 | 2.2-RHCUEE01-3270 | -12d | 0d | LABOUR [50 h]; Cable Pull; Construction Material [40] | UDF_G3 | 0 | EE | PRIC | RHCU | EIT2.2 |  |  |  |
| 2.2-RHCUEE01-3290 |  | Complete QA/QC document | 5d | 2026-11-16 | 2026-11-20 | 2.2-RHCUEE01-3280 | -12d | 0d | LABOUR [100 h]; Cable Pull; Construction Material [50] | UDF_G3 | 0 | EE | PRIC | RHCU | EIT2.2 |  | C03c | EIT02.2 |
| 2.2-RHCUEE01-3300 |  | Back Filling | 20d | 2026-11-21 | 2026-12-14 | 2.2-RHCUEE01-3290, 2.2-RHCUEE01-3240 FF | -12d | 0d | LABOUR [513.74 h]; Cable Pull; Construction Material [200] | UDF_G3 | 0 | EE | PRIC | RHCU | EIT2.2 |  | C03c | EIT02.2 |

| ID | WBS | Activity | Duration | Start | Finish | Predecessors | Total float | Free float | Resources | On Schedule Indicator | %Completed | Disciplines | EIT2 Main Activity | Areas | Phases | Cable Pull & Laying | EIT WBS | EIT PKG | Main Activity | WBS | Types |
| --- | --- | --- | --- | --- | --- | --- | --- | --- | --- | --- | --- | --- | --- | --- | --- | --- | --- | --- | --- | --- | --- |
|  | 5 | **C03-ETC-471/487/244/487/535/537/562/495/600/541/265/259/475/263/543/231/262/469/566** |  | 2026-09-25 | 2026-12-14 |  |  |  |  |  |  |  |  |  |  |  |  |  |  |  |  |
| 2.2-RHCUEE01-3310 |  | Cable Laying | 30d | 2026-09-25 | 2026-10-29 | 2.2-RHCUEE01-3250 SS | -12d | 0d | LABOUR [800 h]; Cable Pull [5974 h]; Construction Material [300] | UDF_G3 | 0 | EE | PRIC | RHCU | EIT2.2 | PUL | C03c | EIT02.2 |  |  |  |
| 2.2-RHCUEE01-3320 |  | Megger & Continuity test | 5d | 2026-10-30 | 2026-11-04 | 2.2-RHCUEE01-3310 | -12d | 0d | LABOUR [50 h]; Cable Pull; Construction Material [50] | UDF_G3 | 0 | EE | PRIC | RHCU | EIT2.2 |  | C03c | EIT02.2 |  |  |  |
| 2.2-RHCUEE01-3330 |  | punch Clear | 5d | 2026-11-05 | 2026-11-10 | 2.2-RHCUEE01-3320 | -12d | 0d | LABOUR [50 h]; Cable Pull; Construction Material [50] | UDF_G3 | 0 | EE | PRIC | RHCU | EIT2.2 |  | C03c | EIT02.2 |  |  |  |
| 2.2-RHCUEE01-3340 |  | Sand Filling Compaction | 4d | 2026-11-11 | 2026-11-14 | 2.2-RHCUEE01-3330 | -12d | 0d | LABOUR [50 h]; Cable Pull; Construction Material [40] | UDF_G3 | 0 | EE | PRIC | RHCU | EIT2.2 |  |  |  |  |  |  |
| 2.2-RHCUEE01-3350 |  | Complete QA/QC document | 5d | 2026-11-16 | 2026-11-20 | 2.2-RHCUEE01-3340 | -12d | 0d | LABOUR [100 h]; Cable Pull; Construction Material [50] | UDF_G3 | 0 | EE | PRIC | RHCU | EIT2.2 |  | C03c | EIT02.2 |  |  |  |
| 2.2-RHCUEE01-3360 |  | Back Filling | 20d | 2026-11-21 | 2026-12-14 | 2.2-RHCUEE01-3350, 2.2-RHCUEE01-3300 FF | -12d | 0d | LABOUR [523.74 h]; Cable Pull; Construction Material [200] | UDF_G3 | 0 | EE | PRIC | RHCU | EIT2.2 |  | C03c | EIT02.2 |  |  |  |
|  | 1 | **Electrical Cable Tray/Ladder Installation** |  | 2026-06-19 | 2026-09-25 |  |  |  |  |  |  |  |  |  |  |  |  |  |  |  |  |
| 2.2-RHCUEE03-1200 |  | Install support / bracket | 60d | 2026-06-19 | 2026-08-27 | 2.2-RHCUEE09-1140 | 0d |  | LABOUR [1000 h]; Construction Material [600] | UDF_G3 | 0 | EE | Non | RHCU | EIT2.2 |  | C03a | EIT02.2 | 1 | C03a | TY1 |
| 2.2-RHCUEE03-1210 |  | Install Ladder / Tray | 60d | 2026-06-19 | 2026-08-27 | 2.2-RHCUEE03-1200 SS, 2.2-RHCUEE03-1200 FF | 89d | 0d | LABOUR [5000 h]; Construction Material [600] | UDF_G3 | 0 | EE | Non | RHCU | EIT2.2 |  | C03a | EIT02.2 | 1 | C03a | TY1 |
| 2.2-RHCUEE03-1220 |  | Install Conduits | 60d | 2026-06-19 | 2026-08-27 | 2.2-RHCUEE03-1210 SS | 129d | 0d | LABOUR [1000 h]; Construction Material [600] | UDF_G3 | 0 | EE | Non | RHCU | EIT2.2 |  | C03a | EIT02.2 | 1 | C03a | TY1 |
| 2.2-RHCUEE03-1230 |  | Clear punch | 10d | 2026-08-28 | 2026-09-08 | 2.2-RHCUEE03-1220, 2.2-RHCUEE03-1210 | 129d | 0d | LABOUR [500 h]; Construction Material [100] | UDF_G3 | 0 | EE | Non | RHCU | EIT2.2 |  | C03a | EIT02.2 | 1 | C03a | TY1 |
| 2.2-RHCUEE03-1240 |  | Complete QA/QC document | 15d | 2026-09-09 | 2026-09-25 | 2.2-RHCUEE03-1230 | 129d | 35d | LABOUR [1229.78 h]; Construction Material [150] | UDF_G3 | 0 | EE | Non | RHCU | EIT2.2 |  | C03a | EIT02.2 | 1 | C03a | TY1 |
|  | 9 | **AG Cable Pull LV Cable** |  | 2026-08-28 | 2026-12-04 |  |  |  |  |  |  |  |  |  |  |  |  |  |  |  |  |
| 2.2-RHCUEE01-2740 |  | Pull Cable | 60d | 2026-08-28 | 2026-11-05 | 2.2-RHCUEE03-1210 | 89d | 0d | LABOUR [1826 h]; Cable Pull; Construction Material [600] | UDF_G3 | 0 | EE | SECE | RHCU | EIT2.2 | PUL | C03a | EIT02.2 | 1 | C03a | TY1 |
| 2.2-RHCUEE01-2750 |  | Megger & Continuity test | 10d | 2026-11-06 | 2026-11-17 | 2.2-RHCUEE01-2740, 2.2-RHCUEE03-1240 | 94d | 0d | LABOUR [1826 h]; Cable Pull; Construction Material [100] | UDF_G3 | 0 | EE | SECE | RHCU | EIT2.2 |  | C03a | EIT02.2 | 1 | C03a | TY1 |
| 2.2-RHCUEE01-2760 |  | Complete QA/QC document | 15d | 2026-11-18 | 2026-12-04 | 2.2-RHCUEE01-2750 | 94d | 0d | LABOUR [150 h]; Cable Pull; Construction Material [150] | UDF_G3 | 0 | EE | SECE | RHCU | EIT2.2 |  | C03a | EIT02.2 | 1 | C03a | TY1 |
|  | 10 | **AG Cable Pull Control Cable** |  | 2026-08-28 | 2026-12-04 |  |  |  |  |  |  |  |  |  |  |  |  |  |  |  |  |
| 2.2-RHCUEE01-2770 |  | Pull Cable | 60d | 2026-08-28 | 2026-11-05 | 2.2-RHCUEE01-2740 SS | 89d | 0d | LABOUR [1826 h]; Cable Pull; Construction Material [600] | UDF_G3 | 0 | EE | SECE | RHCU | EIT2.2 | PUL | C03a | EIT02.2 | 1 | C03a | TY1 |
| 2.2-RHCUEE01-2780 |  | Megger & Continuity test | 10d | 2026-11-06 | 2026-11-17 | 2.2-RHCUEE01-2770 | 94d | 0d | LABOUR [1826 h]; Cable Pull; Construction Material [100] | UDF_G3 | 0 | EE | SECE | RHCU | EIT2.2 |  | C03a | EIT02.2 | 1 | C03a | TY1 |
| 2.2-RHCUEE01-2790 |  | Complete QA/QC document | 15d | 2026-11-18 | 2026-12-04 | 2.2-RHCUEE01-2780 | 94d | 0d | LABOUR [150 h]; Cable Pull; Construction Material [150] | UDF_G3 | 0 | EE | SECE | RHCU | EIT2.2 |  | C03a | EIT02.2 | 1 | C03a | TY1 |
|  | 11 | **Lighting Cable** |  | 2026-08-28 | 2027-01-02 |  |  |  |  |  |  |  |  |  |  |  |  |  |  |  |  |
| 2.2-RHCUEE01-2800 |  | Pull Cable | 60d | 2026-08-28 | 2026-11-05 | 2.2-RHCUEE01-2770 SS | 89d | 0d | LABOUR [1826 h]; Construction Material [600] | UDF_G3 | 0 | EE | Non | RHCU | EIT2.2 |  | C03a | EIT02.2 | 1 | C03a | TY1 |
| 2.2-RHCUEE01-2810 |  | Megger & Continuity test | 30d | 2026-11-06 | 2026-12-10 | 2.2-RHCUEE01-2800 | 89d | 0d | LABOUR [1826 h]; Construction Material [300] | UDF_G3 | 0 | EE | Non | RHCU | EIT2.2 |  | C03a | EIT02.2 | 1 | C03a | TY1 |
| 2.2-RHCUEE01-2820 |  | Complete QA/QC document | 20d | 2026-12-11 | 2027-01-02 | 2.2-RHCUEE01-2810 | 89d | 0d | LABOUR [200 h]; Construction Material [200] | UDF_G3 | 0 | EE | Non | RHCU | EIT2.2 |  | C03a | EIT02.2 | 1 | C03a | TY1 |

| ID | WBS | Activity | Duration | Start | Finish | Predecessors | Total float | Free float | Resources | On Schedule Indicator | %Completed | Disciplines | Main Activity | WBS | Types | EIT2 Main Activity | Areas | Phases | EIT WBS | EIT PKG |
| --- | --- | --- | --- | --- | --- | --- | --- | --- | --- | --- | --- | --- | --- | --- | --- | --- | --- | --- | --- | --- |
|  | 4 | **Electrical Cable Termination / Glanding** |  | 2026-12-05 | 2027-02-24 |  |  |  |  |  |  |  |  |  |  |  |  |  |  |  |
|  | 1 | **Termination MV Cable** |  | 2026-12-15 | 2027-02-04 |  |  |  |  |  |  |  |  |  |  |  |  |  |  |  |
| 2.2-RHCUEE02-1480 |  | Cable Termination/Glanding | 30d | 2026-12-15 | 2027-01-18 | 2.2-RHCUEE01-3360 | 57.9d | 0d | Construction Material [300] | UDF_G3 | 0 | EE | 1 | C03a | TY1 | Non | RHCU | EIT2.2 | C03a | EIT02.2 |
| 2.2-RHCUEE02-1490 |  | Clear punch | 5d | 2027-01-19 | 2027-01-23 | 2.2-RHCUEE02-1480 | 57.9d | 0d | Construction Material [50] | UDF_G3 | 0 | EE | 1 | C03a | TY1 | Non | RHCU | EIT2.2 | C03a | EIT02.2 |
| 2.2-RHCUEE02-1500 |  | Complete QA/QC document | 10d | 2027-01-25 | 2027-02-04 | 2.2-RHCUEE02-1490 | 57.9d | 0d | Construction Material [100] | UDF_G3 | 0 | EE | 1 | C03a | TY1 | Non | RHCU | EIT2.2 | C03a | EIT02.2 |
|  | 2 | **Termination LV Cable** |  | 2026-12-05 | 2027-02-06 |  |  |  |  |  |  |  |  |  |  |  |  |  |  |  |
| 2.2-RHCUEE02-1510 |  | Cable Termination/Glanding | 30d | 2026-12-05 | 2027-01-08 | 2.2-RHCUEE01-2760 | 94d | 0d | Construction Material [300] | UDF_G3 | 0 | EE | 1 | C03a | TY1 | Non | RHCU | EIT2.2 | C03a | EIT02.2 |
| 2.2-RHCUEE02-1520 |  | Clear punch | 10d | 2027-01-09 | 2027-01-20 | 2.2-RHCUEE02-1510 | 94d | 0d | Construction Material [100] | UDF_G3 | 0 | EE | 1 | C03a | TY1 | Non | RHCU | EIT2.2 | C03a | EIT02.2 |
| 2.2-RHCUEE02-1530 |  | Complete QA/QC document | 15d | 2027-01-21 | 2027-02-06 | 2.2-RHCUEE02-1520 | 94d | 0d | Construction Material [150] | UDF_G3 | 0 | EE | 1 | C03a | TY1 | Non | RHCU | EIT2.2 | C03a | EIT02.2 |
|  | 3 | **Termination Control Cable** |  | 2026-12-05 | 2027-02-06 |  |  |  |  |  |  |  |  |  |  |  |  |  |  |  |
| 2.2-RHCUEE02-1540 |  | Cable Termination/Glanding | 30d | 2026-12-05 | 2027-01-08 | 2.2-RHCUEE01-2790 | 94d | 0d | Construction Material [300] | UDF_G3 | 0 | EE | 1 | C03a | TY1 | Non | RHCU | EIT2.2 | C03a | EIT02.2 |
| 2.2-RHCUEE02-1550 |  | Clear punch | 10d | 2027-01-09 | 2027-01-20 | 2.2-RHCUEE02-1540 | 94d | 0d | Construction Material [100] | UDF_G3 | 0 | EE | 1 | C03a | TY1 | Non | RHCU | EIT2.2 | C03a | EIT02.2 |
| 2.2-RHCUEE02-1560 |  | Complete QA/QC document | 15d | 2027-01-21 | 2027-02-06 | 2.2-RHCUEE02-1550, 2.2-RHCUEE02-1530 FF | 94d | 5d | Construction Material [150] | UDF_G3 | 0 | EE | 1 | C03a | TY1 | Non | RHCU | EIT2.2 | C03a | EIT02.2 |
|  | 4 | **Termination Lighting Cable** |  | 2027-01-04 | 2027-02-24 |  |  |  |  |  |  |  |  |  |  |  |  |  |  |  |
| 2.2-RHCUEE02-1570 |  | Cable Termination/Glanding | 30d | 2027-01-04 | 2027-02-06 | 2.2-RHCUEE01-2820 | 89d | 0d | Construction Material [300] | UDF_G3 | 0 | EE | 1 | C03a | TY1 | Non | RHCU | EIT2.2 | C03a | EIT02.2 |
| 2.2-RHCUEE02-1580 |  | Clear punch | 5d | 2027-02-08 | 2027-02-12 | 2.2-RHCUEE02-1570 | 89d | 0d | Construction Material [50] | UDF_G3 | 0 | EE | 1 | C03a | TY1 | Non | RHCU | EIT2.2 | C03a | EIT02.2 |
| 2.2-RHCUEE02-1590 |  | Complete QA/QC document | 10d | 2027-02-13 | 2027-02-24 | 2.2-RHCUEE02-1580, 2.2-RHCUEE02-1560 | 89d |  | Construction Material [100] | UDF_G3 | 0 | EE | 1 | C03a | TY1 | Non | RHCU | EIT2.2 | C03a | EIT02.2 |
|  | 7 | **Electrical Earthing / Lightning Installation** |  | 2026-06-19 | 2026-09-25 |  |  |  |  |  |  |  |  |  |  |  |  |  |  |  |
| 2.2-RHCUEE06-1120 |  | Install Equipment Earthing / Inspection PIT / Install earthing pull and Connecttion | 60d | 2026-06-19 | 2026-08-27 | 2.2-RHCUEE03-1200 SS | 130.9d | 0d | LABOUR [3000 h]; Construction Material [600] | UDF_G3 | 0 | EE | 1 | C03a | TY1 | Non | RHCU | EIT2.2 | C03a | EIT02.2 |
| 2.2-RHCUEE06-1130 |  | Punch Clear | 10d | 2026-08-28 | 2026-09-08 | 2.2-RHCUEE06-1120 | 145.9d | 0d | LABOUR [500 h]; Construction Material [100] | UDF_G3 | 0 | EE | 1 | C03a | TY1 | Non | RHCU | EIT2.2 | C03a | EIT02.2 |
| 2.2-RHCUEE06-1140 |  | Complete QA/QC document | 15d | 2026-09-09 | 2026-09-25 | 2.2-RHCUEE06-1130 | 145.9d | 15d | LABOUR [763.82 h]; Construction Material [150] | UDF_G3 | 0 | EE | 1 | C03a | TY1 | Non | RHCU | EIT2.2 | C03a | EIT02.2 |
|  | 5 | **Lighting Fixture Installation** |  | 2026-08-28 | 2026-11-11 |  |  |  |  |  |  |  |  |  |  |  |  |  |  |  |
| 2.2-RHCUEE05-1320 |  | Install support / bracket / Pole | 40d | 2026-08-28 | 2026-10-13 | 2.2-RHCUEE06-1120 | 130.9d | 0d | LABOUR [500 h]; Construction Material [400] | UDF_G3 | 0 | EE | 1 | C03a | TY1 | Non | RHCU | EIT2.2 | C03a | EIT02.2 |
| 2.2-RHCUEE05-1330 |  | lighting fixture | 40d | 2026-08-28 | 2026-10-13 | 2.2-RHCUEE05-1320 SS, 2.2-RHCUEE05-1320 FF | 130.9d | 0d | LABOUR [1500 h]; Construction Material [400] | UDF_G3 | 0 | EE | 1 | C03a | TY1 | Non | RHCU | EIT2.2 | C03a | EIT02.2 |
| 2.2-RHCUEE05-1340 |  | Clear punch | 10d | 2026-10-14 | 2026-10-24 | 2.2-RHCUEE05-1330, 2.2-RHCUEE06-1140 | 130.9d | 0d | LABOUR [50 h]; Construction Material [100] | UDF_G3 | 0 | EE | 1 | C03a | TY1 | Non | RHCU | EIT2.2 | C03a | EIT02.2 |
| 2.2-RHCUEE05-1350 |  | Complete QA/QC document | 15d | 2026-10-26 | 2026-11-11 | 2.2-RHCUEE05-1340 | 130.9d | 0d | LABOUR [116.75 h]; Construction Material [150] | UDF_G3 | 0 | EE | 1 | C03a | TY1 | Non | RHCU | EIT2.2 | C03a | EIT02.2 |

| ID | WBS | Activity | Duration | Start | Finish | Predecessors | Total float | Free float | Calendar | Resources | On Schedule Indicator | %Completed | Disciplines | Main Activity | WBS | Types | EIT2 Main Activity | Areas | Phases | EIT WBS | EIT PKG | Motor Loop | Cable Pull & Laying |
| --- | --- | --- | --- | --- | --- | --- | --- | --- | --- | --- | --- | --- | --- | --- | --- | --- | --- | --- | --- | --- | --- | --- | --- |
|  | 12 | **Small Power Equipment Installation** |  | 2026-08-28 | 2026-11-11 |  |  |  |  |  |  |  |  |  |  |  |  |  |  |  |  |  |  |
| 2.2-RHCUEE05-1360 |  | Install support / bracket | 40d | 2026-08-28 | 2026-10-13 | 2.2-RHCUEE05-1320 SS | 130.9d | 0d |  | LABOUR [500 h]; Construction Material [400] | UDF_G3 | 0 | EE | 1 | C03a | TY1 | Non | RHCU | EIT2.2 | C03a | EIT02.2 |  |  |
| 2.2-RHCUEE05-1370 |  | nstall Distribution panel, convenience outlet | 40d | 2026-08-28 | 2026-10-13 | 2.2-RHCUEE05-1360 SS | 130.9d | 0d |  | LABOUR [1500 h]; Construction Material [400] | UDF_G3 | 0 | EE | 1 | C03a | TY1 | Non | RHCU | EIT2.2 | C03a | EIT02.2 |  |  |
| 2.2-RHCUEE05-1380 |  | Clear punch | 10d | 2026-10-14 | 2026-10-24 | 2.2-RHCUEE05-1370 | 130.9d | 0d |  | LABOUR [50 h]; Construction Material [100] | UDF_G3 | 0 | EE | 1 | C03a | TY1 | Non | RHCU | EIT2.2 | C03a | EIT02.2 |  |  |
| 2.2-RHCUEE05-1390 |  | Complete QA/QC document | 15d | 2026-10-26 | 2026-11-11 | 2.2-RHCUEE05-1380, 2.2-RHCUEE05-1350 FF | 130.9d | 73d |  | LABOUR [116.75 h]; Construction Material [150] | UDF_G3 | 0 | EE | 1 | C03a | TY1 | Non | RHCU | EIT2.2 | C03a | EIT02.2 |  |  |
|  | 2 | **Motor Solo Run** |  | 2027-02-05 | 2027-04-01 |  |  |  |  |  |  |  |  |  |  |  |  |  |  |  |  |  |  |
| 2.2-RHCUEE00-1130 |  | Motor solo run | 25d | 2027-02-05 | 2027-03-05 | 2.2-RHCUEE02-1500, 2.2-RHCUEE05-1390 | 57.9d | 0.1d |  | LABOUR; Construction Material [250] | UDF_G3 | 0 | EE |  |  |  | Non | RHCU | EIT2.2 | C03a | EIT02.2 | MO |  |
| 2.2-RHCUEE00-1140 |  | Punch Clear | 10d | 2027-03-06 | 2027-03-15 | 2.2-RHCUEE00-1130 | 73.88d | 0d | 7 - Day Workweek (No Holidays) | LABOUR; Construction Material [80] | UDF_G3 | 0 | EE |  |  |  | Non | RHCU | EIT2.2 | C03a | EIT02.2 | MO |  |
| 2.2-RHCUEE00-1150 |  | Complete QA/QC document | 15d | 2027-03-15 | 2027-04-01 | 2.2-RHCUEE00-1140 | 58.6d |  |  | LABOUR; Construction Material [150] | UDF_G3 | 0 | EE |  |  |  | Non | RHCU | EIT2.2 | C03a | EIT02.2 | MO |  |
|  | 3 | **Instrument Works** |  | 2026-06-05 | 2027-06-08 |  |  |  |  |  |  |  |  |  |  |  |  |  |  |  |  |  |  |
|  | 10 | **Cable Laying concrete Trench** |  | 2026-06-05 | 2026-12-07 |  |  |  |  |  |  |  |  |  |  |  |  |  |  |  |  |  |  |
|  | 3 | **C03-JTR-221/228/405/222/231/224/225/238/402/403/382/362/376** |  | 2026-06-05 | 2026-09-11 |  |  |  |  |  |  |  |  |  |  |  |  |  |  |  |  |  |  |
| 2.2-RHCUIN01-1540 |  | Cable Laying | 35d | 2026-06-05 | 2026-07-15 | 2.2-RHCUIN01-1420 | -6d | 0d |  | LABOUR [350 h]; Cable Pull [47372 h]; Construction Material [350] | UDF_G3 | 0 | IN |  |  |  | PRICI | RHCU | EIT2.2 | C03c | EIT02.2 |  | PUL |
| 2.2-RHCUIN01-1550 |  | Megger & Continuity test | 5d | 2026-07-16 | 2026-07-21 | 2.2-RHCUIN01-1540 | 9d | 0d |  | LABOUR [50 h]; Cable Pull; Construction Material [50] | UDF_G3 | 0 | IN |  |  |  | PRICI | RHCU | EIT2.2 | C03c | EIT02.2 |  |  |
| 2.2-RHCUIN01-1560 |  | punch Clear | 5d | 2026-07-22 | 2026-07-27 | 2.2-RHCUIN01-1550 | 9d | 0d |  | LABOUR [50 h]; Cable Pull; Construction Material [50] | UDF_G3 | 0 | IN |  |  |  | PRICI | RHCU | EIT2.2 | C03c | EIT02.2 |  |  |
| 2.2-RHCUIN01-1570 |  | Sand Filling Compaction | 10d | 2026-07-28 | 2026-08-07 | 2.2-RHCUIN01-1560 | 9d | 0d |  | LABOUR [100 h]; Cable Pull; Construction Material [100] | UDF_G3 | 0 | IN |  |  |  | PRICI | RHCU | EIT2.2 |  |  |  |  |
| 2.2-RHCUIN01-1580 |  | Complete QA/QC document | 10d | 2026-07-28 | 2026-08-07 | 2.2-RHCUIN01-1570 SS | 9d | 0d |  | LABOUR [100 h]; Cable Pull; Construction Material [100] | UDF_G3 | 0 | IN |  |  |  | PRICI | RHCU | EIT2.2 | C03c | EIT02.2 |  |  |
| 2.2-RHCUIN01-1590 |  | Back Filling | 30d | 2026-08-08 | 2026-09-11 | 2.2-RHCUIN01-1580 | 9d | 5d |  | LABOUR [300 h]; Cable Pull; Construction Material [300] | UDF_G3 | 0 | IN |  |  |  | PRICI | RHCU | EIT2.2 | C03c | EIT02.2 |  |  |
|  | 1 | **C03-JTR-213/209/367/207/206/214/249/251/250/240/368/248/252/401** |  | 2026-07-16 | 2026-10-22 |  |  |  |  |  |  |  |  |  |  |  |  |  |  |  |  |  |  |
| 2.2-RHCUIN01-1600 |  | Cable Laying | 35d | 2026-07-16 | 2026-08-25 | 2.2-RHCUIN01-1540 | -6d | 0d |  | LABOUR [350 h]; Cable Pull [47372 h]; Construction Material [350] | UDF_G3 | 0 | IN |  |  |  | PRICI | RHCU | EIT2.2 | C03c | EIT02.2 |  | PUL |
| 2.2-RHCUIN01-1610 |  | Megger & Continuity test | 5d | 2026-08-26 | 2026-08-31 | 2.2-RHCUIN01-1600 | 4d | 0d |  | LABOUR [50 h]; Cable Pull; Construction Material [50] | UDF_G3 | 0 | IN |  |  |  | PRICI | RHCU | EIT2.2 | C03c | EIT02.2 |  |  |
| 2.2-RHCUIN01-1620 |  | punch Clear | 5d | 2026-09-01 | 2026-09-05 | 2.2-RHCUIN01-1610 | 4d | 0d |  | LABOUR [50 h]; Cable Pull; Construction Material [50] | UDF_G3 | 0 | IN |  |  |  | PRICI | RHCU | EIT2.2 | C03c | EIT02.2 |  |  |
| 2.2-RHCUIN01-1630 |  | Sand Filling Compaction | 10d | 2026-09-07 | 2026-09-17 | 2.2-RHCUIN01-1620 | 4d | 0d |  | LABOUR [100 h]; Cable Pull; Construction Material [100] | UDF_G3 | 0 | IN |  |  |  | PRICI | RHCU | EIT2.2 |  |  |  |  |
| 2.2-RHCUIN01-1640 |  | Complete QA/QC document | 10d | 2026-09-07 | 2026-09-17 | 2.2-RHCUIN01-1630 SS | 4d | 0d |  | LABOUR [100 h]; Cable Pull; Construction Material [100] | UDF_G3 | 0 | IN |  |  |  | PRICI | RHCU | EIT2.2 | C03c | EIT02.2 |  |  |
| 2.2-RHCUIN01-1650 |  | Back Filling | 30d | 2026-09-18 | 2026-10-22 | 2.2-RHCUIN01-1640, 2.2-RHCUIN01-1590 | 4d | 10d |  | LABOUR [300 h]; Cable Pull; Construction Material [300] | UDF_G3 | 0 | IN |  |  |  | PRICI | RHCU | EIT2.2 | C03c | EIT02.2 |  |  |

| ID | WBS | Activity | Duration | Start | Finish | Predecessors | Total float | Free float | Resources | On Schedule Indicator | %Completed | Disciplines | EIT2 Main Activity | Areas | Phases | Cable Pull & Laying | EIT WBS | EIT PKG | Main Activity | WBS | Types |
| --- | --- | --- | --- | --- | --- | --- | --- | --- | --- | --- | --- | --- | --- | --- | --- | --- | --- | --- | --- | --- | --- |
|  | 2 | **C03-JTR-369/372/370/371/374/253/235/234/233/232/245/243/253** |  | 2026-08-26 | 2026-12-07 |  |  |  |  |  |  |  |  |  |  |  |  |  |  |  |  |
| 2.2-RHCUIN01-1660 |  | Cable Laying | 40d | 2026-08-26 | 2026-10-10 | 2.2-RHCUIN01-1600 | -6d | 0d | LABOUR [400 h]; Cable Pull [47372 h]; Construction Material [400] | UDF_G3 | 0 | IN | PRICI | RHCU | EIT2.2 | PUL | C03c | EIT02.2 |  |  |  |
| 2.2-RHCUIN01-1670 |  | Megger & Continuity test | 5d | 2026-10-12 | 2026-10-16 | 2.2-RHCUIN01-1660 | -6d | 0d | LABOUR [50 h]; Cable Pull; Construction Material [50] | UDF_G3 | 0 | IN | PRICI | RHCU | EIT2.2 |  | C03c | EIT02.2 |  |  |  |
| 2.2-RHCUIN01-1680 |  | punch Clear | 5d | 2026-10-17 | 2026-10-22 | 2.2-RHCUIN01-1670 | -6d | 0d | LABOUR [50 h]; Cable Pull; Construction Material [50] | UDF_G3 | 0 | IN | PRICI | RHCU | EIT2.2 |  | C03c | EIT02.2 |  |  |  |
| 2.2-RHCUIN01-1690 |  | Sand Filling Compaction | 10d | 2026-10-23 | 2026-11-03 | 2.2-RHCUIN01-1680 | -6d | 0d | LABOUR [100 h]; Cable Pull; Construction Material [100] | UDF_G3 | 0 | IN | PRICI | RHCU | EIT2.2 |  |  |  |  |  |  |
| 2.2-RHCUIN01-1700 |  | Complete QA/QC document | 10d | 2026-10-23 | 2026-11-03 | 2.2-RHCUIN01-1690 SS | -6d | 0d | LABOUR [100 h]; Cable Pull; Construction Material [100] | UDF_G3 | 0 | IN | PRICI | RHCU | EIT2.2 |  | C03c | EIT02.2 |  |  |  |
| 2.2-RHCUIN01-1710 |  | Back Filling | 29d | 2026-11-04 | 2026-12-07 | 2.2-RHCUIN01-1700, 2.2-RHCUIN01-1650 | -6d | 6d | LABOUR [290 h]; Cable Pull; Construction Material [290] | UDF_G3 | 0 | IN | PRICI | RHCU | EIT2.2 |  | C03c | EIT02.2 |  |  |  |
|  | 3 | **Instrument Cable Tray/Ladder Installation** |  | 2026-06-05 | 2026-09-11 |  |  |  |  |  |  |  |  |  |  |  |  |  |  |  |  |
| 2.2-RHCUIN03-1200 |  | Install support / bracket | 60d | 2026-06-05 | 2026-08-13 | 2.2-RHCUIN01-1540 SS | 2d | 0d | LABOUR [1000 h]; Construction Material [600] | UDF_G3 | 0 | EE | Non | RHCU | EIT2.2 |  | C03a | EIT02.2 | 1 | C03a | TY1 |
| 2.2-RHCUIN03-1210 |  | Install Ladder / Tray | 60d | 2026-06-05 | 2026-08-13 | 2.2-RHCUIN03-1220 SS | 2d | 0d | LABOUR [3000 h]; Construction Material [600] | UDF_G3 | 0 | EE | Non | RHCU | EIT2.2 |  | C03a | EIT02.2 | 1 | C03a | TY1 |
| 2.2-RHCUIN03-1220 |  | Steel Conduits for Cable tray | 60d | 2026-06-05 | 2026-08-13 | 2.2-RHCUIN03-1200 SS | 2d | 0d | LABOUR [1000 h]; Construction Material [600] | UDF_G3 | 0 | EE | Non | RHCU | EIT2.2 |  | C03a | EIT02.2 | 1 | C03a | TY1 |
| 2.2-RHCUIN03-1230 |  | punch clear | 10d | 2026-08-14 | 2026-08-25 | 2.2-RHCUIN03-1210, 2.2-RHCUIN03-1220 | 2d | 0d | LABOUR [200 h]; Construction Material [100] | UDF_G3 | 0 | EE | Non | RHCU | EIT2.2 |  | C03a | EIT02.2 | 1 | C03a | TY1 |
| 2.2-RHCUIN03-1240 |  | Complete QA/QC document | 15d | 2026-08-26 | 2026-09-11 | 2.2-RHCUIN03-1230 | 2d | 0d | LABOUR [392.97 h]; Construction Material [150] | UDF_G3 | 0 | EE | Non | RHCU | EIT2.2 |  | C03a | EIT02.2 | 1 | C03a | TY1 |
|  | 8 | **AG Cable Pull Primary Cable** |  | 2026-09-12 | 2026-12-19 |  |  |  |  |  |  |  |  |  |  |  |  |  |  |  |  |
| 2.2-RHCUIN01-1480 |  | Pull Cable | 60d | 2026-09-12 | 2026-11-20 | 2.2-RHCUIN03-1240 | 2d | 0d | LABOUR [1826 h]; Cable Pull; Construction Material [600] | UDF_G3 | 0 | EE | SECI | RHCU | EIT2.2 | PUL | C03a | EIT02.2 | 1 | C03a | TY1 |
| 2.2-RHCUIN01-1490 |  | Megger & Continuity test | 10d | 2026-11-21 | 2026-12-02 | 2.2-RHCUIN01-1480 | 2d | 0d | LABOUR [1826 h]; Cable Pull; Construction Material [100] | UDF_G3 | 0 | EE | SECI | RHCU | EIT2.2 |  | C03a | EIT02.2 | 1 | C03a | TY1 |
| 2.2-RHCUIN01-1500 |  | Complete QA/QC document | 15d | 2026-12-03 | 2026-12-19 | 2.2-RHCUIN01-1490, 2.2-RHCUIN01-1710 FF | 2d | 0d | LABOUR [150 h]; Cable Pull; Construction Material [150] | UDF_G3 | 0 | EE | SECI | RHCU | EIT2.2 |  | C03a | EIT02.2 | 1 | C03a | TY1 |
|  | 9 | **AG Cable Pull Secondary Cable** |  | 2026-09-12 | 2026-12-19 |  |  |  |  |  |  |  |  |  |  |  |  |  |  |  |  |
| 2.2-RHCUIN01-1510 |  | Pull Cable | 60d | 2026-09-12 | 2026-11-20 | 2.2-RHCUIN01-1480 SS | 2d | 0d | LABOUR [1826 h]; Cable Pull; Construction Material [600] | UDF_G3 | 0 | EE | SECI | RHCU | EIT2.2 | PUL | C03a | EIT02.2 | 1 | C03a | TY1 |
| 2.2-RHCUIN01-1520 |  | Megger & Continuity test | 10d | 2026-11-21 | 2026-12-02 | 2.2-RHCUIN01-1510 | 2d | 0d | LABOUR [1826 h]; Cable Pull; Construction Material [100] | UDF_G3 | 0 | EE | SECI | RHCU | EIT2.2 |  | C03a | EIT02.2 | 1 | C03a | TY1 |
| 2.2-RHCUIN01-1530 |  | Complete QA/QC document | 15d | 2026-12-03 | 2026-12-19 | 2.2-RHCUIN01-1520, 2.2-RHCUIN01-1500 FF | 2d | 0d | LABOUR [150 h]; Cable Pull; Construction Material [150] | UDF_G3 | 0 | EE | SECI | RHCU | EIT2.2 |  | C03a | EIT02.2 | 1 | C03a | TY1 |
|  | 2 | **Instrument Cable Termination / Glanding** |  | 2026-10-12 | 2027-03-05 |  |  |  |  |  |  |  |  |  |  |  |  |  |  |  |  |
|  | 1 | **UG Cable Termination Cable** |  | 2026-10-12 | 2026-12-08 |  |  |  |  |  |  |  |  |  |  |  |  |  |  |  |  |
| 2.2-RHCUIN02-1420 |  | Cable Termination/Glanding | 25d | 2026-10-12 | 2026-11-09 | 2.2-RHCUIN01-1660 | 12d | 0d | LABOUR [3000 h]; Construction Material [250] | UDF_G3 | 0 | EE | Non | RHCU | EIT2.2 |  | C03a | EIT02.2 | 1 | C03a | TY1 |
| 2.2-RHCUIN02-1430 |  | punch clear | 10d | 2026-11-10 | 2026-11-20 | 2.2-RHCUIN02-1420 | 12d | 0d | LABOUR [500 h]; Construction Material [100] | UDF_G3 | 0 | EE | Non | RHCU | EIT2.2 |  | C03a | EIT02.2 | 1 | C03a | TY1 |
| 2.2-RHCUIN02-1440 |  | Complete QA/QC document | 15d | 2026-11-21 | 2026-12-08 | 2.2-RHCUIN02-1430 | 12d | 10d | LABOUR [907.72 h]; Construction Material [150] | UDF_G3 | 0 | EE | Non | RHCU | EIT2.2 |  | C03a | EIT02.2 | 1 | C03a | TY1 |

| ID | WBS | Activity | Duration | Start | Finish | Predecessors | Total float | Free float | Resources | On Schedule Indicator | %Completed | Disciplines | Main Activity | WBS | Types | EIT2 Main Activity | Areas | Phases | EIT WBS | EIT PKG |
| --- | --- | --- | --- | --- | --- | --- | --- | --- | --- | --- | --- | --- | --- | --- | --- | --- | --- | --- | --- | --- |
|  | 8 | **Cable Termination Primary Cable** |  | 2026-12-21 | 2027-02-16 |  |  |  |  |  |  |  |  |  |  |  |  |  |  |  |
| 2.2-RHCUIN02-1240 |  | Cable Termination/Glanding | 25d | 2026-12-21 | 2027-01-18 | 2.2-RHCUIN01-1500, 2.2-RHCUIN02-1440, 2.2-RHCUIN01-1530 | 2d | 0d | LABOUR [3000 h]; Construction Material [250] | UDF_G3 | 0 | EE | 1 | C03a | TY1 | Non | RHCU | EIT2.2 | C03a | EIT02.2 |
| 2.2-RHCUIN02-1250 |  | punch clear | 10d | 2027-01-19 | 2027-01-29 | 2.2-RHCUIN02-1240 | 2d | 0d | LABOUR [500 h]; Construction Material [100] | UDF_G3 | 0 | EE | 1 | C03a | TY1 | Non | RHCU | EIT2.2 | C03a | EIT02.2 |
| 2.2-RHCUIN02-1260 |  | Complete QA/QC document | 15d | 2027-01-30 | 2027-02-16 | 2.2-RHCUIN02-1250 | 2d | 0d | LABOUR [907.72 h]; Construction Material [150] | UDF_G3 | 0 | EE | 1 | C03a | TY1 | Non | RHCU | EIT2.2 | C03a | EIT02.2 |
|  | 9 | **Cable Termination Secondary Cable** |  | 2026-12-21 | 2027-03-05 |  |  |  |  |  |  |  |  |  |  |  |  |  |  |  |
| 2.2-RHCUIN02-1270 |  | Cable Termination/Glanding | 35d | 2026-12-21 | 2027-01-29 | 2.2-RHCUIN01-1530, 2.2-RHCUIN05-1040 | 2d | 0d | LABOUR [3000 h]; Construction Material [350] | UDF_G3 | 0 | EE | 1 | C03a | TY1 | Non | RHCU | EIT2.2 | C03a | EIT02.2 |
| 2.2-RHCUIN02-1280 |  | punch clear | 15d | 2027-01-30 | 2027-02-16 | 2.2-RHCUIN02-1270 | 2d | 0d | LABOUR [500 h]; Construction Material [150] | UDF_G3 | 0 | EE | 1 | C03a | TY1 | Non | RHCU | EIT2.2 | C03a | EIT02.2 |
| 2.2-RHCUIN02-1290 |  | Complete QA/QC document | 15d | 2027-02-17 | 2027-03-05 | 2.2-RHCUIN02-1280, 2.2-RHCUIN02-1260 | 2d |  | LABOUR [907.72 h]; Construction Material [150] | UDF_G3 | 0 | EE | 1 | C03a | TY1 | Non | RHCU | EIT2.2 | C03a | EIT02.2 |
|  | 4 | **Instrument Calibration** |  | 2026-07-16 | 2026-08-31 |  |  |  |  |  |  |  |  |  |  |  |  |  |  |  |
| 2.2-RHCUIN05-1040 |  | Calibration of Gauges | 40d | 2026-07-16 | 2026-08-31 | 2.2-RHCUIN01-1540 | 97d | 0d | LABOUR [3000 h]; Construction Material [400] | UDF_G3 | 0 | EE | 1 | C03a | TY1 | Non | RHCU | EIT2.2 | C03c | EIT02.2 |
| 2.2-RHCUIN05-1090 |  | Calibration of Transmitters/Switches | 4d | 2026-07-16 | 2026-07-20 | 2.2-RHCUIN05-1040 SS | 110.3d | 0d | LABOUR [4396.55 h]; Construction Material [40] | UDF_G3 | 0 | IN |  |  |  | Non | RHCU | EIT2.2 |  |  |
|  | 1 | **Gauges** |  | 2026-07-16 | 2026-08-31 |  |  |  |  |  |  |  |  |  |  |  |  |  |  |  |
| 2.2-RHCUIN04-1605 |  | D.P Pressure Gauge Installation | 10d | 2026-07-16 | 2026-07-27 | 2.2-RHCUIN05-1040 SS | 140.3d | 0d | LABOUR [750 h]; Construction Material [100] | UDF_G3 | 0 | IN |  |  |  | Non | RHCU | EIT2.2 |  |  |
| 2.2-RHCUIN04-1610 |  | Pressure Gauge Installation | 10d | 2026-07-28 | 2026-08-07 | 2.2-RHCUIN04-1605 | 140.3d | 0d | LABOUR [750 h]; Construction Material [100] | UDF_G3 | 0 | EE | 1 | C03a | TY1 | Non | RHCU | EIT2.2 | C03c | EIT02.2 |
| 2.2-RHCUIN04-1620 |  | Level Gauge Installation | 10d | 2026-08-08 | 2026-08-19 | 2.2-RHCUIN04-1610 | 140.3d | 0d | LABOUR [1000 h]; Construction Material [100] | UDF_G3 | 0 | EE | 1 | C03a | TY1 | Non | RHCU | EIT2.2 | C03c | EIT02.2 |
| 2.2-RHCUIN04-1630 |  | Clear punch | 5d | 2026-08-20 | 2026-08-25 | 2.2-RHCUIN04-1620 | 140.3d | 0d | LABOUR [200 h]; Construction Material [50] | UDF_G3 | 0 | EE | 1 | C03a | TY1 | Non | RHCU | EIT2.2 | C03c | EIT02.2 |
| 2.2-RHCUIN04-1640 |  | Complete QA/QC document | 5d | 2026-08-26 | 2026-08-31 | 2.2-RHCUIN04-1630 | 140.3d | 20d | LABOUR [296.58 h]; Construction Material [50] | UDF_G3 | 0 | EE | 1 | C03a | TY1 | Non | RHCU | EIT2.2 | C03c | EIT02.2 |
|  | 6 | **Transmitters/Switches** |  | 2026-07-16 | 2026-09-23 |  |  |  |  |  |  |  |  |  |  |  |  |  |  |  |
| 2.2-RHCUIN04-1650 |  | Install support / bracket | 10d | 2026-07-16 | 2026-07-27 | 2.2-RHCUIN05-1090 SS | 110.3d | 0d | LABOUR [300 h]; Construction Material [100] | UDF_G3 | 0 | EE | 1 | C03a | TY1 | Non | RHCU | EIT2.2 | C03c | EIT02.2 |
| 2.2-RHCUIN04-1660 |  | Pressure transmitters Installation | 10d | 2026-07-28 | 2026-08-07 | 2.2-RHCUIN04-1650 | 110.3d | 0d | LABOUR [500 h]; Construction Material [100] | UDF_G3 | 0 | EE | 1 | C03a | TY1 | Non | RHCU | EIT2.2 | C03c | EIT02.2 |
| 2.2-RHCUIN04-1670 |  | D.P. Transmitters - HART Installation | 10d | 2026-08-08 | 2026-08-19 | 2.2-RHCUIN04-1660 | 110.3d | 0d | LABOUR [500 h]; Construction Material [100] | UDF_G3 | 0 | EE | 1 | C03a | TY1 | Non | RHCU | EIT2.2 | C03c | EIT02.2 |
| 2.2-RHCUIN04-1680 |  | Temperature Transmitters Installation | 10d | 2026-08-20 | 2026-08-31 | 2.2-RHCUIN04-1670 | 120.3d | 0d | LABOUR [500 h]; Construction Material [100] | UDF_G3 | 0 | EE | 1 | C03a | TY1 | Non | RHCU | EIT2.2 | C03c | EIT02.2 |
| 2.2-RHCUIN04-1730 |  | Level Switch Installation | 10d | 2026-09-01 | 2026-09-11 | 2.2-RHCUIN04-1680 | 120.3d | 0d | LABOUR [500 h]; Construction Material [100] | UDF_G3 | 0 | IN |  |  |  | Non | RHCU | EIT2.2 |  |  |
| 2.2-RHCUIN04-1740 |  | Clear punch | 5d | 2026-09-12 | 2026-09-17 | 2.2-RHCUIN04-1730 | 120.3d | 0d | LABOUR [200 h]; Construction Material [50] | UDF_G3 | 0 | IN |  |  |  | Non | RHCU | EIT2.2 |  |  |
| 2.2-RHCUIN04-1750 |  | Complete QA/QC document | 5d | 2026-09-18 | 2026-09-23 | 2.2-RHCUIN04-1740, 2.2-RHCUIN04-1640 FF | 120.3d | 10d | LABOUR [496.58 h]; Construction Material [50] | UDF_G3 | 0 | IN |  |  |  | Non | RHCU | EIT2.2 |  |  |

| ID | WBS | Activity | Duration | Start | Finish | Predecessors | Total float | Free float | Calendar | Resources | On Schedule Indicator | %Completed | Disciplines | Main Activity | WBS | Types | EIT2 Main Activity | Areas | Phases | EIT WBS | EIT PKG | Motor Loop |
| --- | --- | --- | --- | --- | --- | --- | --- | --- | --- | --- | --- | --- | --- | --- | --- | --- | --- | --- | --- | --- | --- | --- |
|  | 11 | **Instrument Junction Box Installation** |  | 2026-07-28 | 2026-08-24 |  |  |  |  |  |  |  |  |  |  |  |  |  |  |  |  |  |
| 2.2-RHCUIN04-1690 |  | Install support / bracket | 10d | 2026-07-28 | 2026-08-07 | 2.2-RHCUIN04-1650 | 126.3d | 0d |  | LABOUR [1000 h]; Construction Material [100] | UDF_G3 | 0 | EE | 1 | C03a | TY1 | Non | RHCU | EIT2.2 | C03c | EIT02.2 |  |
| 2.2-RHCUIN04-1700 |  | Instrument Junction Box Installation | 10d | 2026-08-08 | 2026-08-19 | 2.2-RHCUIN04-1690 | 126.3d | 0d |  | LABOUR [1500 h]; Construction Material [100] | UDF_G3 | 0 | EE | 1 | C03a | TY1 | Non | RHCU | EIT2.2 | C03c | EIT02.2 |  |
| 2.2-RHCUIN04-1710 |  | Clear punch | 2d | 2026-08-20 | 2026-08-21 | 2.2-RHCUIN04-1700 | 126.3d | 0d |  | LABOUR [300 h]; Construction Material [20] | UDF_G3 | 0 | EE | 1 | C03a | TY1 | Non | RHCU | EIT2.2 | C03c | EIT02.2 |  |
| 2.2-RHCUIN04-1720 |  | Complete QA/QC document | 2d | 2026-08-22 | 2026-08-24 | 2.2-RHCUIN04-1710 | 126.3d | 16d |  | LABOUR [196.58 h]; Construction Material [20] | UDF_G3 | 0 | EE | 1 | C03a | TY1 | Non | RHCU | EIT2.2 | C03c | EIT02.2 |  |
|  | 5 | **Tubing** |  | 2026-08-20 | 2026-10-30 |  |  |  |  |  |  |  |  |  |  |  |  |  |  |  |  |  |
| 2.2-RHCUIN07-1160 |  | Instrument Hook up Tubing Installation | 20d | 2026-08-20 | 2026-09-11 | 2.2-RHCUIN04-1660, 2.2-RHCUIN04-1670 | 110.3d | 0d |  | LABOUR [100 h]; Construction Material [200] | UDF_G3 | 0 | IN |  |  |  | Non | RHCU | EIT2.2 | C03c | EIT02.2 |  |
| 2.2-RHCUIN07-1170 |  | Leak Test | 20d | 2026-09-12 | 2026-10-05 | 2.2-RHCUIN07-1160, 2.2-RHCUIN04-1720 | 110.3d | 0d |  | LABOUR [30 h]; Construction Material [200] | UDF_G3 | 0 | IN |  |  |  | Non | RHCU | EIT2.2 | C03c | EIT02.2 |  |
| 2.2-RHCUIN07-1180 |  | Clear Punch | 10d | 2026-10-06 | 2026-10-16 | 2.2-RHCUIN07-1170, 2.2-RHCUIN04-1750 | 110.3d | 0.1d |  | LABOUR [20 h]; Construction Material [100] | UDF_G3 | 0 | IN |  |  |  | Non | RHCU | EIT2.2 | C03c | EIT02.2 |  |
| 2.2-RHCUIN07-1190 |  | Complete QA/QC document | 15d | 2026-10-17 | 2026-10-30 | 2.2-RHCUIN07-1180 | 140.62d |  | 7 - Day Workweek (No Holidays) | LABOUR [29.2 h]; Construction Material [120] | UDF_G3 | 0 | IN |  |  |  | Non | RHCU | EIT2.2 | C03c | EIT02.2 |  |
|  | 7 | **Instrument Loop Check** |  | 2027-03-09 | 2027-06-08 |  |  |  |  |  |  |  |  |  |  |  |  |  |  |  |  |  |
| 2.2-RHCUIN00-1120 |  | Instrument Loop check | 50d | 2027-03-09 | 2027-05-05 | 2.2-RHCUIN02-1290, 2.2-RHCUIN07-1190, 2.2-RHCUTE03-1200, 2.2-RHCUTE02-1140 | 0d |  |  | LABOUR [3000 h]; Construction Material [500] | UDF_G3 | 0 | IN |  |  |  | Non | RHCU | EIT2.2 | C03c | EIT02.2 | LO |
| 2.2-RHCUIN00-1130 |  | Clear Punch | 10d | 2027-05-06 | 2027-05-17 | 2.2-RHCUIN00-1120 | 0d |  |  | LABOUR [1000 h]; Construction Material [100] | UDF_G3 | 0 | IN |  |  |  | Non | RHCU | EIT2.2 | C03c | EIT02.2 | LO |
| 2.2-RHCUIN00-1140 |  | Complete QA/QC document | 19d | 2027-05-18 | 2027-06-08 | 2.2-RHCUIN00-1130 | 0d |  |  | LABOUR [1281.31 h]; Construction Material [190] | UDF_G3 | 0 | IN |  |  |  | Non | RHCU | EIT2.2 | C03c | EIT02.2 | LO |
|  | 5 | **Telecommunication** |  | 2026-08-28 | 2027-03-08 |  |  |  |  |  |  |  |  |  |  |  |  |  |  |  |  |  |
|  | 3 | **Telecom** |  | 2026-08-28 | 2027-03-08 |  |  |  |  |  |  |  |  |  |  |  |  |  |  |  |  |  |
|  | 3 | **Telecom Cable Tray/Ladder Installation** |  | 2026-08-28 | 2026-11-17 |  |  |  |  |  |  |  |  |  |  |  |  |  |  |  |  |  |
| 2.2-RHCUTE03-1200 |  | Install support / bracket | 50d | 2026-08-28 | 2026-10-24 | 2.2-RHCUEE03-1200 | 0d |  |  | LABOUR [3 h]; Construction Material [500] | UDF_G3 | 0 | EE | 1 | C03a | TY1 | Non | RHCU | EIT2.2 | C03a | EIT02.2 |  |
| 2.2-RHCUTE03-1210 |  | Install Ladder / Tray | 50d | 2026-08-28 | 2026-10-24 | 2.2-RHCUTE03-1200 SS, 2.2-RHCUTE03-1200 FF | 0d |  |  | LABOUR [77 h]; Construction Material [500] | UDF_G3 | 0 | EE | 1 | C03a | TY1 | Non | RHCU | EIT2.2 | C03a | EIT02.2 |  |
| 2.2-RHCUTE03-1220 |  | Install Conduits | 50d | 2026-08-28 | 2026-10-24 | 2.2-RHCUTE03-1210 SS | 0d |  |  | LABOUR [3 h]; Construction Material [500] | UDF_G3 | 0 | EE | 1 | C03a | TY1 | Non | RHCU | EIT2.2 | C03a | EIT02.2 |  |
| 2.2-RHCUTE03-1230 |  | Clear punch | 5d | 2026-10-26 | 2026-10-30 | 2.2-RHCUTE03-1220, 2.2-RHCUTE03-1210 | 0d |  |  | LABOUR [75 h]; Construction Material [50] | UDF_G3 | 0 | EE | 1 | C03a | TY1 | Non | RHCU | EIT2.2 | C03a | EIT02.2 |  |
| 2.2-RHCUTE03-1240 |  | Complete QA/QC document | 15d | 2026-10-31 | 2026-11-17 | 2.2-RHCUTE03-1230 | 0d |  |  | LABOUR [75 h]; Construction Material [150] | UDF_G3 | 0 | EE | 1 | C03a | TY1 | Non | RHCU | EIT2.2 | C03a | EIT02.2 |  |
|  | 1 | **AG Telecommunication Cable Installation** |  | 2026-11-18 | 2027-01-20 |  |  |  |  |  |  |  |  |  |  |  |  |  |  |  |  |  |
| 2.2-RHCUTE01-1120 |  | Above Ground Pull Cable | 30d | 2026-11-18 | 2026-12-22 | 2.2-RHCUTE03-1240 | 0d |  |  | LABOUR [1000 h]; Construction Material [300] | UDF_G3 | 0 | EE | 1 | C03a | TY1 | Non | RHCU | EIT2.2 | C03a | EIT02.2 |  |
| 2.2-RHCUTE01-1130 |  | Megger & Continuity test | 10d | 2026-12-23 | 2027-01-02 | 2.2-RHCUTE01-1120 | 0d |  |  | LABOUR [200 h]; Construction Material [100] | UDF_G3 | 0 | EE | 1 | C03a | TY1 | Non | RHCU | EIT2.2 | C03a | EIT02.2 |  |
| 2.2-RHCUTE01-1140 |  | Complete QA/QC document | 15d | 2027-01-04 | 2027-01-20 | 2.2-RHCUTE01-1130 | 0d |  |  | LABOUR [100 h]; Construction Material [150] | UDF_G3 | 0 | EE | 1 | C03a | TY1 | Non | RHCU | EIT2.2 | C03a | EIT02.2 |  |

| ID | WBS | Activity | Duration | Start | Finish | Predecessors | Total float | Free float | Constraint | Resources | On Schedule Indicator | %Completed | Disciplines | Main Activity | WBS | Types | EIT2 Main Activity | Areas | Phases | EIT WBS | EIT PKG |
| --- | --- | --- | --- | --- | --- | --- | --- | --- | --- | --- | --- | --- | --- | --- | --- | --- | --- | --- | --- | --- | --- |
|  | 4 | **Telecommunication Termination / Glanding** |  | 2027-01-21 | 2027-03-08 |  |  |  |  |  |  |  |  |  |  |  |  |  |  |  |  |
| 2.2-RHCUTE02-1120 |  | Cable Termination/Glanding | 20d | 2027-01-21 | 2027-02-12 | 2.2-RHCUTE01-1140, 2.2-RHCUTE01-1140 FF | 0d |  |  | LABOUR [200 h]; Construction Material [200] | UDF_G3 | 0 | EE | 1 | C03a | TY1 | Non | RHCU | EIT2.2 | C03a | EIT02.2 |
| 2.2-RHCUTE02-1130 |  | Clear punch | 10d | 2027-02-13 | 2027-02-24 | 2.2-RHCUTE02-1120 | 0d |  |  | LABOUR [100 h]; Construction Material [100] | UDF_G3 | 0 | EE | 1 | C03a | TY1 | Non | RHCU | EIT2.2 | C03a | EIT02.2 |
| 2.2-RHCUTE02-1140 |  | Complete QA/QC document | 10d | 2027-02-25 | 2027-03-08 | 2.2-RHCUTE02-1130, 2.2-RHCUTE04-1140 | 0d |  |  | LABOUR [233.99 h]; Construction Material [100] | UDF_G3 | 0 | EE | 1 | C03a | TY1 | Non | RHCU | EIT2.2 | C03a | EIT02.2 |
|  | 2 | **Telecommunication Equipment Installation** |  | 2026-11-18 | 2027-01-20 |  |  |  |  |  |  |  |  |  |  |  |  |  |  |  |  |
| 2.2-RHCUTE04-1120 |  | Telecom Equpiment Installation | 30d | 2026-11-18 | 2026-12-22 | 2.2-RHCUTE03-1240 | 30d | 0d |  | LABOUR [120 h]; Construction Material [300] | UDF_G3 | 0 | EE | 1 | C03a | TY1 | Non | RHCU | EIT2.2 | C03a | EIT02.2 |
| 2.2-RHCUTE04-1130 |  | Clear Punch | 10d | 2026-12-23 | 2027-01-02 | 2.2-RHCUTE04-1120 | 30d | 0d |  | LABOUR [30 h]; Construction Material [100] | UDF_G3 | 0 | EE | 1 | C03a | TY1 | Non | RHCU | EIT2.2 | C03a | EIT02.2 |
| 2.2-RHCUTE04-1140 |  | Complete QA/QC document | 15d | 2027-01-04 | 2027-01-20 | 2.2-RHCUTE04-1130 | 30d |  |  | LABOUR [40.57 h]; Construction Material [150] | UDF_G3 | 0 | EE | 1 | C03a | TY1 | Non | RHCU | EIT2.2 | C03a | EIT02.2 |
|  | 7 | **WBS : E06** |  | 2026-05-15 | 2026-07-10 |  |  |  |  |  |  |  |  |  |  |  |  |  |  |  |  |
|  | 4 | **Substation SS-077** |  | 2026-05-15 | 2026-07-10 |  |  |  |  |  |  |  |  |  |  |  |  |  |  |  |  |
|  | 1 | **Electrical** |  | 2026-05-15 | 2026-07-10 |  |  |  |  |  |  |  |  |  |  |  |  |  |  |  |  |
|  | 2 | **Electrical Equpiment Inspection Testing** |  | 2026-05-15 | 2026-07-10 |  |  |  |  |  |  |  |  |  |  |  |  |  |  |  |  |
|  | 5 | **Lighting Panel** |  | 2026-05-15 | 2026-05-26 |  |  |  |  |  |  |  |  |  |  |  |  |  |  |  |  |
|  | 9 | **S77E21-1 - Normal Lighting Distribution Board** |  | 2026-05-15 | 2026-05-26 |  |  |  |  |  |  |  |  |  |  |  |  |  |  |  |  |
| 2.2-SS077EE04-1000 |  | Inspection and Testing, Per-Commissionning | 5d | 2026-05-15 | 2026-05-20 |  | -37d | 0d | start on or after 2026-04-01 | LABOUR [3 h]; Construction Material [50] | UDF_G3 | 0 | EE | 1 | C03a | TY1 | Non | SS077 | EIT2.2 | E06 | EIT02.1 |
| 2.2-SS077EE04-1010 |  | Clear punch | 2d | 2026-05-21 | 2026-05-22 | 2.2-SS077EE04-1000 | -37d | 0d |  | LABOUR [75 h]; Construction Material [20] | UDF_G3 | 0 | EE | 1 | C03a | TY1 | Non | SS077 | EIT2.2 | E06 | EIT02.1 |
| 2.2-SS077EE04-1020 |  | Complete QA/QC document | 3d | 2026-05-23 | 2026-05-26 | 2.2-SS077EE04-1010 | -37d | 0d |  | LABOUR [75 h]; Construction Material [30] | UDF_G3 | 0 | EE | 1 | C03a | TY1 | Non | SS077 | EIT2.2 | E06 | EIT02.1 |
|  | 1 | **HV/LV Switchgear** |  | 2026-05-23 | 2026-06-03 |  |  |  |  |  |  |  |  |  |  |  |  |  |  |  |  |
|  | 1 | **S77B2 11kV Switchgear Panel** |  | 2026-05-23 | 2026-06-03 |  |  |  |  |  |  |  |  |  |  |  |  |  |  |  |  |
| 2.2-SS077EE04-1030 |  | Inspection and Testing, Per-Commissionning | 5d | 2026-05-23 | 2026-05-28 | 2.2-SS077EE04-1020 SS | -37d | 0d |  | LABOUR [3 h]; Construction Material [50] | UDF_G3 | 0 | EE | 1 | C03a | TY1 | Non | SS077 | EIT2.2 | E06 | EIT02.1 |
| 2.2-SS077EE04-1040 |  | Clear punch | 2d | 2026-05-29 | 2026-05-30 | 2.2-SS077EE04-1030 | -37d | 0d |  | LABOUR [75 h]; Construction Material [20] | UDF_G3 | 0 | EE | 1 | C03a | TY1 | Non | SS077 | EIT2.2 | E06 | EIT02.1 |
| 2.2-SS077EE04-1050 |  | Complete QA/QC document | 3d | 2026-06-01 | 2026-06-03 | 2.2-SS077EE04-1040 | -37d | 0d |  | LABOUR [75 h]; Construction Material [30] | UDF_G3 | 0 | EE | 1 | C03a | TY1 | Non | SS077 | EIT2.2 | E06 | EIT02.1 |
|  | 7 | **S77D2 3.3kV Switchgear Panel** |  | 2026-05-23 | 2026-06-03 |  |  |  |  |  |  |  |  |  |  |  |  |  |  |  |  |
| 2.2-SS077EE04-1060 |  | Inspection and Testing, Per-Commissionning | 5d | 2026-05-23 | 2026-05-28 | 2.2-SS077EE04-1030 SS | -37d | 0d |  | LABOUR [3 h]; Construction Material [50] | UDF_G3 | 0 | EE | 1 | C03a | TY1 | Non | SS077 | EIT2.2 | E06 | EIT02.1 |
| 2.2-SS077EE04-1070 |  | Clear punch | 2d | 2026-05-29 | 2026-05-30 | 2.2-SS077EE04-1060 | -37d | 0d |  | LABOUR [75 h]; Construction Material [20] | UDF_G3 | 0 | EE | 1 | C03a | TY1 | Non | SS077 | EIT2.2 | E06 | EIT02.1 |
| 2.2-SS077EE04-1080 |  | Complete QA/QC document | 3d | 2026-06-01 | 2026-06-03 | 2.2-SS077EE04-1070, 2.2-SS077EE04-1050 FF | -37d | 0d |  | LABOUR [75 h]; Construction Material [30] | UDF_G3 | 0 | EE | 1 | C03a | TY1 | Non | SS077 | EIT2.2 | E06 | EIT02.1 |

| ID | WBS | Activity | Duration | Start | Finish | Predecessors | Total float | Free float | Resources | On Schedule Indicator | %Completed | Disciplines | Main Activity | WBS | Types | EIT2 Main Activity | Areas | Phases | EIT WBS | EIT PKG |
| --- | --- | --- | --- | --- | --- | --- | --- | --- | --- | --- | --- | --- | --- | --- | --- | --- | --- | --- | --- | --- |
|  | 11 | **S77E3 415V Switchgear Panel** |  | 2026-05-23 | 2026-06-03 |  |  |  |  |  |  |  |  |  |  |  |  |  |  |  |
| 2.2-SS077EE04-1090 |  | Inspection and Testing, Per-Commissionning | 5d | 2026-05-23 | 2026-05-28 | 2.2-SS077EE04-1060 SS | -37d | 0d | LABOUR [3 h]; Construction Material [50] | UDF_G3 | 0 | EE | 1 | C03a | TY1 | Non | SS077 | EIT2.2 | E06 | EIT02.1 |
| 2.2-SS077EE04-1100 |  | Clear punch | 2d | 2026-05-29 | 2026-05-30 | 2.2-SS077EE04-1090 | -37d | 0d | LABOUR [75 h]; Construction Material [20] | UDF_G3 | 0 | EE | 1 | C03a | TY1 | Non | SS077 | EIT2.2 | E06 | EIT02.1 |
| 2.2-SS077EE04-1110 |  | Complete QA/QC document | 3d | 2026-06-01 | 2026-06-03 | 2.2-SS077EE04-1100, 2.2-SS077EE04-1080 FF | -37d | 0d | LABOUR [75 h]; Construction Material [30] | UDF_G3 | 0 | EE | 1 | C03a | TY1 | Non | SS077 | EIT2.2 | E06 | EIT02.1 |
|  | 8 | **S77E4 415V Switchgear Panel** |  | 2026-05-23 | 2026-06-03 |  |  |  |  |  |  |  |  |  |  |  |  |  |  |  |
| 2.2-SS077EE04-1120 |  | Inspection and Testing, Per-Commissionning | 5d | 2026-05-23 | 2026-05-28 | 2.2-SS077EE04-1090 SS | -37d | 0d | LABOUR [3 h]; Construction Material [50] | UDF_G3 | 0 | EE | 1 | C03a | TY1 | Non | SS077 | EIT2.2 | E06 | EIT02.1 |
| 2.2-SS077EE04-1130 |  | Clear punch | 2d | 2026-05-29 | 2026-05-30 | 2.2-SS077EE04-1120 | -37d | 0d | LABOUR [75 h]; Construction Material [20] | UDF_G3 | 0 | EE | 1 | C03a | TY1 | Non | SS077 | EIT2.2 | E06 | EIT02.1 |
| 2.2-SS077EE04-1140 |  | Complete QA/QC document | 3d | 2026-06-01 | 2026-06-03 | 2.2-SS077EE04-1130, 2.2-SS077EE04-1110 FF | -37d | 0d | LABOUR [75 h]; Construction Material [30] | UDF_G3 | 0 | EE | 1 | C03a | TY1 | Non | SS077 | EIT2.2 | E06 | EIT02.1 |
|  | 3 | **S77E7 415V Switchgear Panel** |  | 2026-05-23 | 2026-06-03 |  |  |  |  |  |  |  |  |  |  |  |  |  |  |  |
| 2.2-SS077EE04-1150 |  | Inspection and Testing, Per-Commissionning | 5d | 2026-05-23 | 2026-05-28 | 2.2-SS077EE04-1120 SS | -37d | 0d | LABOUR [3 h]; Construction Material [50] | UDF_G3 | 0 | EE | 1 | C03a | TY1 | Non | SS077 | EIT2.2 | E06 | EIT02.1 |
| 2.2-SS077EE04-1160 |  | Clear punch | 2d | 2026-05-29 | 2026-05-30 | 2.2-SS077EE04-1150 | -37d | 0d | LABOUR [75 h]; Construction Material [20] | UDF_G3 | 0 | EE | 1 | C03a | TY1 | Non | SS077 | EIT2.2 | E06 | EIT02.1 |
| 2.2-SS077EE04-1170 |  | Complete QA/QC document | 3d | 2026-06-01 | 2026-06-03 | 2.2-SS077EE04-1160, 2.2-SS077EE04-1140 FF | -37d | 0d | LABOUR [75 h]; Construction Material [30] | UDF_G3 | 0 | EE | 1 | C03a | TY1 | Non | SS077 | EIT2.2 | E06 | EIT02.1 |
|  | 4 | **S77E21 415V Switchgear Panel** |  | 2026-05-23 | 2026-06-03 |  |  |  |  |  |  |  |  |  |  |  |  |  |  |  |
| 2.2-SS077EE04-1180 |  | Inspection and Testing, Per-Commissionning | 5d | 2026-05-23 | 2026-05-28 | 2.2-SS077EE04-1150 SS | -37d | 0d | LABOUR [3 h]; Construction Material [50] | UDF_G3 | 0 | EE | 1 | C03a | TY1 | Non | SS077 | EIT2.2 | E06 | EIT02.1 |
| 2.2-SS077EE04-1190 |  | Clear punch | 2d | 2026-05-29 | 2026-05-30 | 2.2-SS077EE04-1180 | -37d | 0d | LABOUR [75 h]; Construction Material [20] | UDF_G3 | 0 | EE | 1 | C03a | TY1 | Non | SS077 | EIT2.2 | E06 | EIT02.1 |
| 2.2-SS077EE04-1200 |  | Complete QA/QC document | 3d | 2026-06-01 | 2026-06-03 | 2.2-SS077EE04-1190, 2.2-SS077EE04-1170 FF | -37d | 0d | LABOUR [75 h]; Construction Material [30] | UDF_G3 | 0 | EE | 1 | C03a | TY1 | Non | SS077 | EIT2.2 | E06 | EIT02.1 |
|  | 12 | **S77B1-A8 PM-14702D (3000 kW) - Remain full function test** |  | 2026-05-23 | 2026-06-03 |  |  |  |  |  |  |  |  |  |  |  |  |  |  |  |
| 2.2-SS077EE04-1210 |  | Inspection and Testing, Per-Commissionning | 5d | 2026-05-23 | 2026-05-28 | 2.2-SS077EE04-1180 SS | -37d | 0d | LABOUR [3 h]; Construction Material [50] | UDF_G3 | 0 | EE | 1 | C03a | TY1 | Non | SS077 | EIT2.2 | E06 | EIT02.1 |
| 2.2-SS077EE04-1220 |  | Clear punch | 2d | 2026-05-29 | 2026-05-30 | 2.2-SS077EE04-1210 | -37d | 0d | LABOUR [75 h]; Construction Material [20] | UDF_G3 | 0 | EE | 1 | C03a | TY1 | Non | SS077 | EIT2.2 | E06 | EIT02.1 |
| 2.2-SS077EE04-1230 |  | Complete QA/QC document | 3d | 2026-06-01 | 2026-06-03 | 2.2-SS077EE04-1220, 2.2-SS077EE04-1200 FF | -37d | 0d | LABOUR [75 h]; Construction Material [30] | UDF_G3 | 0 | EE | 1 | C03a | TY1 | Non | SS077 | EIT2.2 | E06 | EIT02.1 |
|  | 9 | **S77D1-B7 PM-10719B (715kW) - Remain full function test** |  | 2026-05-23 | 2026-06-03 |  |  |  |  |  |  |  |  |  |  |  |  |  |  |  |
| 2.2-SS077EE04-1240 |  | Inspection and Testing, Per-Commissionning | 5d | 2026-05-23 | 2026-05-28 | 2.2-SS077EE04-1210 SS | -37d | 0d | LABOUR [3 h]; Construction Material [50] | UDF_G3 | 0 | EE | 1 | C03a | TY1 | Non | SS077 | EIT2.2 | E06 | EIT02.1 |
| 2.2-SS077EE04-1250 |  | Clear punch | 2d | 2026-05-29 | 2026-05-30 | 2.2-SS077EE04-1240 | -37d | 0d | LABOUR [75 h]; Construction Material [20] | UDF_G3 | 0 | EE | 1 | C03a | TY1 | Non | SS077 | EIT2.2 | E06 | EIT02.1 |
| 2.2-SS077EE04-1260 |  | Complete QA/QC document | 3d | 2026-06-01 | 2026-06-03 | 2.2-SS077EE04-1250, 2.2-SS077EE04-1230 FF | -37d | 0d | LABOUR [75 h]; Construction Material [30] | UDF_G3 | 0 | EE | 1 | C03a | TY1 | Non | SS077 | EIT2.2 | E06 | EIT02.1 |

| ID | WBS | Activity | Duration | Start | Finish | Predecessors | Total float | Free float | Resources | On Schedule Indicator | %Completed | Disciplines | Main Activity | WBS | Types | EIT2 Main Activity | Areas | Phases | EIT WBS | EIT PKG |
| --- | --- | --- | --- | --- | --- | --- | --- | --- | --- | --- | --- | --- | --- | --- | --- | --- | --- | --- | --- | --- |
|  | 16 | **Variable Speed Drive** |  | 2026-06-01 | 2026-07-10 |  |  |  |  |  |  |  |  |  |  |  |  |  |  |  |
|  | 17 | **CV77E3** |  | 2026-06-01 | 2026-06-11 |  |  |  |  |  |  |  |  |  |  |  |  |  |  |  |
| 2.2-SS077EE04-1270 |  | Inspection and Testing, Per-Commissionning | 5d | 2026-06-01 | 2026-06-05 | 2.2-SS077EE04-1260 SS | -37d | 0d | LABOUR [3 h]; Construction Material [50] | UDF_G3 | 0 | EE | 1 | C03a | TY1 | Non | SS077 | EIT2.2 | E06 | EIT02.1 |
| 2.2-SS077EE04-1280 |  | Clear punch | 2d | 2026-06-06 | 2026-06-08 | 2.2-SS077EE04-1270 | -18d | 0d | LABOUR [75 h]; Construction Material [20] | UDF_G3 | 0 | EE | 1 | C03a | TY1 | Non | SS077 | EIT2.2 | E06 | EIT02.1 |
| 2.2-SS077EE04-1290 |  | Complete QA/QC document | 3d | 2026-06-09 | 2026-06-11 | 2.2-SS077EE04-1280, 2.2-SS077EE04-1260 | -18d | 0d | LABOUR [75 h]; Construction Material [30] | UDF_G3 | 0 | EE | 1 | C03a | TY1 | Non | SS077 | EIT2.2 | E06 | EIT02.1 |
|  | 6 | **CV77E4** |  | 2026-06-01 | 2026-06-11 |  |  |  |  |  |  |  |  |  |  |  |  |  |  |  |
| 2.2-SS077EE04-1300 |  | Inspection and Testing, Per-Commissionning | 5d | 2026-06-01 | 2026-06-05 | 2.2-SS077EE04-1270 SS | -37d | 0d | LABOUR [3 h]; Construction Material [50] | UDF_G3 | 0 | EE | 1 | C03a | TY1 | Non | SS077 | EIT2.2 | E06 | EIT02.1 |
| 2.2-SS077EE04-1310 |  | Clear punch | 2d | 2026-06-06 | 2026-06-08 | 2.2-SS077EE04-1300 | -18d | 0d | LABOUR [75 h]; Construction Material [20] | UDF_G3 | 0 | EE | 1 | C03a | TY1 | Non | SS077 | EIT2.2 | E06 | EIT02.1 |
| 2.2-SS077EE04-1320 |  | Complete QA/QC document | 3d | 2026-06-09 | 2026-06-11 | 2.2-SS077EE04-1310, 2.2-SS077EE04-1290 FF | -18d | 0d | LABOUR [75 h]; Construction Material [30] | UDF_G3 | 0 | EE | 1 | C03a | TY1 | Non | SS077 | EIT2.2 | E06 | EIT02.1 |
|  | 1 | **CV77E5** |  | 2026-06-01 | 2026-06-11 |  |  |  |  |  |  |  |  |  |  |  |  |  |  |  |
| 2.2-SS077EE04-1330 |  | Inspection and Testing, Per-Commissionning | 5d | 2026-06-01 | 2026-06-05 | 2.2-SS077EE04-1300 SS | -37d | 0d | LABOUR [3 h]; Construction Material [50] | UDF_G3 | 0 | EE | 1 | C03a | TY1 | Non | SS077 | EIT2.2 | E06 | EIT02.1 |
| 2.2-SS077EE04-1340 |  | Clear punch | 2d | 2026-06-06 | 2026-06-08 | 2.2-SS077EE04-1330 | -18d | 0d | LABOUR [75 h]; Construction Material [20] | UDF_G3 | 0 | EE | 1 | C03a | TY1 | Non | SS077 | EIT2.2 | E06 | EIT02.1 |
| 2.2-SS077EE04-1350 |  | Complete QA/QC document | 3d | 2026-06-09 | 2026-06-11 | 2.2-SS077EE04-1340, 2.2-SS077EE04-1320 FF | -18d | 0d | LABOUR [75 h]; Construction Material [30] | UDF_G3 | 0 | EE | 1 | C03a | TY1 | Non | SS077 | EIT2.2 | E06 | EIT02.1 |
|  | 2 | **CV77E6** |  | 2026-06-01 | 2026-06-11 |  |  |  |  |  |  |  |  |  |  |  |  |  |  |  |
| 2.2-SS077EE04-1360 |  | Inspection and Testing, Per-Commissionning | 5d | 2026-06-01 | 2026-06-05 | 2.2-SS077EE04-1330 SS | -37d | 0d | LABOUR [3 h]; Construction Material [50] | UDF_G3 | 0 | EE | 1 | C03a | TY1 | Non | SS077 | EIT2.2 | E06 | EIT02.1 |
| 2.2-SS077EE04-1370 |  | Clear punch | 2d | 2026-06-06 | 2026-06-08 | 2.2-SS077EE04-1360 | -18d | 0d | LABOUR [75 h]; Construction Material [20] | UDF_G3 | 0 | EE | 1 | C03a | TY1 | Non | SS077 | EIT2.2 | E06 | EIT02.1 |
| 2.2-SS077EE04-1380 |  | Complete QA/QC document | 3d | 2026-06-09 | 2026-06-11 | 2.2-SS077EE04-1370, 2.2-SS077EE04-1350 FF | -18d | 0d | LABOUR [75 h]; Construction Material [30] | UDF_G3 | 0 | EE | 1 | C03a | TY1 | Non | SS077 | EIT2.2 | E06 | EIT02.1 |
|  | 3 | **CV77E7** |  | 2026-06-01 | 2026-06-11 |  |  |  |  |  |  |  |  |  |  |  |  |  |  |  |
| 2.2-SS077EE04-1390 |  | Inspection and Testing, Per-Commissionning | 5d | 2026-06-01 | 2026-06-05 | 2.2-SS077EE04-1360 SS | -37d | 0d | LABOUR [3 h]; Construction Material [50] | UDF_G3 | 0 | EE | 1 | C03a | TY1 | Non | SS077 | EIT2.2 | E06 | EIT02.1 |
| 2.2-SS077EE04-1400 |  | Clear punch | 2d | 2026-06-06 | 2026-06-08 | 2.2-SS077EE04-1390 | -18d | 0d | LABOUR [75 h]; Construction Material [20] | UDF_G3 | 0 | EE | 1 | C03a | TY1 | Non | SS077 | EIT2.2 | E06 | EIT02.1 |
| 2.2-SS077EE04-1410 |  | Complete QA/QC document | 3d | 2026-06-09 | 2026-06-11 | 2.2-SS077EE04-1400, 2.2-SS077EE04-1380 FF | -18d | 0d | LABOUR [75 h]; Construction Material [30] | UDF_G3 | 0 | EE | 1 | C03a | TY1 | Non | SS077 | EIT2.2 | E06 | EIT02.1 |
|  | 4 | **CV77E8** |  | 2026-06-01 | 2026-06-11 |  |  |  |  |  |  |  |  |  |  |  |  |  |  |  |
| 2.2-SS077EE04-1420 |  | Inspection and Testing, Per-Commissionning | 5d | 2026-06-01 | 2026-06-05 | 2.2-SS077EE04-1390 SS | -37d | 0d | LABOUR [3 h]; Construction Material [50] | UDF_G3 | 0 | EE | 1 | C03a | TY1 | Non | SS077 | EIT2.2 | E06 | EIT02.1 |
| 2.2-SS077EE04-1430 |  | Clear punch | 2d | 2026-06-06 | 2026-06-08 | 2.2-SS077EE04-1420 | -18d | 0d | LABOUR [75 h]; Construction Material [20] | UDF_G3 | 0 | EE | 1 | C03a | TY1 | Non | SS077 | EIT2.2 | E06 | EIT02.1 |
| 2.2-SS077EE04-1440 |  | Complete QA/QC document | 3d | 2026-06-09 | 2026-06-11 | 2.2-SS077EE04-1430, 2.2-SS077EE04-1410 FF | -18d | 0d | LABOUR [75 h]; Construction Material [30] | UDF_G3 | 0 | EE | 1 | C03a | TY1 | Non | SS077 | EIT2.2 | E06 | EIT02.1 |

| ID | WBS | Activity | Duration | Start | Finish | Predecessors | Total float | Free float | Resources | On Schedule Indicator | %Completed | Disciplines | Main Activity | WBS | Types | EIT2 Main Activity | Areas | Phases | EIT WBS | EIT PKG |
| --- | --- | --- | --- | --- | --- | --- | --- | --- | --- | --- | --- | --- | --- | --- | --- | --- | --- | --- | --- | --- |
|  | 5 | **CV77E9** |  | 2026-06-01 | 2026-06-11 |  |  |  |  |  |  |  |  |  |  |  |  |  |  |  |
| 2.2-SS077EE04-1450 |  | Inspection and Testing, Per-Commissionning | 5d | 2026-06-01 | 2026-06-05 | 2.2-SS077EE04-1420 SS | -37d | 0d | LABOUR [3 h]; Construction Material [50] | UDF_G3 | 0 | EE | 1 | C03a | TY1 | Non | SS077 | EIT2.2 | E06 | EIT02.1 |
| 2.2-SS077EE04-1460 |  | Clear punch | 2d | 2026-06-06 | 2026-06-08 | 2.2-SS077EE04-1450 | -18d | 0d | LABOUR [75 h]; Construction Material [20] | UDF_G3 | 0 | EE | 1 | C03a | TY1 | Non | SS077 | EIT2.2 | E06 | EIT02.1 |
| 2.2-SS077EE04-1470 |  | Complete QA/QC document | 3d | 2026-06-09 | 2026-06-11 | 2.2-SS077EE04-1460, 2.2-SS077EE04-1440 FF | -18d | 2d | LABOUR [75 h]; Construction Material [30] | UDF_G3 | 0 | EE | 1 | C03a | TY1 | Non | SS077 | EIT2.2 | E06 | EIT02.1 |
|  | 7 | **CV77E10** |  | 2026-06-06 | 2026-06-17 |  |  |  |  |  |  |  |  |  |  |  |  |  |  |  |
| 2.2-SS077EE04-1480 |  | Inspection and Testing, Per-Commissionning | 5d | 2026-06-06 | 2026-06-11 | 2.2-SS077EE04-1450 | -37d | 0d | LABOUR [3 h]; Construction Material [50] | UDF_G3 | 0 | EE | 1 | C03a | TY1 | Non | SS077 | EIT2.2 | E06 | EIT02.1 |
| 2.2-SS077EE04-1490 |  | Clear punch | 2d | 2026-06-12 | 2026-06-13 | 2.2-SS077EE04-1480 | -20d | 0d | LABOUR [75 h]; Construction Material [20] | UDF_G3 | 0 | EE | 1 | C03a | TY1 | Non | SS077 | EIT2.2 | E06 | EIT02.1 |
| 2.2-SS077EE04-1500 |  | Complete QA/QC document | 3d | 2026-06-15 | 2026-06-17 | 2.2-SS077EE04-1490, 2.2-SS077EE04-1470 | -20d | 0d | LABOUR [75 h]; Construction Material [30] | UDF_G3 | 0 | EE | 1 | C03a | TY1 | Non | SS077 | EIT2.2 | E06 | EIT02.1 |
|  | 8 | **CV77E11** |  | 2026-06-06 | 2026-06-17 |  |  |  |  |  |  |  |  |  |  |  |  |  |  |  |
| 2.2-SS077EE04-1510 |  | Inspection and Testing, Per-Commissionning | 5d | 2026-06-06 | 2026-06-11 | 2.2-SS077EE04-1480 SS | -37d | 0d | LABOUR [3 h]; Construction Material [50] | UDF_G3 | 0 | EE | 1 | C03a | TY1 | Non | SS077 | EIT2.2 | E06 | EIT02.1 |
| 2.2-SS077EE04-1520 |  | Clear punch | 2d | 2026-06-12 | 2026-06-13 | 2.2-SS077EE04-1510 | -20d | 0d | LABOUR [75 h]; Construction Material [20] | UDF_G3 | 0 | EE | 1 | C03a | TY1 | Non | SS077 | EIT2.2 | E06 | EIT02.1 |
| 2.2-SS077EE04-1530 |  | Complete QA/QC document | 3d | 2026-06-15 | 2026-06-17 | 2.2-SS077EE04-1520, 2.2-SS077EE04-1500 FF | -20d | 0d | LABOUR [75 h]; Construction Material [30] | UDF_G3 | 0 | EE | 1 | C03a | TY1 | Non | SS077 | EIT2.2 | E06 | EIT02.1 |
|  | 9 | **CV77E12** |  | 2026-06-06 | 2026-06-17 |  |  |  |  |  |  |  |  |  |  |  |  |  |  |  |
| 2.2-SS077EE04-1540 |  | Inspection and Testing, Per-Commissionning | 5d | 2026-06-06 | 2026-06-11 | 2.2-SS077EE04-1510 SS | -37d | 0d | LABOUR [3 h]; Construction Material [50] | UDF_G3 | 0 | EE | 1 | C03a | TY1 | Non | SS077 | EIT2.2 | E06 | EIT02.1 |
| 2.2-SS077EE04-1550 |  | Clear punch | 2d | 2026-06-12 | 2026-06-13 | 2.2-SS077EE04-1540 | -20d | 0d | LABOUR [75 h]; Construction Material [20] | UDF_G3 | 0 | EE | 1 | C03a | TY1 | Non | SS077 | EIT2.2 | E06 | EIT02.1 |
| 2.2-SS077EE04-1560 |  | Complete QA/QC document | 3d | 2026-06-15 | 2026-06-17 | 2.2-SS077EE04-1550, 2.2-SS077EE04-1530 FF | -20d | 0d | LABOUR [75 h]; Construction Material [30] | UDF_G3 | 0 | EE | 1 | C03a | TY1 | Non | SS077 | EIT2.2 | E06 | EIT02.1 |
|  | 10 | **CV77E13** |  | 2026-06-06 | 2026-06-17 |  |  |  |  |  |  |  |  |  |  |  |  |  |  |  |
| 2.2-SS077EE04-1570 |  | Inspection and Testing, Per-Commissionning | 5d | 2026-06-06 | 2026-06-11 | 2.2-SS077EE04-1540 SS | -37d | 0d | LABOUR [3 h]; Construction Material [50] | UDF_G3 | 0 | EE | 1 | C03a | TY1 | Non | SS077 | EIT2.2 | E06 | EIT02.1 |
| 2.2-SS077EE04-1580 |  | Clear punch | 2d | 2026-06-12 | 2026-06-13 | 2.2-SS077EE04-1570 | -20d | 0d | LABOUR [75 h]; Construction Material [20] | UDF_G3 | 0 | EE | 1 | C03a | TY1 | Non | SS077 | EIT2.2 | E06 | EIT02.1 |
| 2.2-SS077EE04-1590 |  | Complete QA/QC document | 3d | 2026-06-15 | 2026-06-17 | 2.2-SS077EE04-1580, 2.2-SS077EE04-1560 FF | -20d | 2d | LABOUR [75 h]; Construction Material [30] | UDF_G3 | 0 | EE | 1 | C03a | TY1 | Non | SS077 | EIT2.2 | E06 | EIT02.1 |
|  | 11 | **CV77E14** |  | 2026-06-12 | 2026-06-23 |  |  |  |  |  |  |  |  |  |  |  |  |  |  |  |
| 2.2-SS077EE04-1600 |  | Inspection and Testing, Per-Commissionning | 5d | 2026-06-12 | 2026-06-17 | 2.2-SS077EE04-1570 | -37d | 0d | LABOUR [3 h]; Construction Material [50] | UDF_G3 | 0 | EE | 1 | C03a | TY1 | Non | SS077 | EIT2.2 | E06 | EIT02.1 |
| 2.2-SS077EE04-1610 |  | Clear punch | 2d | 2026-06-18 | 2026-06-19 | 2.2-SS077EE04-1600 | -22d | 0d | LABOUR [75 h]; Construction Material [20] | UDF_G3 | 0 | EE | 1 | C03a | TY1 | Non | SS077 | EIT2.2 | E06 | EIT02.1 |
| 2.2-SS077EE04-1620 |  | Complete QA/QC document | 3d | 2026-06-20 | 2026-06-23 | 2.2-SS077EE04-1610, 2.2-SS077EE04-1590 | -22d | 0d | LABOUR [75 h]; Construction Material [30] | UDF_G3 | 0 | EE | 1 | C03a | TY1 | Non | SS077 | EIT2.2 | E06 | EIT02.1 |

| ID | WBS | Activity | Duration | Start | Finish | Predecessors | Total float | Free float | Resources | On Schedule Indicator | %Completed | Disciplines | Main Activity | WBS | Types | EIT2 Main Activity | Areas | Phases | EIT WBS | EIT PKG |
| --- | --- | --- | --- | --- | --- | --- | --- | --- | --- | --- | --- | --- | --- | --- | --- | --- | --- | --- | --- | --- |
|  | 12 | **CV77E15** |  | 2026-06-12 | 2026-06-23 |  |  |  |  |  |  |  |  |  |  |  |  |  |  |  |
| 2.2-SS077EE04-1630 |  | Inspection and Testing, Per-Commissionning | 5d | 2026-06-12 | 2026-06-17 | 2.2-SS077EE04-1600 SS | -37d | 0d | LABOUR [3 h]; Construction Material [50] | UDF_G3 | 0 | EE | 1 | C03a | TY1 | Non | SS077 | EIT2.2 | E06 | EIT02.1 |
| 2.2-SS077EE04-1640 |  | Clear punch | 2d | 2026-06-18 | 2026-06-19 | 2.2-SS077EE04-1630 | -22d | 0d | LABOUR [75 h]; Construction Material [20] | UDF_G3 | 0 | EE | 1 | C03a | TY1 | Non | SS077 | EIT2.2 | E06 | EIT02.1 |
| 2.2-SS077EE04-1650 |  | Complete QA/QC document | 3d | 2026-06-20 | 2026-06-23 | 2.2-SS077EE04-1640, 2.2-SS077EE04-1620 FF | -22d | 0d | LABOUR [75 h]; Construction Material [30] | UDF_G3 | 0 | EE | 1 | C03a | TY1 | Non | SS077 | EIT2.2 | E06 | EIT02.1 |
|  | 13 | **CV77E16** |  | 2026-06-12 | 2026-06-23 |  |  |  |  |  |  |  |  |  |  |  |  |  |  |  |
| 2.2-SS077EE04-1660 |  | Inspection and Testing, Per-Commissionning | 5d | 2026-06-12 | 2026-06-17 | 2.2-SS077EE04-1630 SS | -37d | 0d | LABOUR [3 h]; Construction Material [50] | UDF_G3 | 0 | EE | 1 | C03a | TY1 | Non | SS077 | EIT2.2 | E06 | EIT02.1 |
| 2.2-SS077EE04-1670 |  | Clear punch | 2d | 2026-06-18 | 2026-06-19 | 2.2-SS077EE04-1660 | -22d | 0d | LABOUR [75 h]; Construction Material [20] | UDF_G3 | 0 | EE | 1 | C03a | TY1 | Non | SS077 | EIT2.2 | E06 | EIT02.1 |
| 2.2-SS077EE04-1680 |  | Complete QA/QC document | 3d | 2026-06-20 | 2026-06-23 | 2.2-SS077EE04-1670, 2.2-SS077EE04-1650 FF | -22d | 0d | LABOUR [75 h]; Construction Material [30] | UDF_G3 | 0 | EE | 1 | C03a | TY1 | Non | SS077 | EIT2.2 | E06 | EIT02.1 |
|  | 14 | **CV77E17** |  | 2026-06-12 | 2026-06-23 |  |  |  |  |  |  |  |  |  |  |  |  |  |  |  |
| 2.2-SS077EE04-1690 |  | Inspection and Testing, Per-Commissionning | 5d | 2026-06-12 | 2026-06-17 | 2.2-SS077EE04-1660 SS | -37d | 0d | LABOUR [3 h]; Construction Material [50] | UDF_G3 | 0 | EE | 1 | C03a | TY1 | Non | SS077 | EIT2.2 | E06 | EIT02.1 |
| 2.2-SS077EE04-1700 |  | Clear punch | 2d | 2026-06-18 | 2026-06-19 | 2.2-SS077EE04-1690 | -22d | 0d | LABOUR [75 h]; Construction Material [20] | UDF_G3 | 0 | EE | 1 | C03a | TY1 | Non | SS077 | EIT2.2 | E06 | EIT02.1 |
| 2.2-SS077EE04-1710 |  | Complete QA/QC document | 3d | 2026-06-20 | 2026-06-23 | 2.2-SS077EE04-1700, 2.2-SS077EE04-1680 FF | -22d | 0d | LABOUR [75 h]; Construction Material [30] | UDF_G3 | 0 | EE | 1 | C03a | TY1 | Non | SS077 | EIT2.2 | E06 | EIT02.1 |
|  | 15 | **CV77E18** |  | 2026-06-12 | 2026-06-23 |  |  |  |  |  |  |  |  |  |  |  |  |  |  |  |
| 2.2-SS077EE04-1720 |  | Inspection and Testing, Per-Commissionning | 5d | 2026-06-12 | 2026-06-17 | 2.2-SS077EE04-1690 SS | -37d | 0d | LABOUR [3 h]; Construction Material [50] | UDF_G3 | 0 | EE | 1 | C03a | TY1 | Non | SS077 | EIT2.2 | E06 | EIT02.1 |
| 2.2-SS077EE04-1730 |  | Clear punch | 2d | 2026-06-18 | 2026-06-19 | 2.2-SS077EE04-1720 | -22d | 0d | LABOUR [75 h]; Construction Material [20] | UDF_G3 | 0 | EE | 1 | C03a | TY1 | Non | SS077 | EIT2.2 | E06 | EIT02.1 |
| 2.2-SS077EE04-1740 |  | Complete QA/QC document | 3d | 2026-06-20 | 2026-06-23 | 2.2-SS077EE04-1730, 2.2-SS077EE04-1710 FF | -22d | 0d | LABOUR [75 h]; Construction Material [30] | UDF_G3 | 0 | EE | 1 | C03a | TY1 | Non | SS077 | EIT2.2 | E06 | EIT02.1 |
|  | 16 | **CV77E19** |  | 2026-06-12 | 2026-06-23 |  |  |  |  |  |  |  |  |  |  |  |  |  |  |  |
| 2.2-SS077EE04-1750 |  | Inspection and Testing, Per-Commissionning | 5d | 2026-06-12 | 2026-06-17 | 2.2-SS077EE04-1720 SS | -37d | 0d | LABOUR [3 h]; Construction Material [50] | UDF_G3 | 0 | EE | 1 | C03a | TY1 | Non | SS077 | EIT2.2 | E06 | EIT02.1 |
| 2.2-SS077EE04-1760 |  | Clear punch | 2d | 2026-06-18 | 2026-06-19 | 2.2-SS077EE04-1750 | -22d | 0d | LABOUR [75 h]; Construction Material [20] | UDF_G3 | 0 | EE | 1 | C03a | TY1 | Non | SS077 | EIT2.2 | E06 | EIT02.1 |
| 2.2-SS077EE04-1770 |  | Complete QA/QC document | 3d | 2026-06-20 | 2026-06-23 | 2.2-SS077EE04-1760, 2.2-SS077EE04-1740 FF | -22d | 0d | LABOUR [75 h]; Construction Material [30] | UDF_G3 | 0 | EE | 1 | C03a | TY1 | Non | SS077 | EIT2.2 | E06 | EIT02.1 |
|  | 18 | **CV77E20** |  | 2026-06-12 | 2026-06-23 |  |  |  |  |  |  |  |  |  |  |  |  |  |  |  |
| 2.2-SS077EE04-1780 |  | Inspection and Testing, Per-Commissionning | 5d | 2026-06-12 | 2026-06-17 | 2.2-SS077EE04-1750 SS | -37d | 0d | LABOUR [3 h]; Construction Material [50] | UDF_G3 | 0 | EE | 1 | C03a | TY1 | Non | SS077 | EIT2.2 | E06 | EIT02.1 |
| 2.2-SS077EE04-1790 |  | Clear punch | 2d | 2026-06-18 | 2026-06-19 | 2.2-SS077EE04-1780 | -22d | 0d | LABOUR [75 h]; Construction Material [20] | UDF_G3 | 0 | EE | 1 | C03a | TY1 | Non | SS077 | EIT2.2 | E06 | EIT02.1 |
| 2.2-SS077EE04-1800 |  | Complete QA/QC document | 3d | 2026-06-20 | 2026-06-23 | 2.2-SS077EE04-1790, 2.2-SS077EE04-1770 FF | -22d | 0d | LABOUR [75 h]; Construction Material [30] | UDF_G3 | 0 | EE | 1 | C03a | TY1 | Non | SS077 | EIT2.2 | E06 | EIT02.1 |

| ID | WBS | Activity | Duration | Start | Finish | Predecessors | Total float | Free float | Resources | On Schedule Indicator | %Completed | Disciplines | Main Activity | WBS | Types | EIT2 Main Activity | Areas | Phases | EIT WBS | EIT PKG |
| --- | --- | --- | --- | --- | --- | --- | --- | --- | --- | --- | --- | --- | --- | --- | --- | --- | --- | --- | --- | --- |
|  | 19 | **CV77E21** |  | 2026-06-12 | 2026-06-23 |  |  |  |  |  |  |  |  |  |  |  |  |  |  |  |
| 2.2-SS077EE04-1810 |  | Inspection and Testing, Per-Commissionning | 5d | 2026-06-12 | 2026-06-17 | 2.2-SS077EE04-1780 SS | -37d | 0d | LABOUR [3 h]; Construction Material [50] | UDF_G3 | 0 | EE | 1 | C03a | TY1 | Non | SS077 | EIT2.2 | E06 | EIT02.1 |
| 2.2-SS077EE04-1820 |  | Clear punch | 2d | 2026-06-18 | 2026-06-19 | 2.2-SS077EE04-1810 | -22d | 0d | LABOUR [75 h]; Construction Material [20] | UDF_G3 | 0 | EE | 1 | C03a | TY1 | Non | SS077 | EIT2.2 | E06 | EIT02.1 |
| 2.2-SS077EE04-1830 |  | Complete QA/QC document | 3d | 2026-06-20 | 2026-06-23 | 2.2-SS077EE04-1820, 2.2-SS077EE04-1800 FF | -22d | 0d | LABOUR [75 h]; Construction Material [30] | UDF_G3 | 0 | EE | 1 | C03a | TY1 | Non | SS077 | EIT2.2 | E06 | EIT02.1 |
|  | 20 | **CV77E22** |  | 2026-06-12 | 2026-06-23 |  |  |  |  |  |  |  |  |  |  |  |  |  |  |  |
| 2.2-SS077EE04-1840 |  | Inspection and Testing, Per-Commissionning | 5d | 2026-06-12 | 2026-06-17 | 2.2-SS077EE04-1810 SS | -37d | 0d | LABOUR [3 h]; Construction Material [50] | UDF_G3 | 0 | EE | 1 | C03a | TY1 | Non | SS077 | EIT2.2 | E06 | EIT02.1 |
| 2.2-SS077EE04-1850 |  | Clear punch | 2d | 2026-06-18 | 2026-06-19 | 2.2-SS077EE04-1840 | -22d | 0d | LABOUR [75 h]; Construction Material [20] | UDF_G3 | 0 | EE | 1 | C03a | TY1 | Non | SS077 | EIT2.2 | E06 | EIT02.1 |
| 2.2-SS077EE04-1860 |  | Complete QA/QC document | 3d | 2026-06-20 | 2026-06-23 | 2.2-SS077EE04-1850, 2.2-SS077EE04-1830 FF | -22d | 0d | LABOUR [75 h]; Construction Material [30] | UDF_G3 | 0 | EE | 1 | C03a | TY1 | Non | SS077 | EIT2.2 | E06 | EIT02.1 |
|  | 21 | **CV77E23** |  | 2026-06-12 | 2026-06-23 |  |  |  |  |  |  |  |  |  |  |  |  |  |  |  |
| 2.2-SS077EE04-1870 |  | Inspection and Testing, Per-Commissionning | 5d | 2026-06-12 | 2026-06-17 | 2.2-SS077EE04-1840 SS | -37d | 0d | LABOUR [3 h]; Construction Material [50] | UDF_G3 | 0 | EE | 1 | C03a | TY1 | Non | SS077 | EIT2.2 | E06 | EIT02.1 |
| 2.2-SS077EE04-1880 |  | Clear punch | 2d | 2026-06-18 | 2026-06-19 | 2.2-SS077EE04-1870 | -22d | 0d | LABOUR [75 h]; Construction Material [20] | UDF_G3 | 0 | EE | 1 | C03a | TY1 | Non | SS077 | EIT2.2 | E06 | EIT02.1 |
| 2.2-SS077EE04-1890 |  | Complete QA/QC document | 3d | 2026-06-20 | 2026-06-23 | 2.2-SS077EE04-1880, 2.2-SS077EE04-1860 FF | -22d | 0d | LABOUR [75 h]; Construction Material [30] | UDF_G3 | 0 | EE | 1 | C03a | TY1 | Non | SS077 | EIT2.2 | E06 | EIT02.1 |
|  | 22 | **CV77E24** |  | 2026-06-12 | 2026-06-23 |  |  |  |  |  |  |  |  |  |  |  |  |  |  |  |
| 2.2-SS077EE04-1900 |  | Inspection and Testing, Per-Commissionning | 5d | 2026-06-12 | 2026-06-17 | 2.2-SS077EE04-1870 SS | -37d | 0d | LABOUR [3 h]; Construction Material [50] | UDF_G3 | 0 | EE | 1 | C03a | TY1 | Non | SS077 | EIT2.2 | E06 | EIT02.1 |
| 2.2-SS077EE04-1910 |  | Clear punch | 2d | 2026-06-18 | 2026-06-19 | 2.2-SS077EE04-1900 | -22d | 0d | LABOUR [75 h]; Construction Material [20] | UDF_G3 | 0 | EE | 1 | C03a | TY1 | Non | SS077 | EIT2.2 | E06 | EIT02.1 |
| 2.2-SS077EE04-1920 |  | Complete QA/QC document | 3d | 2026-06-20 | 2026-06-23 | 2.2-SS077EE04-1910, 2.2-SS077EE04-1890 FF | -22d | 5d | LABOUR [75 h]; Construction Material [30] | UDF_G3 | 0 | EE | 1 | C03a | TY1 | Non | SS077 | EIT2.2 | E06 | EIT02.1 |
|  | 23 | **CV77E25** |  | 2026-06-18 | 2026-06-29 |  |  |  |  |  |  |  |  |  |  |  |  |  |  |  |
| 2.2-SS077EE04-1930 |  | Inspection and Testing, Per-Commissionning | 5d | 2026-06-18 | 2026-06-23 | 2.2-SS077EE04-1900 | -37d | 0d | LABOUR [3 h]; Construction Material [50] | UDF_G3 | 0 | EE | 1 | C03a | TY1 | Non | SS077 | EIT2.2 | E06 | EIT02.1 |
| 2.2-SS077EE04-1940 |  | Clear punch | 2d | 2026-06-24 | 2026-06-25 | 2.2-SS077EE04-1930 | -27d | 0d | LABOUR [75 h]; Construction Material [20] | UDF_G3 | 0 | EE | 1 | C03a | TY1 | Non | SS077 | EIT2.2 | E06 | EIT02.1 |
| 2.2-SS077EE04-1950 |  | Complete QA/QC document | 3d | 2026-06-26 | 2026-06-29 | 2.2-SS077EE04-1940, 2.2-SS077EE04-1920 FF | -27d | 5d | LABOUR [75 h]; Construction Material [30] | UDF_G3 | 0 | EE | 1 | C03a | TY1 | Non | SS077 | EIT2.2 | E06 | EIT02.1 |
|  | 24 | **CV77E26** |  | 2026-06-24 | 2026-07-04 |  |  |  |  |  |  |  |  |  |  |  |  |  |  |  |
| 2.2-SS077EE04-1960 |  | Inspection and Testing, Per-Commissionning | 5d | 2026-06-24 | 2026-06-29 | 2.2-SS077EE04-1930 | -37d | 0d | LABOUR [3 h]; Construction Material [50] | UDF_G3 | 0 | EE | 1 | C03a | TY1 | Non | SS077 | EIT2.2 | E06 | EIT02.1 |
| 2.2-SS077EE04-1970 |  | Clear punch | 2d | 2026-06-30 | 2026-07-01 | 2.2-SS077EE04-1960 | -32d | 0d | LABOUR [75 h]; Construction Material [20] | UDF_G3 | 0 | EE | 1 | C03a | TY1 | Non | SS077 | EIT2.2 | E06 | EIT02.1 |
| 2.2-SS077EE04-1980 |  | Complete QA/QC document | 3d | 2026-07-02 | 2026-07-04 | 2.2-SS077EE04-1970, 2.2-SS077EE04-1950 FF | -32d | 0d | LABOUR [75 h]; Construction Material [30] | UDF_G3 | 0 | EE | 1 | C03a | TY1 | Non | SS077 | EIT2.2 | E06 | EIT02.1 |

| ID | WBS | Activity | Duration | Start | Finish | Predecessors | Total float | Free float | Resources | On Schedule Indicator | %Completed | Disciplines | Main Activity | WBS | Types | EIT2 Main Activity | Areas | Phases | EIT WBS | EIT PKG |
| --- | --- | --- | --- | --- | --- | --- | --- | --- | --- | --- | --- | --- | --- | --- | --- | --- | --- | --- | --- | --- |
|  | 25 | **CV77E27** |  | 2026-06-24 | 2026-07-04 |  |  |  |  |  |  |  |  |  |  |  |  |  |  |  |
| 2.2-SS077EE04-1990 |  | Inspection and Testing, Per-Commissionning | 5d | 2026-06-24 | 2026-06-29 | 2.2-SS077EE04-1960 SS | -37d | 0d | LABOUR [3 h]; Construction Material [50] | UDF_G3 | 0 | EE | 1 | C03a | TY1 | Non | SS077 | EIT2.2 | E06 | EIT02.1 |
| 2.2-SS077EE04-2000 |  | Clear punch | 2d | 2026-06-30 | 2026-07-01 | 2.2-SS077EE04-1990 | -32d | 0d | LABOUR [75 h]; Construction Material [20] | UDF_G3 | 0 | EE | 1 | C03a | TY1 | Non | SS077 | EIT2.2 | E06 | EIT02.1 |
| 2.2-SS077EE04-2010 |  | Complete QA/QC document | 3d | 2026-07-02 | 2026-07-04 | 2.2-SS077EE04-2000, 2.2-SS077EE04-1980 FF | -32d | 0d | LABOUR [75 h]; Construction Material [30] | UDF_G3 | 0 | EE | 1 | C03a | TY1 | Non | SS077 | EIT2.2 | E06 | EIT02.1 |
|  | 26 | **CV77E28** |  | 2026-06-24 | 2026-07-04 |  |  |  |  |  |  |  |  |  |  |  |  |  |  |  |
| 2.2-SS077EE04-2020 |  | Inspection and Testing, Per-Commissionning | 5d | 2026-06-24 | 2026-06-29 | 2.2-SS077EE04-1990 SS | -37d | 0d | LABOUR [3 h]; Construction Material [50] | UDF_G3 | 0 | EE | 1 | C03a | TY1 | Non | SS077 | EIT2.2 | E06 | EIT02.1 |
| 2.2-SS077EE04-2030 |  | Clear punch | 2d | 2026-06-30 | 2026-07-01 | 2.2-SS077EE04-2020 | -32d | 0d | LABOUR [75 h]; Construction Material [20] | UDF_G3 | 0 | EE | 1 | C03a | TY1 | Non | SS077 | EIT2.2 | E06 | EIT02.1 |
| 2.2-SS077EE04-2040 |  | Complete QA/QC document | 3d | 2026-07-02 | 2026-07-04 | 2.2-SS077EE04-2030, 2.2-SS077EE04-2010 FF | -32d | 5d | LABOUR [75 h]; Construction Material [30] | UDF_G3 | 0 | EE | 1 | C03a | TY1 | Non | SS077 | EIT2.2 | E06 | EIT02.1 |
|  | 27 | **CV77E29** |  | 2026-06-30 | 2026-07-10 |  |  |  |  |  |  |  |  |  |  |  |  |  |  |  |
| 2.2-SS077EE04-2050 |  | Inspection and Testing, Per-Commissionning | 5d | 2026-06-30 | 2026-07-04 | 2.2-SS077EE04-2020 | -37d | 0d | LABOUR [3 h]; Construction Material [50] | UDF_G3 | 0 | EE | 1 | C03a | TY1 | Non | SS077 | EIT2.2 | E06 | EIT02.1 |
| 2.2-SS077EE04-2060 |  | Clear punch | 2d | 2026-07-06 | 2026-07-07 | 2.2-SS077EE04-2050 | -37d | 0d | LABOUR [75 h]; Construction Material [20] | UDF_G3 | 0 | EE | 1 | C03a | TY1 | Non | SS077 | EIT2.2 | E06 | EIT02.1 |
| 2.2-SS077EE04-2070 |  | Complete QA/QC document | 3d | 2026-07-08 | 2026-07-10 | 2.2-SS077EE04-2060, 2.2-SS077EE04-2040 FF | -37d | 0d | LABOUR [75 h]; Construction Material [30] | UDF_G3 | 0 | EE | 1 | C03a | TY1 | Non | SS077 | EIT2.2 | E06 | EIT02.1 |
|  | 28 | **CV77E30** |  | 2026-06-30 | 2026-07-10 |  |  |  |  |  |  |  |  |  |  |  |  |  |  |  |
| 2.2-SS077EE04-2080 |  | Inspection and Testing, Per-Commissionning | 5d | 2026-06-30 | 2026-07-04 | 2.2-SS077EE04-2050 SS | -37d | 0d | LABOUR [3 h]; Construction Material [50] | UDF_G3 | 0 | EE | 1 | C03a | TY1 | Non | SS077 | EIT2.2 | E06 | EIT02.1 |
| 2.2-SS077EE04-2090 |  | Clear punch | 2d | 2026-07-06 | 2026-07-07 | 2.2-SS077EE04-2080 | -37d | 0d | LABOUR [75 h]; Construction Material [20] | UDF_G3 | 0 | EE | 1 | C03a | TY1 | Non | SS077 | EIT2.2 | E06 | EIT02.1 |
| 2.2-SS077EE04-2100 |  | Complete QA/QC document | 3d | 2026-07-08 | 2026-07-10 | 2.2-SS077EE04-2090, 2.2-SS077EE04-2070 FF | -37d | 0d | LABOUR [75 h]; Construction Material [30] | UDF_G3 | 0 | EE | 1 | C03a | TY1 | Non | SS077 | EIT2.2 | E06 | EIT02.1 |
|  | 29 | **CV77E31** |  | 2026-06-30 | 2026-07-10 |  |  |  |  |  |  |  |  |  |  |  |  |  |  |  |
| 2.2-SS077EE04-2110 |  | Inspection and Testing, Per-Commissionning | 5d | 2026-06-30 | 2026-07-04 | 2.2-SS077EE04-2080 SS | -37d | 0d | LABOUR [3 h]; Construction Material [50] | UDF_G3 | 0 | EE | 1 | C03a | TY1 | Non | SS077 | EIT2.2 | E06 | EIT02.1 |
| 2.2-SS077EE04-2120 |  | Clear punch | 2d | 2026-07-06 | 2026-07-07 | 2.2-SS077EE04-2110 | -37d | 0d | LABOUR [75 h]; Construction Material [20] | UDF_G3 | 0 | EE | 1 | C03a | TY1 | Non | SS077 | EIT2.2 | E06 | EIT02.1 |
| 2.2-SS077EE04-2130 |  | Complete QA/QC document | 3d | 2026-07-08 | 2026-07-10 | 2.2-SS077EE04-2120, 2.2-SS077EE04-2100 FF | -37d | 0d | LABOUR [75 h]; Construction Material [30] | UDF_G3 | 0 | EE | 1 | C03a | TY1 | Non | SS077 | EIT2.2 | E06 | EIT02.1 |
|  | 30 | **CV77E32** |  | 2026-06-30 | 2026-07-10 |  |  |  |  |  |  |  |  |  |  |  |  |  |  |  |
| 2.2-SS077EE04-2140 |  | Inspection and Testing, Per-Commissionning | 5d | 2026-06-30 | 2026-07-04 | 2.2-SS077EE04-2110 SS | -37d | 0d | LABOUR [3 h]; Construction Material [50] | UDF_G3 | 0 | EE | 1 | C03a | TY1 | Non | SS077 | EIT2.2 | E06 | EIT02.1 |
| 2.2-SS077EE04-2150 |  | Clear punch | 2d | 2026-07-06 | 2026-07-07 | 2.2-SS077EE04-2140 | -37d | 0d | LABOUR [75 h]; Construction Material [20] | UDF_G3 | 0 | EE | 1 | C03a | TY1 | Non | SS077 | EIT2.2 | E06 | EIT02.1 |
| 2.2-SS077EE04-2160 |  | Complete QA/QC document | 3d | 2026-07-08 | 2026-07-10 | 2.2-SS077EE04-2150, 2.2-SS077EE04-2130 FF | -37d | 0d | LABOUR [75 h]; Construction Material [30] | UDF_G3 | 0 | EE | 1 | C03a | TY1 | Non | SS077 | EIT2.2 | E06 | EIT02.1 |

| ID | WBS | Activity | Duration | Start | Finish | Predecessors | Complete | Total float | Free float | Resources | On Schedule Indicator | %Completed | Disciplines | Main Activity | WBS | Types | EIT2 Main Activity | Areas | Phases | EIT WBS | EIT PKG |
| --- | --- | --- | --- | --- | --- | --- | --- | --- | --- | --- | --- | --- | --- | --- | --- | --- | --- | --- | --- | --- | --- |
|  | 31 | **CV77E33** |  | 2026-06-30 | 2026-07-10 |  |  |  |  |  |  |  |  |  |  |  |  |  |  |  |  |
| 2.2-SS077EE04-2170 |  | Inspection and Testing, Per-Commissionning | 5d | 2026-06-30 | 2026-07-04 | 2.2-SS077EE04-2140 SS |  | -37d | 0d | LABOUR [3 h]; Construction Material [50] | UDF_G3 | 0 | EE | 1 | C03a | TY1 | Non | SS077 | EIT2.2 | E06 | EIT02.1 |
| 2.2-SS077EE04-2180 |  | Clear punch | 2d | 2026-07-06 | 2026-07-07 | 2.2-SS077EE04-2170 |  | -37d | 0d | LABOUR [75 h]; Construction Material [20] | UDF_G3 | 0 | EE | 1 | C03a | TY1 | Non | SS077 | EIT2.2 | E06 | EIT02.1 |
| 2.2-SS077EE04-2190 |  | Complete QA/QC document | 3d | 2026-07-08 | 2026-07-10 | 2.2-SS077EE04-2180, 2.2-SS077EE04-2160 FF |  | -37d | 0d | LABOUR [75 h]; Construction Material [30] | UDF_G3 | 0 | EE | 1 | C03a | TY1 | Non | SS077 | EIT2.2 | E06 | EIT02.1 |
|  | 32 | **WBS : C05** |  | 2026-04-01 | 2026-06-16 |  |  |  |  |  |  |  |  |  |  |  |  |  |  |  |  |
|  | 4 | **Substation SS-097** |  | 2026-04-01 | 2026-06-16 |  |  |  |  |  |  |  |  |  |  |  |  |  |  |  |  |
|  | 2 | **Electrical** |  | 2026-04-01 | 2026-06-16 |  |  |  |  |  |  |  |  |  |  |  |  |  |  |  |  |
|  | 2 | **Electrical Equpiment Inspection Testing** |  | 2026-04-01 | 2026-06-16 |  |  |  |  |  |  |  |  |  |  |  |  |  |  |  |  |
|  | 5 | **Miscellaneous panels** |  | 2026-05-01 | 2026-05-20 |  |  |  |  |  |  |  |  |  |  |  |  |  |  |  |  |
|  | 9 | **S097-ELC-0301** |  | 2026-05-01 | 2026-05-20 |  |  |  |  |  |  |  |  |  |  |  |  |  |  |  |  |
| 2.2-SS097EE04-1000 |  | Inspection and Testing, Per-Commissionning | 5d | 2026-05-01 A | 2026-05-06 A | 2.2-SS077EE04-1000 SS | 100% |  |  | LABOUR [3 h]; Construction Material [50] | UDF_G3 | 0 | EE |  |  |  | Non | SS097 | EIT2.2 |  |  |
| 2.2-SS097EE04-1010 |  | Clear punch | 2d | 2026-05-15 | 2026-05-16 | 2.2-SS097EE04-1000 |  | -11d | 0d | LABOUR [75 h]; Construction Material [20] | UDF_G3 | 0 | EE |  |  |  | Non | SS097 | EIT2.2 |  |  |
| 2.2-SS097EE04-1020 |  | Complete QA/QC document | 3d | 2026-05-18 | 2026-05-20 | 2.2-SS097EE04-1010 |  | -11d | 0d | LABOUR [75 h]; Construction Material [30] | UDF_G3 | 0 | EE |  |  |  | Non | SS097 | EIT2.2 |  |  |
|  | 1 | **S097-ELC-0302** |  | 2026-05-01 | 2026-05-20 |  |  |  |  |  |  |  |  |  |  |  |  |  |  |  |  |
| 2.2-SS097EE04-1030 |  | Inspection and Testing, Per-Commissionning | 5d | 2026-05-01 A | 2026-05-06 A | 2.2-SS097EE04-1000 SS | 100% |  |  | LABOUR [3 h]; Construction Material [50] | UDF_G3 | 0 | EE |  |  |  | Non | SS097 | EIT2.2 |  |  |
| 2.2-SS097EE04-1040 |  | Clear punch | 2d | 2026-05-15 | 2026-05-16 | 2.2-SS097EE04-1030 |  | -11d | 0d | LABOUR [75 h]; Construction Material [20] | UDF_G3 | 0 | EE |  |  |  | Non | SS097 | EIT2.2 |  |  |
| 2.2-SS097EE04-1050 |  | Complete QA/QC document | 3d | 2026-05-18 | 2026-05-20 | 2.2-SS097EE04-1040, 2.2-SS097EE04-1020 FF |  | -11d | 0d | LABOUR [75 h]; Construction Material [30] | UDF_G3 | 0 | EE |  |  |  | Non | SS097 | EIT2.2 |  |  |
|  | 2 | **S097-ELC-0303** |  | 2026-05-01 | 2026-05-20 |  |  |  |  |  |  |  |  |  |  |  |  |  |  |  |  |
| 2.2-SS097EE04-1060 |  | Inspection and Testing, Per-Commissionning | 5d | 2026-05-01 A | 2026-05-06 A | 2.2-SS097EE04-1030 SS | 100% |  |  | LABOUR [3 h]; Construction Material [50] | UDF_G3 | 0 | EE |  |  |  | Non | SS097 | EIT2.2 |  |  |
| 2.2-SS097EE04-1070 |  | Clear punch | 2d | 2026-05-15 | 2026-05-16 | 2.2-SS097EE04-1060 |  | -11d | 0d | LABOUR [75 h]; Construction Material [20] | UDF_G3 | 0 | EE |  |  |  | Non | SS097 | EIT2.2 |  |  |
| 2.2-SS097EE04-1080 |  | Complete QA/QC document | 3d | 2026-05-18 | 2026-05-20 | 2.2-SS097EE04-1070, 2.2-SS097EE04-1050 FF |  | -11d | 0d | LABOUR [75 h]; Construction Material [30] | UDF_G3 | 0 | EE |  |  |  | Non | SS097 | EIT2.2 |  |  |
|  | 1 | **Elics Panels** |  | 2026-05-01 | 2026-05-20 |  |  |  |  |  |  |  |  |  |  |  |  |  |  |  |  |
|  | 1 | **E-S97-68-2** |  | 2026-05-01 | 2026-05-20 |  |  |  |  |  |  |  |  |  |  |  |  |  |  |  |  |
| 2.2-SS097EE04-1090 |  | Inspection and Testing, Per-Commissionning | 5d | 2026-05-01 A | 2026-05-06 A | 2.2-SS097EE04-1060 SS | 100% |  |  | LABOUR [3 h]; Construction Material [50] | UDF_G3 | 0 | EE |  |  |  | Non | SS097 | EIT2.2 |  |  |
| 2.2-SS097EE04-1100 |  | Clear punch | 2d | 2026-05-15 | 2026-05-16 | 2.2-SS097EE04-1090 |  | -11d | 0d | LABOUR [75 h]; Construction Material [20] | UDF_G3 | 0 | EE |  |  |  | Non | SS097 | EIT2.2 |  |  |
| 2.2-SS097EE04-1110 |  | Complete QA/QC document | 3d | 2026-05-18 | 2026-05-20 | 2.2-SS097EE04-1100, 2.2-SS097EE04-1080 FF |  | -11d | 0d | LABOUR [75 h]; Construction Material [30] | UDF_G3 | 0 | EE |  |  |  | Non | SS097 | EIT2.2 |  |  |

| ID | WBS | Activity | Duration | Start | Finish | Predecessors | Complete | Remaining | Planned start | Planned finish | Total float | Free float | Resources | On Schedule Indicator | %Completed | Disciplines | EIT2 Main Activity | Areas | Phases |
| --- | --- | --- | --- | --- | --- | --- | --- | --- | --- | --- | --- | --- | --- | --- | --- | --- | --- | --- | --- |
|  | 7 | **E-S97-68-3** |  | 2026-05-01 | 2026-05-20 |  |  |  |  |  |  |  |  |  |  |  |  |  |  |
| 2.2-SS097EE04-1120 |  | Inspection and Testing, Per-Commissionning | 5d | 2026-05-01 A | 2026-05-06 A | 2.2-SS097EE04-1090 SS | 100% |  |  |  |  |  | LABOUR [3 h]; Construction Material [50] | UDF_G3 | 0 | EE | Non | SS097 | EIT2.2 |
| 2.2-SS097EE04-1130 |  | Clear punch | 2d | 2026-05-15 | 2026-05-16 | 2.2-SS097EE04-1120 |  |  |  |  | -11d | 0d | LABOUR [75 h]; Construction Material [20] | UDF_G3 | 0 | EE | Non | SS097 | EIT2.2 |
| 2.2-SS097EE04-1140 |  | Complete QA/QC document | 3d | 2026-05-18 | 2026-05-20 | 2.2-SS097EE04-1130, 2.2-SS097EE04-1110 FF |  |  |  |  | -11d | 0d | LABOUR [75 h]; Construction Material [30] | UDF_G3 | 0 | EE | Non | SS097 | EIT2.2 |
|  | 3 | **Power Transformer** |  | 2026-04-01 | 2026-04-11 |  |  |  |  |  |  |  |  |  |  |  |  |  |  |
|  | 1 | **TR-KM-10702** |  | 2026-04-01 | 2026-04-11 |  |  |  |  |  |  |  |  |  |  |  |  |  |  |
| 2.2-SS097EE04-1150 |  | Inspection and Testing, Per-Commissionning | 5d | 2026-04-01 A | 2026-04-06 A | 2.2-SS097EE04-1120 SS | 100% |  |  |  |  |  | LABOUR [3 h]; Construction Material | UDF_G3 | 0 | EE | Non | SS097 | EIT2.2 |
| 2.2-SS097EE04-1160 |  | Clear punch | 2d | 2026-04-07 A | 2026-04-08 A | 2.2-SS097EE04-1150 | 100% |  |  |  |  |  | LABOUR [75 h]; Construction Material | UDF_G3 | 0 | EE | Non | SS097 | EIT2.2 |
| 2.2-SS097EE04-1170 |  | Complete QA/QC document | 3d | 2026-04-09 A | 2026-04-11 A | 2.2-SS097EE04-1160, 2.2-SS097EE04-1140 FF | 100% |  |  |  |  |  | LABOUR [75 h]; Construction Material | UDF_G3 | 0 | EE | Non | SS097 | EIT2.2 |
|  | 16 | **Variable Speed Drive** |  | 2026-05-01 | 2026-06-16 |  |  |  |  |  |  |  |  |  |  |  |  |  |  |
|  | 17 | **CV97D1** |  | 2026-05-01 | 2026-05-26 |  |  |  |  |  |  |  |  |  |  |  |  |  |  |
| 2.2-SS097EE04-1180 |  | Inspection and Testing, Per-Commissionning | 5d | 2026-05-01 A | 2026-05-20 | 2.2-SS097EE04-1150 SS | 100% | 5d | 2026-05-01 | 2026-05-06 | -16d | 0d | LABOUR [3 h]; Construction Material [50] | UDF_G3 | 0 | EE | Non | SS097 | EIT2.2 |
| 2.2-SS097EE04-1190 |  | Clear punch | 2d | 2026-05-21 | 2026-05-22 | 2.2-SS097EE04-1180 |  |  |  |  | -16d | 0d | LABOUR [75 h]; Construction Material [20] | UDF_G3 | 0 | EE | Non | SS097 | EIT2.2 |
| 2.2-SS097EE04-1200 |  | Complete QA/QC document | 3d | 2026-05-23 | 2026-05-26 | 2.2-SS097EE04-1190, 2.2-SS097EE04-1170 FF |  |  |  |  | -16d | 0d | LABOUR [75 h]; Construction Material [30] | UDF_G3 | 0 | EE | Non | SS097 | EIT2.2 |
|  | 6 | **CV97E2** |  | 2026-05-01 | 2026-05-26 |  |  |  |  |  |  |  |  |  |  |  |  |  |  |
| 2.2-SS097EE04-1210 |  | Inspection and Testing, Per-Commissionning | 5d | 2026-05-01 A | 2026-05-20 | 2.2-SS097EE04-1180 SS | 100% | 5d | 2026-05-01 | 2026-05-06 | -16d | 0d | LABOUR [3 h]; Construction Material [50] | UDF_G3 | 0 | EE | Non | SS097 | EIT2.2 |
| 2.2-SS097EE04-1220 |  | Clear punch | 2d | 2026-05-21 | 2026-05-22 | 2.2-SS097EE04-1210 |  |  |  |  | -16d | 0d | LABOUR [75 h]; Construction Material [20] | UDF_G3 | 0 | EE | Non | SS097 | EIT2.2 |
| 2.2-SS097EE04-1230 |  | Complete QA/QC document | 3d | 2026-05-23 | 2026-05-26 | 2.2-SS097EE04-1220, 2.2-SS097EE04-1200 FF |  |  |  |  | -16d | 0d | LABOUR [75 h]; Construction Material [30] | UDF_G3 | 0 | EE | Non | SS097 | EIT2.2 |
|  | 1 | **CV97E3** |  | 2026-05-01 | 2026-05-26 |  |  |  |  |  |  |  |  |  |  |  |  |  |  |
| 2.2-SS097EE04-1240 |  | Inspection and Testing, Per-Commissionning | 5d | 2026-05-01 A | 2026-05-20 | 2.2-SS097EE04-1210 SS | 100% | 5d | 2026-05-01 | 2026-05-06 | -16d | 0d | LABOUR [3 h]; Construction Material [50] | UDF_G3 | 0 | EE | Non | SS097 | EIT2.2 |
| 2.2-SS097EE04-1250 |  | Clear punch | 2d | 2026-05-21 | 2026-05-22 | 2.2-SS097EE04-1240 |  |  |  |  | -16d | 0d | LABOUR [75 h]; Construction Material [20] | UDF_G3 | 0 | EE | Non | SS097 | EIT2.2 |
| 2.2-SS097EE04-1260 |  | Complete QA/QC document | 3d | 2026-05-23 | 2026-05-26 | 2.2-SS097EE04-1250, 2.2-SS097EE04-1230 FF |  |  |  |  | -16d | 0d | LABOUR [75 h]; Construction Material [30] | UDF_G3 | 0 | EE | Non | SS097 | EIT2.2 |
|  | 2 | **CV97E4** |  | 2026-05-01 | 2026-05-26 |  |  |  |  |  |  |  |  |  |  |  |  |  |  |
| 2.2-SS097EE04-1270 |  | Inspection and Testing, Per-Commissionning | 5d | 2026-05-01 A | 2026-05-20 | 2.2-SS097EE04-1240 SS | 100% | 5d | 2026-05-01 | 2026-05-06 | -16d | 0d | LABOUR [3 h]; Construction Material [50] | UDF_G3 | 0 | EE | Non | SS097 | EIT2.2 |
| 2.2-SS097EE04-1280 |  | Clear punch | 2d | 2026-05-21 | 2026-05-22 | 2.2-SS097EE04-1270 |  |  |  |  | -16d | 0d | LABOUR [75 h]; Construction Material [20] | UDF_G3 | 0 | EE | Non | SS097 | EIT2.2 |
| 2.2-SS097EE04-1290 |  | Complete QA/QC document | 3d | 2026-05-23 | 2026-05-26 | 2.2-SS097EE04-1280, 2.2-SS097EE04-1260 FF |  |  |  |  | -16d | 0d | LABOUR [75 h]; Construction Material [30] | UDF_G3 | 0 | EE | Non | SS097 | EIT2.2 |

| ID | WBS | Activity | Duration | Start | Finish | Predecessors | Complete | Remaining | Planned start | Planned finish | Total float | Free float | Resources | On Schedule Indicator | %Completed | Disciplines | EIT2 Main Activity | Areas | Phases |
| --- | --- | --- | --- | --- | --- | --- | --- | --- | --- | --- | --- | --- | --- | --- | --- | --- | --- | --- | --- |
|  | 3 | **CV97E5** |  | 2026-05-01 | 2026-05-26 |  |  |  |  |  |  |  |  |  |  |  |  |  |  |
| 2.2-SS097EE04-1300 |  | Inspection and Testing, Per-Commissionning | 5d | 2026-05-01 A | 2026-05-20 | 2.2-SS097EE04-1270 SS | 100% | 5d | 2026-05-01 | 2026-05-06 | -16d | 0d | LABOUR [3 h]; Construction Material [50] | UDF_G3 | 0 | EE | Non | SS097 | EIT2.2 |
| 2.2-SS097EE04-1310 |  | Clear punch | 2d | 2026-05-21 | 2026-05-22 | 2.2-SS097EE04-1300 |  |  |  |  | -16d | 0d | LABOUR [75 h]; Construction Material [20] | UDF_G3 | 0 | EE | Non | SS097 | EIT2.2 |
| 2.2-SS097EE04-1320 |  | Complete QA/QC document | 3d | 2026-05-23 | 2026-05-26 | 2.2-SS097EE04-1310, 2.2-SS097EE04-1290 FF |  |  |  |  | -16d | 0d | LABOUR [75 h]; Construction Material [30] | UDF_G3 | 0 | EE | Non | SS097 | EIT2.2 |
|  | 4 | **CV97E6** |  | 2026-05-01 | 2026-05-26 |  |  |  |  |  |  |  |  |  |  |  |  |  |  |
| 2.2-SS097EE04-1330 |  | Inspection and Testing, Per-Commissionning | 5d | 2026-05-01 A | 2026-05-20 | 2.2-SS097EE04-1300 SS | 100% | 5d | 2026-05-01 | 2026-05-06 | -16d | 0d | LABOUR [3 h]; Construction Material [50] | UDF_G3 | 0 | EE | Non | SS097 | EIT2.2 |
| 2.2-SS097EE04-1340 |  | Clear punch | 2d | 2026-05-21 | 2026-05-22 | 2.2-SS097EE04-1330 |  |  |  |  | -16d | 0d | LABOUR [75 h]; Construction Material [20] | UDF_G3 | 0 | EE | Non | SS097 | EIT2.2 |
| 2.2-SS097EE04-1350 |  | Complete QA/QC document | 3d | 2026-05-23 | 2026-05-26 | 2.2-SS097EE04-1340, 2.2-SS097EE04-1320 FF |  |  |  |  | -16d | 0d | LABOUR [75 h]; Construction Material [30] | UDF_G3 | 0 | EE | Non | SS097 | EIT2.2 |
|  | 5 | **CV97E7** |  | 2026-05-01 | 2026-05-26 |  |  |  |  |  |  |  |  |  |  |  |  |  |  |
| 2.2-SS097EE04-1360 |  | Inspection and Testing, Per-Commissionning | 5d | 2026-05-01 A | 2026-05-20 | 2.2-SS097EE04-1330 SS | 100% | 5d | 2026-05-01 | 2026-05-06 | -16d | 0d | LABOUR [3 h]; Construction Material [50] | UDF_G3 | 0 | EE | Non | SS097 | EIT2.2 |
| 2.2-SS097EE04-1370 |  | Clear punch | 2d | 2026-05-21 | 2026-05-22 | 2.2-SS097EE04-1360 |  |  |  |  | -16d | 0d | LABOUR [75 h]; Construction Material [20] | UDF_G3 | 0 | EE | Non | SS097 | EIT2.2 |
| 2.2-SS097EE04-1380 |  | Complete QA/QC document | 3d | 2026-05-23 | 2026-05-26 | 2.2-SS097EE04-1370, 2.2-SS097EE04-1350 FF |  |  |  |  | -16d | 0d | LABOUR [75 h]; Construction Material [30] | UDF_G3 | 0 | EE | Non | SS097 | EIT2.2 |
|  | 7 | **CV97E8** |  | 2026-05-01 | 2026-05-26 |  |  |  |  |  |  |  |  |  |  |  |  |  |  |
| 2.2-SS097EE04-1390 |  | Inspection and Testing, Per-Commissionning | 5d | 2026-05-01 A | 2026-05-20 | 2.2-SS097EE04-1360 SS | 100% | 5d | 2026-05-01 | 2026-05-06 | -16d | 0d | LABOUR [3 h]; Construction Material [50] | UDF_G3 | 0 | EE | Non | SS097 | EIT2.2 |
| 2.2-SS097EE04-1400 |  | Clear punch | 2d | 2026-05-21 | 2026-05-22 | 2.2-SS097EE04-1390 |  |  |  |  | -16d | 0d | LABOUR [75 h]; Construction Material [20] | UDF_G3 | 0 | EE | Non | SS097 | EIT2.2 |
| 2.2-SS097EE04-1410 |  | Complete QA/QC document | 3d | 2026-05-23 | 2026-05-26 | 2.2-SS097EE04-1400, 2.2-SS097EE04-1380 FF |  |  |  |  | -16d | 0d | LABOUR [75 h]; Construction Material [30] | UDF_G3 | 0 | EE | Non | SS097 | EIT2.2 |
|  | 8 | **CV97E9** |  | 2026-05-01 | 2026-05-26 |  |  |  |  |  |  |  |  |  |  |  |  |  |  |
| 2.2-SS097EE04-1420 |  | Inspection and Testing, Per-Commissionning | 5d | 2026-05-01 A | 2026-05-20 | 2.2-SS097EE04-1390 SS | 100% | 5d | 2026-05-01 | 2026-05-06 | -16d | 0d | LABOUR [3 h]; Construction Material [50] | UDF_G3 | 0 | EE | Non | SS097 | EIT2.2 |
| 2.2-SS097EE04-1430 |  | Clear punch | 2d | 2026-05-21 | 2026-05-22 | 2.2-SS097EE04-1420 |  |  |  |  | -16d | 0d | LABOUR [75 h]; Construction Material [20] | UDF_G3 | 0 | EE | Non | SS097 | EIT2.2 |
| 2.2-SS097EE04-1440 |  | Complete QA/QC document | 3d | 2026-05-23 | 2026-05-26 | 2.2-SS097EE04-1430, 2.2-SS097EE04-1410 FF |  |  |  |  | -16d | 0d | LABOUR [75 h]; Construction Material [30] | UDF_G3 | 0 | EE | Non | SS097 | EIT2.2 |
|  | 9 | **CV97E10** |  | 2026-05-01 | 2026-05-26 |  |  |  |  |  |  |  |  |  |  |  |  |  |  |
| 2.2-SS097EE04-1450 |  | Inspection and Testing, Per-Commissionning | 5d | 2026-05-01 A | 2026-05-20 | 2.2-SS097EE04-1420 SS | 100% | 5d | 2026-05-01 | 2026-05-06 | -16d | 0d | LABOUR [3 h]; Construction Material [50] | UDF_G3 | 0 | EE | Non | SS097 | EIT2.2 |
| 2.2-SS097EE04-1460 |  | Clear punch | 2d | 2026-05-21 | 2026-05-22 | 2.2-SS097EE04-1450 |  |  |  |  | -16d | 0d | LABOUR [75 h]; Construction Material [20] | UDF_G3 | 0 | EE | Non | SS097 | EIT2.2 |
| 2.2-SS097EE04-1470 |  | Complete QA/QC document | 3d | 2026-05-23 | 2026-05-26 | 2.2-SS097EE04-1460, 2.2-SS097EE04-1440 FF |  |  |  |  | -16d | 0d | LABOUR [75 h]; Construction Material [30] | UDF_G3 | 0 | EE | Non | SS097 | EIT2.2 |

| ID | WBS | Activity | Duration | Start | Finish | Predecessors | Complete | Remaining | Planned start | Planned finish | Total float | Free float | Resources | On Schedule Indicator | %Completed | Disciplines | EIT2 Main Activity | Areas | Phases |
| --- | --- | --- | --- | --- | --- | --- | --- | --- | --- | --- | --- | --- | --- | --- | --- | --- | --- | --- | --- |
|  | 10 | **CV97E11** |  | 2026-05-01 | 2026-05-26 |  |  |  |  |  |  |  |  |  |  |  |  |  |  |
| 2.2-SS097EE04-1480 |  | Inspection and Testing, Per-Commissionning | 5d | 2026-05-01 A | 2026-05-20 | 2.2-SS097EE04-1450 SS | 100% | 5d | 2026-05-01 | 2026-05-06 | -16d | 0d | LABOUR [3 h]; Construction Material [50] | UDF_G3 | 0 | EE | Non | SS097 | EIT2.2 |
| 2.2-SS097EE04-1490 |  | Clear punch | 2d | 2026-05-21 | 2026-05-22 | 2.2-SS097EE04-1480 |  |  |  |  | -16d | 0d | LABOUR [75 h]; Construction Material [20] | UDF_G3 | 0 | EE | Non | SS097 | EIT2.2 |
| 2.2-SS097EE04-1500 |  | Complete QA/QC document | 3d | 2026-05-23 | 2026-05-26 | 2.2-SS097EE04-1490, 2.2-SS097EE04-1470 FF |  |  |  |  | -16d | 0d | LABOUR [75 h]; Construction Material [30] | UDF_G3 | 0 | EE | Non | SS097 | EIT2.2 |
|  | 11 | **CV97E12** |  | 2026-05-01 | 2026-05-26 |  |  |  |  |  |  |  |  |  |  |  |  |  |  |
| 2.2-SS097EE04-1510 |  | Inspection and Testing, Per-Commissionning | 5d | 2026-05-01 A | 2026-05-20 | 2.2-SS097EE04-1480 SS | 100% | 5d | 2026-05-01 | 2026-05-06 | -16d | 0d | LABOUR [3 h]; Construction Material [50] | UDF_G3 | 0 | EE | Non | SS097 | EIT2.2 |
| 2.2-SS097EE04-1520 |  | Clear punch | 2d | 2026-05-21 | 2026-05-22 | 2.2-SS097EE04-1510 |  |  |  |  | -16d | 0d | LABOUR [75 h]; Construction Material [20] | UDF_G3 | 0 | EE | Non | SS097 | EIT2.2 |
| 2.2-SS097EE04-1530 |  | Complete QA/QC document | 3d | 2026-05-23 | 2026-05-26 | 2.2-SS097EE04-1520, 2.2-SS097EE04-1500 FF |  |  |  |  | -16d | 0d | LABOUR [75 h]; Construction Material [30] | UDF_G3 | 0 | EE | Non | SS097 | EIT2.2 |
|  | 12 | **CV97E13** |  | 2026-05-01 | 2026-05-26 |  |  |  |  |  |  |  |  |  |  |  |  |  |  |
| 2.2-SS097EE04-1540 |  | Inspection and Testing, Per-Commissionning | 5d | 2026-05-01 A | 2026-05-20 | 2.2-SS097EE04-1510 SS | 100% | 5d | 2026-05-01 | 2026-05-06 | -16d | 0d | LABOUR [3 h]; Construction Material [50] | UDF_G3 | 0 | EE | Non | SS097 | EIT2.2 |
| 2.2-SS097EE04-1550 |  | Clear punch | 2d | 2026-05-21 | 2026-05-22 | 2.2-SS097EE04-1540 |  |  |  |  | -16d | 0d | LABOUR [75 h]; Construction Material [20] | UDF_G3 | 0 | EE | Non | SS097 | EIT2.2 |
| 2.2-SS097EE04-1560 |  | Complete QA/QC document | 3d | 2026-05-23 | 2026-05-26 | 2.2-SS097EE04-1550, 2.2-SS097EE04-1530 FF |  |  |  |  | -16d | 0d | LABOUR [75 h]; Construction Material [30] | UDF_G3 | 0 | EE | Non | SS097 | EIT2.2 |
|  | 13 | **CV97E14** |  | 2026-05-01 | 2026-05-26 |  |  |  |  |  |  |  |  |  |  |  |  |  |  |
| 2.2-SS097EE04-1570 |  | Inspection and Testing, Per-Commissionning | 5d | 2026-05-01 A | 2026-05-20 | 2.2-SS097EE04-1540 SS | 100% | 5d | 2026-05-01 | 2026-05-06 | -16d | 0d | LABOUR [3 h]; Construction Material [50] | UDF_G3 | 0 | EE | Non | SS097 | EIT2.2 |
| 2.2-SS097EE04-1580 |  | Clear punch | 2d | 2026-05-21 | 2026-05-22 | 2.2-SS097EE04-1570 |  |  |  |  | -16d | 0d | LABOUR [75 h]; Construction Material [20] | UDF_G3 | 0 | EE | Non | SS097 | EIT2.2 |
| 2.2-SS097EE04-1590 |  | Complete QA/QC document | 3d | 2026-05-23 | 2026-05-26 | 2.2-SS097EE04-1580, 2.2-SS097EE04-1560 FF |  |  |  |  | -16d | 0d | LABOUR [75 h]; Construction Material [30] | UDF_G3 | 0 | EE | Non | SS097 | EIT2.2 |
|  | 14 | **CV97E15** |  | 2026-05-01 | 2026-05-26 |  |  |  |  |  |  |  |  |  |  |  |  |  |  |
| 2.2-SS097EE04-1600 |  | Inspection and Testing, Per-Commissionning | 5d | 2026-05-01 A | 2026-05-20 | 2.2-SS097EE04-1570 SS | 100% | 5d | 2026-05-01 | 2026-05-06 | -16d | 0d | LABOUR [3 h]; Construction Material [50] | UDF_G3 | 0 | EE | Non | SS097 | EIT2.2 |
| 2.2-SS097EE04-1610 |  | Clear punch | 2d | 2026-05-21 | 2026-05-22 | 2.2-SS097EE04-1600 |  |  |  |  | -16d | 0d | LABOUR [75 h]; Construction Material [20] | UDF_G3 | 0 | EE | Non | SS097 | EIT2.2 |
| 2.2-SS097EE04-1620 |  | Complete QA/QC document | 3d | 2026-05-23 | 2026-05-26 | 2.2-SS097EE04-1610, 2.2-SS097EE04-1590 FF |  |  |  |  | -16d | 0d | LABOUR [75 h]; Construction Material [30] | UDF_G3 | 0 | EE | Non | SS097 | EIT2.2 |
|  | 15 | **CV97E16** |  | 2026-05-07 | 2026-05-26 |  |  |  |  |  |  |  |  |  |  |  |  |  |  |
| 2.2-SS097EE04-1630 |  | Inspection and Testing, Per-Commissionning | 5d | 2026-05-07 A | 2026-05-20 | 2.2-SS097EE04-1600 SS | 100% | 5d | 2026-05-07 | 2026-05-12 | -16d | 0d | LABOUR [3 h]; Construction Material [50] | UDF_G3 | 0 | EE | Non | SS097 | EIT2.2 |
| 2.2-SS097EE04-1640 |  | Clear punch | 2d | 2026-05-21 | 2026-05-22 | 2.2-SS097EE04-1630 |  |  |  |  | -16d | 0d | LABOUR [75 h]; Construction Material [20] | UDF_G3 | 0 | EE | Non | SS097 | EIT2.2 |
| 2.2-SS097EE04-1650 |  | Complete QA/QC document | 3d | 2026-05-23 | 2026-05-26 | 2.2-SS097EE04-1640, 2.2-SS097EE04-1620 FF |  |  |  |  | -16d | 0d | LABOUR [75 h]; Construction Material [30] | UDF_G3 | 0 | EE | Non | SS097 | EIT2.2 |

| ID | WBS | Activity | Duration | Start | Finish | Predecessors | Complete | Remaining | Planned start | Planned finish | Total float | Free float | Resources | On Schedule Indicator | %Completed | Disciplines | EIT2 Main Activity | Areas | Phases |
| --- | --- | --- | --- | --- | --- | --- | --- | --- | --- | --- | --- | --- | --- | --- | --- | --- | --- | --- | --- |
|  | 16 | **CV97E17** |  | 2026-05-07 | 2026-05-26 |  |  |  |  |  |  |  |  |  |  |  |  |  |  |
| 2.2-SS097EE04-1660 |  | Inspection and Testing, Per-Commissionning | 5d | 2026-05-07 A | 2026-05-20 | 2.2-SS097EE04-1630 SS | 100% | 5d | 2026-05-07 | 2026-05-12 | -16d | 0d | LABOUR [3 h]; Construction Material [50] | UDF_G3 | 0 | EE | Non | SS097 | EIT2.2 |
| 2.2-SS097EE04-1670 |  | Clear punch | 2d | 2026-05-21 | 2026-05-22 | 2.2-SS097EE04-1660 |  |  |  |  | -16d | 0d | LABOUR [75 h]; Construction Material [20] | UDF_G3 | 0 | EE | Non | SS097 | EIT2.2 |
| 2.2-SS097EE04-1680 |  | Complete QA/QC document | 3d | 2026-05-23 | 2026-05-26 | 2.2-SS097EE04-1670, 2.2-SS097EE04-1650 FF |  |  |  |  | -16d | 0d | LABOUR [75 h]; Construction Material [30] | UDF_G3 | 0 | EE | Non | SS097 | EIT2.2 |
|  | 18 | **CV97E18** |  | 2026-05-07 | 2026-05-26 |  |  |  |  |  |  |  |  |  |  |  |  |  |  |
| 2.2-SS097EE04-1690 |  | Inspection and Testing, Per-Commissionning | 5d | 2026-05-07 A | 2026-05-20 | 2.2-SS097EE04-1660 SS | 100% | 5d | 2026-05-07 | 2026-05-12 | -16d | 0d | LABOUR [3 h]; Construction Material [50] | UDF_G3 | 0 | EE | Non | SS097 | EIT2.2 |
| 2.2-SS097EE04-1700 |  | Clear punch | 2d | 2026-05-21 | 2026-05-22 | 2.2-SS097EE04-1690 |  |  |  |  | -16d | 0d | LABOUR [75 h]; Construction Material [20] | UDF_G3 | 0 | EE | Non | SS097 | EIT2.2 |
| 2.2-SS097EE04-1710 |  | Complete QA/QC document | 3d | 2026-05-23 | 2026-05-26 | 2.2-SS097EE04-1700, 2.2-SS097EE04-1680 FF |  |  |  |  | -16d | 0d | LABOUR [75 h]; Construction Material [30] | UDF_G3 | 0 | EE | Non | SS097 | EIT2.2 |
|  | 19 | **CV97E19** |  | 2026-05-07 | 2026-05-26 |  |  |  |  |  |  |  |  |  |  |  |  |  |  |
| 2.2-SS097EE04-1720 |  | Inspection and Testing, Per-Commissionning | 5d | 2026-05-07 A | 2026-05-20 | 2.2-SS097EE04-1690 SS | 100% | 5d | 2026-05-07 | 2026-05-12 | -16d | 0d | LABOUR [3 h]; Construction Material [50] | UDF_G3 | 0 | EE | Non | SS097 | EIT2.2 |
| 2.2-SS097EE04-1730 |  | Clear punch | 2d | 2026-05-21 | 2026-05-22 | 2.2-SS097EE04-1720 |  |  |  |  | -16d | 0d | LABOUR [75 h]; Construction Material [20] | UDF_G3 | 0 | EE | Non | SS097 | EIT2.2 |
| 2.2-SS097EE04-1740 |  | Complete QA/QC document | 3d | 2026-05-23 | 2026-05-26 | 2.2-SS097EE04-1730, 2.2-SS097EE04-1710 FF |  |  |  |  | -16d | 0d | LABOUR [75 h]; Construction Material [30] | UDF_G3 | 0 | EE | Non | SS097 | EIT2.2 |
|  | 20 | **CV97E20** |  | 2026-05-07 | 2026-05-26 |  |  |  |  |  |  |  |  |  |  |  |  |  |  |
| 2.2-SS097EE04-1750 |  | Inspection and Testing, Per-Commissionning | 5d | 2026-05-07 A | 2026-05-20 | 2.2-SS097EE04-1720 SS | 100% | 5d | 2026-05-07 | 2026-05-12 | -16d | 0d | LABOUR [3 h]; Construction Material [50] | UDF_G3 | 0 | EE | Non | SS097 | EIT2.2 |
| 2.2-SS097EE04-1760 |  | Clear punch | 2d | 2026-05-21 | 2026-05-22 | 2.2-SS097EE04-1750 |  |  |  |  | -16d | 0d | LABOUR [75 h]; Construction Material [20] | UDF_G3 | 0 | EE | Non | SS097 | EIT2.2 |
| 2.2-SS097EE04-1770 |  | Complete QA/QC document | 3d | 2026-05-23 | 2026-05-26 | 2.2-SS097EE04-1760, 2.2-SS097EE04-1740 FF |  |  |  |  | -16d | 0d | LABOUR [75 h]; Construction Material [30] | UDF_G3 | 0 | EE | Non | SS097 | EIT2.2 |
|  | 21 | **CV97E21** |  | 2026-05-06 | 2026-05-26 |  |  |  |  |  |  |  |  |  |  |  |  |  |  |
| 2.2-SS097EE04-1780 |  | Inspection and Testing, Per-Commissionning | 5d | 2026-05-06 A | 2026-05-20 | 2.2-SS097EE04-1750 SS | 100% | 5d | 2026-05-13 | 2026-05-18 | -16d | 0d | LABOUR [3 h]; Construction Material [50] | UDF_G3 | 0 | EE | Non | SS097 | EIT2.2 |
| 2.2-SS097EE04-1790 |  | Clear punch | 2d | 2026-05-21 | 2026-05-22 | 2.2-SS097EE04-1780 |  |  |  |  | -16d | 0d | LABOUR [75 h]; Construction Material [20] | UDF_G3 | 0 | EE | Non | SS097 | EIT2.2 |
| 2.2-SS097EE04-1800 |  | Complete QA/QC document | 3d | 2026-05-23 | 2026-05-26 | 2.2-SS097EE04-1790, 2.2-SS097EE04-1770 FF |  |  |  |  | -16d | 0d | LABOUR [75 h]; Construction Material [30] | UDF_G3 | 0 | EE | Non | SS097 | EIT2.2 |
|  | 22 | **CV97E22** |  | 2026-05-06 | 2026-05-26 |  |  |  |  |  |  |  |  |  |  |  |  |  |  |
| 2.2-SS097EE04-1810 |  | Inspection and Testing, Per-Commissionning | 5d | 2026-05-06 A | 2026-05-20 | 2.2-SS097EE04-1780 SS | 100% | 5d | 2026-05-13 | 2026-05-18 | -16d | 0d | LABOUR [3 h]; Construction Material [50] | UDF_G3 | 0 | EE | Non | SS097 | EIT2.2 |
| 2.2-SS097EE04-1820 |  | Clear punch | 2d | 2026-05-21 | 2026-05-22 | 2.2-SS097EE04-1810 |  |  |  |  | -16d | 0d | LABOUR [75 h]; Construction Material [20] | UDF_G3 | 0 | EE | Non | SS097 | EIT2.2 |
| 2.2-SS097EE04-1830 |  | Complete QA/QC document | 3d | 2026-05-23 | 2026-05-26 | 2.2-SS097EE04-1820, 2.2-SS097EE04-1800 FF |  |  |  |  | -16d | 0d | LABOUR [75 h]; Construction Material [30] | UDF_G3 | 0 | EE | Non | SS097 | EIT2.2 |

| ID | WBS | Activity | Duration | Start | Finish | Predecessors | Complete | Remaining | Planned start | Planned finish | Total float | Free float | Resources | On Schedule Indicator | %Completed | Disciplines | EIT2 Main Activity | Areas | Phases |
| --- | --- | --- | --- | --- | --- | --- | --- | --- | --- | --- | --- | --- | --- | --- | --- | --- | --- | --- | --- |
|  | 23 | **CV97E23** |  | 2026-05-06 | 2026-05-26 |  |  |  |  |  |  |  |  |  |  |  |  |  |  |
| 2.2-SS097EE04-1840 |  | Inspection and Testing, Per-Commissionning | 5d | 2026-05-06 A | 2026-05-20 | 2.2-SS097EE04-1810 SS | 100% | 5d | 2026-05-13 | 2026-05-18 | -16d | 0d | LABOUR [3 h]; Construction Material [50] | UDF_G3 | 0 | EE | Non | SS097 | EIT2.2 |
| 2.2-SS097EE04-1850 |  | Clear punch | 2d | 2026-05-21 | 2026-05-22 | 2.2-SS097EE04-1840 |  |  |  |  | -16d | 0d | LABOUR [75 h]; Construction Material [20] | UDF_G3 | 0 | EE | Non | SS097 | EIT2.2 |
| 2.2-SS097EE04-1860 |  | Complete QA/QC document | 3d | 2026-05-23 | 2026-05-26 | 2.2-SS097EE04-1850, 2.2-SS097EE04-1830 FF |  |  |  |  | -16d | 0d | LABOUR [75 h]; Construction Material [30] | UDF_G3 | 0 | EE | Non | SS097 | EIT2.2 |
|  | 24 | **CV97E24** |  | 2026-05-06 | 2026-05-26 |  |  |  |  |  |  |  |  |  |  |  |  |  |  |
| 2.2-SS097EE04-1870 |  | Inspection and Testing, Per-Commissionning | 5d | 2026-05-06 A | 2026-05-20 | 2.2-SS097EE04-1840 SS | 100% | 5d | 2026-05-13 | 2026-05-18 | -16d | 0d | LABOUR [3 h]; Construction Material [50] | UDF_G3 | 0 | EE | Non | SS097 | EIT2.2 |
| 2.2-SS097EE04-1880 |  | Clear punch | 2d | 2026-05-21 | 2026-05-22 | 2.2-SS097EE04-1870 |  |  |  |  | -16d | 0d | LABOUR [75 h]; Construction Material [20] | UDF_G3 | 0 | EE | Non | SS097 | EIT2.2 |
| 2.2-SS097EE04-1890 |  | Complete QA/QC document | 3d | 2026-05-23 | 2026-05-26 | 2.2-SS097EE04-1880, 2.2-SS097EE04-1860 FF |  |  |  |  | -16d | 0d | LABOUR [75 h]; Construction Material [30] | UDF_G3 | 0 | EE | Non | SS097 | EIT2.2 |
|  | 25 | **CV97E25** |  | 2026-05-06 | 2026-05-26 |  |  |  |  |  |  |  |  |  |  |  |  |  |  |
| 2.2-SS097EE04-1900 |  | Inspection and Testing, Per-Commissionning | 5d | 2026-05-06 A | 2026-05-20 | 2.2-SS097EE04-1870 SS | 100% | 5d | 2026-05-13 | 2026-05-18 | -16d | 0d | LABOUR [3 h]; Construction Material [50] | UDF_G3 | 0 | EE | Non | SS097 | EIT2.2 |
| 2.2-SS097EE04-1910 |  | Clear punch | 2d | 2026-05-21 | 2026-05-22 | 2.2-SS097EE04-1900 |  |  |  |  | -16d | 0d | LABOUR [75 h]; Construction Material [20] | UDF_G3 | 0 | EE | Non | SS097 | EIT2.2 |
| 2.2-SS097EE04-1920 |  | Complete QA/QC document | 3d | 2026-05-23 | 2026-05-26 | 2.2-SS097EE04-1910, 2.2-SS097EE04-1890 FF |  |  |  |  | -16d | 0d | LABOUR [75 h]; Construction Material [30] | UDF_G3 | 0 | EE | Non | SS097 | EIT2.2 |
|  | 26 | **CV97E26** |  | 2026-05-06 | 2026-05-29 |  |  |  |  |  |  |  |  |  |  |  |  |  |  |
| 2.2-SS097EE04-1930 |  | Inspection and Testing, Per-Commissionning | 5d | 2026-05-06 A | 2026-05-20 | 2.2-SS097EE04-1900 SS | 100% | 5d | 2026-05-19 | 2026-05-23 | -13d | 0d | LABOUR [3 h]; Construction Material [50] | UDF_G3 | 0 | EE | Non | SS097 | EIT2.2 |
| 2.2-SS097EE04-1940 |  | Clear punch | 2d | 2026-05-21 | 2026-05-22 | 2.2-SS097EE04-1930 |  |  |  |  | -13d | 3d | LABOUR [75 h]; Construction Material [20] | UDF_G3 | 0 | EE | Non | SS097 | EIT2.2 |
| 2.2-SS097EE04-1950 |  | Complete QA/QC document | 3d | 2026-05-27 | 2026-05-29 | 2.2-SS097EE04-1940, 2.2-SS097EE04-1920 |  |  |  |  | -16d | 0d | LABOUR [75 h]; Construction Material [30] | UDF_G3 | 0 | EE | Non | SS097 | EIT2.2 |
|  | 27 | **CV97E27** |  | 2026-05-06 | 2026-06-02 |  |  |  |  |  |  |  |  |  |  |  |  |  |  |
| 2.2-SS097EE04-1960 |  | Inspection and Testing, Per-Commissionning | 5d | 2026-05-06 A | 2026-05-20 | 2.2-SS097EE04-1930 SS | 100% | 5d | 2026-05-25 | 2026-05-29 | -10d | 0d | LABOUR [3 h]; Construction Material [50] | UDF_G3 | 0 | EE | Non | SS097 | EIT2.2 |
| 2.2-SS097EE04-1970 |  | Clear punch | 2d | 2026-05-21 | 2026-05-22 | 2.2-SS097EE04-1960 |  |  |  |  | -10d | 6d | LABOUR [75 h]; Construction Material [20] | UDF_G3 | 0 | EE | Non | SS097 | EIT2.2 |
| 2.2-SS097EE04-1980 |  | Complete QA/QC document | 3d | 2026-05-30 | 2026-06-02 | 2.2-SS097EE04-1970, 2.2-SS097EE04-1950 |  |  |  |  | -16d | 0d | LABOUR [75 h]; Construction Material [30] | UDF_G3 | 0 | EE | Non | SS097 | EIT2.2 |
|  | 28 | **CV97E28** |  | 2026-05-06 | 2026-06-02 |  |  |  |  |  |  |  |  |  |  |  |  |  |  |
| 2.2-SS097EE04-1990 |  | Inspection and Testing, Per-Commissionning | 5d | 2026-05-06 A | 2026-05-20 | 2.2-SS097EE04-1960 SS | 100% | 5d | 2026-05-25 | 2026-05-29 | -10d | 0d | LABOUR [3 h]; Construction Material [50] | UDF_G3 | 0 | EE | Non | SS097 | EIT2.2 |
| 2.2-SS097EE04-2000 |  | Clear punch | 2d | 2026-05-21 | 2026-05-22 | 2.2-SS097EE04-1990 |  |  |  |  | -10d | 6d | LABOUR [75 h]; Construction Material [20] | UDF_G3 | 0 | EE | Non | SS097 | EIT2.2 |
| 2.2-SS097EE04-2010 |  | Complete QA/QC document | 3d | 2026-05-30 | 2026-06-02 | 2.2-SS097EE04-2000, 2.2-SS097EE04-1980 FF |  |  |  |  | -16d | 0d | LABOUR [75 h]; Construction Material [30] | UDF_G3 | 0 | EE | Non | SS097 | EIT2.2 |

| ID | WBS | Activity | Duration | Start | Finish | Predecessors | Complete | Remaining | Planned start | Planned finish | Total float | Free float | Resources | On Schedule Indicator | %Completed | Disciplines | EIT2 Main Activity | Areas | Phases |
| --- | --- | --- | --- | --- | --- | --- | --- | --- | --- | --- | --- | --- | --- | --- | --- | --- | --- | --- | --- |
|  | 29 | **CV97E29** |  | 2026-05-06 | 2026-06-02 |  |  |  |  |  |  |  |  |  |  |  |  |  |  |
| 2.2-SS097EE04-2020 |  | Inspection and Testing, Per-Commissionning | 5d | 2026-05-06 A | 2026-05-20 | 2.2-SS097EE04-1990 SS | 100% | 5d | 2026-05-25 | 2026-05-29 | -10d | 0d | LABOUR [3 h]; Construction Material [50] | UDF_G3 | 0 | EE | Non | SS097 | EIT2.2 |
| 2.2-SS097EE04-2030 |  | Clear punch | 2d | 2026-05-21 | 2026-05-22 | 2.2-SS097EE04-2020 |  |  |  |  | -10d | 6d | LABOUR [75 h]; Construction Material [20] | UDF_G3 | 0 | EE | Non | SS097 | EIT2.2 |
| 2.2-SS097EE04-2040 |  | Complete QA/QC document | 3d | 2026-05-30 | 2026-06-02 | 2.2-SS097EE04-2030, 2.2-SS097EE04-2010 FF |  |  |  |  | -16d | 0d | LABOUR [75 h]; Construction Material [30] | UDF_G3 | 0 | EE | Non | SS097 | EIT2.2 |
|  | 30 | **CV97E30** |  | 2026-05-06 | 2026-06-02 |  |  |  |  |  |  |  |  |  |  |  |  |  |  |
| 2.2-SS097EE04-2050 |  | Inspection and Testing, Per-Commissionning | 5d | 2026-05-06 A | 2026-05-20 | 2.2-SS097EE04-2020 SS | 100% | 5d | 2026-05-25 | 2026-05-29 | -10d | 0d | LABOUR [3 h]; Construction Material [50] | UDF_G3 | 0 | EE | Non | SS097 | EIT2.2 |
| 2.2-SS097EE04-2060 |  | Clear punch | 2d | 2026-05-21 | 2026-05-22 | 2.2-SS097EE04-2050 |  |  |  |  | -10d | 6d | LABOUR [75 h]; Construction Material [20] | UDF_G3 | 0 | EE | Non | SS097 | EIT2.2 |
| 2.2-SS097EE04-2070 |  | Complete QA/QC document | 3d | 2026-05-30 | 2026-06-02 | 2.2-SS097EE04-2060, 2.2-SS097EE04-2040 FF |  |  |  |  | -16d | 0d | LABOUR [75 h]; Construction Material [30] | UDF_G3 | 0 | EE | Non | SS097 | EIT2.2 |
|  | 31 | **CV97E31** |  | 2026-05-06 | 2026-06-05 |  |  |  |  |  |  |  |  |  |  |  |  |  |  |
| 2.2-SS097EE04-2080 |  | Inspection and Testing, Per-Commissionning | 5d | 2026-05-06 A | 2026-05-20 | 2.2-SS097EE04-2050 SS | 100% | 5d | 2026-05-30 | 2026-06-04 | -7d | 0d | LABOUR [3 h]; Construction Material [50] | UDF_G3 | 0 | EE | Non | SS097 | EIT2.2 |
| 2.2-SS097EE04-2090 |  | Clear punch | 2d | 2026-05-21 | 2026-05-22 | 2.2-SS097EE04-2080 |  |  |  |  | -7d | 9d | LABOUR [75 h]; Construction Material [20] | UDF_G3 | 0 | EE | Non | SS097 | EIT2.2 |
| 2.2-SS097EE04-2100 |  | Complete QA/QC document | 3d | 2026-06-03 | 2026-06-05 | 2.2-SS097EE04-2090, 2.2-SS097EE04-2070 |  |  |  |  | -16d | 0d | LABOUR [75 h]; Construction Material [30] | UDF_G3 | 0 | EE | Non | SS097 | EIT2.2 |
|  | 32 | **CV97E34** |  | 2026-05-06 | 2026-06-09 |  |  |  |  |  |  |  |  |  |  |  |  |  |  |
| 2.2-SS097EE04-2110 |  | Inspection and Testing, Per-Commissionning | 5d | 2026-05-06 A | 2026-05-20 | 2.2-SS097EE04-2080 SS | 100% | 5d | 2026-06-05 | 2026-06-10 | -4d | 0d | LABOUR [3 h]; Construction Material [50] | UDF_G3 | 0 | EE | Non | SS097 | EIT2.2 |
| 2.2-SS097EE04-2120 |  | Clear punch | 2d | 2026-05-21 | 2026-05-22 | 2.2-SS097EE04-2110 |  |  |  |  | -4d | 12d | LABOUR [75 h]; Construction Material [20] | UDF_G3 | 0 | EE | Non | SS097 | EIT2.2 |
| 2.2-SS097EE04-2130 |  | Complete QA/QC document | 3d | 2026-06-06 | 2026-06-09 | 2.2-SS097EE04-2120, 2.2-SS097EE04-2100 |  |  |  |  | -16d | 0d | LABOUR [75 h]; Construction Material [30] | UDF_G3 | 0 | EE | Non | SS097 | EIT2.2 |
|  | 33 | **CV97E35** |  | 2026-05-06 | 2026-06-12 |  |  |  |  |  |  |  |  |  |  |  |  |  |  |
| 2.2-SS097EE04-2140 |  | Inspection and Testing, Per-Commissionning | 5d | 2026-05-06 A | 2026-05-20 | 2.2-SS097EE04-2110 SS | 100% | 5d | 2026-06-11 | 2026-06-16 | -1d | 0d | LABOUR [3 h]; Construction Material [50] | UDF_G3 | 0 | EE | Non | SS097 | EIT2.2 |
| 2.2-SS097EE04-2150 |  | Clear punch | 2d | 2026-05-21 | 2026-05-22 | 2.2-SS097EE04-2140 |  |  |  |  | -1d | 15d | LABOUR [75 h]; Construction Material [20] | UDF_G3 | 0 | EE | Non | SS097 | EIT2.2 |
| 2.2-SS097EE04-2160 |  | Complete QA/QC document | 3d | 2026-06-10 | 2026-06-12 | 2.2-SS097EE04-2150, 2.2-SS097EE04-2130 |  |  |  |  | -16d | 0d | LABOUR [75 h]; Construction Material [30] | UDF_G3 | 0 | EE | Non | SS097 | EIT2.2 |
|  | 34 | **CV97E36** |  | 2026-05-06 | 2026-06-16 |  |  |  |  |  |  |  |  |  |  |  |  |  |  |
| 2.2-SS097EE04-2170 |  | Inspection and Testing, Per-Commissionning | 5d | 2026-05-06 A | 2026-05-20 | 2.2-SS097EE04-2140 SS | 100% | 5d | 2026-06-17 | 2026-06-22 | 2d | 0d | LABOUR [3 h]; Construction Material [50] | UDF_G3 | 0 | EE | Non | SS097 | EIT2.2 |
| 2.2-SS097EE04-2180 |  | Clear punch | 2d | 2026-05-21 | 2026-05-22 | 2.2-SS097EE04-2170 |  |  |  |  | 2d | 18d | LABOUR [75 h]; Construction Material [20] | UDF_G3 | 0 | EE | Non | SS097 | EIT2.2 |
| 2.2-SS097EE04-2190 |  | Complete QA/QC document | 3d | 2026-06-13 | 2026-06-16 | 2.2-SS097EE04-2180, 2.2-SS097EE04-2160 |  |  |  |  | -16d | 21d | LABOUR [75 h]; Construction Material [30] | UDF_G3 | 0 | EE | Non | SS097 | EIT2.2 |

## Activity codes

| Code | Value | Meaning |
| --- | --- | --- |
| Cable Pull & Laying | PUL | Pulled and Layed |
| Disciplines | CO | Common |
| Disciplines | EE | Electrical |
| Disciplines | IN | Instrument |
| Disciplines | TE | Telecom |
| EIT PKG | EIT02.1 | Early Work |
| EIT PKG | EIT02.2 | Balance of Work |
| EIT WBS | B04 | O&U |
| EIT WBS | C03a | HCU3 |
| EIT WBS | C03b | RHCU |
| EIT WBS | C03c | SDA |
| EIT WBS | C05 | O&U, SS-097, SS-099 |
| EIT WBS | C07 | MCB3 |
| EIT WBS | E06 | Existing, SS-077 |
| EIT WBS | X01 | Common |
| EIT2 Main Activity | PRIC | Primary Cable EE |
| EIT2 Main Activity | PRICI | Primary Cable IN |
| EIT2 Main Activity | SECE | Secondary Cable EE |
| EIT2 Main Activity | SECI | Secondary Cable IN |
| EIT2 Main Activity | SECT | Secondary Cable TE |
| Main Activity | 1 | Cable tray up to air Fin cooler HCU |
| Main Activity | 6 | Electrical Eqyuipment Installations Substation SS98 |
| Motor Loop | LO | Loop |
| Motor Loop | MO | Morto Solo Run |
| Types | TY1 | Cable tray up to air Fin cooler |
| Types | TY10 | General |
| Types | TY3 | Electrical Eqyuipment |
| WBS | C03a | C03 a - HCU |
| WBS | Com | Key Milestone |
| WBS | Com1 | Submission of Document for Approval |
| WBS | WBSc053 | WBS-C05 Substation SS-098 |
